# PLAYGROUNDS INITIATIVE - QASSIM, HAIL & TABUK - 04-Oct-2026

Schedule from Primavera P6, 2026-02-17 to 2027-02-03, data date 2026-10-02, costs in USD, A marks actual dates.
Must finish by 2026-12-16

## Calendars

- Playgrounds: Mon-Thu 08:00-13:00, 14:00-17:00; Fri off; Sat-Sun 08:00-13:00, 14:00-17:00. Exceptions (off unless hours are given): 2026-02-22, 2026-03-19, 2026-03-21 to 2026-03-23, 2026-05-26 to 2026-05-28, 2026-05-30, 2026-09-23.

## Resources

| Resource | Group | Rate |
| --- | --- | --- |
| COST | material | 1 |
| Roller | equipment |  |
| Loader | equipment |  |
| Water tanker | equipment |  |
| Motor Grader | equipment |  |
| Site Engineer | labor |  |
| Labor / Helper | labor |  |
| Water tanker driver | labor |  |
| Surveyor | labor |  |
| Loader Operator | labor |  |
| Roller Operator | labor |  |
| Motor Grader Operator | labor |  |
| Mason | labor |  |
| Tile Fixer | labor |  |
| Plumber | labor |  |
| Electrician | labor |  |
| ELV Technician | labor |  |
| Dump Truck | equipment |  |
| Excavator | equipment |  |
| Excavator Operator | labor |  |
| Dump Truck Driver | labor |  |
| Safety Officer | labor |  |
| Concrete Mason | labor |  |
| Carpenter | labor |  |
| Steel Fixer | labor |  |
| HVAC Technician | labor |  |
| Mechanical Technician | labor |  |
| Applicator | labor |  |
| Painter | labor |  |
| Paving Machine | equipment |  |
| Paving Machine Operator | labor |  |
| Crane | equipment |  |
| Crane Operator | labor |  |
| Glass Installer | labor |  |
| Spray Machine | equipment |  |
| Turf Installer | labor |  |
| Fitter | labor |  |
| Ceiling Installer | labor |  |
| Gardener | labor |  |
| Facade Technician | labor |  |
| Project Manager | labor |  |
| QA/QC Engineer | labor |  |
| Technical Engineer | labor |  |
| Procurement Specialist | labor |  |
| Project Coordinator | labor |  |

## Schedule

| ID | WBS | Activity | Type | Duration | Start | Finish | Predecessors | Complete | Remaining | Planned start | Planned finish | Total float | Free float | Resources | H,Q,T-Location |
| --- | --- | --- | --- | --- | --- | --- | --- | --- | --- | --- | --- | --- | --- | --- | --- |
|  | MS | **MILESTONES** |  |  | 2026-02-17 | 2027-02-03 |  |  |  |  |  |  |  |  |  |
|  | 1 | **GENERAL MILESTONES** |  |  | 2026-02-17 | 2027-02-03 |  |  |  |  |  |  |  |  |  |
| PG-GN-MS-10 |  | Project Commencement Date | milestone | 0d | 2026-02-17 A | 2026-02-17 A |  | 100% |  |  |  |  |  |  |  |
| PG-GN-MS-30 |  | Project Durations(Completed) |  | 101d | 2026-02-17 A | 2026-06-24 A | PG-GN-MS-10 SS | 100% |  |  |  |  |  | Project Manager [820 h]; QA/QC Engineer [820 h]; Technical Engineer [820 h]; Procurement Specialist [820 h]; Project Coordinator [820 h] |  |
| PG-GN-MS-30_R |  | Project Durations(Remaining) |  | 147.5d | 2026-07-01 A | 2026-12-27 | PG-GN-MS-10 SS, PG-GN-MS-30 | 50% | 73.75d | 2026-07-12 | 2026-12-31 | -8.75d | 32.65d | Project Manager [1180 h]; QA/QC Engineer [1180 h]; Technical Engineer [1180 h]; Procurement Specialist [1180 h]; Project Coordinator [1180 h] |  |
| PG-GN-MS-20 |  | Project Completion Date | milestone | 0d | 2027-02-03 | 2027-02-03 | PG-IN-MS-10, PG-IN-MS-20, PG-IN-MS-30, PG-IN-MS-40, PG-IN-MS-50, PG-IN-MS-60, PG-GN-MS-30_R |  |  |  |  | -41.4d | 0d |  |  |
|  | 2 | **CONTRACUAL MILESTONES** |  |  | 2026-05-05 | 2027-02-03 |  |  |  |  |  |  |  |  |  |
| PG-IN-MS-20 |  | Completion of Earthworks (Cut and fill) For Site Layout | milestone | 0d | 2026-05-05 A | 2026-05-05 A | PG-Q-CON-EX-CF-39, PG-H-CON-EX-CF-20, PG-T-CON-EX-CF-20 | 100% |  |  |  |  |  |  |  |
| PG-IN-MS-10 |  | Site Preparation, Work Plans, Schedule ,Drawings Submittals | milestone | 0d | 2026-09-16 A | 2026-09-16 A | PG-Q-MOB-CAM-40, PG-Q-GEN-10, PG-Q-GEN-20, PG-Q-GEN-30, PG-Q-GEN-40, PG-Q-MOB-CAM-30 FF, PG-Q-MOB-SO-30 FF, PG-Q-PR-LL-LS-MS-10, PG-Q-PR-LL-SP-MS-40, PG-Q-PR-LL-EL-MS-80, PG-Q-PR-LL-IR-MS-20, PG-Q-MOB-SO-50 FF, PG-Q-EN-EL-SD-SB-120 FF, PG-Q-EN-EL-SD-SB-140 FF, PG-Q-EN-AR-SD-SB-130 FF, PG-Q-EN-AR-SD-SB-40 FF, PG-Q-EN-ST-SD-SB-120 FF, PG-Q-EN-ST-SD-SB-100 FF, PG-Q-EN-ST-SD-SB-80 FF, PG-Q-EN-ST-SD-SB-60 FF, PG-Q-EN-ME-SD-SB-40 FF, PG-Q-EN-ME-SD-SB-80 FF, PG-Q-EN-ME-SD-SB-90 FF, PG-Q-EN-EL-SD-SB-10 FF, PG-Q-EN-EL-SD-SB-20 FF, PG-Q-EN-EL-SD-SB-30 FF, PG-Q-EN-EL-SD-SB-40 FF, PG-Q-EN-EL-SD-SB-50 FF, PG-Q-EN-EL-SD-SB-60 FF, PG-Q-EN-EL-SD-SB-80 FF, PG-Q-EN-EL-SD-SB-70 FF, PG-Q-EN-EL-SD-SB-130 FF, PG-Q-PR-LL-LS-MS-20 FF, PG-Q-PR-LL-SP-MS-20 FF, PG-Q-PR-LL-MT-MS-10 FF, PG-Q-PR-LL-MT-MS-20 FF, PG-Q-PR-LL-PB-MS-20 FF, PG-Q-PR-LL-IR-MS-10 FF, PG-Q-PR-LL-EL-MS-10 FF, PG-Q-PR-LL-EL-MS-40 FF, PG-Q-PR-LL-EL-MS-20 FF, PG-Q-PR-LL-EL-MS-30 FF, PG-Q-PR-LL-EL-MS-70 FF, PG-Q-PR-LL-EL-MS-60 FF, PG-Q-EN-ST-SD-SB-40 FF, PG-Q-EN-AR-SD-SB-60 FF, PG-Q-EN-AR-SD-SB-70 FF, PG-Q-EN-AR-SD-SB-90 FF, PG-Q-EN-AR-SD-SB-100 FF, PG-Q-EN-LS-SD-SB-20 FF, PG-Q-EN-LS-SD-SB-30 FF, PG-Q-EN-LS-SD-SB-70 FF, PG-Q-EN-LS-SD-SB-80 FF, PG-H-MOB-CAM-30 FF, PG-H-MOB-CAM-40 FF, PG-H-MOB-SO-30 FF, PG-H-MOB-SO-50 FF, PG-H-GEN-10 FF, PG-H-GEN-20 FF, PG-H-GEN-30 FF, PG-H-GEN-40 FF, PG-H-EN-AR-SD-SB-100 FF, PG-H-EN-AR-SD-SB-40 FF, PG-H-EN-AR-SD-SB-60 FF, PG-H-EN-AR-SD-SB-70 FF, PG-H-EN-AR-SD-SB-90 FF, PG-H-EN-EL-SD-SB-10 FF, PG-H-EN-EL-SD-SB-20 FF, PG-H-EN-EL-SD-SB-30 FF, PG-H-EN-EL-SD-SB-40 FF, PG-H-EN-EL-SD-SB-50 FF, PG-H-EN-EL-SD-SB-60 FF, PG-H-EN-EL-SD-SB-70 FF, PG-H-EN-EL-SD-SB-80 FF, PG-H-EN-LS-SD-SB-20 FF, PG-H-EN-LS-SD-SB-30 FF, PG-H-EN-LS-SD-SB-70 FF, PG-H-EN-LS-SD-SB-80 FF, PG-H-EN-ME-SD-SB-40 FF, PG-H-EN-ME-SD-SB-80 FF, PG-H-EN-ME-SD-SB-90 FF, PG-H-EN-ST-SD-SB-80 FF, PG-H-PR-LL-EL-MS-10_R FF, PG-H-PR-LL-EL-MS-20_R FF, PG-H-PR-LL-EL-MS-30_R FF, PG-H-PR-LL-EL-MS-40_R FF, PG-H-PR-LL-EL-MS-60_R FF, PG-H-PR-LL-EL-MS-70_R FF, PG-H-PR-LL-EL-MS-80_R FF, PG-H-PR-LL-IR-MS-10 FF, PG-H-PR-LL-IR-MS-20 FF, PG-H-PR-LL-LS-MS-10 FF, PG-H-PR-LL-LS-MS-20 FF, PG-H-PR-LL-MT-MS-10 FF, PG-H-PR-LL-MT-MS-20 FF, PG-H-PR-LL-PB-MS-20 FF, PG-H-PR-LL-SP-MS-20 FF, PG-T-EN-AR-SD-SB-100 FF, PG-T-EN-AR-SD-SB-130 FF, PG-T-EN-AR-SD-SB-40 FF, PG-T-EN-AR-SD-SB-60 FF, PG-T-EN-AR-SD-SB-70 FF, PG-T-EN-AR-SD-SB-90 FF, PG-T-EN-EL-SD-SB-10 FF, PG-T-EN-EL-SD-SB-120 FF, PG-T-EN-EL-SD-SB-130 FF, PG-T-EN-EL-SD-SB-140 FF, PG-T-EN-EL-SD-SB-20 FF, PG-T-EN-EL-SD-SB-30 FF, PG-T-EN-EL-SD-SB-40 FF, PG-T-EN-EL-SD-SB-50 FF, PG-T-EN-EL-SD-SB-60 FF, PG-T-EN-EL-SD-SB-70 FF, PG-T-EN-EL-SD-SB-80 FF, PG-T-EN-LS-SD-SB-20 FF, PG-T-EN-LS-SD-SB-30 FF, PG-T-EN-LS-SD-SB-70 FF, PG-T-EN-LS-SD-SB-80 FF, PG-T-EN-ME-SD-SB-40 FF, PG-T-EN-ME-SD-SB-80 FF, PG-T-EN-ME-SD-SB-90 FF, PG-T-EN-ST-SD-SB-100 FF, PG-T-EN-ST-SD-SB-120 FF, PG-T-EN-ST-SD-SB-40 FF, PG-T-EN-ST-SD-SB-60 FF, PG-T-EN-ST-SD-SB-80 FF, PG-T-GEN-10 FF, PG-T-GEN-20 FF, PG-T-GEN-30 FF, PG-T-GEN-40 FF, PG-T-MOB-CAM-30 FF, PG-T-MOB-CAM-40 FF, PG-T-MOB-SO-30 FF, PG-T-MOB-SO-50 FF, PG-T-PR-LL-EL-MS-10_R FF, PG-T-PR-LL-EL-MS-20_R FF, PG-T-PR-LL-EL-MS-30_R FF, PG-T-PR-LL-EL-MS-40_R FF, PG-T-PR-LL-EL-MS-60_R FF, PG-T-PR-LL-EL-MS-70_R FF, PG-T-PR-LL-EL-MS-80_R FF, PG-T-PR-LL-IR-MS-10 FF, PG-T-PR-LL-IR-MS-20 FF, PG-T-PR-LL-LS-MS-10 FF, PG-T-PR-LL-LS-MS-20 FF, PG-T-PR-LL-MT-MS-10 FF, PG-T-PR-LL-MT-MS-20 FF, PG-T-PR-LL-PB-MS-20 FF, PG-T-PR-LL-SP-MS-20 FF, PG-T-PR-LL-SP-MS-40 FF, PG-Q-PR-LL-LS-MS-10 FF, PG-Q-PR-LL-LS-MS-30, PG-Q-PR-LL-SP-MS-50_R, PG-Q-PR-LL-SP-MS-20, PG-Q-PR-LL-SP-MS-10, PG-Q-PR-LL-SP-MS-30, PG-Q-PR-LL-SP-MS-40 FF, PG-Q-PR-LL-CO-MS-10, PG-Q-PR-LL-MT-MS-20, PG-Q-PR-LL-MT-MS-10, PG-Q-PR-LL-PB-MS-10, PG-Q-PR-LL-PB-MS-20, PG-Q-PR-LL-IR-MS-10, PG-Q-PR-LL-IR-MS-20 FF, PG-Q-PR-LL-EL-MS-80 FF, PG-Q-PR-LL-EL-MS-50, PG-Q-PR-LL-EL-MS-40, PG-Q-PR-LL-EL-MS-10, PG-Q-PR-LL-EL-MS-20, PG-Q-PR-LL-EL-MS-70, PG-Q-PR-LL-EL-MS-30, PG-Q-PR-LL-EL-MS-60, PG-Q-PR-SL-LS-MS-10, PG-Q-PR-SL-LS-MS-30, PG-Q-PR-SL-LS-MS-40, PG-Q-PR-SL-LS-MS-20, PG-Q-PR-SL-LS-MS-80, PG-Q-PR-SL-LS-MS-60, PG-Q-PR-SL-LS-MS-70, PG-Q-PR-SL-CO-MS-40, PG-Q-PR-SL-CO-MS-20, PG-Q-PR-SL-CO-MS-50, PG-Q-PR-SL-CO-MS-10, PG-Q-PR-SL-AR-MS-50, PG-Q-PR-SL-AR-MS-70, PG-Q-PR-SL-AR-MS-20, PG-Q-PR-SL-AR-MS-40, PG-Q-PR-SL-AR-MS-10, PG-Q-PR-SL-AR-MS-30, PG-Q-PR-SL-AR-MS-90, PG-Q-PR-SL-AR-MS-100, PG-Q-PR-SL-AR-MS-80, PG-Q-PR-SL-AR-MS-110, PG-Q-PR-SL-AR-MS-60, PG-Q-PR-SL-AR-MS-120, PG-Q-PR-SL-MT-MS-10, PG-Q-PR-SL-MT-MS-20, PG-Q-PR-SL-AC-MS-20, PG-Q-PR-SL-AC-MS-30, PG-Q-PR-SL-AC-MS-40, PG-Q-PR-SL-AC-MS-10, PG-Q-PR-SL-PB-MS-10, PG-Q-PR-SL-PB-MS-30, PG-Q-PR-SL-PB-MS-20, PG-Q-PR-SL-IR-MS-20, PG-Q-PR-SL-IR-MS-10, PG-Q-PR-SL-EL-MS-10, PG-Q-PR-SL-FF-MS-10, PG-Q-EN-ME-SD-SB-70 FF, PG-Q-PR-SL-LS-MS-50 FF, PG-Q-PR-SL-MT-MS-30 FF | 100% |  |  |  |  |  |  |  |
| PG-IN-MS-30 |  | Completion of Toilet Building | milestone | 0d | 2026-11-22 | 2026-11-22 | PG-Q-CON-B-AR-RF-30, PG-Q-CON-B-AR-WF-50 FF, PG-Q-CON-B-AR-GF-80 FF, PG-Q-CON-B-AR-WF-60 FF, PG-Q-CON-B-GF-FF-10 FF, PG-H-CON-B-AR-GF-80 FF, PG-H-CON-B-AR-RF-30 FF, PG-H-CON-B-AR-WF-50 FF, PG-H-CON-B-AR-WF-60 FF, PG-H-CON-B-GF-FF-10 FF, PG-T-CON-B-AR-GF-80 FF, PG-T-CON-B-AR-RF-30 FF, PG-T-CON-B-AR-WF-50 FF, PG-T-CON-B-AR-WF-60 FF, PG-T-CON-B-GF-FF-10 FF, PG-T-CON-B-GF-AC-20 FF |  |  |  |  | -0.05d | 22d |  |  |
| PG-IN-MS-50 |  | Completion of Playground Works | milestone | 0d | 2026-12-09 | 2026-12-09 | PG-Q-CON-EX-BB-100, PG-Q-CON-EX-PD-80, PG-Q-CON-EX-FB-100 FF, PG-H-CON-EX-FB-100 FF, PG-T-CON-EX-BB-100 FF, PG-T-CON-EX-FB-100 FF, PG-T-CON-EX-PD-80 FF |  |  |  |  | 6.3d | 47.7d |  |  |
| PG-IN-MS-40 |  | Completion of Landscape Works | milestone | 0d | 2027-01-24 | 2027-01-24 | PG-Q-CON-EX-GN-SC-40, PG-Q-CON-EX-GN-SC-30 FF, PG-Q-CON-EX-LS-HS-60 FF, PG-Q-CON-EX-LS-SS-20_R FF, PG-H-CON-EX-GN-SC-30 FF, PG-H-CON-EX-GN-SC-40 FF, PG-H-CON-EX-LS-HS-60 FF, PG-H-CON-EX-LS-SS-20_R FF, PG-T-CON-EX-GN-SC-30 FF, PG-T-CON-EX-GN-SC-40 FF, PG-T-CON-EX-LS-HS-60 FF, PG-T-CON-EX-LS-SS-20_R FF |  |  |  |  | -32.65d | 8.75d |  |  |
| PG-IN-MS-60 |  | Substantial Completion - All Works | milestone | 0d | 2027-02-03 | 2027-02-03 | PG-Q-PCL-60, PG-H-PCL-60 FF, PG-T-PCL-60 FF |  |  |  |  | -41.4d | 0d |  |  |
|  | QASSIM | **QASSIM** |  |  | 2026-02-17 | 2027-01-24 |  |  |  |  |  |  |  |  |  |
|  | MOB | **MOBILIZATION** |  |  | 2026-02-17 | 2026-03-28 |  |  |  |  |  |  |  |  |  |
|  | CAM | **TEMPORARY CAMP** |  |  | 2026-02-17 | 2026-03-27 |  |  |  |  |  |  |  |  |  |
| PG-Q-MOB-CAM-10 |  | Temporary Underground Utilities works |  | 28.12d | 2026-02-17 A | 2026-03-27 A | PG-GN-MS-10 SS | 100% |  | 2026-02-17 | 2026-03-28 |  |  |  | Q |
| PG-Q-MOB-CAM-20 |  | Temporary Porta-Cabins |  | 21.12d | 2026-02-26 A | 2026-03-27 A | PG-Q-MOB-CAM-10 | 100% |  | 2026-02-26 | 2026-03-28 |  |  |  | Q |
| PG-Q-MOB-CAM-30 |  | Temporary Toilets |  | 21.12d | 2026-02-26 A | 2026-03-27 A | PG-Q-MOB-CAM-10 | 100% |  | 2026-02-26 | 2026-03-28 |  |  |  | Q |
| PG-Q-MOB-CAM-40 |  | Temporary Mosque |  | 13.12d | 2026-03-08 A | 2026-03-27 A | PG-Q-MOB-CAM-20, PG-Q-MOB-CAM-30 | 100% |  | 2026-03-08 | 2026-03-28 |  |  |  | Q |
|  | OF | **SITE OFFICES** |  |  | 2026-02-17 | 2026-03-28 |  |  |  |  |  |  |  |  |  |
| PG-Q-MOB-SO-10 |  | Temporary Underground Utilities works |  | 29.25d | 2026-02-17 A | 2026-03-28 A | PG-GN-MS-10 SS | 100% |  | 2026-02-17 | 2026-03-29 |  |  |  | Q |
| PG-Q-MOB-SO-20 |  | Temporary Porta-Cabins |  | 22.25d | 2026-02-26 A | 2026-03-28 A | PG-Q-MOB-SO-10 | 100% |  | 2026-02-26 | 2026-03-29 |  |  |  | Q |
| PG-Q-MOB-SO-30 |  | Temporary Toilets |  | 22.25d | 2026-02-26 A | 2026-03-28 A | PG-Q-MOB-SO-10 | 100% |  | 2026-02-26 | 2026-03-29 |  |  |  | Q |
| PG-Q-MOB-SO-40 |  | Temporary Mosque |  | 16.25d | 2026-03-05 A | 2026-03-28 A | PG-Q-MOB-SO-20, PG-Q-MOB-SO-30 | 100% |  | 2026-03-05 | 2026-03-29 |  |  |  | Q |
| PG-Q-MOB-SO-50 |  | Car Parking Area |  | 10.25d | 2026-03-12 A | 2026-03-28 A | PG-Q-MOB-SO-40, PG-Q-GEN-20, PG-Q-GEN-30, PG-Q-GEN-40 | 100% |  | 2026-03-12 | 2026-03-29 |  |  |  | Q |

| ID | WBS | Activity | Duration | Start | Finish | Predecessors | Complete | Planned start | Planned finish | H,Q,T-Location | Air Dome |
| --- | --- | --- | --- | --- | --- | --- | --- | --- | --- | --- | --- |
|  | GE.REQ | **GENERAL REQUIEREMENTS** |  | 2026-02-17 | 2026-04-29 |  |  |  |  |  |  |
| PG-Q-GEN-20 |  | HSSE Submission Plan | 57.25d | 2026-02-17 A | 2026-04-29 A | PG-GN-MS-10 SS | 100% | 2026-02-17 | 2026-04-30 | Q |  |
| PG-Q-GEN-30 |  | Surveying report Submission Plan | 57.25d | 2026-02-17 A | 2026-04-29 A | PG-GN-MS-10 SS | 100% | 2026-02-17 | 2026-04-30 | Q |  |
| PG-Q-GEN-40 |  | Baseline Submission | 6.25d | 2026-02-28 A | 2026-03-05 A | PG-GN-MS-10 SS | 100% | 2026-02-28 | 2026-03-07 | Q |  |
| PG-Q-GEN-10 |  | QA/QC Submission Plan | 15.62d | 2026-03-12 A | 2026-04-04 A | PG-GN-MS-10 SS, PG-Q-GEN-30 | 100% |  |  | Q |  |
|  | ENG | **ENGINEERING** |  | 2026-02-17 | 2026-10-04 |  |  |  |  |  |  |
|  | 1 | **SHOP DRAWINGS SUBMITTALS** |  | 2026-02-17 | 2026-10-04 |  |  |  |  |  |  |
|  | 1 | **STRUCTURAL DRAWINGS** |  | 2026-02-17 | 2026-07-11 |  |  |  |  |  |  |
|  | 1 | **PROJECT FENCE** |  | 2026-04-29 | 2026-05-20 |  |  |  |  |  |  |
| PG-Q-EN-ST-SD-SB-10 |  | Excavation Drawings | 19.25d | 2026-04-29 A | 2026-05-20 A | PG-GN-MS-10 SS | 100% | 2026-04-29 | 2026-05-21 | Q |  |
| PG-Q-EN-ST-SD-SB-20 |  | Foundation Drawings | 19.25d | 2026-04-29 A | 2026-05-20 A | PG-Q-EN-ST-SD-SB-10, PG-Q-EN-ST-SD-SB-10 SS | 100% | 2026-04-29 | 2026-05-21 | Q |  |
|  | 2 | **PADEL PLAYGROUND FENCE** |  | 2026-04-29 | 2026-05-20 |  |  |  |  |  |  |
| PG-Q-EN-ST-SD-SB-30 |  | Excavation Drawings | 19.25d | 2026-04-29 A | 2026-05-20 A | PG-Q-EN-ST-SD-SB-10, PG-Q-EN-ST-SD-SB-10 SS | 100% | 2026-04-29 | 2026-05-21 | Q |  |
| PG-Q-EN-ST-SD-SB-40 |  | Foundation Drawings | 19.25d | 2026-04-29 A | 2026-05-20 A | PG-Q-EN-ST-SD-SB-30, PG-Q-EN-ST-SD-SB-30 SS | 100% | 2026-04-29 | 2026-05-21 | Q |  |
|  | 3 | **AIR DOME** |  | 2026-07-01 | 2026-07-11 |  |  |  |  |  |  |
| PG-Q-EN-ST-SD-SB-50 |  | Excavation Drawings | 8d | 2026-07-01 A | 2026-07-02 A | PG-Q-EN-ST-SD-SB-30, PG-Q-EN-ST-SD-SB-30 SS | 100% | 2026-07-12 | 2026-07-20 | Q | A.D |
| PG-Q-EN-ST-SD-SB-60 |  | Foundation Drawings | 10d | 2026-07-07 A | 2026-07-11 A | PG-Q-EN-ST-SD-SB-50 SS | 100% | 2026-07-12 | 2026-07-22 | Q | A.D |
|  | 4 | **TOILET BUILDING** |  | 2026-02-17 | 2026-04-13 |  |  |  |  |  |  |
| PG-Q-EN-ST-SD-SB-70 |  | Excavation Drawings | 43.25d | 2026-02-17 A | 2026-04-13 A | PG-Q-EN-ST-SD-SB-10 SS | 100% | 2026-02-17 | 2026-04-14 | Q |  |
| PG-Q-EN-ST-SD-SB-80 |  | Foundation Drawings | 41.25d | 2026-02-19 A | 2026-04-13 A | PG-Q-EN-ST-SD-SB-70 | 100% | 2026-02-19 | 2026-04-14 | Q |  |
|  | 5 | **WATER STORAGE TANK** |  | 2026-02-19 | 2026-04-13 |  |  |  |  |  |  |
| PG-Q-EN-ST-SD-SB-90 |  | Excavation Drawings | 41.25d | 2026-02-19 A | 2026-04-13 A | PG-Q-EN-ST-SD-SB-70 | 100% | 2026-02-19 | 2026-04-14 | Q |  |
| PG-Q-EN-ST-SD-SB-100 |  | Foundation Drawings | 39.25d | 2026-02-23 A | 2026-04-13 A | PG-Q-EN-ST-SD-SB-90 | 100% | 2026-02-23 | 2026-04-14 | Q |  |
|  | 6 | **SEPTIC TANK** |  | 2026-04-28 | 2026-05-12 |  |  |  |  |  |  |
| PG-Q-EN-ST-SD-SB-110 |  | Reinforcement Detail Drawings | 13.25d | 2026-04-28 A | 2026-05-12 A | PG-Q-EN-ST-SD-SB-90 | 100% | 2026-04-28 | 2026-05-13 | Q |  |
| PG-Q-EN-ST-SD-SB-120 |  | Concrete Detail Drawings | 13.25d | 2026-04-28 A | 2026-05-12 A | PG-Q-EN-ST-SD-SB-110, PG-Q-EN-ST-SD-SB-110 SS | 100% | 2026-04-28 | 2026-05-13 | Q |  |

| ID | WBS | Activity | Duration | Start | Finish | Predecessors | Complete | Planned start | Planned finish | H,Q,T-Location | Air Dome |
| --- | --- | --- | --- | --- | --- | --- | --- | --- | --- | --- | --- |
|  | 2 | **ARCHITECTURAL DRAWINGS** |  | 2026-02-19 | 2026-09-10 |  |  |  |  |  |  |
|  | 1 | **TOILET BUILDING** |  | 2026-02-19 | 2026-04-15 |  |  |  |  |  |  |
| PG-Q-EN-AR-SD-SB-10 |  | Ground Floor Plan | 40.33d | 2026-02-19 A | 2026-04-13 A | PG-Q-EN-ST-SD-SB-70 | 100% |  |  | Q |  |
| PG-Q-EN-AR-SD-SB-20 |  | Roof Floor Plan | 37.25d | 2026-02-25 A | 2026-04-13 A | PG-Q-EN-AR-SD-SB-10 | 100% | 2026-02-25 | 2026-04-14 | Q |  |
| PG-Q-EN-AR-SD-SB-50 |  | Floor Finish Layout | 36.23d | 2026-02-25 A | 2026-04-13 A | PG-Q-EN-AR-SD-SB-10 | 100% |  |  | Q |  |
| PG-Q-EN-AR-SD-SB-60 |  | Reflected Ceiling Layout | 36.52d | 2026-02-25 A | 2026-04-13 A | PG-Q-EN-AR-SD-SB-10 | 100% |  |  | Q |  |
| PG-Q-EN-AR-SD-SB-70 |  | Enlarged Toilets Layout | 38.33d | 2026-02-25 A | 2026-04-15 A | PG-Q-EN-AR-SD-SB-10 | 100% |  |  | Q |  |
| PG-Q-EN-AR-SD-SB-100 |  | Cladding Details | 34.25d | 2026-03-01 A | 2026-04-13 A | PG-Q-EN-AR-SD-SB-50 | 100% | 2026-03-01 | 2026-04-14 | Q |  |
| PG-Q-EN-AR-SD-SB-30 |  | Elevations | 34.05d | 2026-03-01 A | 2026-04-13 A | PG-Q-EN-AR-SD-SB-20 | 100% | 2026-03-01 | 2026-04-14 | Q |  |
| PG-Q-EN-AR-SD-SB-80 |  | Doors & Windows Schedule | 35.23d | 2026-03-01 A | 2026-04-15 A | PG-Q-EN-AR-SD-SB-50 | 100% |  |  | Q |  |
| PG-Q-EN-AR-SD-SB-90 |  | Aluminum Work | 35.23d | 2026-03-01 A | 2026-04-15 A | PG-Q-EN-AR-SD-SB-50 | 100% |  |  | Q |  |
| PG-Q-EN-AR-SD-SB-40 |  | Sections | 31.52d | 2026-03-03 A | 2026-04-13 A | PG-Q-EN-AR-SD-SB-30 | 100% |  |  | Q |  |
|  | 2 | **AIR DOME** |  | 2026-08-14 | 2026-09-10 |  |  |  |  |  |  |
| PG-Q-EN-AR-SD-SB-110 |  | Membrane & Insulation Details | 15d | 2026-08-14 A | 2026-09-10 A | PG-Q-EN-ST-SD-SB-60 | 100% | 2026-08-16 | 2026-09-01 | Q | A.D |
| PG-Q-EN-AR-SD-SB-120 |  | Steel Cable System | 15d | 2026-08-14 A | 2026-09-10 A | PG-Q-EN-AR-SD-SB-110 SS | 100% | 2026-08-16 | 2026-09-01 | Q | A.D |
| PG-Q-EN-AR-SD-SB-130 |  | Doors & Access Sytem Drawings | 15d | 2026-08-14 A | 2026-09-10 A | PG-Q-EN-AR-SD-SB-120 SS | 100% | 2026-08-16 | 2026-09-01 | Q | A.D |
|  | 3 | **LANDSCAPE DRAWINGS** |  | 2026-02-23 | 2026-04-13 |  |  |  |  |  |  |
| PG-Q-EN-LS-SD-SB-10 |  | Hardscape Layout Plan | 36.25d | 2026-02-23 A | 2026-04-09 A | PG-Q-EN-ST-SD-SB-20, PG-Q-EN-ST-SD-SB-20 SS | 100% | 2026-02-23 | 2026-04-11 | Q |  |
| PG-Q-EN-LS-SD-SB-100 |  | Padel Playground Layout | 39.25d | 2026-02-23 A | 2026-04-13 A | PG-Q-EN-ST-SD-SB-20, PG-Q-EN-ST-SD-SB-20 SS | 100% | 2026-02-23 | 2026-04-14 | Q |  |
| PG-Q-EN-LS-SD-SB-110 |  | Basketball Playground Layout | 39.25d | 2026-02-23 A | 2026-04-13 A | PG-Q-EN-ST-SD-SB-20, PG-Q-EN-ST-SD-SB-20 SS | 100% | 2026-02-23 | 2026-04-14 | Q |  |
| PG-Q-EN-LS-SD-SB-120 |  | Playground Details | 39.25d | 2026-02-23 A | 2026-04-13 A | PG-Q-EN-ST-SD-SB-20, PG-Q-EN-ST-SD-SB-20 SS | 100% | 2026-02-23 | 2026-04-14 | Q |  |
| PG-Q-EN-LS-SD-SB-130 |  | Padel Fence Elevation & Details | 39.25d | 2026-02-23 A | 2026-04-13 A | PG-Q-EN-ST-SD-SB-20, PG-Q-EN-ST-SD-SB-20 SS | 100% | 2026-02-23 | 2026-04-14 | Q |  |
| PG-Q-EN-LS-SD-SB-20 |  | Interlock Tile Details | 36.25d | 2026-02-23 A | 2026-04-09 A | PG-Q-EN-ST-SD-SB-20, PG-Q-EN-ST-SD-SB-20 SS | 100% | 2026-02-23 | 2026-04-11 | Q |  |
| PG-Q-EN-LS-SD-SB-30 |  | Stamped Concrete Pattern & Section | 36.25d | 2026-02-23 A | 2026-04-09 A | PG-Q-EN-ST-SD-SB-20, PG-Q-EN-ST-SD-SB-20 SS | 100% | 2026-02-23 | 2026-04-11 | Q |  |
| PG-Q-EN-LS-SD-SB-40 |  | Tartan Flooring Layout & Details | 36.25d | 2026-02-23 A | 2026-04-09 A | PG-Q-EN-ST-SD-SB-20, PG-Q-EN-ST-SD-SB-20 SS | 100% | 2026-02-23 | 2026-04-11 | Q |  |
| PG-Q-EN-LS-SD-SB-50 |  | Bike Path Layout & Details | 36.25d | 2026-02-23 A | 2026-04-09 A | PG-Q-EN-ST-SD-SB-20, PG-Q-EN-ST-SD-SB-20 SS | 100% | 2026-02-23 | 2026-04-11 | Q |  |
| PG-Q-EN-LS-SD-SB-60 |  | Walking Path layout & Details | 36.25d | 2026-02-23 A | 2026-04-09 A | PG-Q-EN-ST-SD-SB-20, PG-Q-EN-ST-SD-SB-20 SS | 100% | 2026-02-23 | 2026-04-11 | Q |  |
| PG-Q-EN-LS-SD-SB-70 |  | Tree Planting Plan & Details | 39.25d | 2026-02-23 A | 2026-04-13 A | PG-Q-EN-ST-SD-SB-20, PG-Q-EN-ST-SD-SB-20 SS | 100% | 2026-02-23 | 2026-04-14 | Q |  |
| PG-Q-EN-LS-SD-SB-80 |  | Traffic Sign Location & Details | 39.25d | 2026-02-23 A | 2026-04-13 A | PG-Q-EN-ST-SD-SB-20, PG-Q-EN-ST-SD-SB-20 SS | 100% | 2026-02-23 | 2026-04-14 | Q |  |
| PG-Q-EN-LS-SD-SB-90 |  | Football Playground Layout | 39.25d | 2026-02-23 A | 2026-04-13 A | PG-Q-EN-ST-SD-SB-20, PG-Q-EN-ST-SD-SB-20 SS | 100% | 2026-02-23 | 2026-04-14 | Q |  |

| ID | WBS | Activity | Duration | Start | Finish | Predecessors | Complete | Remaining | Planned start | Planned finish | Total float | Free float | H,Q,T-Location | Air Dome |
| --- | --- | --- | --- | --- | --- | --- | --- | --- | --- | --- | --- | --- | --- | --- |
|  | 4 | **MECHANICAL DRAWINGS** |  | 2026-02-28 | 2026-10-04 |  |  |  |  |  |  |  |  |  |
|  | 1 | **WATER SUPPLY SYSTEM** |  | 2026-02-28 | 2026-04-09 |  |  |  |  |  |  |  |  |  |
| PG-Q-EN-ME-SD-SB-20 |  | Pump Room Layout | 32.25d | 2026-02-28 A | 2026-04-09 A | PG-Q-EN-LS-SD-SB-10 | 100% |  | 2026-02-28 | 2026-04-11 |  |  | Q |  |
| PG-Q-EN-ME-SD-SB-10 |  | Cold & Hot Water Piping Layout | 28.25d | 2026-03-04 A | 2026-04-09 A | PG-Q-EN-ME-SD-SB-20 | 100% |  | 2026-03-04 | 2026-04-11 |  |  | Q |  |
| PG-Q-EN-ME-SD-SB-30 |  | Booster Pump Details | 28.25d | 2026-03-04 A | 2026-04-09 A | PG-Q-EN-ME-SD-SB-20 | 100% |  | 2026-03-04 | 2026-04-11 |  |  | Q |  |
| PG-Q-EN-ME-SD-SB-40 |  | GRP Water Tank Details | 24.25d | 2026-03-09 A | 2026-04-09 A | PG-Q-EN-ME-SD-SB-10, PG-Q-EN-ME-SD-SB-20 | 100% |  | 2026-03-09 | 2026-04-11 |  |  | Q |  |
|  | 2 | **SEWER AND DRAINAGE SYSTEM** |  | 2026-03-04 | 2026-04-09 |  |  |  |  |  |  |  |  |  |
| PG-Q-EN-ME-SD-SB-50 |  | Drainage Layout | 28.25d | 2026-03-04 A | 2026-04-09 A | PG-Q-EN-ME-SD-SB-20 | 100% |  | 2026-03-04 | 2026-04-11 |  |  | Q |  |
| PG-Q-EN-ME-SD-SB-60 |  | Floor Drains & Cleanouts Details | 24.25d | 2026-03-09 A | 2026-04-09 A | PG-Q-EN-ME-SD-SB-50 | 100% |  | 2026-03-09 | 2026-04-11 |  |  | Q |  |
| PG-Q-EN-ME-SD-SB-70 |  | Inspection Chamber Details | 21.25d | 2026-03-12 A | 2026-04-09 A | PG-Q-EN-ME-SD-SB-60 | 100% |  | 2026-03-12 | 2026-04-11 |  |  | Q |  |
|  | 3 | **IRRIGATION SYSTEM** |  | 2026-03-09 | 2026-04-09 |  |  |  |  |  |  |  |  |  |
| PG-Q-EN-ME-SD-SB-80 |  | HDPE Pipe Routing | 24.25d | 2026-03-09 A | 2026-04-09 A | PG-Q-EN-ME-SD-SB-50 | 100% |  | 2026-03-09 | 2026-04-11 |  |  | Q |  |
| PG-Q-EN-ME-SD-SB-90 |  | Irrigation Network Layout | 21.25d | 2026-03-12 A | 2026-04-09 A | PG-Q-EN-ME-SD-SB-80 | 100% |  | 2026-03-12 | 2026-04-11 |  |  | Q |  |
|  | 4 | **AIR DOME** |  | 2026-07-30 | 2026-10-04 |  |  |  |  |  |  |  |  |  |
| PG-Q-EN-ME-SD-SB-100 |  | Air Package and HVAC System Drawings | 18d | 2026-07-30 A | 2026-10-04 | PG-Q-EN-ME-SD-SB-20 | 90% | 1.8d | 2026-08-02 | 2026-08-22 | -32.8d | 0d | Q | A.D |
|  | 5 | **ELECTRICAL DRAWINGS** |  | 2026-05-11 | 2026-10-04 |  |  |  |  |  |  |  |  |  |
|  | 1 | **POWER AND LIGHTING SYSTEM** |  | 2026-05-11 | 2026-06-15 |  |  |  |  |  |  |  |  |  |
| PG-Q-EN-EL-SD-SB-10 |  | Main Distribution Board (MDB) Layout | 27.25d | 2026-05-11 A | 2026-06-15 A | PG-Q-EN-ME-SD-SB-20 | 100% |  | 2026-05-11 | 2026-06-16 |  |  | Q |  |
| PG-Q-EN-EL-SD-SB-20 |  | Pump Room Power Panel | 27.25d | 2026-05-11 A | 2026-06-15 A | PG-Q-EN-EL-SD-SB-10, PG-Q-EN-EL-SD-SB-10 SS | 100% |  | 2026-05-11 | 2026-06-16 |  |  | Q |  |
| PG-Q-EN-EL-SD-SB-30 |  | Street Lighting Power Panel | 27.25d | 2026-05-11 A | 2026-06-15 A | PG-Q-EN-EL-SD-SB-10, PG-Q-EN-EL-SD-SB-10 SS | 100% |  | 2026-05-11 | 2026-06-16 |  |  | Q |  |
| PG-Q-EN-EL-SD-SB-40 |  | Site Lighting Pole Layout | 27.25d | 2026-05-11 A | 2026-06-15 A | PG-Q-EN-EL-SD-SB-30, PG-Q-EN-EL-SD-SB-30 SS | 100% |  | 2026-05-11 | 2026-06-16 |  |  | Q |  |
|  | 2 | **ELV SYSTEM** |  | 2026-05-11 | 2026-06-15 |  |  |  |  |  |  |  |  |  |
| PG-Q-EN-EL-SD-SB-50 |  | Telecom & Data Layout | 27.25d | 2026-05-11 A | 2026-06-15 A | PG-Q-EN-ME-SD-SB-20 | 100% |  | 2026-05-11 | 2026-06-16 |  |  | Q |  |
| PG-Q-EN-EL-SD-SB-60 |  | CCTV Camera Layout | 27.25d | 2026-05-11 A | 2026-06-15 A | PG-Q-EN-EL-SD-SB-50, PG-Q-EN-EL-SD-SB-50 SS | 100% |  | 2026-05-11 | 2026-06-16 |  |  | Q |  |
| PG-Q-EN-EL-SD-SB-70 |  | Access Control Layout | 27.25d | 2026-05-11 A | 2026-06-15 A | PG-Q-EN-EL-SD-SB-60, PG-Q-EN-EL-SD-SB-60 SS | 100% |  | 2026-05-11 | 2026-06-16 |  |  | Q |  |
| PG-Q-EN-EL-SD-SB-80 |  | AV System Layout | 27.25d | 2026-05-11 A | 2026-06-15 A | PG-Q-EN-EL-SD-SB-50, PG-Q-EN-EL-SD-SB-50 SS | 100% |  | 2026-05-11 | 2026-06-16 |  |  | Q |  |

| ID | WBS | Activity | Duration | Start | Finish | Predecessors | Complete | Remaining | Planned start | Planned finish | Total float | Free float | H,Q,T-Location | Air Dome |
| --- | --- | --- | --- | --- | --- | --- | --- | --- | --- | --- | --- | --- | --- | --- |
|  | 3 | **FIRE ALARM SYSTEM** |  | 2026-05-11 | 2026-06-15 |  |  |  |  |  |  |  |  |  |
| PG-Q-EN-EL-SD-SB-100 |  | Detector & Manual Call Point Details | 27.25d | 2026-05-11 A | 2026-06-15 A | PG-Q-EN-EL-SD-SB-90, PG-Q-EN-EL-SD-SB-90 SS | 100% |  | 2026-05-11 | 2026-06-16 |  |  | Q |  |
| PG-Q-EN-EL-SD-SB-110 |  | Control Panel Wiring Diagram | 27.25d | 2026-05-11 A | 2026-06-15 A | PG-Q-EN-EL-SD-SB-100, PG-Q-EN-EL-SD-SB-100 SS | 100% |  | 2026-05-11 | 2026-06-16 |  |  | Q |  |
| PG-Q-EN-EL-SD-SB-90 |  | Fire Alarm Layout | 27.25d | 2026-05-11 A | 2026-06-15 A | PG-Q-EN-ME-SD-SB-20 | 100% |  | 2026-05-11 | 2026-06-16 |  |  | Q |  |
|  | 4 | **AIR DOME** |  | 2026-07-30 | 2026-10-04 |  |  |  |  |  |  |  |  |  |
| PG-Q-EN-EL-SD-SB-120 |  | Power & Lighting System Drawings | 10d | 2026-07-30 A | 2026-10-03 | PG-Q-EN-EL-SD-SB-90, PG-Q-EN-ME-SD-SB-100 SS | 90% | 1d | 2026-08-23 | 2026-09-02 | -32d | 0d | Q | A.D |
| PG-Q-EN-EL-SD-SB-130 |  | Generators Details | 15d | 2026-07-30 A | 2026-10-04 | PG-Q-EN-ME-SD-SB-100 SS | 90% | 1.5d | 2026-08-23 | 2026-09-08 | -32.5d | 0d | Q | A.D |
| PG-Q-EN-EL-SD-SB-140 |  | Smart Dome System Drawings | 17d | 2026-07-30 A | 2026-10-04 | PG-Q-EN-ME-SD-SB-100 SS | 90% | 1.7d | 2026-08-23 | 2026-09-10 | -32.7d | 0d | Q | A.D |
|  | 2 | **SHOP DRAWINGS APPROVALS** |  | 2026-02-19 | 2026-09-21 |  |  |  |  |  |  |  |  |  |
|  | 1 | **STRUCTURAL DRAWINGS** |  | 2026-02-19 | 2026-07-12 |  |  |  |  |  |  |  |  |  |
|  | 1 | **PROJECT FENCE** |  | 2026-05-13 | 2026-05-20 |  |  |  |  |  |  |  |  |  |
| PG-Q-EN-ST-SD-AP-10 |  | Excavation Drawings | 7.25d | 2026-05-13 A | 2026-05-20 A | PG-Q-EN-ST-SD-SB-10, PG-Q-EN-ST-SD-SB-10 SS | 100% |  | 2026-05-13 | 2026-05-21 |  |  | Q |  |
| PG-Q-EN-ST-SD-AP-20 |  | Foundation Drawings | 7.25d | 2026-05-13 A | 2026-05-20 A | PG-Q-EN-ST-SD-SB-20, PG-Q-EN-ST-SD-AP-10, PG-Q-EN-ST-SD-SB-20 SS, PG-Q-EN-ST-SD-AP-10 SS | 100% |  | 2026-05-13 | 2026-05-21 |  |  | Q |  |
|  | 2 | **PADEL PLAYGROUND FENCE** |  | 2026-05-11 | 2026-05-20 |  |  |  |  |  |  |  |  |  |
| PG-Q-EN-ST-SD-AP-30 |  | Excavation Drawings | 9.25d | 2026-05-11 A | 2026-05-20 A | PG-Q-EN-ST-SD-SB-30 | 100% |  | 2026-05-11 | 2026-05-21 |  |  | Q |  |
| PG-Q-EN-ST-SD-AP-40 |  | Foundation Drawings | 9.25d | 2026-05-11 A | 2026-05-20 A | PG-Q-EN-ST-SD-SB-40, PG-Q-EN-ST-SD-AP-30 | 100% |  | 2026-05-11 | 2026-05-21 |  |  | Q |  |
|  | 3 | **AIR DOME** |  | 2026-07-06 | 2026-07-12 |  |  |  |  |  |  |  |  |  |
| PG-Q-EN-ST-SD-AP-50 |  | Excavation Drawings | 4d | 2026-07-06 A | 2026-07-07 A | PG-Q-EN-ST-SD-SB-30, PG-Q-EN-ST-SD-SB-50 | 100% |  | 2026-07-21 | 2026-07-25 |  |  | Q | A.D |
| PG-Q-EN-ST-SD-AP-60 |  | Foundation Drawings | 7d | 2026-07-08 A | 2026-07-12 A | PG-Q-EN-ST-SD-SB-30, PG-Q-EN-ST-SD-SB-60 SS | 100% |  | 2026-07-23 | 2026-07-30 |  |  | Q | A.D |
|  | 4 | **TOILET BUILDING** |  | 2026-02-19 | 2026-04-16 |  |  |  |  |  |  |  |  |  |
| PG-Q-EN-ST-SD-AP-70 |  | Excavation Drawings | 44.25d | 2026-02-19 A | 2026-04-16 A | PG-Q-EN-ST-SD-SB-70 | 100% |  | 2026-02-19 | 2026-04-18 |  |  | Q |  |
| PG-Q-EN-ST-SD-AP-80 |  | Foundation Drawings | 36.25d | 2026-03-02 A | 2026-04-16 A | PG-Q-EN-ST-SD-SB-80, PG-Q-EN-ST-SD-AP-70 | 100% |  | 2026-03-02 | 2026-04-18 |  |  | Q |  |
|  | 5 | **WATER STORAGE TANK** |  | 2026-02-23 | 2026-04-16 |  |  |  |  |  |  |  |  |  |
| PG-Q-EN-ST-SD-AP-90 |  | Excavation Drawings | 42.25d | 2026-02-23 A | 2026-04-16 A | PG-Q-EN-ST-SD-SB-90 | 100% |  | 2026-02-23 | 2026-04-18 |  |  | Q |  |
| PG-Q-EN-ST-SD-AP-100 |  | Foundation Drawings | 34.25d | 2026-03-04 A | 2026-04-16 A | PG-Q-EN-ST-SD-SB-100, PG-Q-EN-ST-SD-AP-90 | 100% |  | 2026-03-04 | 2026-04-18 |  |  | Q |  |

| ID | WBS | Activity | Duration | Start | Finish | Predecessors | Complete | Planned start | Planned finish | H,Q,T-Location | Air Dome |
| --- | --- | --- | --- | --- | --- | --- | --- | --- | --- | --- | --- |
|  | 6 | **SEPTIC TANK** |  | 2026-05-11 | 2026-05-13 |  |  |  |  |  |  |
| PG-Q-EN-ST-SD-AP-110 |  | Reinforcement Detail Drawings | 3.25d | 2026-05-11 A | 2026-05-13 A | PG-Q-EN-ST-SD-SB-110 | 100% | 2026-05-11 | 2026-05-14 | Q |  |
| PG-Q-EN-ST-SD-AP-120 |  | Concrete Detail Drawings | 3.25d | 2026-05-11 A | 2026-05-13 A | PG-Q-EN-ST-SD-SB-120, PG-Q-EN-ST-SD-AP-110 | 100% | 2026-05-11 | 2026-05-14 | Q |  |
|  | 2 | **ARCHITECTURAL DRAWINGS** |  | 2026-02-25 | 2026-09-21 |  |  |  |  |  |  |
|  | 1 | **TOILET BUILDING** |  | 2026-02-25 | 2026-04-16 |  |  |  |  |  |  |
| PG-Q-EN-AR-SD-AP-10 |  | Ground Floor Plan | 40.25d | 2026-02-25 A | 2026-04-16 A | PG-Q-EN-AR-SD-SB-10 | 100% | 2026-02-25 | 2026-04-18 | Q |  |
| PG-Q-EN-AR-SD-AP-20 |  | Roof Floor Plan | 37.25d | 2026-03-01 A | 2026-04-16 A | PG-Q-EN-AR-SD-SB-20 | 100% | 2026-03-01 | 2026-04-18 | Q |  |
| PG-Q-EN-AR-SD-AP-50 |  | Floor Finish Layout | 35.25d | 2026-03-03 A | 2026-04-16 A | PG-Q-EN-AR-SD-SB-50, PG-Q-EN-AR-SD-AP-10 | 100% | 2026-03-03 | 2026-04-18 | Q |  |
| PG-Q-EN-AR-SD-AP-60 |  | Reflected Ceiling Layout | 35.25d | 2026-03-03 A | 2026-04-16 A | PG-Q-EN-AR-SD-SB-60, PG-Q-EN-AR-SD-AP-10 | 100% | 2026-03-03 | 2026-04-18 | Q |  |
| PG-Q-EN-AR-SD-AP-70 |  | Enlarged Toilets Layout | 35.25d | 2026-03-03 A | 2026-04-16 A | PG-Q-EN-AR-SD-SB-70, PG-Q-EN-AR-SD-AP-10 | 100% | 2026-03-03 | 2026-04-18 | Q |  |
| PG-Q-EN-AR-SD-AP-30 |  | Elevations | 34.25d | 2026-03-04 A | 2026-04-16 A | PG-Q-EN-AR-SD-SB-30, PG-Q-EN-AR-SD-AP-20 | 100% | 2026-03-04 | 2026-04-18 | Q |  |
| PG-Q-EN-AR-SD-AP-80 |  | Doors & Windows Schedule | 34.25d | 2026-03-04 A | 2026-04-16 A | PG-Q-EN-AR-SD-SB-80 | 100% | 2026-03-04 | 2026-04-18 | Q |  |
| PG-Q-EN-AR-SD-AP-100 |  | Cladding Details | 33.25d | 2026-03-05 A | 2026-04-16 A | PG-Q-EN-AR-SD-SB-100 | 100% | 2026-03-05 | 2026-04-18 | Q |  |
| PG-Q-EN-AR-SD-AP-90 |  | Aluminum Work | 33.25d | 2026-03-05 A | 2026-04-16 A | PG-Q-EN-AR-SD-SB-90 | 100% | 2026-03-05 | 2026-04-18 | Q |  |
| PG-Q-EN-AR-SD-AP-40 |  | Sections | 31.25d | 2026-03-08 A | 2026-04-16 A | PG-Q-EN-AR-SD-SB-40, PG-Q-EN-AR-SD-AP-30 | 100% | 2026-03-08 | 2026-04-18 | Q |  |
|  | 2 | **AIR DOME** |  | 2026-08-20 | 2026-09-21 |  |  |  |  |  |  |
| PG-Q-EN-AR-SD-AP-110 |  | Membrane & Insulation Details | 7d | 2026-08-20 A | 2026-09-21 A | PG-Q-EN-AR-SD-SB-110, PG-Q-EN-AR-SD-SB-110 SS | 100% | 2026-09-07 | 2026-09-15 | Q | A.D |
| PG-Q-EN-AR-SD-AP-120 |  | Steel Cable System | 7d | 2026-08-20 A | 2026-09-21 A | PG-Q-EN-AR-SD-SB-120, PG-Q-EN-AR-SD-SB-120 SS | 100% | 2026-09-07 | 2026-09-15 | Q | A.D |
| PG-Q-EN-AR-SD-AP-130 |  | Doors & Access Sytem Drawings | 7d | 2026-08-20 A | 2026-09-21 A | PG-Q-EN-AR-SD-SB-130, PG-Q-EN-AR-SD-SB-130 SS | 100% | 2026-09-07 | 2026-09-15 | Q | A.D |
|  | 3 | **LANDSCAPE DRAWINGS** |  | 2026-02-26 | 2026-04-16 |  |  |  |  |  |  |
| PG-Q-EN-LS-SD-AP-130 |  | Padel Fence Elevation & Details | 39.25d | 2026-02-26 A | 2026-04-16 A | PG-Q-EN-LS-SD-SB-130 | 100% | 2026-02-26 | 2026-04-18 | Q |  |
| PG-Q-EN-LS-SD-AP-50 |  | Bike Path Layout & Details | 39.25d | 2026-02-26 A | 2026-04-16 A | PG-Q-EN-LS-SD-SB-50 | 100% | 2026-02-26 | 2026-04-18 | Q |  |
| PG-Q-EN-LS-SD-AP-60 |  | Walking Path layout & Details | 39.25d | 2026-02-26 A | 2026-04-16 A | PG-Q-EN-LS-SD-SB-60 | 100% | 2026-02-26 | 2026-04-18 | Q |  |
| PG-Q-EN-LS-SD-AP-80 |  | Traffic Sign Location & Details | 39.25d | 2026-02-26 A | 2026-04-16 A | PG-Q-EN-LS-SD-SB-80 | 100% | 2026-02-26 | 2026-04-18 | Q |  |
| PG-Q-EN-LS-SD-AP-10 |  | Hardscape Layout Plan | 38.25d | 2026-02-28 A | 2026-04-16 A | PG-Q-EN-LS-SD-SB-10 | 100% | 2026-02-28 | 2026-04-18 | Q |  |
| PG-Q-EN-LS-SD-AP-100 |  | Padel Playground Layout | 38.25d | 2026-02-28 A | 2026-04-16 A | PG-Q-EN-LS-SD-SB-100 | 100% | 2026-02-28 | 2026-04-18 | Q |  |
| PG-Q-EN-LS-SD-AP-110 |  | Basketball Playground Layout | 38.25d | 2026-02-28 A | 2026-04-16 A | PG-Q-EN-LS-SD-SB-110 | 100% | 2026-02-28 | 2026-04-18 | Q |  |
| PG-Q-EN-LS-SD-AP-120 |  | Playground Details | 38.25d | 2026-02-28 A | 2026-04-16 A | PG-Q-EN-LS-SD-SB-120 | 100% | 2026-02-28 | 2026-04-18 | Q |  |
| PG-Q-EN-LS-SD-AP-40 |  | Tartan Flooring Layout & Details | 38.25d | 2026-02-28 A | 2026-04-16 A | PG-Q-EN-LS-SD-SB-40 | 100% | 2026-02-28 | 2026-04-18 | Q |  |
| PG-Q-EN-LS-SD-AP-70 |  | Tree Planting Plan & Details | 38.25d | 2026-02-28 A | 2026-04-16 A | PG-Q-EN-LS-SD-SB-70 | 100% | 2026-02-28 | 2026-04-18 | Q |  |
| PG-Q-EN-LS-SD-AP-90 |  | Football Playground Layout | 38.25d | 2026-02-28 A | 2026-04-16 A | PG-Q-EN-LS-SD-SB-90 | 100% | 2026-02-28 | 2026-04-18 | Q |  |
| PG-Q-EN-LS-SD-AP-20 |  | Interlock Tile Details | 28.25d | 2026-03-11 A | 2026-04-16 A | PG-Q-EN-LS-SD-SB-20, PG-Q-EN-LS-SD-AP-10 | 100% | 2026-03-11 | 2026-04-18 | Q |  |
| PG-Q-EN-LS-SD-AP-30 |  | Stamped Concrete Pattern & Section | 18.25d | 2026-03-28 A | 2026-04-16 A | PG-Q-EN-LS-SD-SB-30, PG-Q-EN-LS-SD-AP-20 | 100% | 2026-03-28 | 2026-04-18 | Q |  |

| ID | WBS | Activity | Duration | Start | Finish | Predecessors | Complete | Planned start | Planned finish | H,Q,T-Location | Air Dome |
| --- | --- | --- | --- | --- | --- | --- | --- | --- | --- | --- | --- |
|  | 4 | **MECHANICAL DRAWINGS** |  | 2026-03-09 | 2026-09-21 |  |  |  |  |  |  |
|  | 1 | **WATER SUPPLY SYSTEM** |  | 2026-03-09 | 2026-04-13 |  |  |  |  |  |  |
| PG-Q-EN-ME-SD-AP-10 |  | Cold & Hot Water Piping Layout | 27.25d | 2026-03-09 A | 2026-04-13 A | PG-Q-EN-ME-SD-SB-10 | 100% | 2026-03-09 | 2026-04-14 | Q |  |
| PG-Q-EN-ME-SD-AP-30 |  | Booster Pump Details | 26.25d | 2026-03-10 A | 2026-04-13 A | PG-Q-EN-ME-SD-SB-30 | 100% | 2026-03-10 | 2026-04-14 | Q |  |
| PG-Q-EN-ME-SD-AP-40 |  | GRP Water Tank Details | 22.32d | 2026-03-14 A | 2026-04-13 A | PG-Q-EN-ME-SD-SB-40 | 100% |  |  | Q |  |
| PG-Q-EN-ME-SD-AP-20 |  | Pump Room Layout | 21.25d | 2026-03-16 A | 2026-04-13 A | PG-Q-EN-ME-SD-SB-20, PG-Q-EN-ME-SD-AP-10 | 100% | 2026-03-16 | 2026-04-14 | Q |  |
|  | 2 | **SEWER AND DRAINAGE SYSTEM** |  | 2026-03-09 | 2026-04-13 |  |  |  |  |  |  |
| PG-Q-EN-ME-SD-AP-50 |  | Drainage Layout | 27.25d | 2026-03-09 A | 2026-04-13 A | PG-Q-EN-ME-SD-SB-50 | 100% | 2026-03-09 | 2026-04-14 | Q |  |
| PG-Q-EN-ME-SD-AP-60 |  | Floor Drains & Cleanouts Details | 21.25d | 2026-03-16 A | 2026-04-13 A | PG-Q-EN-ME-SD-SB-60, PG-Q-EN-ME-SD-AP-50 | 100% | 2026-03-16 | 2026-04-14 | Q |  |
| PG-Q-EN-ME-SD-AP-70 |  | Inspection Chamber Details | 21.25d | 2026-03-16 A | 2026-04-13 A | PG-Q-EN-ME-SD-SB-70 | 100% | 2026-03-16 | 2026-04-14 | Q |  |
|  | 3 | **IRRIGATION SYSTEM** |  | 2026-03-12 | 2026-04-13 |  |  |  |  |  |  |
| PG-Q-EN-ME-SD-AP-80 |  | HDPE Pipe Routing | 24.25d | 2026-03-12 A | 2026-04-13 A | PG-Q-EN-ME-SD-SB-80 | 100% | 2026-03-12 | 2026-04-14 | Q |  |
| PG-Q-EN-ME-SD-AP-90 |  | Irrigation Network Layout | 20.25d | 2026-03-17 A | 2026-04-13 A | PG-Q-EN-ME-SD-SB-90 | 100% | 2026-03-17 | 2026-04-14 | Q |  |
|  | 4 | **AIR DOME** |  | 2026-08-20 | 2026-09-21 |  |  |  |  |  |  |
| PG-Q-EN-ME-SD-AP-100 |  | Air Package and HVAC System Drawings | 10d | 2026-08-20 A | 2026-09-21 A | PG-Q-EN-ME-SD-SB-100, PG-Q-EN-ME-SD-SB-100 SS | 100% | 2026-09-02 | 2026-09-13 | Q | A.D |
|  | 5 | **ELECTRICAL DRAWINGS** |  | 2026-05-20 | 2026-09-21 |  |  |  |  |  |  |
|  | 1 | **POWER AND LIGHTING SYSTEM** |  | 2026-05-20 | 2026-06-16 |  |  |  |  |  |  |
| PG-Q-EN-EL-SD-AP-10 |  | Main Distribution Board (MDB) Layout | 20.25d | 2026-05-20 A | 2026-06-16 A | PG-Q-EN-EL-SD-SB-10, PG-Q-EN-EL-SD-SB-10 SS | 100% | 2026-05-20 | 2026-06-17 | Q |  |
| PG-Q-EN-EL-SD-AP-20 |  | Pump Room Power Panel | 20.25d | 2026-05-20 A | 2026-06-16 A | PG-Q-EN-EL-SD-SB-20, PG-Q-EN-EL-SD-SB-20 SS | 100% | 2026-05-20 | 2026-06-17 | Q |  |
| PG-Q-EN-EL-SD-AP-30 |  | Street Lighting Power Panel | 20.25d | 2026-05-20 A | 2026-06-16 A | PG-Q-EN-EL-SD-SB-30, PG-Q-EN-EL-SD-SB-30 SS | 100% | 2026-05-20 | 2026-06-17 | Q |  |
| PG-Q-EN-EL-SD-AP-40 |  | Site Lighting Pole Layout | 20.25d | 2026-05-20 A | 2026-06-16 A | PG-Q-EN-EL-SD-SB-40, PG-Q-EN-EL-SD-SB-40 SS | 100% | 2026-05-20 | 2026-06-17 | Q |  |
|  | 2 | **ELV SYSTEM** |  | 2026-05-20 | 2026-06-16 |  |  |  |  |  |  |
| PG-Q-EN-EL-SD-AP-50 |  | Telecom & Data Layout | 20.25d | 2026-05-20 A | 2026-06-16 A | PG-Q-EN-EL-SD-SB-50, PG-Q-EN-EL-SD-SB-50 SS | 100% | 2026-05-20 | 2026-06-17 | Q |  |
| PG-Q-EN-EL-SD-AP-60 |  | CCTV Camera Layout | 20.25d | 2026-05-20 A | 2026-06-16 A | PG-Q-EN-EL-SD-SB-60, PG-Q-EN-EL-SD-SB-60 SS | 100% | 2026-05-20 | 2026-06-17 | Q |  |
| PG-Q-EN-EL-SD-AP-70 |  | Access Control Layout | 20.25d | 2026-05-20 A | 2026-06-16 A | PG-Q-EN-EL-SD-SB-70, PG-Q-EN-EL-SD-SB-70 SS | 100% | 2026-05-20 | 2026-06-17 | Q |  |
| PG-Q-EN-EL-SD-AP-80 |  | AV System Layout | 20.25d | 2026-05-20 A | 2026-06-16 A | PG-Q-EN-EL-SD-SB-80, PG-Q-EN-EL-SD-SB-80 SS | 100% | 2026-05-20 | 2026-06-17 | Q |  |

| ID | WBS | Activity | Duration | Start | Finish | Predecessors | Complete | Planned start | Planned finish | H,Q,T-Location | Air Dome |
| --- | --- | --- | --- | --- | --- | --- | --- | --- | --- | --- | --- |
|  | 3 | **FIRE ALARM SYSTEM** |  | 2026-05-20 | 2026-06-16 |  |  |  |  |  |  |
| PG-Q-EN-EL-SD-AP-100 |  | Detector & Manual Call Point Details | 20.25d | 2026-05-20 A | 2026-06-16 A | PG-Q-EN-EL-SD-SB-100, PG-Q-EN-EL-SD-SB-100 SS | 100% | 2026-05-20 | 2026-06-17 | Q |  |
| PG-Q-EN-EL-SD-AP-110 |  | Control Panel Wiring Diagram | 20.25d | 2026-05-20 A | 2026-06-16 A | PG-Q-EN-EL-SD-SB-110, PG-Q-EN-EL-SD-SB-110 SS | 100% | 2026-05-20 | 2026-06-17 | Q |  |
| PG-Q-EN-EL-SD-AP-90 |  | Fire Alarm Layout | 20.25d | 2026-05-20 A | 2026-06-16 A | PG-Q-EN-EL-SD-SB-90, PG-Q-EN-EL-SD-SB-90 SS | 100% | 2026-05-20 | 2026-06-17 | Q |  |
|  | 4 | **AIR DOME** |  | 2026-08-20 | 2026-09-21 |  |  |  |  |  |  |
| PG-Q-EN-EL-SD-AP-120 |  | Power & Lighting System Drawings | 17d | 2026-08-20 A | 2026-09-21 A | PG-Q-EN-EL-SD-SB-120, PG-Q-EN-EL-SD-SB-120 SS | 100% | 2026-08-30 | 2026-09-17 | Q | A.D |
| PG-Q-EN-EL-SD-AP-130 |  | Generators Details | 8d | 2026-08-20 A | 2026-09-21 A | PG-Q-EN-EL-SD-SB-130, PG-Q-EN-EL-SD-SB-130 SS | 100% | 2026-09-02 | 2026-09-10 | Q | A.D |
| PG-Q-EN-EL-SD-AP-140 |  | Smart Dome System Drawings | 6d | 2026-08-20 A | 2026-09-21 A | PG-Q-EN-EL-SD-SB-140, PG-Q-EN-EL-SD-SB-140 SS | 100% | 2026-09-03 | 2026-09-10 | Q | A.D |
|  | 3 | **MATERIAL SUBMITTALS** |  | 2026-02-17 | 2026-08-20 |  |  |  |  |  |  |
|  | 1 | **LONG LEAD ITEMS** |  | 2026-02-17 | 2026-08-20 |  |  |  |  |  |  |
|  | 2 | **EXTERNAL / LANDSCAPE WORK** |  | 2026-02-25 | 2026-05-05 |  |  |  |  |  |  |
| PG-Q-PR-LL-LS-MS-20 |  | Benches, Seats (Rectangular & Circular) | 56.25d | 2026-02-25 A | 2026-05-05 A | PG-Q-PR-SL-LS-MS-30 | 100% | 2026-02-25 | 2026-05-06 | Q |  |
| PG-Q-PR-LL-LS-MS-10 |  | Bike and Walk Path Materials | 49.25d | 2026-03-05 A | 2026-05-05 A | PG-Q-PR-SL-LS-MS-10, PG-Q-EN-LS-SD-AP-50, PG-Q-EN-LS-SD-AP-60 | 100% | 2026-03-05 | 2026-05-06 | Q |  |
| PG-Q-PR-LL-LS-MS-30 |  | Fence, gates and accessories | 49.25d | 2026-03-05 A | 2026-05-05 A | PG-Q-PR-SL-LS-MS-30, PG-Q-EN-LS-SD-AP-130 | 100% | 2026-03-05 | 2026-05-06 | Q |  |
|  | 3 | **SPORTS & RECREATIONAL FACILITIES WORK** |  | 2026-02-17 | 2026-08-20 |  |  |  |  |  |  |
| PG-Q-PR-LL-SP-MS-50 |  | Air Dome Materials(Completed) | 101.25d | 2026-02-17 A | 2026-06-24 A | PG-GN-MS-10 SS | 100% | 2026-02-17 | 2026-06-25 | Q |  |
| PG-Q-PR-LL-SP-MS-10 |  | Football Playground Materials (Flooring, goal post, nets, paints, etc) | 48.25d | 2026-03-07 A | 2026-05-05 A | PG-Q-EN-LS-SD-AP-90, PG-Q-EN-LS-SD-AP-120 | 100% | 2026-03-07 | 2026-05-06 | Q |  |
| PG-Q-PR-LL-SP-MS-20 |  | Basketball Playground Materials (Flooring, basketball poll, nets, paints, etc) | 48.25d | 2026-03-07 A | 2026-05-05 A | PG-Q-EN-LS-SD-AP-120, PG-Q-EN-LS-SD-AP-110 | 100% | 2026-03-07 | 2026-05-06 | Q |  |
| PG-Q-PR-LL-SP-MS-30 |  | Padel Playgound Materials (Flooring, fence, tempered glass, etc) | 48.25d | 2026-03-07 A | 2026-05-05 A | PG-Q-EN-LS-SD-AP-120, PG-Q-EN-LS-SD-AP-100 | 100% | 2026-03-07 | 2026-05-06 | Q |  |
| PG-Q-PR-LL-SP-MS-40 |  | Tartan Floor | 48.25d | 2026-03-07 A | 2026-05-05 A | PG-Q-EN-LS-SD-AP-40 | 100% | 2026-03-07 | 2026-05-06 | Q |  |
| PG-Q-PR-LL-SP-MS-50_R |  | Air Dome Materials(Remaining) | 19d | 2026-06-30 A | 2026-08-20 A | PG-GN-MS-10 SS, PG-Q-PR-LL-SP-MS-50 | 100% | 2026-07-12 | 2026-08-02 | Q | A.D |
|  | 4 | **CONCRETE WORK** |  | 2026-03-04 | 2026-04-27 |  |  |  |  |  |  |
| PG-Q-PR-LL-CO-MS-10 |  | Autoclaved Aerated Panel | 43.25d | 2026-03-04 A | 2026-04-27 A | PG-Q-EN-AR-SD-AP-10, PG-Q-EN-AR-SD-AP-20 | 100% | 2026-03-04 | 2026-04-28 | Q |  |
|  | 5 | **METAL WORK** |  | 2026-03-09 | 2026-05-06 |  |  |  |  |  |  |
| PG-Q-PR-LL-MT-MS-10 |  | Metal Doors | 47.25d | 2026-03-09 A | 2026-05-06 A | PG-Q-EN-AR-SD-AP-80 | 100% | 2026-03-09 | 2026-05-07 | Q |  |
| PG-Q-PR-LL-MT-MS-20 |  | Curtain Wall | 47.25d | 2026-03-09 A | 2026-05-06 A | PG-Q-PR-LL-CO-MS-10 | 100% | 2026-03-09 | 2026-05-07 | Q |  |

| ID | WBS | Activity | Duration | Start | Finish | Predecessors | Complete | Planned start | Planned finish | H,Q,T-Location |
| --- | --- | --- | --- | --- | --- | --- | --- | --- | --- | --- |
|  | 7 | **PLUMBING WORK** |  | 2026-03-10 | 2026-05-06 |  |  |  |  |  |
| PG-Q-PR-LL-PB-MS-10 |  | Booster Pump | 46.25d | 2026-03-10 A | 2026-05-06 A | PG-Q-EN-ME-SD-AP-30 SS | 100% | 2026-03-10 | 2026-05-07 | Q |
| PG-Q-PR-LL-PB-MS-20 |  | GRP Sectional Panel Water Tanks (4x3x3m) | 42.25d | 2026-03-15 A | 2026-05-06 A | PG-Q-PR-LL-PB-MS-10 | 100% | 2026-03-15 | 2026-05-07 | Q |
|  | 8 | **IRRIGATION WORK** |  | 2026-03-05 | 2026-05-06 |  |  |  |  |  |
| PG-Q-PR-LL-IR-MS-10 |  | HDPE Pipes | 50.25d | 2026-03-05 A | 2026-05-06 A | PG-Q-PR-LL-IR-MS-20 SS | 100% | 2026-03-05 | 2026-05-07 | Q |
| PG-Q-PR-LL-IR-MS-20 |  | Irrigation Control System | 50.25d | 2026-03-05 A | 2026-05-06 A | PG-Q-PR-LL-EL-MS-50, PG-Q-PR-LL-EL-MS-50 SS | 100% | 2026-03-05 | 2026-05-07 | Q |
|  | 9 | **ELECTRICAL WORK** |  | 2026-05-12 | 2026-06-15 |  |  |  |  |  |
| PG-Q-PR-LL-EL-MS-10 |  | Main Distribution Board | 26.25d | 2026-05-12 A | 2026-06-15 A | PG-Q-EN-EL-SD-AP-10 SS, PG-Q-EN-EL-SD-AP-10 FF | 100% | 2026-05-12 | 2026-06-16 | Q |
| PG-Q-PR-LL-EL-MS-20 |  | Power Panels (Pump, Street Light) | 26.25d | 2026-05-12 A | 2026-06-15 A | PG-Q-PR-LL-EL-MS-10, PG-Q-PR-LL-EL-MS-10 SS | 100% | 2026-05-12 | 2026-06-16 | Q |
| PG-Q-PR-LL-EL-MS-30 |  | Site Lighting Poles | 26.25d | 2026-05-12 A | 2026-06-15 A | PG-Q-EN-EL-SD-AP-30 SS, PG-Q-EN-EL-SD-AP-30 FF | 100% | 2026-05-12 | 2026-06-16 | Q |
| PG-Q-PR-LL-EL-MS-40 |  | Lighting Fixtures | 26.25d | 2026-05-12 A | 2026-06-15 A | PG-Q-PR-LL-EL-MS-10 SS | 100% | 2026-05-12 | 2026-06-16 | Q |
| PG-Q-PR-LL-EL-MS-50 |  | Grounding System Materials (Earth pit rod, LPS, etc) | 26.25d | 2026-05-12 A | 2026-06-15 A | PG-Q-PR-LL-SP-MS-50 SS | 100% | 2026-05-12 | 2026-06-16 | Q |
| PG-Q-PR-LL-EL-MS-60 |  | Telecommunications & Data System Materials (Telephone outlet, CCTV, etc) | 26.25d | 2026-05-12 A | 2026-06-15 A | PG-Q-EN-EL-SD-AP-50, PG-Q-EN-EL-SD-AP-60 SS, PG-Q-EN-EL-SD-AP-50 FF, PG-Q-EN-EL-SD-AP-60 FF, PG-Q-EN-EL-SD-AP-50 SS | 100% | 2026-05-12 | 2026-06-16 | Q |
| PG-Q-PR-LL-EL-MS-70 |  | Security and Access Control System Materials | 26.25d | 2026-05-12 A | 2026-06-15 A | PG-Q-EN-EL-SD-AP-80 SS, PG-Q-EN-EL-SD-AP-80 FF | 100% | 2026-05-12 | 2026-06-16 | Q |
| PG-Q-PR-LL-EL-MS-80 |  | Fire Alarm System Materials | 26.25d | 2026-05-12 A | 2026-06-15 A | PG-Q-EN-EL-SD-AP-90, PG-Q-EN-EL-SD-AP-110 SS, PG-Q-EN-EL-SD-AP-90 FF, PG-Q-EN-EL-SD-AP-110 FF, PG-Q-EN-EL-SD-AP-90 SS | 100% | 2026-05-12 | 2026-06-16 | Q |
|  | 2 | **SHORT LEAD ITEMS** |  | 2026-02-17 | 2026-03-27 |  |  |  |  |  |
|  | 2 | **EXTERNAL / LANDSCAPE WORK** |  | 2026-02-17 | 2026-03-16 |  |  |  |  |  |
| PG-Q-PR-SL-LS-MS-10 |  | Backfilling Materials | 23.25d | 2026-02-17 A | 2026-03-16 A | PG-GN-MS-10 SS | 100% | 2026-02-17 | 2026-03-17 | Q |
| PG-Q-PR-SL-LS-MS-30 |  | Compacted Natural Ground Soil | 20.25d | 2026-02-21 A | 2026-03-16 A | PG-Q-PR-SL-LS-MS-10 | 100% | 2026-02-21 | 2026-03-17 | Q |
| PG-Q-PR-SL-LS-MS-20 |  | Interlock tiles | 4.25d | 2026-03-12 A | 2026-03-16 A | PG-Q-PR-SL-LS-MS-10, PG-Q-PR-SL-LS-MS-40 | 100% | 2026-03-12 | 2026-03-17 | Q |
| PG-Q-PR-SL-LS-MS-40 |  | Curb Stone | 4.25d | 2026-03-12 A | 2026-03-16 A | PG-Q-PR-SL-LS-MS-10, PG-Q-EN-LS-SD-AP-10 | 100% | 2026-03-12 | 2026-03-17 | Q |
| PG-Q-PR-SL-LS-MS-50 |  | Thermoplastic pavement road marking | 4.25d | 2026-03-12 A | 2026-03-16 A | PG-Q-PR-SL-LS-MS-40 | 100% | 2026-03-12 | 2026-03-17 | Q |
| PG-Q-PR-SL-LS-MS-60 |  | Traffic Signages | 4.25d | 2026-03-12 A | 2026-03-16 A | PG-Q-EN-LS-SD-AP-80 | 100% | 2026-03-12 | 2026-03-17 | Q |
| PG-Q-PR-SL-LS-MS-70 |  | Trees | 4.25d | 2026-03-12 A | 2026-03-16 A | PG-Q-PR-SL-LS-MS-60, PG-Q-EN-LS-SD-AP-70 | 100% | 2026-03-12 | 2026-03-17 | Q |
| PG-Q-PR-SL-LS-MS-80 |  | Lawn | 4.25d | 2026-03-12 A | 2026-03-16 A | PG-Q-PR-SL-LS-MS-60, PG-Q-EN-LS-SD-AP-70 | 100% | 2026-03-12 | 2026-03-17 | Q |

| ID | WBS | Activity | Duration | Start | Finish | Predecessors | Complete | Planned start | Planned finish | H,Q,T-Location |
| --- | --- | --- | --- | --- | --- | --- | --- | --- | --- | --- |
|  | 3 | **CONCRETE WORK** |  | 2026-02-17 | 2026-03-27 |  |  |  |  |  |
| PG-Q-PR-SL-CO-MS-10 |  | Steel Rebar | 17.25d | 2026-02-17 A | 2026-03-09 A | PG-GN-MS-10 SS | 100% | 2026-02-17 | 2026-03-10 | Q |
| PG-Q-PR-SL-CO-MS-20 |  | Concrete | 13.25d | 2026-02-23 A | 2026-03-09 A | PG-Q-PR-SL-CO-MS-10 | 100% | 2026-02-23 | 2026-03-10 | Q |
| PG-Q-PR-SL-CO-MS-40 |  | CMU Block | 19.12d | 2026-03-01 A | 2026-03-27 A | PG-Q-PR-SL-CO-MS-20 | 100% | 2026-03-01 | 2026-03-28 | Q |
| PG-Q-PR-SL-CO-MS-50 |  | Concrete Repair & Protection Materials | 19.12d | 2026-03-01 A | 2026-03-27 A | PG-Q-PR-SL-CO-MS-20 | 100% | 2026-03-01 | 2026-03-28 | Q |
| PG-Q-PR-SL-CO-MS-30 |  | Screed | 9.25d | 2026-03-12 A | 2026-03-26 A | PG-Q-PR-SL-CO-MS-20, PG-Q-EN-AR-SD-AP-50 | 100% | 2026-03-12 | 2026-03-28 | Q |
|  | 4 | **ARCHITECTURAL & FINISHES WORK** |  | 2026-02-21 | 2026-03-14 |  |  |  |  |  |
| PG-Q-PR-SL-AR-MS-40 |  | Cement Plaster | 18.25d | 2026-02-21 A | 2026-03-14 A | PG-Q-PR-SL-LS-MS-10 | 100% | 2026-02-21 | 2026-03-15 | Q |
| PG-Q-PR-SL-AR-MS-50 |  | Acrylic Paint | 15.25d | 2026-02-25 A | 2026-03-14 A | PG-Q-PR-SL-AR-MS-40 | 100% | 2026-02-25 | 2026-03-15 | Q |
| PG-Q-PR-SL-AR-MS-80 |  | Phenolic Partition | 10.25d | 2026-03-03 A | 2026-03-14 A | PG-Q-EN-AR-SD-AP-10 | 100% | 2026-03-03 | 2026-03-15 | Q |
| PG-Q-PR-SL-AR-MS-90 |  | Glass Partition | 10.25d | 2026-03-03 A | 2026-03-14 A | PG-Q-EN-AR-SD-AP-10 | 100% | 2026-03-03 | 2026-03-15 | Q |
| PG-Q-PR-SL-AR-MS-10 |  | Ceramic tiles | 4.25d | 2026-03-10 A | 2026-03-14 A | PG-Q-EN-AR-SD-AP-50 | 100% | 2026-03-10 | 2026-03-15 | Q |
| PG-Q-PR-SL-AR-MS-100 |  | Gypsum Boards | 4.25d | 2026-03-10 A | 2026-03-14 A | PG-Q-EN-AR-SD-AP-60 | 100% | 2026-03-10 | 2026-03-15 | Q |
| PG-Q-PR-SL-AR-MS-110 |  | Specialities Materials (Toilet accessories, lockers, logo, etc) | 4.25d | 2026-03-10 A | 2026-03-14 A | PG-Q-EN-AR-SD-AP-70 | 100% | 2026-03-10 | 2026-03-15 | Q |
| PG-Q-PR-SL-AR-MS-120 |  | Waterproofing System Materials | 4.25d | 2026-03-10 A | 2026-03-14 A | PG-Q-EN-AR-SD-AP-50 | 100% | 2026-03-10 | 2026-03-15 | Q |
| PG-Q-PR-SL-AR-MS-20 |  | Anti-slip Granite tiles | 4.25d | 2026-03-10 A | 2026-03-14 A | PG-Q-PR-SL-AR-MS-10 SS | 100% | 2026-03-10 | 2026-03-15 | Q |
| PG-Q-PR-SL-AR-MS-30 |  | Epoxy Paint | 4.25d | 2026-03-10 A | 2026-03-14 A | PG-Q-EN-AR-SD-AP-50 | 100% | 2026-03-10 | 2026-03-15 | Q |
| PG-Q-PR-SL-AR-MS-60 |  | Stone Cladding | 4.25d | 2026-03-10 A | 2026-03-14 A | PG-Q-EN-AR-SD-AP-100 | 100% | 2026-03-10 | 2026-03-15 | Q |
| PG-Q-PR-SL-AR-MS-70 |  | Aluminum Plates | 4.25d | 2026-03-10 A | 2026-03-14 A | PG-Q-EN-AR-SD-AP-90 | 100% | 2026-03-10 | 2026-03-15 | Q |
|  | 5 | **METAL WORK** |  | 2026-03-04 | 2026-03-16 |  |  |  |  |  |
| PG-Q-PR-SL-MT-MS-20 |  | Galvanized Steel Roof Scupper | 11.25d | 2026-03-04 A | 2026-03-16 A | PG-Q-EN-AR-SD-AP-20 | 100% | 2026-03-04 | 2026-03-17 | Q |
| PG-Q-PR-SL-MT-MS-30 |  | Galvanized Steel Cover with frame | 11.25d | 2026-03-04 A | 2026-03-16 A | PG-Q-EN-AR-SD-AP-20 | 100% | 2026-03-04 | 2026-03-17 | Q |
| PG-Q-PR-SL-MT-MS-10 |  | Galvanized Steel Ladder | 8.25d | 2026-03-08 A | 2026-03-16 A | PG-Q-EN-AR-SD-AP-20, PG-Q-EN-AR-SD-AP-30 | 100% | 2026-03-08 | 2026-03-17 | Q |
|  | 6 | **HVAC WORK** |  | 2026-02-23 | 2026-03-16 |  |  |  |  |  |
| PG-Q-PR-SL-AC-MS-10 |  | Split Air Conditioning Unit | 19.25d | 2026-02-23 A | 2026-03-16 A | PG-Q-PR-SL-CO-MS-10 | 100% | 2026-02-23 | 2026-03-17 | Q |
| PG-Q-PR-SL-AC-MS-20 |  | Air Duct | 15.25d | 2026-02-28 A | 2026-03-16 A | PG-Q-PR-SL-AC-MS-10 | 100% | 2026-02-28 | 2026-03-17 | Q |
| PG-Q-PR-SL-AC-MS-30 |  | Diffusers and Grills | 11.25d | 2026-03-04 A | 2026-03-16 A | PG-Q-PR-SL-AC-MS-20 | 100% | 2026-03-04 | 2026-03-17 | Q |
| PG-Q-PR-SL-AC-MS-40 |  | Exhaust fans | 11.25d | 2026-03-04 A | 2026-03-16 A | PG-Q-PR-SL-AC-MS-20 | 100% | 2026-03-04 | 2026-03-17 | Q |

| ID | WBS | Activity | Duration | Start | Finish | Predecessors | Complete | Planned start | Planned finish | Resources | Cost | Actual cost | H,Q,T-Location | BOQ DIVISION | DIVISION-02-SITE WORKS | Air Dome |
| --- | --- | --- | --- | --- | --- | --- | --- | --- | --- | --- | --- | --- | --- | --- | --- | --- |
|  | 7 | **PLUMBING WORK** |  | 2026-03-12 | 2026-03-16 |  |  |  |  |  |  |  |  |  |  |  |
| PG-Q-PR-SL-PB-MS-10 |  | PPR Pipes & Valves | 4.25d | 2026-03-12 A | 2026-03-16 A | PG-Q-PR-SL-AC-MS-10, PG-Q-PR-SL-PB-MS-20 SS | 100% | 2026-03-12 | 2026-03-17 |  |  |  | Q |  |  |  |
| PG-Q-PR-SL-PB-MS-20 |  | UPCV Pipes | 4.25d | 2026-03-12 A | 2026-03-16 A | PG-Q-PR-SL-MT-MS-20 | 100% | 2026-03-12 | 2026-03-17 |  |  |  | Q |  |  |  |
| PG-Q-PR-SL-PB-MS-30 |  | Sanitary Drainage Fixtures | 4.25d | 2026-03-12 A | 2026-03-16 A | PG-Q-PR-SL-PB-MS-20 SS | 100% | 2026-03-12 | 2026-03-17 |  |  |  | Q |  |  |  |
|  | 8 | **IRRIGATION WORK** |  | 2026-02-25 | 2026-03-16 |  |  |  |  |  |  |  |  |  |  |  |
| PG-Q-PR-SL-IR-MS-10 |  | Gate Valve including valve box | 17.25d | 2026-02-25 A | 2026-03-16 A | PG-Q-PR-SL-LS-MS-30 | 100% | 2026-02-25 | 2026-03-17 |  |  |  | Q |  |  |  |
| PG-Q-PR-SL-IR-MS-20 |  | Bulbblers and Spreyers | 12.25d | 2026-03-03 A | 2026-03-16 A | PG-Q-PR-SL-IR-MS-10 | 100% | 2026-03-03 | 2026-03-17 |  |  |  | Q |  |  |  |
|  | 9 | **ELECTRICAL WORK** |  | 2026-03-12 | 2026-03-16 |  |  |  |  |  |  |  |  |  |  |  |
| PG-Q-PR-SL-EL-MS-10 |  | Wiring Devices Materials | 4.25d | 2026-03-12 A | 2026-03-16 A | PG-Q-PR-SL-PB-MS-30 SS | 100% | 2026-03-12 | 2026-03-17 |  |  |  | Q |  |  |  |
|  | 10 | **FIRE FIGHTING WORK** |  | 2026-03-12 | 2026-03-16 |  |  |  |  |  |  |  |  |  |  |  |
| PG-Q-PR-SL-FF-MS-10 |  | Fire Extinguishers | 4.25d | 2026-03-12 A | 2026-03-16 A | PG-Q-PR-SL-PB-MS-30 | 100% | 2026-03-12 | 2026-03-17 |  |  |  | Q |  |  |  |
|  | 4 | **MATERIAL APPROVALS** |  | 2026-02-21 | 2026-10-01 |  |  |  |  |  |  |  |  |  |  |  |
|  | 1 | **LONG LEAD ITEMS** |  | 2026-03-02 | 2026-10-01 |  |  |  |  |  |  |  |  |  |  |  |
|  | 1 | **EXTERNAL / LANDSCAPE WORK** |  | 2026-05-11 | 2026-05-12 |  |  |  |  |  |  |  |  |  |  |  |
| PG-Q-PR-LL-LS-MA-10 |  | Bike and Walk Path Materials | 2d | 2026-05-11 A | 2026-05-12 A | PG-Q-PR-LL-LS-MS-10 | 100% |  |  | COST [13275] | 13,275 | 13,275 | Q | DIV-2 | Div-2.3 |  |
| PG-Q-PR-LL-LS-MA-20 |  | Benches, Seats (Rectangular & Circular) | 2d | 2026-05-11 A | 2026-05-12 A | PG-Q-PR-LL-LS-MS-20 | 100% |  |  | COST [4007.97] | 4,007.97 | 4,007.97 | Q | DIV-2 | Div-2.3 |  |
| PG-Q-PR-LL-LS-MA-30 |  | Fence, gates and accessories | 2d | 2026-05-11 A | 2026-05-12 A | PG-Q-PR-LL-LS-MS-30 | 100% |  |  | COST [2529.21] | 2,529.21 | 2,529.21 | Q | DIV-2 | Div-2.3 |  |
|  | 3 | **SPORTS & RECREATIONAL FACILITIES WORK** |  | 2026-03-02 | 2026-09-19 |  |  |  |  |  |  |  |  |  |  |  |
| PG-Q-PR-LL-SP-MA-50 |  | Air Dome Materials(Completed) | 91d | 2026-03-02 A | 2026-06-24 A | PG-Q-PR-LL-SP-MS-50 SS | 100% |  |  | COST [62622.1] | 62,622.07 | 62,622.07 | Q | DIV-2 | AD | A.D |
| PG-Q-PR-LL-SP-MA-10 |  | Football Playground Materials (Flooring, goal post, nets, paints, etc) | 8d | 2026-05-12 A | 2026-05-20 A | PG-Q-PR-LL-SP-MS-10 | 100% |  |  | COST [13051.5] | 13,051.5 | 13,051.5 | Q | DIV-2 | Div-2.3 |  |
| PG-Q-PR-LL-SP-MA-20 |  | Basketball Playground Materials (Flooring, basketball poll, nets, paints, etc) | 8d | 2026-05-12 A | 2026-05-20 A | PG-Q-PR-LL-SP-MS-20 | 100% |  |  | COST [2256] | 2,256 | 2,256 | Q | DIV-2 | Div-2.3 |  |
| PG-Q-PR-LL-SP-MA-30 |  | Padel Playgound Materials (Flooring, fence, tempered glass, etc) | 8d | 2026-05-12 A | 2026-05-20 A | PG-Q-PR-LL-SP-MS-30 | 100% |  |  | COST [5950.8] | 5,950.8 | 5,950.8 | Q | DIV-2 | Div-2.3 |  |
| PG-Q-PR-LL-SP-MA-40 |  | Tartan Floor | 8d | 2026-05-12 A | 2026-05-20 A | PG-Q-PR-LL-SP-MS-40 | 100% |  |  | COST [43524] | 43,524 | 43,524 | Q | DIV-2 | Div-2.3 |  |
| PG-Q-PR-LL-SP-MA-50_R |  | Air Dome Materials(Remaining) | 5d | 2026-07-02 A | 2026-09-19 A | PG-Q-PR-LL-SP-MS-50_R SS, PG-Q-PR-LL-SP-MA-50 | 100% | 2026-07-12 | 2026-07-16 | COST [146118] | 146,118.17 | 146,118.17 | Q | DIV-2 | AD | A.D |

| ID | WBS | Activity | Duration | Start | Finish | Predecessors | Complete | Planned start | Planned finish | Resources | Cost | Actual cost | H,Q,T-Location | BOQ DIVISION | DIVISION-3 CONCRETE | DIVISION 8- DOORS & WINDOWS | DIVISION 15-MECHANICAL WORKS | DIVISION 16 ELECTRICAL WORKS |
| --- | --- | --- | --- | --- | --- | --- | --- | --- | --- | --- | --- | --- | --- | --- | --- | --- | --- | --- |
|  | 4 | **CONCRETE WORK** |  | 2026-03-09 | 2026-04-28 |  |  |  |  |  |  |  |  |  |  |  |  |  |
| PG-Q-PR-LL-CO-MA-10 |  | Autoclaved Aerated Panel | 40d | 2026-03-09 A | 2026-04-28 A | PG-Q-PR-LL-CO-MS-10 | 100% |  |  | COST [1417.5] | 1,417.5 | 1,417.5 | Q | DIV-2 | Div-3 |  |  |  |
|  | 5 | **METAL WORK** |  | 2026-06-09 | 2026-10-01 |  |  |  |  |  |  |  |  |  |  |  |  |  |
| PG-Q-PR-LL-MT-MA-10 |  | Metal Doors(Completed) | 14d | 2026-06-09 A | 2026-06-24 A | PG-Q-PR-LL-MT-MS-10 | 100% |  |  | COST [76.52] | 76.52 | 76.52 | Q | DIV-8 |  | Div-8.1 |  |  |
| PG-Q-PR-LL-MT-MA-20 |  | Curtain Wall(Completed) | 14d | 2026-06-09 A | 2026-06-24 A | PG-Q-PR-LL-MT-MS-20 | 100% |  |  | COST [457.02] | 457.02 | 457.02 | Q | DIV-8 |  | Div-8.2 |  |  |
| PG-Q-PR-LL-MT-MA-10_R |  | Metal Doors(Remaining) | 15d | 2026-09-16 A | 2026-10-01 A | PG-Q-PR-LL-MT-MS-10, PG-Q-PR-LL-MT-MA-10 | 100% | 2026-09-26 | 2026-10-12 | COST [51.01] | 51.01 | 51.01 | Q | DIV-8 |  | Div-8.1 |  |  |
| PG-Q-PR-LL-MT-MA-20_R |  | Curtain Wall(Remaining) | 20d | 2026-09-16 A | 2026-10-01 A | PG-Q-PR-LL-MT-MS-20, PG-Q-PR-LL-MT-MA-20 | 100% | 2026-09-26 | 2026-10-18 | COST [304.68] | 304.68 | 304.68 | Q | DIV-8 |  | Div-8.2 |  |  |
|  | 7 | **PLUMBING WORK** |  | 2026-05-20 | 2026-06-24 |  |  |  |  |  |  |  |  |  |  |  |  |  |
| PG-Q-PR-LL-PB-MA-10_R |  | Booster Pump(Remaining) | 20d | 2026-05-20 A | 2026-05-21 A | PG-Q-PR-LL-PB-MS-10, PG-Q-PR-LL-PB-MA-10 | 100% | 2026-07-12 | 2026-08-03 | COST [727.32] | 727.32 | 727.32 | Q | DIV-15 |  |  | Div15.2 |  |
| PG-Q-PR-LL-PB-MA-20_R |  | GRP Sectional Panel Water Tanks (4x3x3m)(Remaining) | 15d | 2026-06-03 A | 2026-06-06 A | PG-Q-PR-LL-PB-MS-20, PG-Q-PR-LL-PB-MA-20 | 100% | 2026-07-14 | 2026-07-30 | COST [694.26] | 694.26 | 694.26 | Q | DIV-15 |  |  | Div15.2 |  |
| PG-Q-PR-LL-PB-MA-10 |  | Booster Pump(Completed) | 14d | 2026-06-09 A | 2026-06-24 A | PG-Q-PR-LL-PB-MS-10 | 100% |  |  | COST [1090.98] | 1,090.98 | 1,090.98 | Q | DIV-15 |  |  | Div15.2 |  |
| PG-Q-PR-LL-PB-MA-20 |  | GRP Sectional Panel Water Tanks (4x3x3m)(Completed) | 14d | 2026-06-09 A | 2026-06-24 A | PG-Q-PR-LL-PB-MS-20 | 100% |  |  | COST [1041.39] | 1,041.39 | 1,041.39 | Q | DIV-15 |  |  | Div15.2 |  |
|  | 8 | **IRRIGATION WORK** |  | 2026-03-11 | 2026-05-06 |  |  |  |  |  |  |  |  |  |  |  |  |  |
| PG-Q-PR-LL-IR-MA-10 |  | HDPE Pipes | 45d | 2026-03-11 A | 2026-05-06 A | PG-Q-PR-LL-IR-MS-10 | 100% |  |  | COST [19941] | 19,941 | 19,941 | Q | DIV-15 |  |  | Div15.5 |  |
| PG-Q-PR-LL-IR-MA-20 |  | Irrigation Control System | 45d | 2026-03-11 A | 2026-05-06 A | PG-Q-PR-LL-IR-MS-20 | 100% |  |  | COST [4545.75] | 4,545.75 | 4,545.75 | Q | DIV-15 |  |  | Div15.5 |  |
|  | 9 | **ELECTRICAL WORK** |  | 2026-05-12 | 2026-09-16 |  |  |  |  |  |  |  |  |  |  |  |  |  |
| PG-Q-PR-LL-EL-MA-10 |  | Main Distribution Board(Completed) | 34d | 2026-05-12 A | 2026-06-24 A | PG-Q-PR-LL-EL-MS-10, PG-Q-PR-LL-EL-MS-10 SS | 100% |  |  | COST [297.54] | 297.54 | 297.54 | Q | DIV-16 |  |  |  | Div16.1 |
| PG-Q-PR-LL-EL-MA-20 |  | Power Panels (Pump, Street Light)(Completed) | 34d | 2026-05-12 A | 2026-06-24 A | PG-Q-PR-LL-EL-MS-20, PG-Q-PR-LL-EL-MS-20 SS | 100% |  |  | COST [238.03] | 238.03 | 238.03 | Q | DIV-16 |  |  |  | Div16.1 |
| PG-Q-PR-LL-EL-MA-30 |  | Site Lighting Poles(Completed) | 34d | 2026-05-12 A | 2026-06-24 A | PG-Q-PR-LL-EL-MS-30, PG-Q-PR-LL-EL-MS-30 SS | 100% |  |  | COST [17405.3] | 17,405.28 | 17,405.28 | Q | DIV-16 |  |  |  | Div16.2 |
| PG-Q-PR-LL-EL-MA-40 |  | Lighting Fixtures(Completed) | 34d | 2026-05-12 A | 2026-06-24 A | PG-Q-PR-LL-EL-MS-40, PG-Q-PR-LL-EL-MS-40 SS | 100% |  |  | COST [769.7] | 769.7 | 769.7 | Q | DIV-16 |  |  |  | Div16.3 |
| PG-Q-PR-LL-EL-MA-50 |  | Grounding System Materials (Earth pit rod, LPS, etc)(Completed) | 34d | 2026-05-12 A | 2026-06-24 A | PG-Q-PR-LL-EL-MS-50, PG-Q-PR-LL-EL-MS-50 SS | 100% |  |  | COST [602.51] | 602.51 | 602.51 | Q | DIV-16 |  |  |  | Div16.6 |
| PG-Q-PR-LL-EL-MA-60 |  | Telecommunications & Data System Materials (Telephone outlet, CCTV, etc)(Completed) | 34d | 2026-05-12 A | 2026-06-24 A | PG-Q-PR-LL-EL-MS-60, PG-Q-PR-LL-EL-MS-60 SS | 100% |  |  | COST [587.63] | 587.63 | 587.63 | Q | DIV-16 |  |  |  | Div16.4 |
| PG-Q-PR-LL-EL-MA-70 |  | Security and Access Control System Materials(Completed) | 34d | 2026-05-12 A | 2026-06-24 A | PG-Q-PR-LL-EL-MS-70, PG-Q-PR-LL-EL-MS-70 SS | 100% |  |  | COST [743.94] | 743.94 | 743.94 | Q | DIV-16 |  |  |  | Div16.5 |
| PG-Q-PR-LL-EL-MA-80 |  | Fire Alarm System Materials(Completed) | 34d | 2026-05-12 A | 2026-06-24 A | PG-Q-PR-LL-EL-MS-80, PG-Q-PR-LL-EL-MS-80 SS | 100% |  |  | COST [477.23] | 477.23 | 477.23 | Q | DIV-16 |  |  |  | Div16.8 |
| PG-Q-PR-LL-EL-MA-40_R |  | Lighting Fixtures(Remaining) | 7d | 2026-07-12 A | 2026-07-23 A | PG-Q-PR-LL-EL-MS-40, PG-Q-PR-LL-EL-MS-40 SS, PG-Q-PR-LL-EL-MA-40 | 100% | 2026-07-14 | 2026-07-21 | COST [513.13] | 513.13 | 513.13 | Q | DIV-16 |  |  |  | Div16.3 |
| PG-Q-PR-LL-EL-MA-10_R |  | Main Distribution Board(Remaining) | 7d | 2026-07-30 A | 2026-09-16 A | PG-Q-PR-LL-EL-MS-10, PG-Q-PR-LL-EL-MS-10 SS, PG-Q-PR-LL-EL-MA-10 | 100% | 2026-08-02 | 2026-08-09 | COST [198.36] | 198.36 | 198.36 | Q | DIV-16 |  |  |  | Div16.1 |
| PG-Q-PR-LL-EL-MA-20_R |  | Power Panels (Pump, Street Light)(Remaining) | 7d | 2026-07-30 A | 2026-09-16 A | PG-Q-PR-LL-EL-MS-20, PG-Q-PR-LL-EL-MS-20 SS, PG-Q-PR-LL-EL-MA-20 | 100% | 2026-08-02 | 2026-08-09 | COST [158.69] | 158.69 | 158.69 | Q | DIV-16 |  |  |  | Div16.1 |
| PG-Q-PR-LL-EL-MA-30_R |  | Site Lighting Poles(Remaining) | 7d | 2026-07-30 A | 2026-09-16 A | PG-Q-PR-LL-EL-MS-30, PG-Q-PR-LL-EL-MS-30 SS, PG-Q-PR-LL-EL-MA-30 | 100% | 2026-08-02 | 2026-08-09 | COST [11603.5] | 11,603.52 | 11,603.52 | Q | DIV-16 |  |  |  | Div16.2 |
| PG-Q-PR-LL-EL-MA-50_R |  | Grounding System Materials (Earth pit rod, LPS, etc)(Remaining) | 7d | 2026-07-30 A | 2026-09-16 A | PG-Q-PR-LL-EL-MS-50, PG-Q-PR-LL-EL-MS-50 SS, PG-Q-PR-LL-EL-MA-50 | 100% | 2026-08-02 | 2026-08-09 | COST [401.68] | 401.68 | 401.68 | Q | DIV-16 |  |  |  | Div16.6 |
| PG-Q-PR-LL-EL-MA-60_R |  | Telecommunications & Data System Materials (Telephone outlet, CCTV, etc)(Remaining) | 7d | 2026-07-30 A | 2026-09-16 A | PG-Q-PR-LL-EL-MS-60, PG-Q-PR-LL-EL-MS-60 SS, PG-Q-PR-LL-EL-MA-60 | 100% | 2026-08-02 | 2026-08-09 | COST [391.75] | 391.75 | 391.75 | Q | DIV-16 |  |  |  | Div16.4 |
| PG-Q-PR-LL-EL-MA-70_R |  | Security and Access Control System Materials(Remaining) | 7d | 2026-08-27 A | 2026-09-16 A | PG-Q-PR-LL-EL-MS-70, PG-Q-PR-LL-EL-MS-70 SS, PG-Q-PR-LL-EL-MA-70 | 100% | 2026-08-29 | 2026-09-05 | COST [495.96] | 495.96 | 495.96 | Q | DIV-16 |  |  |  | Div16.5 |
| PG-Q-PR-LL-EL-MA-80_R |  | Fire Alarm System Materials(Remaining) | 7d | 2026-08-27 A | 2026-09-16 A | PG-Q-PR-LL-EL-MS-80, PG-Q-PR-LL-EL-MS-80 SS, PG-Q-PR-LL-EL-MA-80 | 100% | 2026-08-29 | 2026-09-05 | COST [318.16] | 318.16 | 318.16 | Q | DIV-16 |  |  |  | Div16.8 |

| ID | WBS | Activity | Duration | Start | Finish | Predecessors | Complete | Resources | Cost | Actual cost | H,Q,T-Location | BOQ DIVISION | DIVISION-02-SITE WORKS | DIVISION-3 CONCRETE | DIVISION-4 MASONRY | DIVISION 15-MECHANICAL WORKS | DIVISION 07-THERMAL & MOISTURE PROTECTIO | DIVISION 9-FINISHES | DIVISION 10-SPECIALTIES |
| --- | --- | --- | --- | --- | --- | --- | --- | --- | --- | --- | --- | --- | --- | --- | --- | --- | --- | --- | --- |
|  | 2 | **SHORT LEAD ITEMS** |  | 2026-02-21 | 2026-03-26 |  |  |  |  |  |  |  |  |  |  |  |  |  |  |
|  | 1 | **EXTERNAL / LANDSCAPE WORK** |  | 2026-02-21 | 2026-03-26 |  |  |  |  |  |  |  |  |  |  |  |  |  |  |
| PG-Q-PR-SL-LS-MA-10 |  | Backfilling Materials | 25d | 2026-02-21 A | 2026-03-26 A | PG-Q-PR-SL-LS-MS-10 | 100% | COST [36450] | 36,450 | 36,450 | Q | DIV-2 | Div-2.1 |  |  |  |  |  |  |
| PG-Q-PR-SL-LS-MA-30 |  | Compacted Natural Ground Soil | 22d | 2026-02-25 A | 2026-03-26 A | PG-Q-PR-SL-LS-MS-30 | 100% | COST [8580] | 8,580 | 8,580 | Q | DIV-2 | Div-2.3 |  |  |  |  |  |  |
| PG-Q-PR-SL-LS-MA-20 |  | Interlock tiles | 2d | 2026-03-25 A | 2026-03-26 A | PG-Q-PR-SL-LS-MS-20 | 100% | COST [29832] | 29,832 | 29,832 | Q | DIV-2 | Div-2.2 |  |  |  |  |  |  |
| PG-Q-PR-SL-LS-MA-40 |  | Curb Stone | 2d | 2026-03-25 A | 2026-03-26 A | PG-Q-PR-SL-LS-MS-40 | 100% | COST [43185] | 43,185 | 43,185 | Q | DIV-2 | Div-2.3 |  |  |  |  |  |  |
| PG-Q-PR-SL-LS-MA-50 |  | Thermoplastic pavement road marking | 2d | 2026-03-25 A | 2026-03-26 A | PG-Q-PR-SL-LS-MS-50 | 100% | COST [525.63] | 525.63 | 525.63 | Q | DIV-2 | Div-2.2 |  |  |  |  |  |  |
| PG-Q-PR-SL-LS-MA-60 |  | Traffic Signages | 2d | 2026-03-25 A | 2026-03-26 A | PG-Q-PR-SL-LS-MS-60 | 100% | COST [198.36] | 198.36 | 198.36 | Q | DIV-2 | Div-2.3 |  |  |  |  |  |  |
| PG-Q-PR-SL-LS-MA-70 |  | Trees | 2d | 2026-03-25 A | 2026-03-26 A | PG-Q-PR-SL-LS-MS-70 | 100% | COST [9546.3] | 9,546.3 | 9,546.3 | Q | DIV-2 | Div-2.3 |  |  |  |  |  |  |
| PG-Q-PR-SL-LS-MA-80 |  | Lawn | 2d | 2026-03-25 A | 2026-03-26 A | PG-Q-PR-SL-LS-MS-80 | 100% | COST [11550] | 11,550 | 11,550 | Q | DIV-2 | Div-2.3 |  |  |  |  |  |  |
|  | 3 | **CONCRETE WORK** |  | 2026-02-23 | 2026-03-26 |  |  |  |  |  |  |  |  |  |  |  |  |  |  |
| PG-Q-PR-SL-CO-MA-10 |  | Steel Rebar | 14d | 2026-02-23 A | 2026-03-10 A | PG-Q-PR-SL-CO-MS-10 | 100% | COST [476.82] | 476.82 | 476.82 | Q | DIV-3 |  | Div-3 |  |  |  |  |  |
| PG-Q-PR-SL-CO-MA-20 |  | Concrete | 9d | 2026-03-01 A | 2026-03-10 A | PG-Q-PR-SL-CO-MS-20 | 100% | COST [518.85] | 518.85 | 518.85 | Q | DIV-3 |  | Div-3 |  |  |  |  |  |
| PG-Q-PR-SL-CO-MA-40 |  | CMU Block | 15d | 2026-03-05 A | 2026-03-26 A | PG-Q-PR-SL-CO-MS-40 | 100% | COST [124.2] | 124.2 | 124.2 | Q | DIV-4 |  |  | Div-4 |  |  |  |  |
| PG-Q-PR-SL-CO-MA-50 |  | Concrete Repair & Protection Materials | 15d | 2026-03-05 A | 2026-03-26 A | PG-Q-PR-SL-CO-MS-50 | 100% | COST [372] | 372 | 372 | Q | DIV-15 |  |  |  | Div15.2 |  |  |  |
| PG-Q-PR-SL-CO-MA-30 |  | Screed | 1d | 2026-03-26 A | 2026-03-26 A | PG-Q-PR-SL-CO-MS-30 | 100% | COST [117.6] | 117.6 | 117.6 | Q | DIV-7 |  |  |  |  | Div-07 |  |  |
|  | 4 | **ARCHITECTURAL & FINISHES WORK** |  | 2026-02-25 | 2026-03-16 |  |  |  |  |  |  |  |  |  |  |  |  |  |  |
| PG-Q-PR-SL-AR-MA-40 |  | Cement Plaster | 17d | 2026-02-25 A | 2026-03-16 A | PG-Q-PR-SL-AR-MS-40 | 100% | COST [221.37] | 221.37 | 221.37 | Q | DIV-9 |  |  |  |  |  | Div-9.2 |  |
| PG-Q-PR-SL-AR-MA-50 |  | Acrylic Paint | 14d | 2026-03-01 A | 2026-03-16 A | PG-Q-PR-SL-AR-MS-50 | 100% | COST [147.9] | 147.9 | 147.9 | Q | DIV-9 |  |  |  |  |  | Div-9.2 |  |
| PG-Q-PR-SL-AR-MA-10 |  | Ceramic tiles | 2d | 2026-03-15 A | 2026-03-16 A | PG-Q-PR-SL-AR-MS-10 | 100% | COST [571.95] | 571.95 | 571.95 | Q | DIV-9 |  |  |  |  |  | Div-9.1 |  |
| PG-Q-PR-SL-AR-MA-100 |  | Gypsum Boards | 2d | 2026-03-15 A | 2026-03-16 A | PG-Q-PR-SL-AR-MS-100 | 100% | COST [188.58] | 188.58 | 188.58 | Q | DIV-9 |  |  |  |  |  | Div-9.3 |  |
| PG-Q-PR-SL-AR-MA-110 |  | Specialities Materials (Toilet accessories, lockers, logo, etc) | 2d | 2026-03-15 A | 2026-03-16 A | PG-Q-PR-SL-AR-MS-110 | 100% | COST [2262.87] | 2,262.87 | 2,262.87 | Q | DIV-10 |  |  |  |  |  |  | Div-10 |
| PG-Q-PR-SL-AR-MA-120 |  | Waterproofing System Materials | 2d | 2026-03-15 A | 2026-03-16 A | PG-Q-PR-SL-AR-MS-120 | 100% | COST [544.2] | 544.2 | 544.2 | Q | DIV-7 |  |  |  |  | Div-07 |  |  |
| PG-Q-PR-SL-AR-MA-20 |  | Anti-slip Granite tiles | 2d | 2026-03-15 A | 2026-03-16 A | PG-Q-PR-SL-AR-MS-20 | 100% | COST [535.5] | 535.5 | 535.5 | Q | DIV-9 |  |  |  |  |  | Div-9.1 |  |
| PG-Q-PR-SL-AR-MA-30 |  | Epoxy Paint | 2d | 2026-03-15 A | 2026-03-16 A | PG-Q-PR-SL-AR-MS-30 | 100% | COST [111.18] | 111.18 | 111.18 | Q | DIV-7 |  |  |  |  |  | Div-9.1 |  |
| PG-Q-PR-SL-AR-MA-60 |  | Stone Cladding | 2d | 2026-03-15 A | 2026-03-16 A | PG-Q-PR-SL-AR-MS-60 | 100% | COST [1852.2] | 1,852.2 | 1,852.2 | Q | DIV-9 |  |  |  |  |  | Div-9.2 |  |
| PG-Q-PR-SL-AR-MA-70 |  | Aluminum Plates | 2d | 2026-03-15 A | 2026-03-16 A | PG-Q-PR-SL-AR-MS-70 | 100% | COST |  |  | Q | DIV-9 |  |  |  |  |  | Div-9.2 |  |
| PG-Q-PR-SL-AR-MA-80 |  | Phenolic Partition | 2d | 2026-03-15 A | 2026-03-16 A | PG-Q-PR-SL-AR-MS-80 | 100% | COST [1340.4] | 1,340.4 | 1,340.4 | Q | DIV-9 |  |  |  |  |  | Div-9.2 |  |
| PG-Q-PR-SL-AR-MA-90 |  | Glass Partition | 2d | 2026-03-15 A | 2026-03-16 A | PG-Q-PR-SL-AR-MS-90 | 100% | COST [155.4] | 155.4 | 155.4 | Q | DIV-9 |  |  |  |  |  | Div-9.2 |  |

| ID | WBS | Activity | Duration | Start | Finish | Predecessors | Complete | Planned start | Planned finish | Resources | Cost | Actual cost | H,Q,T-Location | BOQ DIVISION | DIVISION-5-METALS | DIVISION 15-MECHANICAL WORKS | DIVISION 16 ELECTRICAL WORKS |
| --- | --- | --- | --- | --- | --- | --- | --- | --- | --- | --- | --- | --- | --- | --- | --- | --- | --- |
|  | 5 | **METAL WORK** |  | 2026-03-09 | 2026-03-26 |  |  |  |  |  |  |  |  |  |  |  |  |
| PG-Q-PR-SL-MT-MA-20 |  | Galvanized Steel Roof Scupper | 12d | 2026-03-09 A | 2026-03-26 A | PG-Q-PR-SL-MT-MS-20 | 100% |  |  | COST [31.32] | 31.32 | 31.32 | Q | DIV-5 | Div-5 |  |  |
| PG-Q-PR-SL-MT-MA-30 |  | Galvanized Steel Cover with frame | 12d | 2026-03-09 A | 2026-03-26 A | PG-Q-PR-SL-MT-MS-30 | 100% |  |  | COST [85.71] | 85.71 | 85.71 | Q | DIV-5 | Div-5 |  |  |
| PG-Q-PR-SL-MT-MA-10 |  | Galvanized Steel Ladder | 9d | 2026-03-12 A | 2026-03-26 A | PG-Q-PR-SL-MT-MS-10 | 100% |  |  | COST [361.86] | 361.86 | 361.86 | Q | DIV-5 | Div-5 |  |  |
|  | 6 | **HVAC WORK** |  | 2026-02-28 | 2026-03-26 |  |  |  |  |  |  |  |  |  |  |  |  |
| PG-Q-PR-SL-AC-MA-10 |  | Split Air Conditioning Unit | 20d | 2026-02-28 A | 2026-03-26 A | PG-Q-PR-SL-AC-MS-10 | 100% |  |  | COST [309.93] | 309.93 | 309.93 | Q | DIV-15 |  | Div15.4 |  |
| PG-Q-PR-SL-AC-MA-20 |  | Air Duct | 16d | 2026-03-04 A | 2026-03-26 A | PG-Q-PR-SL-AC-MS-20 | 100% |  |  | COST [156] | 156 | 156 | Q | DIV-15 |  | Div15.4 |  |
| PG-Q-PR-SL-AC-MA-30 |  | Diffusers and Grills | 11d | 2026-03-10 A | 2026-03-26 A | PG-Q-PR-SL-AC-MS-30 | 100% |  |  | COST [74.31] | 74.31 | 74.31 | Q | DIV-15 |  | Div15.4 |  |
| PG-Q-PR-SL-AC-MA-40 |  | Exhaust fans | 11d | 2026-03-10 A | 2026-03-26 A | PG-Q-PR-SL-AC-MS-40 | 100% |  |  | COST [66.12] | 66.12 | 66.12 | Q | DIV-15 |  | Div15.4 |  |
|  | 7 | **PLUMBING WORK** |  | 2026-03-25 | 2026-03-26 |  |  |  |  |  |  |  |  |  |  |  |  |
| PG-Q-PR-SL-PB-MA-10 |  | PPR Pipes & Valves | 2d | 2026-03-25 A | 2026-03-26 A | PG-Q-PR-SL-PB-MS-10 | 100% |  |  | COST [265.2] | 265.2 | 265.2 | Q | DIV-15 |  | Div15.2 |  |
| PG-Q-PR-SL-PB-MA-20 |  | UPCV Pipes | 2d | 2026-03-25 A | 2026-03-26 A | PG-Q-PR-SL-PB-MS-20 | 100% |  |  | COST [335.19] | 335.19 | 335.19 | Q | DIV-15 |  | Div15.3 |  |
| PG-Q-PR-SL-PB-MA-30 |  | Sanitary Drainage Fixtures | 2d | 2026-03-25 A | 2026-03-26 A | PG-Q-PR-SL-PB-MS-30 | 100% |  |  | COST [2546.64] | 2,546.64 | 2,546.64 | Q | DIV-15 |  | Div15.3 |  |
|  | 8 | **IRRIGATION WORK** |  | 2026-03-03 | 2026-03-26 |  |  |  |  |  |  |  |  |  |  |  |  |
| PG-Q-PR-SL-IR-MA-10 |  | Gate Valve including valve box | 17d | 2026-03-03 A | 2026-03-26 A | PG-Q-PR-SL-IR-MS-10 | 100% |  |  | COST [1330.74] | 1,330.74 | 1,330.74 | Q | DIV-15 |  | Div15.5 |  |
| PG-Q-PR-SL-IR-MA-20 |  | Bulbblers and Spreyers | 12d | 2026-03-09 A | 2026-03-26 A | PG-Q-PR-SL-IR-MS-20 | 100% |  |  | COST [11839.4] | 11,839.38 | 11,839.38 | Q | DIV-15 |  | Div15.5 |  |
|  | 9 | **ELECTRICAL WORK** |  | 2026-03-25 | 2026-03-26 |  |  |  |  |  |  |  |  |  |  |  |  |
| PG-Q-PR-SL-EL-MA-10 |  | Wiring Devices Materials | 2d | 2026-03-25 A | 2026-03-26 A | PG-Q-PR-SL-EL-MS-10 | 100% |  |  | COST [407.52] | 407.52 | 407.52 | Q | DIV-16 |  |  | Div16.9 |
|  | 10 | **FIRE FIGHTING WORK** |  | 2026-03-25 | 2026-03-26 |  |  |  |  |  |  |  |  |  |  |  |  |
| PG-Q-PR-SL-FF-MA-10 |  | Fire Extinguishers | 2d | 2026-03-25 A | 2026-03-26 A | PG-Q-PR-SL-FF-MS-10 | 100% |  |  | COST [22.71] | 22.71 | 22.71 | Q | DIV-15 |  | Div15.1 |  |
|  | PR | **PROCUREMENT** |  | 2026-03-03 | 2026-11-17 |  |  |  |  |  |  |  |  |  |  |  |  |
|  | 1 | **LONG LEAD ITEMS** |  | 2026-03-18 | 2026-11-17 |  |  |  |  |  |  |  |  |  |  |  |  |
|  | 2 | **PURCHASE ORDER** |  | 2026-03-18 | 2026-09-16 |  |  |  |  |  |  |  |  |  |  |  |  |
|  | 1 | **EXTERNAL / LANDSCAPE WORK** |  | 2026-05-06 | 2026-05-11 |  |  |  |  |  |  |  |  |  |  |  |  |
| PG-Q-PR-LL-LS-PO-10 |  | Bike and Walk Path Materials | 5.25d | 2026-05-06 A | 2026-05-11 A | PG-Q-PR-LL-LS-MA-10 | 100% | 2026-05-06 | 2026-05-12 |  |  |  | Q |  |  |  |  |
| PG-Q-PR-LL-LS-PO-20 |  | Benches, Seats (Rectangular & Circular) | 5.25d | 2026-05-06 A | 2026-05-11 A | PG-Q-PR-LL-LS-MA-20 | 100% | 2026-05-06 | 2026-05-12 |  |  |  | Q |  |  |  |  |
| PG-Q-PR-LL-LS-PO-30 |  | Fence, gates and accessories | 5.25d | 2026-05-06 A | 2026-05-11 A | PG-Q-PR-LL-LS-MA-30 | 100% | 2026-05-06 | 2026-05-12 |  |  |  | Q |  |  |  |  |

| ID | WBS | Activity | Duration | Start | Finish | Predecessors | Complete | Planned start | Planned finish | H,Q,T-Location | Air Dome |
| --- | --- | --- | --- | --- | --- | --- | --- | --- | --- | --- | --- |
|  | 2 | **SPORTS & RECREATIONAL FACILITIES WORK** |  | 2026-03-26 | 2026-07-09 |  |  |  |  |  |  |
| PG-Q-PR-LL-SP-PO-40 |  | Tartan Floor | 36.25d | 2026-03-26 A | 2026-05-06 A | PG-Q-PR-LL-SP-MA-40, PG-Q-PR-LL-SP-MA-40 SS | 100% | 2026-03-26 | 2026-05-07 | Q |  |
| PG-Q-PR-LL-SP-PO-10 |  | Football Playground Materials (Flooring, goal post, nets, paints, etc) | 35.25d | 2026-03-28 A | 2026-05-06 A | PG-Q-PR-LL-SP-MA-10, PG-Q-PR-LL-SP-MA-10 SS | 100% | 2026-03-28 | 2026-05-07 | Q |  |
| PG-Q-PR-LL-SP-PO-20 |  | Basketball Playground Materials (Flooring, basketball poll, nets, paints, etc) | 35.25d | 2026-03-28 A | 2026-05-06 A | PG-Q-PR-LL-SP-MA-20, PG-Q-PR-LL-SP-MA-20 SS | 100% | 2026-03-28 | 2026-05-07 | Q |  |
| PG-Q-PR-LL-SP-PO-30 |  | Padel Playgound Materials (Flooring, fence, tempered glass, etc) | 35.25d | 2026-03-28 A | 2026-05-06 A | PG-Q-PR-LL-SP-MA-30, PG-Q-PR-LL-SP-MA-30 SS | 100% | 2026-03-28 | 2026-05-07 | Q |  |
| PG-Q-PR-LL-SP-PO-50 |  | Air Dome Materials | 8d | 2026-07-08 A | 2026-07-09 A | PG-Q-PR-LL-SP-MA-50_R SS | 100% | 2026-07-18 | 2026-07-26 | Q | A.D |
|  | 3 | **CONCRETE WORK** |  | 2026-03-18 | 2026-05-06 |  |  |  |  |  |  |
| PG-Q-PR-LL-CO-PO-10 |  | Autoclaved Aerated Panel | 39.25d | 2026-03-18 A | 2026-05-06 A | PG-Q-PR-LL-CO-MA-10 | 100% | 2026-03-18 | 2026-05-07 | Q |  |
|  | 5 | **METAL WORK** |  | 2026-03-26 | 2026-05-06 |  |  |  |  |  |  |
| PG-Q-PR-LL-MT-PO-10 |  | Metal Doors | 36.25d | 2026-03-26 A | 2026-05-06 A | PG-Q-PR-LL-MT-MS-10, PG-Q-PR-LL-MT-MA-10 SS | 100% | 2026-03-26 | 2026-05-07 | Q |  |
| PG-Q-PR-LL-MT-PO-20 |  | Curtain Wall | 36.25d | 2026-03-26 A | 2026-05-06 A | PG-Q-PR-LL-MT-MS-20, PG-Q-PR-LL-MT-MA-20 SS | 100% | 2026-03-26 | 2026-05-07 | Q |  |
|  | 7 | **PLUMBING WORK** |  | 2026-03-29 | 2026-05-06 |  |  |  |  |  |  |
| PG-Q-PR-LL-PB-PO-10 |  | Booster Pump | 34.25d | 2026-03-29 A | 2026-05-06 A | PG-Q-PR-LL-PB-MS-10, PG-Q-PR-LL-PB-MA-10 SS | 100% | 2026-03-29 | 2026-05-07 | Q |  |
| PG-Q-PR-LL-PB-PO-20 |  | GRP Sectional Panel Water Tanks (4x3x3m) | 30.25d | 2026-04-02 A | 2026-05-06 A | PG-Q-PR-LL-PB-MS-20, PG-Q-PR-LL-PB-MA-20 SS | 100% | 2026-04-02 | 2026-05-07 | Q |  |
|  | 8 | **IRRIGATION WORK** |  | 2026-03-25 | 2026-05-06 |  |  |  |  |  |  |
| PG-Q-PR-LL-IR-PO-10 |  | HDPE Pipes | 37.25d | 2026-03-25 A | 2026-05-06 A | PG-Q-PR-LL-IR-MA-10 | 100% | 2026-03-25 | 2026-05-07 | Q |  |
| PG-Q-PR-LL-IR-PO-20 |  | Irrigation Control System | 37.25d | 2026-03-25 A | 2026-05-06 A | PG-Q-PR-LL-IR-MA-20 | 100% | 2026-03-25 | 2026-05-07 | Q |  |
|  | 9 | **ELECTRICAL WORK** |  | 2026-05-13 | 2026-09-16 |  |  |  |  |  |  |
| PG-Q-PR-LL-EL-PO-10 |  | Main Distribution Board(Completed) | 33.25d | 2026-05-13 A | 2026-06-24 A | PG-Q-PR-LL-EL-MA-10 SS | 100% | 2026-05-13 | 2026-06-25 | Q |  |
| PG-Q-PR-LL-EL-PO-20 |  | Power Panels (Pump, Street Light)(Completed) | 33.25d | 2026-05-13 A | 2026-06-24 A | PG-Q-PR-LL-EL-MA-20 SS | 100% | 2026-05-13 | 2026-06-25 | Q |  |
| PG-Q-PR-LL-EL-PO-30 |  | Site Lighting Poles(Completed) | 33.25d | 2026-05-13 A | 2026-06-24 A | PG-Q-PR-LL-EL-MA-30 SS | 100% | 2026-05-13 | 2026-06-25 | Q |  |
| PG-Q-PR-LL-EL-PO-40 |  | Lighting Fixtures(Completed) | 33.25d | 2026-05-13 A | 2026-06-24 A | PG-Q-PR-LL-EL-MA-40 SS | 100% | 2026-05-13 | 2026-06-25 | Q |  |
| PG-Q-PR-LL-EL-PO-50 |  | Grounding System Materials (Earth pit rod, LPS, etc)(Completed) | 33.25d | 2026-05-13 A | 2026-06-24 A | PG-Q-PR-LL-EL-MA-50 SS | 100% | 2026-05-13 | 2026-06-25 | Q |  |
| PG-Q-PR-LL-EL-PO-60 |  | Telecommunications & Data System Materials (Telephone outlet, CCTV, etc)(Completed) | 33.25d | 2026-05-13 A | 2026-06-24 A | PG-Q-PR-LL-EL-MA-60 SS | 100% | 2026-05-13 | 2026-06-25 | Q |  |
| PG-Q-PR-LL-EL-PO-70 |  | Security and Access Control System Materials(Completed) | 33.25d | 2026-05-13 A | 2026-06-24 A | PG-Q-PR-LL-EL-MA-70 SS | 100% | 2026-05-13 | 2026-06-25 | Q |  |
| PG-Q-PR-LL-EL-PO-80 |  | Fire Alarm System Materials(Completed) | 33.25d | 2026-05-13 A | 2026-06-24 A | PG-Q-PR-LL-EL-MA-80 SS | 100% | 2026-05-13 | 2026-06-25 | Q |  |
| PG-Q-PR-LL-EL-PO-40_R |  | Lighting Fixtures(Remaining) | 8d | 2026-07-23 A | 2026-09-16 A | PG-Q-PR-LL-EL-MA-40_R, PG-Q-PR-LL-EL-PO-40 | 100% | 2026-07-29 | 2026-08-08 | Q |  |
| PG-Q-PR-LL-EL-PO-10_R |  | Main Distribution Board(Remaining) | 8d | 2026-08-14 A | 2026-09-16 A | PG-Q-PR-LL-EL-PO-10, PG-Q-PR-LL-EL-MA-10_R SS | 100% | 2026-08-19 | 2026-08-29 | Q |  |
| PG-Q-PR-LL-EL-PO-20_R |  | Power Panels (Pump, Street Light)(Remaining) | 8d | 2026-08-14 A | 2026-09-16 A | PG-Q-PR-LL-EL-PO-20, PG-Q-PR-LL-EL-MA-20_R SS | 100% | 2026-08-19 | 2026-08-29 | Q |  |
| PG-Q-PR-LL-EL-PO-30_R |  | Site Lighting Poles(Remaining) | 8d | 2026-08-14 A | 2026-09-16 A | PG-Q-PR-LL-EL-PO-30, PG-Q-PR-LL-EL-MA-30_R SS | 100% | 2026-08-19 | 2026-08-29 | Q |  |
| PG-Q-PR-LL-EL-PO-50_R |  | Grounding System Materials (Earth pit rod, LPS, etc)(Remaining) | 8d | 2026-08-27 A | 2026-09-16 A | PG-Q-PR-LL-EL-MA-50_R, PG-Q-PR-LL-EL-PO-50, PG-Q-PR-LL-EL-MA-50_R SS | 100% | 2026-08-31 | 2026-09-09 | Q |  |
| PG-Q-PR-LL-EL-PO-60_R |  | Telecommunications & Data System Materials (Telephone outlet, CCTV, etc)(Remaining) | 8d | 2026-08-27 A | 2026-09-16 A | PG-Q-PR-LL-EL-MA-60_R, PG-Q-PR-LL-EL-PO-60, PG-Q-PR-LL-EL-MA-60_R SS | 100% | 2026-08-31 | 2026-09-09 | Q |  |
| PG-Q-PR-LL-EL-PO-70_R |  | Security and Access Control System Materials(Remaining) | 8d | 2026-08-27 A | 2026-09-16 A | PG-Q-PR-LL-EL-MA-70_R, PG-Q-PR-LL-EL-PO-70, PG-Q-PR-LL-EL-MA-70_R SS | 100% | 2026-09-06 | 2026-09-14 | Q |  |
| PG-Q-PR-LL-EL-PO-80_R |  | Fire Alarm System Materials(Remaining) | 8d | 2026-08-27 A | 2026-09-16 A | PG-Q-PR-LL-EL-MA-80_R, PG-Q-PR-LL-EL-PO-80, PG-Q-PR-LL-EL-MA-80_R SS | 100% | 2026-09-06 | 2026-09-14 | Q |  |

| ID | WBS | Activity | Duration | Start | Finish | Predecessors | Complete | Planned start | Planned finish | Total float | Free float | H,Q,T-Location | Air Dome |
| --- | --- | --- | --- | --- | --- | --- | --- | --- | --- | --- | --- | --- | --- |
|  | 3 | **MANUFACTURE / FABRICATION** |  | 2026-05-05 | 2026-10-31 |  |  |  |  |  |  |  |  |
|  | 1 | **EXTERNAL / LANDSCAPE WORK** |  | 2026-05-05 | 2026-09-16 |  |  |  |  |  |  |  |  |
| PG-Q-PR-LL-LS-MF-10 |  | Bike and Walk Path Materials(Completed) | 40.25d | 2026-05-05 A | 2026-06-24 A | PG-Q-PR-LL-LS-PO-10 | 100% | 2026-05-05 | 2026-06-25 |  |  | Q |  |
| PG-Q-PR-LL-LS-MF-20 |  | Benches, Seats (Rectangular & Circular)(Completed) | 40.25d | 2026-05-05 A | 2026-06-24 A | PG-Q-PR-LL-LS-PO-20 | 100% | 2026-05-05 | 2026-06-25 |  |  | Q |  |
| PG-Q-PR-LL-LS-MF-30 |  | Fence, gates and accessories(Completed) | 40.25d | 2026-05-05 A | 2026-06-24 A | PG-Q-PR-LL-LS-PO-30 | 100% | 2026-05-05 | 2026-06-25 |  |  | Q |  |
| PG-Q-PR-LL-LS-MF-10_R |  | Bike and Walk Path Materials(Remaining) | 10d | 2026-07-30 A | 2026-09-16 A | PG-Q-PR-LL-LS-PO-10, PG-Q-PR-LL-LS-MF-10 | 100% | 2026-08-02 | 2026-08-12 |  |  | Q |  |
| PG-Q-PR-LL-LS-MF-20_R |  | Benches, Seats (Rectangular & Circular)(Remaining) | 25d | 2026-07-30 A | 2026-09-16 A | PG-Q-PR-LL-LS-PO-20, PG-Q-PR-LL-LS-MF-20 | 100% | 2026-08-02 | 2026-08-30 |  |  | Q |  |
| PG-Q-PR-LL-LS-MF-30_R |  | Fence, gates and accessories(Remaining) | 25d | 2026-08-14 A | 2026-09-16 A | PG-Q-PR-LL-LS-PO-30, PG-Q-PR-LL-LS-MF-30 | 100% | 2026-08-16 | 2026-09-13 |  |  | Q |  |
|  | 2 | **SPORTS & RECREATIONAL FACILITIES WORK** |  | 2026-05-05 | 2026-09-16 |  |  |  |  |  |  |  |  |
| PG-Q-PR-LL-SP-MF-10 |  | Football Playground Materials (Flooring, goal post, nets, paints, etc)(Completed) | 40.25d | 2026-05-05 A | 2026-06-24 A | PG-Q-PR-LL-SP-PO-10 | 100% | 2026-05-05 | 2026-06-25 |  |  | Q |  |
| PG-Q-PR-LL-SP-MF-20 |  | Basketball Playground Materials (Flooring, basketball poll, nets, paints, etc)(Completed) | 40.25d | 2026-05-05 A | 2026-06-24 A | PG-Q-PR-LL-SP-PO-20 | 100% | 2026-05-05 | 2026-06-25 |  |  | Q |  |
| PG-Q-PR-LL-SP-MF-30 |  | Padel Playgound Materials (Flooring, fence, tempered glass, etc)(Completed) | 40.25d | 2026-05-05 A | 2026-06-24 A | PG-Q-PR-LL-SP-PO-30 | 100% | 2026-05-05 | 2026-06-25 |  |  | Q |  |
| PG-Q-PR-LL-SP-MF-40 |  | Tartan Floor(Completed) | 40.25d | 2026-05-05 A | 2026-06-24 A | PG-Q-PR-LL-SP-PO-40 | 100% | 2026-05-05 | 2026-06-25 |  |  | Q |  |
| PG-Q-PR-LL-SP-MF-40_R |  | Tartan Floor(Remaining) | 25d | 2026-07-22 A | 2026-09-16 A | PG-Q-PR-LL-SP-PO-40, PG-Q-PR-LL-SP-MF-40 | 100% | 2026-07-26 | 2026-08-23 |  |  | Q |  |
| PG-Q-PR-LL-SP-MF-10_R |  | Football Playground Materials (Flooring, goal post, nets, paints, etc)(Remaining) | 25d | 2026-07-30 A | 2026-09-16 A | PG-Q-PR-LL-SP-PO-10, PG-Q-PR-LL-SP-MF-10 | 100% | 2026-08-02 | 2026-08-30 |  |  | Q |  |
| PG-Q-PR-LL-SP-MF-30_R |  | Padel Playgound Materials (Flooring, fence, tempered glass, etc)(Remaining) | 15d | 2026-07-30 A | 2026-09-16 A | PG-Q-PR-LL-SP-PO-30, PG-Q-PR-LL-SP-MF-30 | 100% | 2026-08-02 | 2026-08-18 |  |  | Q |  |
| PG-Q-PR-LL-SP-MF-20_R |  | Basketball Playground Materials (Flooring, basketball poll, nets, paints, etc)(Remaining) | 25d | 2026-08-14 A | 2026-09-16 A | PG-Q-PR-LL-SP-PO-20, PG-Q-PR-LL-SP-MF-20 | 100% | 2026-08-16 | 2026-09-13 |  |  | Q |  |
| PG-Q-PR-LL-SP-MF-50 |  | Air Dome Materials | 28d | 2026-08-27 A | 2026-09-16 A | PG-Q-PR-LL-SP-PO-50 | 100% | 2026-08-29 | 2026-09-30 |  |  | Q | A.D |
|  | 3 | **CONCRETE WORK** |  | 2026-05-05 | 2026-06-24 |  |  |  |  |  |  |  |  |
| PG-Q-PR-LL-CO-MF-10 |  | Autoclaved Aerated Panel(Completed) | 40.25d | 2026-05-05 A | 2026-06-24 A | PG-Q-PR-LL-CO-PO-10 | 100% | 2026-05-05 | 2026-06-25 |  |  | Q |  |
| PG-Q-PR-LL-CO-MF-10_R |  | Autoclaved Aerated Panel(Remaining) | 15d | 2026-06-01 A | 2026-06-04 A | PG-Q-PR-LL-CO-PO-10, PG-Q-PR-LL-CO-MF-10 | 100% | 2026-07-12 | 2026-07-28 |  |  | Q |  |
|  | 5 | **METAL WORK** |  | 2026-05-05 | 2026-10-31 |  |  |  |  |  |  |  |  |
| PG-Q-PR-LL-MT-MF-10 |  | Metal Doors(Completed) | 40.25d | 2026-05-05 A | 2026-06-24 A | PG-Q-PR-LL-MT-PO-10 | 100% | 2026-05-05 | 2026-06-25 |  |  | Q |  |
| PG-Q-PR-LL-MT-MF-20 |  | Curtain Wall(Completed) | 40.25d | 2026-05-05 A | 2026-06-24 A | PG-Q-PR-LL-MT-PO-20 | 100% | 2026-05-05 | 2026-06-25 |  |  | Q |  |
| PG-Q-PR-LL-MT-MF-10_R |  | Metal Doors(Remaining) | 25d | 2026-09-06 A | 2026-10-02 A | PG-Q-PR-LL-MT-PO-10, PG-Q-PR-LL-MT-MF-10 | 100% | 2026-09-26 | 2026-10-24 |  |  | Q |  |
| PG-Q-PR-LL-MT-MF-20_R |  | Curtain Wall(Remaining) | 25d | 2026-10-03 | 2026-10-31 | PG-Q-PR-LL-MT-PO-20, PG-Q-PR-LL-MT-MF-20 |  |  |  | -0.05d | 0d | Q |  |

| ID | WBS | Activity | Duration | Start | Finish | Predecessors | Complete | Planned start | Planned finish | H,Q,T-Location |
| --- | --- | --- | --- | --- | --- | --- | --- | --- | --- | --- |
|  | 7 | **PLUMBING WORK** |  | 2026-05-05 | 2026-06-24 |  |  |  |  |  |
| PG-Q-PR-LL-PB-MF-10 |  | Booster Pump(Completed) | 40.25d | 2026-05-05 A | 2026-06-24 A | PG-Q-PR-LL-PB-PO-10 | 100% | 2026-05-05 | 2026-06-25 | Q |
| PG-Q-PR-LL-PB-MF-20 |  | GRP Sectional Panel Water Tanks (4x3x3m)(Completed) | 40.25d | 2026-05-05 A | 2026-06-24 A | PG-Q-PR-LL-PB-PO-20 | 100% | 2026-05-05 | 2026-06-25 | Q |
| PG-Q-PR-LL-PB-MF-20_R |  | GRP Sectional Panel Water Tanks (4x3x3m)(Remaining) | 25d | 2026-06-06 A | 2026-06-09 A | PG-Q-PR-LL-PB-PO-20, PG-Q-PR-LL-PB-MF-20 | 100% | 2026-07-12 | 2026-08-09 | Q |
| PG-Q-PR-LL-PB-MF-10_R |  | Booster Pump(Remaining) | 25d | 2026-06-11 A | 2026-06-15 A | PG-Q-PR-LL-PB-PO-10, PG-Q-PR-LL-PB-MF-10 | 100% | 2026-07-12 | 2026-08-09 | Q |
|  | 8 | **IRRIGATION WORK** |  | 2026-05-05 | 2026-09-16 |  |  |  |  |  |
| PG-Q-PR-LL-IR-MF-10 |  | HDPE Pipes(Completed) | 40.25d | 2026-05-05 A | 2026-06-24 A | PG-Q-PR-LL-IR-PO-10 | 100% | 2026-05-05 | 2026-06-25 | Q |
| PG-Q-PR-LL-IR-MF-20 |  | Irrigation Control System(Completed) | 40.25d | 2026-05-05 A | 2026-06-24 A | PG-Q-PR-LL-IR-PO-20 | 100% | 2026-05-05 | 2026-06-25 | Q |
| PG-Q-PR-LL-IR-MF-10_R |  | HDPE Pipes(Remaining) | 10d | 2026-06-02 A | 2026-06-04 A | PG-Q-PR-LL-IR-PO-10, PG-Q-PR-LL-IR-MF-10 | 100% | 2026-07-12 | 2026-07-22 | Q |
| PG-Q-PR-LL-IR-MF-20_R |  | Irrigation Control System(Remaining) | 10d | 2026-07-30 A | 2026-09-16 A | PG-Q-PR-LL-IR-PO-20, PG-Q-PR-LL-IR-MF-20 | 100% | 2026-08-02 | 2026-08-12 | Q |
|  | 9 | **ELECTRICAL WORK** |  | 2026-05-12 | 2026-09-16 |  |  |  |  |  |
| PG-Q-PR-LL-EL-MF-10 |  | Main Distribution Board(Completed) | 34.25d | 2026-05-12 A | 2026-06-24 A | PG-Q-PR-LL-EL-PO-10 SS | 100% | 2026-05-12 | 2026-06-25 | Q |
| PG-Q-PR-LL-EL-MF-20 |  | Power Panels (Pump, Street Light)(Completed) | 34.25d | 2026-05-12 A | 2026-06-24 A | PG-Q-PR-LL-EL-PO-20 SS | 100% | 2026-05-12 | 2026-06-25 | Q |
| PG-Q-PR-LL-EL-MF-30 |  | Site Lighting Poles(Completed) | 34.25d | 2026-05-12 A | 2026-06-24 A | PG-Q-PR-LL-EL-PO-30 SS | 100% | 2026-05-12 | 2026-06-25 | Q |
| PG-Q-PR-LL-EL-MF-40 |  | Lighting Fixtures(Completed) | 34.25d | 2026-05-12 A | 2026-06-24 A | PG-Q-PR-LL-EL-PO-40 SS | 100% | 2026-05-12 | 2026-06-25 | Q |
| PG-Q-PR-LL-EL-MF-50 |  | Grounding System Materials (Earth pit rod, LPS, etc)(Completed) | 34.25d | 2026-05-12 A | 2026-06-24 A | PG-Q-PR-LL-EL-PO-50 SS | 100% | 2026-05-12 | 2026-06-25 | Q |
| PG-Q-PR-LL-EL-MF-60 |  | Telecommunications & Data System Materials (Telephone outlet, CCTV, etc)(Completed) | 34.25d | 2026-05-12 A | 2026-06-24 A | PG-Q-PR-LL-EL-PO-60 SS | 100% | 2026-05-12 | 2026-06-25 | Q |
| PG-Q-PR-LL-EL-MF-70 |  | Security and Access Control System Materials(Completed) | 34.25d | 2026-05-12 A | 2026-06-24 A | PG-Q-PR-LL-EL-PO-70 SS | 100% | 2026-05-12 | 2026-06-25 | Q |
| PG-Q-PR-LL-EL-MF-80 |  | Fire Alarm System Materials(Completed) | 34.25d | 2026-05-12 A | 2026-06-24 A | PG-Q-PR-LL-EL-PO-80 SS | 100% | 2026-05-12 | 2026-06-25 | Q |
| PG-Q-PR-LL-EL-MF-10_R |  | Main Distribution Board(Remaining) | 25d | 2026-08-14 A | 2026-09-16 A | PG-Q-PR-LL-EL-MF-10, PG-Q-PR-LL-EL-PO-10_R SS | 100% | 2026-08-29 | 2026-09-28 | Q |
| PG-Q-PR-LL-EL-MF-20_R |  | Power Panels (Pump, Street Light)(Remaining) | 15d | 2026-08-14 A | 2026-09-16 A | PG-Q-PR-LL-EL-MF-20, PG-Q-PR-LL-EL-PO-20_R SS | 100% | 2026-08-29 | 2026-09-15 | Q |
| PG-Q-PR-LL-EL-MF-30_R |  | Site Lighting Poles(Remaining) | 25d | 2026-08-14 A | 2026-09-16 A | PG-Q-PR-LL-EL-MF-30, PG-Q-PR-LL-EL-PO-30_R SS | 100% | 2026-08-29 | 2026-09-28 | Q |
| PG-Q-PR-LL-EL-MF-40_R |  | Lighting Fixtures(Remaining) | 25d | 2026-08-14 A | 2026-09-16 A | PG-Q-PR-LL-EL-MF-40, PG-Q-PR-LL-EL-PO-40_R SS | 100% | 2026-08-19 | 2026-09-17 | Q |
| PG-Q-PR-LL-EL-MF-50_R |  | Grounding System Materials (Earth pit rod, LPS, etc)(Remaining) | 25d | 2026-08-27 A | 2026-09-16 A | PG-Q-PR-LL-EL-PO-50_R, PG-Q-PR-LL-EL-MF-50, PG-Q-PR-LL-EL-PO-50_R SS | 100% | 2026-09-09 | 2026-10-10 | Q |
| PG-Q-PR-LL-EL-MF-60_R |  | Telecommunications & Data System Materials (Telephone outlet, CCTV, etc)(Remaining) | 25d | 2026-08-27 A | 2026-09-16 A | PG-Q-PR-LL-EL-PO-60_R, PG-Q-PR-LL-EL-MF-60, PG-Q-PR-LL-EL-PO-60_R SS | 100% | 2026-09-09 | 2026-10-10 | Q |
| PG-Q-PR-LL-EL-MF-70_R |  | Security and Access Control System Materials(Remaining) | 25d | 2026-08-27 A | 2026-09-16 A | PG-Q-PR-LL-EL-PO-70_R, PG-Q-PR-LL-EL-MF-70, PG-Q-PR-LL-EL-PO-70_R SS | 100% | 2026-09-15 | 2026-10-14 | Q |
| PG-Q-PR-LL-EL-MF-80_R |  | Fire Alarm System Materials(Remaining) | 25d | 2026-08-27 A | 2026-09-16 A | PG-Q-PR-LL-EL-PO-80_R, PG-Q-PR-LL-EL-MF-80, PG-Q-PR-LL-EL-PO-80_R SS | 100% | 2026-09-15 | 2026-10-14 | Q |

| ID | WBS | Activity | Duration | Start | Finish | Predecessors | Complete | Remaining | Planned start | Planned finish | Total float | Free float | Resources | Cost | Actual cost | H,Q,T-Location | BOQ DIVISION | DIVISION-02-SITE WORKS | Air Dome | DIVISION-3 CONCRETE | DIVISION 8- DOORS & WINDOWS |
| --- | --- | --- | --- | --- | --- | --- | --- | --- | --- | --- | --- | --- | --- | --- | --- | --- | --- | --- | --- | --- | --- |
|  | 4 | **DELIVERY TO SITE** |  | 2026-05-06 | 2026-11-17 |  |  |  |  |  |  |  |  |  |  |  |  |  |  |  |  |
|  | 1 | **EXTERNAL / LANDSCAPE WORK** |  | 2026-05-06 | 2026-10-04 |  |  |  |  |  |  |  |  |  |  |  |  |  |  |  |  |
| PG-Q-PR-LL-LS-DL-10 |  | Bike and Walk Path Materials(Completed) | 39d | 2026-05-06 A | 2026-06-24 A | PG-Q-PR-LL-LS-MF-10 SS | 100% |  |  |  |  |  | COST [71685] | 71,685 | 71,685 | Q | DIV-2 | Div-2.3 |  |  |  |
| PG-Q-PR-LL-LS-DL-20 |  | Benches, Seats (Rectangular & Circular)(Completed) | 39d | 2026-05-06 A | 2026-06-24 A | PG-Q-PR-LL-LS-MF-20 SS | 100% |  |  |  |  |  | COST [21643] | 21,643.04 | 21,643.04 | Q | DIV-2 | Div-2.3 |  |  |  |
| PG-Q-PR-LL-LS-DL-30 |  | Fence, gates and accessories(Completed) | 39d | 2026-05-06 A | 2026-06-24 A | PG-Q-PR-LL-LS-MF-30 SS | 100% |  |  |  |  |  | COST [11381.4] | 11,381.44 | 11,381.44 | Q | DIV-2 | Div-2.3 |  |  |  |
| PG-Q-PR-LL-LS-DL-10_R |  | Bike and Walk Path Materials(Remaining) | 9d | 2026-08-14 A | 2026-09-26 A | PG-Q-PR-LL-LS-DL-10, PG-Q-PR-LL-LS-MF-10_R SS | 100% |  | 2026-08-22 | 2026-08-31 |  |  | COST [47790] | 47,790 | 47,790 | Q | DIV-2 | Div-2.3 |  |  |  |
| PG-Q-PR-LL-LS-DL-20_R |  | Benches, Seats (Rectangular & Circular)(Remaining) | 15d | 2026-08-14 A | 2026-10-04 | PG-Q-PR-LL-LS-DL-20, PG-Q-PR-LL-LS-MF-20_R SS | 90% | 1.5d | 2026-08-30 | 2026-09-16 | 45.5d | 5.3d | COST [14428.7] | 14,428.69 | 12,985.82 | Q | DIV-2 | Div-2.3 |  |  |  |
| PG-Q-PR-LL-LS-DL-30_R |  | Fence, gates and accessories(Remaining) | 15d | 2026-08-14 A | 2026-09-30 A | PG-Q-PR-LL-LS-DL-30, PG-Q-PR-LL-LS-MF-30_R SS | 100% |  | 2026-09-14 | 2026-10-01 |  |  | COST [11381.4] | 11,381.44 | 11,381.44 | Q | DIV-2 | Div-2.3 |  |  |  |
|  | 2 | **SPORTS & RECREATIONAL FACILITIES WORK** |  | 2026-05-06 | 2026-10-11 |  |  |  |  |  |  |  |  |  |  |  |  |  |  |  |  |
| PG-Q-PR-LL-SP-DL-10 |  | Football Playground Materials (Flooring, goal post, nets, paints, etc)(Completed) | 39d | 2026-05-06 A | 2026-06-24 A | PG-Q-PR-LL-SP-MF-10 SS | 100% |  |  |  |  |  | COST [70478.1] | 70,478.1 | 70,478.1 | Q | DIV-2 | Div-2.3 |  |  |  |
| PG-Q-PR-LL-SP-DL-20 |  | Basketball Playground Materials (Flooring, basketball poll, nets, paints, etc)(Completed) | 39d | 2026-05-06 A | 2026-06-24 A | PG-Q-PR-LL-SP-MF-20 SS | 100% |  |  |  |  |  | COST [10152] | 10,152 | 10,152 | Q | DIV-2 | Div-2.3 |  |  |  |
| PG-Q-PR-LL-SP-DL-30 |  | Padel Playgound Materials (Fence, tempered glass, etc)(Completed) | 39d | 2026-05-06 A | 2026-06-24 A | PG-Q-PR-LL-SP-MF-30 SS | 100% |  |  |  |  |  | COST [26778.6] | 26,778.6 | 26,778.6 | Q | DIV-2 | Div-2.3 |  |  |  |
| PG-Q-PR-LL-SP-DL-40 |  | Tartan Floor(Completed) | 39d | 2026-05-06 A | 2026-06-24 A | PG-Q-PR-LL-SP-MF-40 SS | 100% |  |  |  |  |  | COST [235030] | 235,029.6 | 235,029.6 | Q | DIV-2 | Div-2.3 |  |  |  |
| PG-Q-PR-LL-SP-DL-10_R |  | Football Playground Materials (Flooring, goal post, nets, paints, etc)(Remaining) | 15d | 2026-08-14 A | 2026-10-04 | PG-Q-PR-LL-SP-DL-10, PG-Q-PR-LL-SP-MF-10_R SS | 90% | 1.5d | 2026-08-30 | 2026-09-16 | 44d | 2.3d | COST [46985.4] | 46,985.4 | 42,286.86 | Q | DIV-2 | Div-2.3 |  |  |  |
| PG-Q-PR-LL-SP-DL-20_R |  | Basketball Playground Materials (Flooring, basketball poll, nets, paints, etc)(Remaining) | 15d | 2026-08-14 A | 2026-10-04 | PG-Q-PR-LL-SP-DL-20, PG-Q-PR-LL-SP-MF-20_R SS | 90% | 1.5d | 2026-09-14 | 2026-10-01 | 38.7d | 3d | COST [10152] | 10,152 | 9,136.8 | Q | DIV-2 | Div-2.3 |  |  |  |
| PG-Q-PR-LL-SP-DL-30_R |  | Padel Playgound Materials (Fence, tempered glass, etc)(Remaining) | 15d | 2026-08-14 A | 2026-10-04 | PG-Q-PR-LL-SP-DL-30, PG-Q-PR-LL-SP-MF-30_R SS | 90% | 1.5d | 2026-08-24 | 2026-09-10 | 6.3d | 0d | COST [26778.6] | 26,778.6 | 24,100.74 | Q | DIV-2 | Div-2.3 |  |  |  |
| PG-Q-PR-LL-SP-DL-40_R |  | Tartan Floor(Remaining) | 15d | 2026-08-14 A | 2026-10-04 | PG-Q-PR-LL-SP-DL-40, PG-Q-PR-LL-SP-MF-40_R SS | 90% | 1.5d | 2026-08-30 | 2026-09-16 | 33.4d | 0d | COST [156686] | 156,686.4 | 141,017.76 | Q | DIV-2 | Div-2.3 |  |  |  |
| PG-Q-PR-LL-SP-DL-50 |  | Air Dome Materials | 10d | 2026-08-25 A | 2026-10-11 | PG-Q-PR-LL-SP-MF-50, PG-Q-EN-AR-SD-AP-130, PG-Q-EN-AR-SD-AP-120, PG-Q-EN-AR-SD-AP-110, PG-Q-EN-ME-SD-AP-100, PG-Q-EN-EL-SD-AP-130, PG-Q-EN-EL-SD-AP-140, PG-Q-PR-LL-SP-MF-50 FF, PG-Q-EN-AR-SD-AP-130 SS, PG-Q-EN-AR-SD-AP-120 SS, PG-Q-EN-AR-SD-AP-110 SS, PG-Q-EN-ME-SD-AP-100 SS, PG-Q-EN-EL-SD-AP-130 SS, PG-Q-EN-EL-SD-AP-140 SS | 50% | 6d | 2026-09-26 | 2026-10-06 | -32.8d | 0d | COST [1878662] | 1,878,662.16 | 751,464.86 | Q | DIV-2 | AD | A.D |  |  |
|  | 3 | **CONCRETE WORK** |  | 2026-05-06 | 2026-07-05 |  |  |  |  |  |  |  |  |  |  |  |  |  |  |  |  |
| PG-Q-PR-LL-CO-DL-10 |  | Autoclaved Aerated Panel(Completed) | 39d | 2026-05-06 A | 2026-06-24 A | PG-Q-PR-LL-CO-MF-10 SS | 100% |  |  |  |  |  | COST [7654.5] | 7,654.5 | 7,654.5 | Q | DIV-3 |  |  | Div-3 |  |
| PG-Q-PR-LL-CO-DL-10_R |  | Autoclaved Aerated Panel(Remaining) | 10d | 2026-07-04 A | 2026-07-05 A | PG-Q-PR-LL-CO-MF-10_R, PG-Q-PR-LL-CO-DL-10 | 100% |  | 2026-07-29 | 2026-08-09 |  |  | COST [5103] | 5,103 | 5,103 | Q | DIV-3 |  |  | Div-3 |  |
|  | 5 | **METAL WORK** |  | 2026-05-06 | 2026-11-17 |  |  |  |  |  |  |  |  |  |  |  |  |  |  |  |  |
| PG-Q-PR-LL-MT-DL-10 |  | Metal Doors(Completed) | 39d | 2026-05-06 A | 2026-06-24 A | PG-Q-PR-LL-MT-MF-10 SS | 100% |  |  |  |  |  | COST [573.88] | 573.88 | 573.88 | Q | DIV-8 |  |  |  | Div-8.1 |
| PG-Q-PR-LL-MT-DL-20 |  | Curtain Wall(Completed) | 39d | 2026-05-06 A | 2026-06-24 A | PG-Q-PR-LL-MT-MF-20 SS | 100% |  |  |  |  |  | COST [3427.65] | 3,427.65 | 3,427.65 | Q | DIV-8 |  |  |  | Div-8.2 |
| PG-Q-PR-LL-MT-DL-10_R |  | Metal Doors(Remaining) | 15d | 2026-08-27 A | 2026-10-02 A | PG-Q-PR-LL-MT-MF-10_R, PG-Q-PR-LL-MT-DL-10, PG-Q-PR-LL-MT-MF-10_R FF | 100% |  | 2026-09-28 | 2026-10-14 |  |  | COST [573.88] | 573.88 | 573.88 | Q | DIV-8 |  |  |  | Div-8.1 |
| PG-Q-PR-LL-MT-DL-20_R |  | Curtain Wall(Remaining) | 15d | 2026-11-01 | 2026-11-17 | PG-Q-PR-LL-MT-MF-20_R, PG-Q-PR-LL-MT-DL-20, PG-Q-PR-LL-MT-MF-20_R FF |  |  |  |  | -0.05d | 0d | COST [3427.65] | 3,427.65 |  | Q | DIV-8 |  |  |  | Div-8.2 |

| ID | WBS | Activity | Duration | Start | Finish | Predecessors | Complete | Remaining | Planned start | Planned finish | Total float | Free float | Resources | Cost | Actual cost | H,Q,T-Location | BOQ DIVISION | DIVISION 15-MECHANICAL WORKS | DIVISION 16 ELECTRICAL WORKS |
| --- | --- | --- | --- | --- | --- | --- | --- | --- | --- | --- | --- | --- | --- | --- | --- | --- | --- | --- | --- |
|  | 7 | **PLUMBING WORK** |  | 2026-05-06 | 2026-10-04 |  |  |  |  |  |  |  |  |  |  |  |  |  |  |
| PG-Q-PR-LL-PB-DL-10 |  | Booster Pump(Completed) | 39d | 2026-05-06 A | 2026-06-24 A | PG-Q-PR-LL-PB-MF-10 SS | 100% |  |  |  |  |  | COST [8182.35] | 8,182.35 | 8,182.35 | Q | DIV-15 | Div15.2 |  |
| PG-Q-PR-LL-PB-DL-20 |  | GRP Sectional Panel Water Tanks (4x3x3m)(Completed) | 39d | 2026-05-06 A | 2026-06-24 A | PG-Q-PR-LL-PB-MF-20 SS | 100% |  |  |  |  |  | COST [7810.43] | 7,810.43 | 7,810.43 | Q | DIV-15 | Div15.2 |  |
| PG-Q-PR-LL-PB-DL-20_R |  | GRP Sectional Panel Water Tanks (4x3x3m)(Remaining) | 15d | 2026-08-14 A | 2026-10-04 | PG-Q-PR-LL-PB-MF-20_R, PG-Q-PR-LL-PB-DL-20 | 90% | 1.5d | 2026-08-16 | 2026-09-01 | 20.3d | 0d | COST [7810.43] | 7,810.43 | 7,029.38 | Q | DIV-15 | Div15.2 |  |
| PG-Q-PR-LL-PB-DL-10_R |  | Booster Pump(Remaining) | 15d | 2026-08-20 A | 2026-09-30 A | PG-Q-PR-LL-PB-MF-10_R, PG-Q-PR-LL-PB-DL-10 | 100% |  | 2026-08-23 | 2026-09-08 |  |  | COST [8182.35] | 8,182.35 | 8,182.35 | Q | DIV-15 | Div15.2 |  |
|  | 8 | **IRRIGATION WORK** |  | 2026-05-06 | 2026-10-03 |  |  |  |  |  |  |  |  |  |  |  |  |  |  |
| PG-Q-PR-LL-IR-DL-10 |  | HDPE Pipes(Completed) | 39d | 2026-05-06 A | 2026-06-24 A | PG-Q-PR-LL-IR-MF-10 SS | 100% |  |  |  |  |  | COST [89734.5] | 89,734.5 | 89,734.5 | Q | DIV-15 | Div15.5 |  |
| PG-Q-PR-LL-IR-DL-20 |  | Irrigation Control System(Completed) | 39d | 2026-05-06 A | 2026-06-24 A | PG-Q-PR-LL-IR-MF-20 SS | 100% |  |  |  |  |  | COST [20455.9] | 20,455.88 | 20,455.88 | Q | DIV-15 | Div15.5 |  |
| PG-Q-PR-LL-IR-DL-10_R |  | HDPE Pipes(Remaining) | 7d | 2026-08-14 A | 2026-08-27 A | PG-Q-PR-LL-IR-MF-10_R, PG-Q-PR-LL-IR-DL-10 | 100% |  | 2026-08-16 | 2026-08-23 |  |  | COST [89734.5] | 89,734.5 | 89,734.5 | Q | DIV-15 | Div15.5 |  |
| PG-Q-PR-LL-IR-DL-20_R |  | Irrigation Control System(Remaining) | 8d | 2026-08-20 A | 2026-10-03 | PG-Q-PR-LL-IR-MF-20_R, PG-Q-PR-LL-IR-DL-20, PG-Q-PR-LL-IR-MF-20_R SS | 95% | 0.4d | 2026-08-29 | 2026-09-06 | -12.05d | 15d | COST [20455.9] | 20,455.88 | 19,433.08 | Q | DIV-15 | Div15.5 |  |
|  | 9 | **ELECTRICAL WORK** |  | 2026-05-13 | 2026-10-05 |  |  |  |  |  |  |  |  |  |  |  |  |  |  |
| PG-Q-PR-LL-EL-DL-10 |  | Main Distribution Board(Completed) | 33d | 2026-05-13 A | 2026-06-24 A | PG-Q-PR-LL-EL-MF-10 SS | 100% |  |  |  |  |  | COST [1338.93] | 1,338.93 | 1,338.93 | Q | DIV-16 |  | Div16.1 |
| PG-Q-PR-LL-EL-DL-20 |  | Power Panels (Pump, Street Light)(Completed) | 33d | 2026-05-13 A | 2026-06-24 A | PG-Q-PR-LL-EL-MF-20 SS | 100% |  |  |  |  |  | COST [1785.24] | 1,785.24 | 1,785.24 | Q | DIV-16 |  | Div16.1 |
| PG-Q-PR-LL-EL-DL-30 |  | Site Lighting Poles(Completed) | 33d | 2026-05-13 A | 2026-06-24 A | PG-Q-PR-LL-EL-MF-30 SS | 100% |  |  |  |  |  | COST [78323.8] | 78,323.76 | 78,323.76 | Q | DIV-16 |  | Div16.2 |
| PG-Q-PR-LL-EL-DL-40 |  | Lighting Fixtures(Completed) | 33d | 2026-05-13 A | 2026-06-24 A | PG-Q-PR-LL-EL-MF-40 SS | 100% |  |  |  |  |  | COST [3463.64] | 3,463.64 | 3,463.64 | Q | DIV-16 |  | Div16.3 |
| PG-Q-PR-LL-EL-DL-50 |  | Grounding System Materials (Earth pit rod, LPS, etc)(Completed) | 33d | 2026-05-13 A | 2026-06-24 A | PG-Q-PR-LL-EL-MF-50 SS | 100% |  |  |  |  |  | COST [2711.31] | 2,711.31 | 2,711.31 | Q | DIV-16 |  | Div16.6 |
| PG-Q-PR-LL-EL-DL-60 |  | Telecommunications & Data System Materials (Telephone outlet, CCTV, etc)(Completed) | 33d | 2026-05-13 A | 2026-06-24 A | PG-Q-PR-LL-EL-MF-60 SS | 100% |  |  |  |  |  | COST [2644.33] | 2,644.33 | 2,644.33 | Q | DIV-16 |  | Div16.4 |
| PG-Q-PR-LL-EL-DL-70 |  | Security and Access Control System Materials(Completed) | 33d | 2026-05-13 A | 2026-06-24 A | PG-Q-PR-LL-EL-MF-70 SS | 100% |  |  |  |  |  | COST [3347.73] | 3,347.73 | 3,347.73 | Q | DIV-16 |  | Div16.5 |
| PG-Q-PR-LL-EL-DL-80 |  | Fire Alarm System Materials(Completed) | 33d | 2026-05-13 A | 2026-06-24 A | PG-Q-PR-LL-EL-MF-80 SS | 100% |  |  |  |  |  | COST [2147.55] | 2,147.55 | 2,147.55 | Q | DIV-16 |  | Div16.8 |
| PG-Q-PR-LL-EL-DL-10_R |  | Main Distribution Board(Remaining) | 15d | 2026-08-14 A | 2026-10-05 | PG-Q-PR-LL-EL-DL-10, PG-Q-PR-LL-EL-MF-10_R SS | 80% | 3d | 2026-09-28 | 2026-10-15 | -4.4d | 22.65d | COST [3124.17] | 3,124.17 | 2,499.34 | Q | DIV-16 |  | Div16.1 |
| PG-Q-PR-LL-EL-DL-20_R |  | Power Panels (Pump, Street Light)(Remaining) | 10d | 2026-08-14 A | 2026-10-04 | PG-Q-PR-LL-EL-DL-20, PG-Q-PR-LL-EL-MF-20_R SS | 80% | 2d | 2026-09-15 | 2026-09-28 | -1.4d | 25.65d | COST [1785.24] | 1,785.24 | 1,428.19 | Q | DIV-16 |  | Div16.1 |
| PG-Q-PR-LL-EL-DL-30_R |  | Site Lighting Poles(Remaining) | 15d | 2026-08-14 A | 2026-10-05 | PG-Q-PR-LL-EL-DL-30, PG-Q-PR-LL-EL-MF-30_R SS | 80% | 3d | 2026-09-28 | 2026-10-15 | 2.6d | 29.65d | COST [182755] | 182,755.44 | 146,204.35 | Q | DIV-16 |  | Div16.2 |
| PG-Q-PR-LL-EL-DL-40_R |  | Lighting Fixtures(Remaining) | 15d | 2026-08-14 A | 2026-10-05 | PG-Q-PR-LL-EL-DL-40, PG-Q-PR-LL-EL-MF-40_R SS | 80% | 3d | 2026-09-17 | 2026-10-06 | 6.2d | 6d | COST [8081.83] | 8,081.83 | 6,465.46 | Q | DIV-16 |  | Div16.3 |
| PG-Q-PR-LL-EL-DL-50_R |  | Grounding System Materials (Earth pit rod, LPS, etc)(Remaining) | 15d | 2026-08-27 A | 2026-10-05 | PG-Q-PR-LL-EL-MF-50_R, PG-Q-PR-LL-EL-DL-50, PG-Q-PR-LL-EL-MF-50_R SS | 80% | 3d | 2026-10-10 | 2026-10-27 | -5d | 22.05d | COST [6326.4] | 6,326.4 | 5,061.12 | Q | DIV-16 |  | Div16.6 |
| PG-Q-PR-LL-EL-DL-60_R |  | Telecommunications & Data System Materials (Telephone outlet, CCTV, etc)(Remaining) | 15d | 2026-08-27 A | 2026-10-05 | PG-Q-PR-LL-EL-MF-60_R, PG-Q-PR-LL-EL-DL-60, PG-Q-PR-LL-EL-MF-60_R SS | 80% | 3d | 2026-10-10 | 2026-10-27 | 10.2d | 37.25d | COST [6170.09] | 6,170.09 | 4,936.08 | Q | DIV-16 |  | Div16.4 |
| PG-Q-PR-LL-EL-DL-70_R |  | Security and Access Control System Materials(Remaining) | 15d | 2026-08-27 A | 2026-10-05 | PG-Q-PR-LL-EL-MF-70_R, PG-Q-PR-LL-EL-DL-70, PG-Q-PR-LL-EL-MF-70_R SS | 80% | 3d | 2026-10-15 | 2026-11-01 | 29.2d | 51.25d | COST [7811.37] | 7,811.37 | 6,249.1 | Q | DIV-16 |  | Div16.5 |
| PG-Q-PR-LL-EL-DL-80_R |  | Fire Alarm System Materials(Remaining) | 15d | 2026-08-27 A | 2026-10-05 | PG-Q-PR-LL-EL-MF-80_R, PG-Q-PR-LL-EL-DL-80, PG-Q-PR-LL-EL-MF-80_R SS | 80% | 3d | 2026-10-15 | 2026-11-01 | 13.2d | 40.25d | COST [5010.96] | 5,010.96 | 4,008.77 | Q | DIV-16 |  | Div16.8 |

| ID | WBS | Activity | Duration | Start | Finish | Predecessors | Complete | Planned start | Planned finish | H,Q,T-Location |
| --- | --- | --- | --- | --- | --- | --- | --- | --- | --- | --- |
|  | 2 | **SHORT LEAD ITEMS** |  | 2026-03-03 | 2026-10-11 |  |  |  |  |  |
|  | 1 | **MATERIAL SUBMITTALS** |  |  |  |  |  |  |  |  |
|  | 2 | **PURCHASE ORDER** |  | 2026-03-03 | 2026-05-20 |  |  |  |  |  |
|  | 1 | **EXTERNAL / LANDSCAPE WORK** |  | 2026-03-03 | 2026-05-12 |  |  |  |  |  |
| PG-Q-PR-SL-LS-PO-10 |  | Backfilling Materials | 40.25d | 2026-03-03 A | 2026-04-22 A | PG-Q-PR-SL-LS-MA-10 | 100% | 2026-03-03 | 2026-04-23 | Q |
| PG-Q-PR-SL-LS-PO-30 |  | Compacted Natural Ground Soil | 37.25d | 2026-03-07 A | 2026-04-22 A | PG-Q-PR-SL-LS-MA-30 | 100% | 2026-03-07 | 2026-04-23 | Q |
| PG-Q-PR-SL-LS-PO-40 |  | Curb Stone | 28.25d | 2026-03-29 A | 2026-04-29 A | PG-Q-PR-SL-LS-MA-40 | 100% | 2026-03-29 | 2026-04-30 | Q |
| PG-Q-PR-SL-LS-PO-20 |  | Interlock tiles | 25.25d | 2026-04-01 A | 2026-04-29 A | PG-Q-PR-SL-LS-MA-20 | 100% | 2026-04-01 | 2026-04-30 | Q |
| PG-Q-PR-SL-LS-PO-50 |  | Thermoplastic pavement road marking | 2.25d | 2026-05-11 A | 2026-05-12 A | PG-Q-PR-SL-LS-MA-50 | 100% | 2026-05-11 | 2026-05-13 | Q |
| PG-Q-PR-SL-LS-PO-60 |  | Traffic Signages | 2.25d | 2026-05-11 A | 2026-05-12 A | PG-Q-PR-SL-LS-MA-60 | 100% | 2026-05-11 | 2026-05-13 | Q |
| PG-Q-PR-SL-LS-PO-70 |  | Trees | 2.25d | 2026-05-11 A | 2026-05-12 A | PG-Q-PR-SL-LS-MA-70 | 100% | 2026-05-11 | 2026-05-13 | Q |
| PG-Q-PR-SL-LS-PO-80 |  | Lawn | 2.25d | 2026-05-11 A | 2026-05-12 A | PG-Q-PR-SL-LS-MA-80 | 100% | 2026-05-11 | 2026-05-13 | Q |
|  | 3 | **CONCRETE WORK** |  | 2026-03-04 | 2026-04-22 |  |  |  |  |  |
| PG-Q-PR-SL-CO-PO-10 |  | Steel Rebar | 39.25d | 2026-03-04 A | 2026-04-22 A | PG-Q-PR-SL-CO-MA-10 | 100% | 2026-03-04 | 2026-04-23 | Q |
| PG-Q-PR-SL-CO-PO-20 |  | Concrete | 34.25d | 2026-03-10 A | 2026-04-22 A | PG-Q-PR-SL-CO-MA-20 | 100% | 2026-03-10 | 2026-04-23 | Q |
| PG-Q-PR-SL-CO-PO-40 |  | CMU Block | 30.25d | 2026-03-15 A | 2026-04-22 A | PG-Q-PR-SL-CO-MA-40 | 100% | 2026-03-15 | 2026-04-23 | Q |
| PG-Q-PR-SL-CO-PO-50 |  | Concrete Repair & Protection Materials | 30.25d | 2026-03-15 A | 2026-04-22 A | PG-Q-PR-SL-CO-MA-50 | 100% | 2026-03-15 | 2026-04-23 | Q |
| PG-Q-PR-SL-CO-PO-30 |  | Screed | 19.25d | 2026-04-01 A | 2026-04-22 A | PG-Q-PR-SL-CO-MA-30 | 100% | 2026-04-01 | 2026-04-23 | Q |
|  | 4 | **ARCHITECTURAL & FINISHES WORK** |  | 2026-03-07 | 2026-05-05 |  |  |  |  |  |
| PG-Q-PR-SL-AR-PO-40 |  | Cement Plaster | 48.25d | 2026-03-07 A | 2026-05-05 A | PG-Q-PR-SL-AR-MA-40 | 100% | 2026-03-07 | 2026-05-06 | Q |
| PG-Q-PR-SL-AR-PO-50 |  | Acrylic Paint | 45.25d | 2026-03-10 A | 2026-05-05 A | PG-Q-PR-SL-AR-MA-50 | 100% | 2026-03-10 | 2026-05-06 | Q |
| PG-Q-PR-SL-AR-PO-80 |  | Phenolic Partition | 40.25d | 2026-03-16 A | 2026-05-05 A | PG-Q-PR-SL-AR-MA-80 | 100% | 2026-03-16 | 2026-05-06 | Q |
| PG-Q-PR-SL-AR-PO-90 |  | Glass Partition | 40.25d | 2026-03-16 A | 2026-05-05 A | PG-Q-PR-SL-AR-MA-90 | 100% | 2026-03-16 | 2026-05-06 | Q |
| PG-Q-PR-SL-AR-PO-10 |  | Ceramic tiles | 32.25d | 2026-03-30 A | 2026-05-05 A | PG-Q-PR-SL-AR-MA-10 | 100% | 2026-03-30 | 2026-05-06 | Q |
| PG-Q-PR-SL-AR-PO-100 |  | Gypsum Boards | 32.25d | 2026-03-30 A | 2026-05-05 A | PG-Q-PR-SL-AR-MA-100 | 100% | 2026-03-30 | 2026-05-06 | Q |
| PG-Q-PR-SL-AR-PO-110 |  | Specialities Materials (Toilet accessories, lockers, logo, etc) | 32.25d | 2026-03-30 A | 2026-05-05 A | PG-Q-PR-SL-AR-MA-110 | 100% | 2026-03-30 | 2026-05-06 | Q |
| PG-Q-PR-SL-AR-PO-120 |  | Waterproofing System Materials | 32.25d | 2026-03-30 A | 2026-05-05 A | PG-Q-PR-SL-AR-MA-120 | 100% | 2026-03-30 | 2026-05-06 | Q |
| PG-Q-PR-SL-AR-PO-20 |  | Anti-slip Granite tiles | 32.25d | 2026-03-30 A | 2026-05-05 A | PG-Q-PR-SL-AR-MA-20 | 100% | 2026-03-30 | 2026-05-06 | Q |
| PG-Q-PR-SL-AR-PO-30 |  | Epoxy Paint | 32.25d | 2026-03-30 A | 2026-05-05 A | PG-Q-PR-SL-AR-MA-30 | 100% | 2026-03-30 | 2026-05-06 | Q |
| PG-Q-PR-SL-AR-PO-60 |  | Stone Cladding | 30.25d | 2026-04-01 A | 2026-05-05 A | PG-Q-PR-SL-AR-MA-60 | 100% | 2026-04-01 | 2026-05-06 | Q |
| PG-Q-PR-SL-AR-PO-70 |  | Aluminum Plates | 30.25d | 2026-04-01 A | 2026-05-05 A | PG-Q-PR-SL-AR-MA-70 | 100% | 2026-04-01 | 2026-05-06 | Q |

| ID | WBS | Activity | Duration | Start | Finish | Predecessors | Complete | Remaining | Planned start | Planned finish | Total float | Free float | Resources | Cost | Actual cost | H,Q,T-Location | BOQ DIVISION | DIVISION-02-SITE WORKS |
| --- | --- | --- | --- | --- | --- | --- | --- | --- | --- | --- | --- | --- | --- | --- | --- | --- | --- | --- |
|  | 5 | **METAL WORK** |  | 2026-03-25 | 2026-05-05 |  |  |  |  |  |  |  |  |  |  |  |  |  |
| PG-Q-PR-SL-MT-PO-10 |  | Galvanized Steel Ladder | 36.25d | 2026-03-25 A | 2026-05-05 A | PG-Q-PR-SL-MT-MA-10 | 100% |  | 2026-03-25 | 2026-05-06 |  |  |  |  |  | Q |  |  |
| PG-Q-PR-SL-MT-PO-20 |  | Galvanized Steel Roof Scupper | 2.25d | 2026-05-04 A | 2026-05-05 A | PG-Q-PR-SL-MT-MA-20, PG-Q-PR-SL-MT-PO-10 | 100% |  | 2026-05-04 | 2026-05-06 |  |  |  |  |  | Q |  |  |
| PG-Q-PR-SL-MT-PO-30 |  | Galvanized Steel Cover with frame | 2.25d | 2026-05-04 A | 2026-05-05 A | PG-Q-PR-SL-MT-MA-30, PG-Q-PR-SL-MT-PO-20 | 100% |  | 2026-05-04 | 2026-05-06 |  |  |  |  |  | Q |  |  |
|  | 6 | **HVAC WORK** |  | 2026-03-09 | 2026-05-05 |  |  |  |  |  |  |  |  |  |  |  |  |  |
| PG-Q-PR-SL-AC-PO-10 |  | Split Air Conditioning Unit | 46.25d | 2026-03-09 A | 2026-05-05 A | PG-Q-PR-SL-AC-MA-10 | 100% |  | 2026-03-09 | 2026-05-06 |  |  |  |  |  | Q |  |  |
| PG-Q-PR-SL-AC-PO-20 |  | Air Duct | 42.25d | 2026-03-14 A | 2026-05-05 A | PG-Q-PR-SL-AC-MA-20 | 100% |  | 2026-03-14 | 2026-05-06 |  |  |  |  |  | Q |  |  |
| PG-Q-PR-SL-AC-PO-30 |  | Diffusers and Grills | 34.25d | 2026-03-28 A | 2026-05-05 A | PG-Q-PR-SL-AC-MA-30, PG-Q-PR-SL-AC-PO-20 | 100% |  | 2026-03-28 | 2026-05-06 |  |  |  |  |  | Q |  |  |
| PG-Q-PR-SL-AC-PO-40 |  | Exhaust fans | 27.25d | 2026-04-05 A | 2026-05-05 A | PG-Q-PR-SL-AC-MA-40, PG-Q-PR-SL-AC-PO-10 | 100% |  | 2026-04-05 | 2026-05-06 |  |  |  |  |  | Q |  |  |
|  | 7 | **PLUMBING WORK** |  | 2026-03-29 | 2026-05-05 |  |  |  |  |  |  |  |  |  |  |  |  |  |
| PG-Q-PR-SL-PB-PO-10 |  | PPR Pipes & Valves | 33.25d | 2026-03-29 A | 2026-05-05 A | PG-Q-PR-SL-PB-MA-10 | 100% |  | 2026-03-29 | 2026-05-06 |  |  |  |  |  | Q |  |  |
| PG-Q-PR-SL-PB-PO-20 |  | UPCV Pipes | 33.25d | 2026-03-29 A | 2026-05-05 A | PG-Q-PR-SL-PB-MA-20 | 100% |  | 2026-03-29 | 2026-05-06 |  |  |  |  |  | Q |  |  |
| PG-Q-PR-SL-PB-PO-30 |  | Sanitary Drainage Fixtures | 33.25d | 2026-03-29 A | 2026-05-05 A | PG-Q-PR-SL-PB-MA-30 | 100% |  | 2026-03-29 | 2026-05-06 |  |  |  |  |  | Q |  |  |
|  | 8 | **IRRIGATION WORK** |  | 2026-03-12 | 2026-05-05 |  |  |  |  |  |  |  |  |  |  |  |  |  |
| PG-Q-PR-SL-IR-PO-10 |  | Gate Valve including valve box | 43.25d | 2026-03-12 A | 2026-05-05 A | PG-Q-PR-SL-IR-MA-10 | 100% |  | 2026-03-12 | 2026-05-06 |  |  |  |  |  | Q |  |  |
| PG-Q-PR-SL-IR-PO-20 |  | Bulbblers and Spreyers | 38.25d | 2026-03-18 A | 2026-05-05 A | PG-Q-PR-SL-IR-MA-20 | 100% |  | 2026-03-18 | 2026-05-06 |  |  |  |  |  | Q |  |  |
|  | 9 | **ELECTRICAL WORK** |  | 2026-05-12 | 2026-05-20 |  |  |  |  |  |  |  |  |  |  |  |  |  |
| PG-Q-PR-SL-EL-PO-10 |  | Wiring Devices Materials | 8.25d | 2026-05-12 A | 2026-05-20 A | PG-Q-PR-SL-EL-MA-10 | 100% |  | 2026-05-12 | 2026-05-21 |  |  |  |  |  | Q |  |  |
|  | 10 | **FIRE FIGHTING WORK** |  | 2026-04-01 | 2026-05-05 |  |  |  |  |  |  |  |  |  |  |  |  |  |
| PG-Q-PR-SL-FF-PO-10 |  | Fire Extinguishers | 30.25d | 2026-04-01 A | 2026-05-05 A | PG-Q-PR-SL-FF-MA-10 | 100% |  | 2026-04-01 | 2026-05-06 |  |  |  |  |  | Q |  |  |
|  | 3 | **DELIVERY TO SITE** |  | 2026-03-05 | 2026-10-11 |  |  |  |  |  |  |  |  |  |  |  |  |  |
|  | 1 | **EXTERNAL / LANDSCAPE WORK** |  | 2026-03-05 | 2026-10-11 |  |  |  |  |  |  |  |  |  |  |  |  |  |
| PG-Q-PR-SL-LS-DL-10 |  | Backfilling Materials | 39d | 2026-03-05 A | 2026-04-24 A | PG-Q-PR-SL-LS-PO-10 | 100% |  | 2026-03-05 | 2026-04-23 |  |  | COST [328050] | 328,050 | 328,050 | Q | DIV-2 | Div-2.1 |
| PG-Q-PR-SL-LS-DL-20 |  | Interlock tiles | 12d | 2026-04-30 A | 2026-05-13 A | PG-Q-PR-SL-LS-PO-20, PG-Q-PR-SL-LS-DL-10 | 100% |  |  |  |  |  | COST [268488] | 268,488 | 268,488 | Q | DIV-2 | Div-2.2 |
| PG-Q-PR-SL-LS-DL-30 |  | Compacted Natural Ground Soil | 12d | 2026-04-30 A | 2026-05-13 A | PG-Q-PR-SL-LS-PO-30 | 100% |  |  |  |  |  | COST [77220] | 77,220 | 77,220 | Q | DIV-2 | Div-2.3 |
| PG-Q-PR-SL-LS-DL-40 |  | Curb Stone | 12d | 2026-04-30 A | 2026-05-13 A | PG-Q-PR-SL-LS-PO-40, PG-Q-PR-SL-LS-DL-10 | 100% |  |  |  |  |  | COST [388665] | 388,665 | 388,665 | Q | DIV-2 | Div-2.3 |
| PG-Q-PR-SL-LS-DL-50 |  | Thermoplastic pavement road marking(Completed) | 39d | 2026-05-06 A | 2026-06-24 A | PG-Q-PR-SL-LS-PO-50, PG-Q-PR-SL-LS-DL-40 | 100% |  |  |  |  |  | COST [2838.4] | 2,838.4 | 2,838.4 | Q | DIV-2 | Div-2.3 |
| PG-Q-PR-SL-LS-DL-60 |  | Traffic Signages(Completed) | 39d | 2026-05-06 A | 2026-06-24 A | PG-Q-PR-SL-LS-PO-60, PG-Q-PR-SL-LS-DL-50 SS | 100% |  |  |  |  |  | COST [1071.14] | 1,071.14 | 1,071.14 | Q | DIV-2 | Div-2.3 |
| PG-Q-PR-SL-LS-DL-70 |  | Trees(Completed) | 39d | 2026-05-06 A | 2026-06-24 A | PG-Q-PR-SL-LS-PO-70, PG-Q-PR-SL-LS-DL-60 SS | 100% |  |  |  |  |  | COST [51550] | 51,550.02 | 51,550.02 | Q | DIV-2 | Div-2.3 |
| PG-Q-PR-SL-LS-DL-80 |  | Lawn(Completed) | 39d | 2026-05-06 A | 2026-06-24 A | PG-Q-PR-SL-LS-PO-80, PG-Q-PR-SL-LS-DL-70 SS | 100% |  |  |  |  |  | COST [62370] | 62,370 | 62,370 | Q | DIV-2 | Div-2.3 |
| PG-Q-PR-SL-LS-DL-50_R |  | Thermoplastic pavement road marking(Remaining) | 12d | 2026-08-27 A | 2026-10-11 | PG-Q-PR-SL-LS-PO-50, PG-Q-PR-SL-LS-DL-40, PG-Q-PR-SL-LS-DL-50 | 35% | 7.8d | 2026-08-29 | 2026-09-10 | 25.75d | 0d | COST [1892.27] | 1,892.27 | 662.29 | Q | DIV-2 | Div-2.3 |
| PG-Q-PR-SL-LS-DL-60_R |  | Traffic Signages(Remaining) | 12d | 2026-08-27 A | 2026-10-08 | PG-Q-PR-SL-LS-PO-60, PG-Q-PR-SL-LS-DL-50_R SS, PG-Q-PR-SL-LS-DL-60 | 50% | 6d | 2026-08-29 | 2026-09-10 | 25.75d | 0d | COST [714.1] | 714.1 | 357.05 | Q | DIV-2 | Div-2.3 |
| PG-Q-PR-SL-LS-DL-70_R |  | Trees(Remaining) | 12d | 2026-08-27 A | 2026-10-08 | PG-Q-PR-SL-LS-PO-70, PG-Q-PR-SL-LS-DL-60_R SS, PG-Q-PR-SL-LS-DL-70 | 50% | 6d | 2026-08-29 | 2026-09-10 | 25.75d | 0d | COST [34366.7] | 34,366.68 | 17,183.34 | Q | DIV-2 | Div-2.3 |
| PG-Q-PR-SL-LS-DL-80_R |  | Lawn(Remaining) | 12d | 2026-08-27 A | 2026-10-08 | PG-Q-PR-SL-LS-PO-80, PG-Q-PR-SL-LS-DL-70_R SS, PG-Q-PR-SL-LS-DL-80 | 50% | 6d | 2026-08-29 | 2026-09-10 | 25.75d | 19d | COST [41580] | 41,580 | 20,790 | Q | DIV-2 | Div-2.3 |

| ID | WBS | Activity | Duration | Start | Finish | Predecessors | Complete | Remaining | Total float | Free float | Resources | Cost | Actual cost | H,Q,T-Location | BOQ DIVISION | DIVISION-3 CONCRETE | DIVISION 07-THERMAL & MOISTURE PROTECTIO | DIVISION-4 MASONRY | DIVISION 15-MECHANICAL WORKS | DIVISION 9-FINISHES | DIVISION 10-SPECIALTIES | DIVISION-5-METALS |
| --- | --- | --- | --- | --- | --- | --- | --- | --- | --- | --- | --- | --- | --- | --- | --- | --- | --- | --- | --- | --- | --- | --- |
|  | 3 | **CONCRETE WORK** |  | 2026-03-12 | 2026-05-13 |  |  |  |  |  |  |  |  |  |  |  |  |  |  |  |  |  |
| PG-Q-PR-SL-CO-DL-20 |  | Concrete | 50d | 2026-03-12 A | 2026-05-13 A | PG-Q-PR-SL-CO-PO-20, PG-Q-PR-SL-CO-DL-10, PG-Q-PR-SL-CO-DL-10 SS | 100% |  |  |  | COST [4669.65] | 4,669.65 | 4,669.65 | Q | DIV-3 | Div-3 |  |  |  |  |  |  |
| PG-Q-PR-SL-CO-DL-10 |  | Steel Rebar | 18d | 2026-04-23 A | 2026-05-13 A | PG-Q-PR-SL-CO-PO-10 | 100% |  |  |  | COST [4291.38] | 4,291.38 | 4,291.38 | Q | DIV-3 | Div-3 |  |  |  |  |  |  |
| PG-Q-PR-SL-CO-DL-30 |  | Screed | 18d | 2026-04-23 A | 2026-05-13 A | PG-Q-PR-SL-CO-PO-30, PG-Q-PR-SL-CO-DL-20 | 100% |  |  |  | COST [1058.4] | 1,058.4 | 1,058.4 | Q | DIV-7 |  | Div-07 |  |  |  |  |  |
| PG-Q-PR-SL-CO-DL-40 |  | CMU Block | 18d | 2026-04-23 A | 2026-05-13 A | PG-Q-PR-SL-CO-PO-40, PG-Q-PR-SL-CO-DL-30, PG-Q-PR-SL-CO-DL-30 SS | 100% |  |  |  | COST [1117.8] | 1,117.8 | 1,117.8 | Q | DIV-4 |  |  | Div-4 |  |  |  |  |
| PG-Q-PR-SL-CO-DL-50 |  | Concrete Repair & Protection Materials | 18d | 2026-04-23 A | 2026-05-13 A | PG-Q-PR-SL-CO-PO-50, PG-Q-PR-SL-CO-DL-40, PG-Q-PR-SL-CO-DL-40 SS | 100% |  |  |  | COST [3348] | 3,348 | 3,348 | Q | DIV-15 |  |  |  | Div15.2 |  |  |  |
|  | 4 | **ARCHITECTURAL & FINISHES WORK** |  | 2026-05-06 | 2026-05-13 |  |  |  |  |  |  |  |  |  |  |  |  |  |  |  |  |  |
| PG-Q-PR-SL-AR-DL-10 |  | Ceramic tiles | 7d | 2026-05-06 A | 2026-05-13 A | PG-Q-PR-SL-AR-PO-10 | 100% |  |  |  | COST [5147.55] | 5,147.55 | 5,147.55 | Q | DIV-9 |  |  |  |  | Div-9.1 |  |  |
| PG-Q-PR-SL-AR-DL-100 |  | Gypsum Boards | 7d | 2026-05-06 A | 2026-05-13 A | PG-Q-PR-SL-AR-PO-100 | 100% |  |  |  | COST [1697.22] | 1,697.22 | 1,697.22 | Q | DIV-9 |  |  |  |  | Div-9.3 |  |  |
| PG-Q-PR-SL-AR-DL-110 |  | Specialities Materials (Toilet accessories, lockers, logo, etc) | 7d | 2026-05-06 A | 2026-05-13 A | PG-Q-PR-SL-AR-PO-110 | 100% |  |  |  | COST [20365.8] | 20,365.83 | 20,365.83 | Q | DIV-10 |  |  |  |  |  | Div-10 |  |
| PG-Q-PR-SL-AR-DL-120 |  | Waterproofing System Materials | 7d | 2026-05-06 A | 2026-05-13 A | PG-Q-PR-SL-AR-PO-120 | 100% |  |  |  | COST [4897.8] | 4,897.8 | 4,897.8 | Q | DIV-7 |  | Div-07 |  |  |  |  |  |
| PG-Q-PR-SL-AR-DL-20 |  | Anti-slip Granite tiles | 7d | 2026-05-06 A | 2026-05-13 A | PG-Q-PR-SL-AR-PO-20, PG-Q-PR-SL-AR-DL-10 | 100% |  |  |  | COST [4819.5] | 4,819.5 | 4,819.5 | Q | DIV-9 |  |  |  |  | Div-9.1 |  |  |
| PG-Q-PR-SL-AR-DL-30 |  | Epoxy Paint | 7d | 2026-05-06 A | 2026-05-13 A | PG-Q-PR-SL-AR-PO-30, PG-Q-PR-SL-AR-DL-20 | 100% |  |  |  | COST [1000.62] | 1,000.62 | 1,000.62 | Q | DIV-7 |  | Div-07 |  |  |  |  |  |
| PG-Q-PR-SL-AR-DL-40 |  | Cement Plaster | 7d | 2026-05-06 A | 2026-05-13 A | PG-Q-PR-SL-AR-PO-40 | 100% |  |  |  | COST [1992.33] | 1,992.33 | 1,992.33 | Q | DIV-9 |  |  |  |  | Div-9.2 |  |  |
| PG-Q-PR-SL-AR-DL-50 |  | Acrylic Paint | 7d | 2026-05-06 A | 2026-05-13 A | PG-Q-PR-SL-AR-PO-50, PG-Q-PR-SL-AR-DL-40 | 100% |  |  |  | COST [1331.1] | 1,331.1 | 1,331.1 | Q | DIV-9 |  |  |  |  | Div-9.2 |  |  |
| PG-Q-PR-SL-AR-DL-60 |  | Stone Cladding | 7d | 2026-05-06 A | 2026-05-13 A | PG-Q-PR-SL-AR-PO-60, PG-Q-PR-SL-AR-DL-50 | 100% |  |  |  | COST [16669.8] | 16,669.8 | 16,669.8 | Q | DIV-9 |  |  |  |  | Div-9.2 |  |  |
| PG-Q-PR-SL-AR-DL-70 |  | Aluminum Plates | 7d | 2026-05-06 A | 2026-05-13 A | PG-Q-PR-SL-AR-PO-70, PG-Q-PR-SL-AR-DL-50 | 100% |  |  |  | COST |  |  | Q | DIV-9 |  |  |  |  | Div-9.2 |  |  |
| PG-Q-PR-SL-AR-DL-80 |  | Phenolic Partition | 7d | 2026-05-06 A | 2026-05-13 A | PG-Q-PR-SL-AR-PO-80 | 100% |  |  |  | COST [12063.6] | 12,063.6 | 12,063.6 | Q | DIV-9 |  |  |  |  | Div-9.2 |  |  |
| PG-Q-PR-SL-AR-DL-90 |  | Glass Partition | 7d | 2026-05-06 A | 2026-05-13 A | PG-Q-PR-SL-AR-PO-90 | 100% |  |  |  | COST [1398.6] | 1,398.6 | 1,398.6 | Q | DIV-9 |  |  |  |  | Div-9.2 |  |  |
|  | 5 | **METAL WORK** |  | 2026-05-06 | 2026-10-08 |  |  |  |  |  |  |  |  |  |  |  |  |  |  |  |  |  |
| PG-Q-PR-SL-MT-DL-10 |  | Galvanized Steel Ladder(Completed) | 39d | 2026-05-06 A | 2026-06-24 A | PG-Q-PR-SL-MT-PO-10 | 100% |  |  |  | COST [1954.04] | 1,954.04 | 1,954.04 | Q | DIV-5 |  |  |  |  |  |  | Div-5 |
| PG-Q-PR-SL-MT-DL-20 |  | Galvanized Steel Roof Scupper(Completed) | 39d | 2026-05-06 A | 2026-06-24 A | PG-Q-PR-SL-MT-PO-20, PG-Q-PR-SL-MT-DL-10 SS | 100% |  |  |  | COST [169.13] | 169.13 | 169.13 | Q | DIV-5 |  |  |  |  |  |  | Div-5 |
| PG-Q-PR-SL-MT-DL-30 |  | Galvanized Steel Cover with frame(Completed) | 39d | 2026-05-06 A | 2026-06-24 A | PG-Q-PR-SL-MT-PO-30, PG-Q-PR-SL-MT-DL-20 SS | 100% |  |  |  | COST [462.83] | 462.83 | 462.83 | Q | DIV-5 |  |  |  |  |  |  | Div-5 |
| PG-Q-PR-SL-MT-DL-10_R |  | Galvanized Steel Ladder(Remaining) | 12d | 2026-09-26 A | 2026-10-08 | PG-Q-PR-SL-MT-PO-10, PG-Q-PR-SL-MT-DL-10 | 50% | 6d | 35.45d | 0d | COST [1302.7] | 1,302.7 | 651.35 | Q | DIV-5 |  |  |  |  |  |  | Div-5 |
| PG-Q-PR-SL-MT-DL-20_R |  | Galvanized Steel Roof Scupper(Remaining) | 12d | 2026-09-26 A | 2026-10-08 | PG-Q-PR-SL-MT-PO-20, PG-Q-PR-SL-MT-DL-10_R SS, PG-Q-PR-SL-MT-DL-20 | 50% | 6d | 35.45d | 0d | COST [112.75] | 112.75 | 56.38 | Q | DIV-5 |  |  |  |  |  |  | Div-5 |
| PG-Q-PR-SL-MT-DL-30_R |  | Galvanized Steel Cover with frame(Remaining) | 12d | 2026-09-26 A | 2026-10-08 | PG-Q-PR-SL-MT-PO-30, PG-Q-PR-SL-MT-DL-20_R SS, PG-Q-PR-SL-MT-DL-30 | 50% | 6d | 35.45d | 35.5d | COST [308.56] | 308.56 | 154.28 | Q | DIV-5 |  |  |  |  |  |  | Div-5 |

| ID | WBS | Activity | Duration | Start | Finish | Predecessors | Complete | Remaining | Planned start | Planned finish | Total float | Free float | Resources | Cost | Actual cost | H,Q,T-Location | BOQ DIVISION | DIVISION 15-MECHANICAL WORKS | DIVISION 16 ELECTRICAL WORKS |
| --- | --- | --- | --- | --- | --- | --- | --- | --- | --- | --- | --- | --- | --- | --- | --- | --- | --- | --- | --- |
|  | 6 | **HVAC WORK** |  | 2026-05-06 | 2026-10-02 |  |  |  |  |  |  |  |  |  |  |  |  |  |  |
| PG-Q-PR-SL-AC-DL-10 |  | Split Air Conditioning Unit(Completed) | 39d | 2026-05-06 A | 2026-06-24 A | PG-Q-PR-SL-AC-PO-10 | 100% |  |  |  |  |  | COST [1673.62] | 1,673.62 | 1,673.62 | Q | DIV-15 | Div15.4 |  |
| PG-Q-PR-SL-AC-DL-20 |  | Air Duct(Completed) | 39d | 2026-05-06 A | 2026-06-24 A | PG-Q-PR-SL-AC-PO-20 | 100% |  |  |  |  |  | COST [842.4] | 842.4 | 842.4 | Q | DIV-15 | Div15.4 |  |
| PG-Q-PR-SL-AC-DL-30 |  | Diffusers and Grills(Completed) | 39d | 2026-05-06 A | 2026-06-24 A | PG-Q-PR-SL-AC-PO-30, PG-Q-PR-SL-AC-DL-20 SS | 100% |  |  |  |  |  | COST [401.27] | 401.27 | 401.27 | Q | DIV-15 | Div15.4 |  |
| PG-Q-PR-SL-AC-DL-40 |  | Exhaust fans(Completed) | 39d | 2026-05-06 A | 2026-06-24 A | PG-Q-PR-SL-AC-PO-40, PG-Q-PR-SL-AC-DL-20 SS | 100% |  |  |  |  |  | COST [357.05] | 357.05 | 357.05 | Q | DIV-15 | Div15.4 |  |
| PG-Q-PR-SL-AC-DL-10_R |  | Split Air Conditioning Unit(Remaining) | 12d | 2026-08-27 A | 2026-10-02 A | PG-Q-PR-SL-AC-PO-10, PG-Q-PR-SL-AC-DL-10 | 100% |  | 2026-08-29 | 2026-09-10 |  |  | COST [1115.75] | 1,115.75 | 1,115.75 | Q | DIV-15 | Div15.4 |  |
| PG-Q-PR-SL-AC-DL-20_R |  | Air Duct(Remaining) | 12d | 2026-08-27 A | 2026-10-02 A | PG-Q-PR-SL-AC-PO-20, PG-Q-PR-SL-AC-DL-20 | 100% |  | 2026-08-29 | 2026-09-10 |  |  | COST [561.6] | 561.6 | 561.6 | Q | DIV-15 | Div15.4 |  |
| PG-Q-PR-SL-AC-DL-30_R |  | Diffusers and Grills(Remaining) | 12d | 2026-08-27 A | 2026-10-02 A | PG-Q-PR-SL-AC-PO-30, PG-Q-PR-SL-AC-DL-20_R SS, PG-Q-PR-SL-AC-DL-30 | 100% |  | 2026-08-29 | 2026-09-10 |  |  | COST [267.52] | 267.52 | 267.52 | Q | DIV-15 | Div15.4 |  |
| PG-Q-PR-SL-AC-DL-40_R |  | Exhaust fans(Remaining) | 12d | 2026-08-27 A | 2026-10-02 A | PG-Q-PR-SL-AC-PO-40, PG-Q-PR-SL-AC-DL-20_R SS, PG-Q-PR-SL-AC-DL-40 | 100% |  | 2026-08-29 | 2026-09-10 |  |  | COST [238.03] | 238.03 | 238.03 | Q | DIV-15 | Div15.4 |  |
|  | 7 | **PLUMBING WORK** |  | 2026-05-06 | 2026-05-13 |  |  |  |  |  |  |  |  |  |  |  |  |  |  |
| PG-Q-PR-SL-PB-DL-10 |  | PPR Pipes & Valves | 7d | 2026-05-06 A | 2026-05-13 A | PG-Q-PR-SL-PB-PO-10 | 100% |  |  |  |  |  | COST [2386.8] | 2,386.8 | 2,386.8 | Q | DIV-15 | Div15.2 |  |
| PG-Q-PR-SL-PB-DL-20 |  | UPCV Pipes | 7d | 2026-05-06 A | 2026-05-13 A | PG-Q-PR-SL-PB-PO-20 | 100% |  |  |  |  |  | COST [3016.71] | 3,016.71 | 3,016.71 | Q | DIV-15 | Div15.3 |  |
| PG-Q-PR-SL-PB-DL-30 |  | Sanitary Drainage Fixtures | 7d | 2026-05-06 A | 2026-05-13 A | PG-Q-PR-SL-PB-PO-30, PG-Q-PR-SL-PB-DL-20 | 100% |  |  |  |  |  | COST [22919.8] | 22,919.76 | 22,919.76 | Q | DIV-15 | Div15.3 |  |
|  | 8 | **IRRIGATION WORK** |  | 2026-05-06 | 2026-10-07 |  |  |  |  |  |  |  |  |  |  |  |  |  |  |
| PG-Q-PR-SL-IR-DL-10 |  | Gate Valve including valve box(Completed) | 39d | 2026-05-06 A | 2026-06-24 A | PG-Q-PR-SL-IR-PO-10 | 100% |  |  |  |  |  | COST [4790.66] | 4,790.66 | 4,790.66 | Q | DIV-15 | Div15.5 |  |
| PG-Q-PR-SL-IR-DL-20 |  | Bulbblers and Spreyers(Completed) | 39d | 2026-05-06 A | 2026-06-24 A | PG-Q-PR-SL-IR-PO-20 | 100% |  |  |  |  |  | COST [42621.8] | 42,621.77 | 42,621.77 | Q | DIV-15 | Div15.5 |  |
| PG-Q-PR-SL-IR-DL-10_R |  | Gate Valve including valve box(Remaining) | 12d | 2026-08-14 A | 2026-10-07 | PG-Q-PR-SL-IR-PO-10, PG-Q-PR-SL-IR-DL-10 | 65% | 4.2d | 2026-08-16 | 2026-08-29 | -11.65d | 15.4d | COST [7186] | 7,186 | 4,670.9 | Q | DIV-15 | Div15.5 |  |
| PG-Q-PR-SL-IR-DL-20_R |  | Bulbblers and Spreyers(Remaining) | 12d | 2026-08-20 A | 2026-10-07 | PG-Q-PR-SL-IR-PO-20, PG-Q-PR-SL-IR-DL-20 | 65% | 4.2d | 2026-08-23 | 2026-09-05 | -15.25d | 11.8d | COST [63932.7] | 63,932.65 | 41,556.22 | Q | DIV-15 | Div15.5 |  |
|  | 9 | **ELECTRICAL WORK** |  | 2026-05-11 | 2026-10-11 |  |  |  |  |  |  |  |  |  |  |  |  |  |  |
| PG-Q-PR-SL-EL-DL-10 |  | Wiring Devices Materials(Completed) | 35d | 2026-05-11 A | 2026-06-24 A | PG-Q-PR-SL-EL-PO-10, PG-Q-PR-SL-EL-PO-10 SS | 100% |  |  |  |  |  | COST [1467.07] | 1,467.07 | 1,467.07 | Q | DIV-16 |  | Div16.9 |
| PG-Q-PR-SL-EL-DL-10_R |  | Wiring Devices Materials(Remaining) | 15d | 2026-09-26 A | 2026-10-11 | PG-Q-PR-SL-EL-PO-10, PG-Q-PR-SL-EL-PO-10 SS, PG-Q-PR-SL-EL-DL-10 | 50% | 7.5d | 2026-09-26 | 2026-10-12 | -1.3d | 0d | COST [2200.61] | 2,200.61 | 1,100.3 | Q | DIV-16 |  | Div16.9 |
|  | 10 | **FIRE FIGHTING WORK** |  | 2026-05-06 | 2026-10-08 |  |  |  |  |  |  |  |  |  |  |  |  |  |  |
| PG-Q-PR-SL-FF-DL-10 |  | Fire Extinguishers(Completed) | 39d | 2026-05-06 A | 2026-06-24 A | PG-Q-PR-SL-FF-PO-10 | 100% |  |  |  |  |  | COST [81.76] | 81.76 | 81.76 | Q | DIV-15 | Div15.1 |  |
| PG-Q-PR-SL-FF-DL-10_R |  | Fire Extinguishers(Remaining) | 12d | 2026-09-26 A | 2026-10-08 | PG-Q-PR-SL-FF-PO-10, PG-Q-PR-SL-FF-DL-10 | 50% | 6d |  |  | -10d | 17.05d | COST [122.63] | 122.63 | 61.32 | Q | DIV-15 | Div15.1 |  |

| ID | WBS | Activity | Duration | Start | Finish | Predecessors | Complete | Remaining | Planned start | Planned finish | Total float | Free float | Resources | Cost | Actual cost | H,Q,T-Location | BOQ DIVISION | DIVISION-02-SITE WORKS |
| --- | --- | --- | --- | --- | --- | --- | --- | --- | --- | --- | --- | --- | --- | --- | --- | --- | --- | --- |
|  | CO | **CONSTRUCTION STAGE** |  | 2026-03-24 | 2027-01-18 |  |  |  |  |  |  |  |  |  |  |  |  |  |
|  | EX.SIT | **PLAYGROUND AND LANDSCAPING WORKS** |  | 2026-03-24 | 2027-01-18 |  |  |  |  |  |  |  |  |  |  |  |  |  |
|  | CF | **CUT AND FILL** |  | 2026-03-24 | 2026-05-06 |  |  |  |  |  |  |  |  |  |  |  |  |  |
| PG-Q-CON-EX-CF-10 |  | Existing Soil Excavation Works | 36d | 2026-03-24 A | 2026-05-04 A | PG-Q-EN-ST-SD-AP-10, PG-Q-EN-ST-SD-AP-30, PG-Q-MOB-SO-20, PG-Q-GEN-10, PG-Q-EN-ST-SD-AP-10 FF, PG-Q-EN-ST-SD-AP-30 FF, PG-Q-EN-ST-SD-AP-10 SS, PG-GN-MS-10 | 100% |  |  |  |  |  | COST [233280]; Dump Truck [64 h]; Excavator [40 h]; Site Engineer [4 h]; Labor / Helper [48 h]; Surveyor [8 h]; Excavator Operator [40 h]; Dump Truck Driver [64 h]; Safety Officer [8 h] | 233,280 | 233,280 | Q | DIV-2 | Div-2.1 |
| PG-Q-CON-EX-CF-39 |  | Soil Replacement Works | 27d | 2026-04-05 A | 2026-05-05 A | PG-Q-CON-EX-CF-10, PG-Q-PR-SL-LS-DL-30, PG-Q-CON-EX-CF-10 SS, PG-Q-PR-SL-LS-DL-30 SS | 100% |  |  |  |  |  | COST [171600]; Roller [16 h]; Loader [8 h]; Water tanker [8 h]; Motor Grader [8 h]; Site Engineer [4 h]; Labor / Helper [48 h]; Water tanker driver [8 h]; Surveyor [8 h]; Loader Operator [8 h]; Roller Operator [16 h]; Motor Grader Operator [8 h] | 171,600 | 171,600 | Q | DIV-2 | Div-2.3 |
| PG-Q-CON-EX-CF-30 |  | Levelling & Backfilling Works | 18d | 2026-04-16 A | 2026-05-06 A | PG-Q-CON-EX-CF-39, PG-Q-PR-SL-LS-DL-10, PG-Q-MOB-CAM-40 | 100% |  |  |  |  |  | COST [495720]; Roller [16 h]; Loader [8 h]; Water tanker [8 h]; Motor Grader [8 h]; Site Engineer [8 h]; Labor / Helper [48 h]; Water tanker driver [8 h]; Surveyor [8 h]; Loader Operator [8 h]; Roller Operator [16 h]; Motor Grader Operator [8 h] | 495,720 | 495,720 | Q | DIV-2 | Div-2.1 |
|  | 1 | **PLAYGROUND WORKS** |  | 2026-04-21 | 2026-12-09 |  |  |  |  |  |  |  |  |  |  |  |  |  |
|  | FP | **FOOTBALL PLAYGROUND WORKS** |  | 2026-04-21 | 2026-10-29 |  |  |  |  |  |  |  |  |  |  |  |  |  |
| PG-Q-CON-EX-FB-10 |  | Subgrade Preparation and Compaction | 13.9d | 2026-04-21 A | 2026-05-06 A | PG-Q-EN-LS-SD-AP-90, PG-Q-CON-EX-CF-10, PG-Q-CON-EX-CF-39, PG-Q-CON-EX-CF-30 | 100% |  |  |  |  |  | COST [23667]; Roller [16 h]; Loader [8 h]; Motor Grader [8 h]; Site Engineer [8 h]; Labor / Helper [48 h]; Surveyor [8 h]; Loader Operator [8 h]; Roller Operator [16 h]; Motor Grader Operator [8 h] | 23,667 | 23,667 | Q | DIV-2 | Div-2.3 |
| PG-Q-CON-EX-FB-20 |  | Sub-Base Laying and Compaction | 10d | 2026-04-26 A | 2026-05-06 A | PG-Q-CON-EX-FB-10 | 100% |  |  |  |  |  | COST [23667]; Roller [16 h]; Loader [8 h]; Motor Grader [8 h]; Site Engineer [8 h]; Labor / Helper [48 h]; Surveyor [8 h]; Loader Operator [8 h]; Roller Operator [16 h]; Motor Grader Operator [8 h] | 23,667 | 23,667 | Q | DIV-2 | Div-2.3 |
| PG-Q-CON-EX-FB-30 |  | Base Course Laying and Compaction | 33d | 2026-05-06 A | 2026-06-17 A | PG-Q-CON-EX-FB-20, PG-Q-CON-EX-FB-10 | 100% |  |  |  |  |  | COST [23667]; Roller [16 h]; Loader [8 h]; Motor Grader [8 h]; Site Engineer [8 h]; Labor / Helper [48 h]; Surveyor [8 h]; Loader Operator [8 h]; Roller Operator [16 h]; Motor Grader Operator [8 h] | 23,667 | 23,667 | Q | DIV-2 | Div-2.3 |
| PG-Q-CON-EX-FB-40 |  | Tartan flooring(Completed) | 7d | 2026-06-17 A | 2026-06-24 A | PG-Q-CON-EX-FB-30, PG-Q-EN-LS-SD-AP-40, PG-Q-PR-LL-SP-DL-40 SS, PG-Q-PR-LL-SP-DL-10 SS, PG-Q-CON-EX-FB-10 | 100% |  |  |  |  |  | COST [104458]; Paving Machine [4.8 h]; Applicator [14.4 h]; Paving Machine Operator [4.8 h] | 104,457.6 | 104,457.6 | Q | DIV-2 | Div-2.3 |
| PG-Q-CON-EX-FB-80 |  | Fine Grading & Leveling | 10d | 2026-07-09 A | 2026-07-11 A | PG-Q-CON-EX-FB-10 | 100% |  | 2026-07-14 | 2026-07-25 |  |  | COST [23667]; Roller [16 h]; Loader [8 h]; Motor Grader [8 h]; Site Engineer [4 h]; Labor / Helper [32 h]; Surveyor [8 h]; Loader Operator [8 h]; Roller Operator [16 h]; Motor Grader Operator [8 h] | 23,667 | 23,667 | Q | DIV-2 | Div-2.3 |
| PG-Q-CON-EX-FB-40_R |  | Tartan flooring(Remaining) | 15d | 2026-07-12 A | 2026-08-14 A | PG-Q-CON-EX-FB-30, PG-Q-EN-LS-SD-AP-40, PG-Q-CON-EX-FB-40, PG-Q-CON-EX-FB-10, PG-Q-PR-LL-SP-DL-40_R FF, PG-Q-PR-LL-SP-DL-10_R FF, PG-Q-CON-EX-FB-90 FF, PG-Q-PR-LL-SP-DL-40_R SS, PG-Q-PR-LL-SP-DL-10_R SS, PG-Q-CON-EX-FB-90 SS | 100% |  | 2026-10-04 | 2026-10-20 |  |  | COST [243734]; Paving Machine [11.2 h]; Applicator [33.6 h]; Paving Machine Operator [11.2 h] | 243,734.4 | 243,734.4 | Q | DIV-2 | Div-2.3 |
| PG-Q-CON-EX-FB-70 |  | Topsoil Placement | 12d | 2026-07-12 A | 2026-08-14 A | PG-Q-CON-EX-FB-10, PG-Q-CON-EX-FB-80 | 100% |  | 2026-07-26 | 2026-08-08 |  |  | COST [23667]; Roller [16 h]; Loader [8 h]; Water tanker [8 h]; Motor Grader [8 h]; Site Engineer [4 h]; Labor / Helper [32 h]; Water tanker driver [8 h]; Surveyor [8 h]; Loader Operator [8 h]; Roller Operator [16 h]; Motor Grader Operator [8 h] | 23,667 | 23,667 | Q | DIV-2 | Div-2.3 |
| PG-Q-CON-EX-FB-50 |  | Goal Post Foundation | 25d | 2026-08-06 A | 2026-08-27 A | PG-Q-CON-EX-FB-10, PG-Q-CON-EX-FB-70 | 100% |  | 2026-08-10 | 2026-09-08 |  |  | COST [35500.5]; Roller [8 h]; Excavator [8 h]; Site Engineer [4 h]; Labor / Helper [48 h]; Excavator Operator [8 h]; Carpenter [16 h]; Steel Fixer [16 h]; Roller Operator [8 h] | 35,500.5 | 35,500.5 | Q | DIV-2 | Div-2.3 |
| PG-Q-CON-EX-FB-90 |  | Turfing / Seeding Works | 10d | 2026-08-14 A | 2026-10-06 | PG-Q-CON-EX-FB-10, PG-Q-CON-EX-FB-120, PG-Q-CON-EX-FB-120 FF | 80% | 2d | 2026-09-16 | 2026-09-28 | 41.7d | 0d | COST [23667]; Labor / Helper [16 h]; Turf Installer [32 h] | 23,667 | 18,933.6 | Q | DIV-2 | Div-2.3 |
| PG-Q-CON-EX-FB-120 |  | Installation of Lighting System | 12d | 2026-08-20 A | 2026-10-04 | PG-Q-CON-EX-FB-10, PG-Q-CON-EX-FB-50, PG-Q-CON-EX-FB-50 SS | 85% | 1.8d | 2026-08-27 | 2026-09-09 | 41.7d | 0d | COST [24360]; Electrician [32 h] | 24,360 | 20,706 | Q | DIV-2 | Div-2.3 |
| PG-Q-CON-EX-FB-110 |  | Install Playground Benches | 17d | 2026-08-27 A | 2026-10-20 | PG-Q-PR-LL-LS-DL-20_R, PG-Q-CON-EX-FB-10, PG-Q-CON-EX-FB-60, PG-Q-PR-LL-LS-DL-20_R SS, PG-Q-CON-EX-FB-60 SS | 50% | 8.5d | 2026-09-19 | 2026-10-10 | 41.7d | 0d | COST [2060.16]; Mason [16 h]; Labor / Helper [16 h] | 2,060.16 | 1,030.08 | Q | DIV-2 | Div-2.3 |
| PG-Q-CON-EX-FB-60 |  | Goal Post Installation & Alignment | 15d | 2026-08-27 A | 2026-10-10 | PG-Q-CON-EX-FB-10, PG-Q-CON-EX-FB-40_R | 80% | 3d | 2026-09-01 | 2026-09-19 | 41.7d | 0d | COST [35500.5]; Crane [8 h]; Labor / Helper [32 h]; Crane Operator [8 h]; Mechanical Technician [16 h] | 35,500.5 | 28,400.4 | Q | DIV-2 | Div-2.3 |
| PG-Q-CON-EX-FB-100 |  | Markings and Signages | 8d | 2026-10-20 | 2026-10-29 | PG-Q-CON-EX-FB-10, PG-Q-CON-EX-FB-110 |  |  |  |  | 41.7d | 35.4d | COST [23667]; Spray Machine [48 h]; Site Engineer [4 h]; Labor / Helper [32 h]; Painter [48 h] | 23,667 |  | Q | DIV-2 | Div-2.3 |
|  | BP | **BASKETBALL PLAYGROUND WORKS** |  | 2026-04-30 | 2026-11-05 |  |  |  |  |  |  |  |  |  |  |  |  |  |
| PG-Q-CON-EX-BB-10 |  | Subgrade Preparation and Compaction | 5.9d | 2026-04-30 A | 2026-05-06 A | PG-Q-CON-EX-FB-10, PG-Q-EN-LS-SD-AP-110, PG-Q-EN-LS-SD-AP-120, PG-Q-CON-EX-FB-30 SS | 100% |  |  |  |  |  | COST [15472.1]; Roller [16 h]; Loader [8 h]; Motor Grader [8 h]; Site Engineer [8 h]; Labor / Helper [48 h]; Surveyor [8 h]; Loader Operator [8 h]; Roller Operator [16 h]; Motor Grader Operator [8 h] | 15,472.08 | 15,472.08 | Q | DIV-2 | Div-2.3 |
| PG-Q-CON-EX-BB-20 |  | Sub-Base Laying and Compaction | 1.1d | 2026-05-05 A | 2026-05-06 A | PG-Q-CON-EX-BB-10, PG-Q-CON-EX-FB-20 | 100% |  |  |  |  |  | COST [15472.1]; Roller [16 h]; Loader [8 h]; Motor Grader [8 h]; Site Engineer [8 h]; Labor / Helper [48 h]; Surveyor [8 h]; Loader Operator [8 h]; Roller Operator [16 h]; Motor Grader Operator [8 h] | 15,472.08 | 15,472.08 | Q | DIV-2 | Div-2.3 |
| PG-Q-CON-EX-BB-30 |  | Base Course Laying and Compaction | 33d | 2026-05-06 A | 2026-06-17 A | PG-Q-CON-EX-BB-20, PG-Q-CON-EX-BB-10 | 100% |  |  |  |  |  | COST [15472.1]; Roller [16 h]; Loader [8 h]; Motor Grader [8 h]; Site Engineer [8 h]; Labor / Helper [48 h]; Surveyor [8 h]; Loader Operator [8 h]; Roller Operator [16 h]; Motor Grader Operator [8 h] | 15,472.08 | 15,472.08 | Q | DIV-2 | Div-2.3 |
| PG-Q-CON-EX-BB-70 |  | Floor Surface Curing(Completed) | 7d | 2026-06-17 A | 2026-06-24 A | PG-Q-CON-EX-BB-30, PG-Q-CON-EX-BB-10 | 100% |  |  |  |  |  | COST [4641.62]; Water tanker [2.4 h]; Labor / Helper [4.8 h]; Water tanker driver [2.4 h] | 4,641.62 | 4,641.62 | Q | DIV-2 | Div-2.3 |
| PG-Q-CON-EX-BB-40 |  | Tartan flooring | 17d | 2026-07-30 A | 2026-08-14 A | PG-Q-CON-EX-BB-30, PG-Q-EN-LS-SD-AP-40, PG-Q-CON-EX-BB-10, PG-Q-PR-LL-SP-DL-40_R FF, PG-Q-CON-EX-BB-70_R FF, PG-Q-PR-LL-SP-DL-40_R SS | 100% |  | 2026-09-17 | 2026-10-07 |  |  | COST [261144]; Paving Machine [8 h]; Applicator [32 h]; Paving Machine Operator [8 h] | 261,144 | 261,144 | Q | DIV-2 | Div-2.3 |
| PG-Q-CON-EX-BB-50 |  | Basketball Pole Foundation | 25d | 2026-08-06 A | 2026-08-13 A | PG-Q-CON-EX-BB-30, PG-Q-CON-EX-BB-10 | 100% |  | 2026-08-09 | 2026-09-06 |  |  | COST [15472.1]; Roller [8 h]; Excavator [8 h]; Site Engineer [4 h]; Labor / Helper [48 h]; Excavator Operator [8 h]; Carpenter [16 h]; Steel Fixer [16 h]; Roller Operator [8 h] | 15,472.08 | 15,472.08 | Q | DIV-2 | Div-2.3 |
| PG-Q-CON-EX-BB-70_R |  | Floor Surface Curing(Remaining) | 15d | 2026-08-06 A | 2026-08-14 A | PG-Q-CON-EX-BB-70, PG-Q-CON-EX-BB-10, PG-Q-CON-EX-BB-50 | 100% |  | 2026-09-07 | 2026-09-24 |  |  | COST [10830.5]; Water tanker [5.6 h]; Labor / Helper [11.2 h]; Water tanker driver [5.6 h] | 10,830.46 | 10,830.46 | Q | DIV-2 | Div-2.3 |
| PG-Q-CON-EX-BB-60 |  | Basketball Pole Installation & Alignment | 17d | 2026-08-20 A | 2026-10-11 | PG-Q-PR-LL-SP-DL-20_R, PG-Q-CON-EX-BB-10, PG-Q-CON-EX-BB-80, PG-Q-PR-LL-SP-DL-20_R SS, PG-Q-CON-EX-BB-80 SS | 80% | 3.4d | 2026-09-08 | 2026-09-28 | 35.7d | 0d | COST [15472.1]; Crane [8 h]; Labor / Helper [32 h]; Crane Operator [8 h]; Mechanical Technician [16 h] | 15,472.08 | 12,377.66 | Q | DIV-2 | Div-2.3 |
| PG-Q-CON-EX-BB-80 |  | Court Line Marking | 15d | 2026-08-20 A | 2026-10-07 | PG-Q-CON-EX-BB-10, PG-Q-CON-EX-BB-40 | 80% | 3d | 2026-08-22 | 2026-09-07 | 35.7d | 0d | COST [13091.8]; Spray Machine [16 h]; Site Engineer [4 h]; Labor / Helper [8 h]; Painter [16 h] | 13,091.76 | 10,473.41 | Q | DIV-2 | Div-2.3 |
| PG-Q-CON-EX-BB-90 |  | Backboard & Hoop Installation | 17d | 2026-10-01 A | 2026-10-15 | PG-Q-CON-EX-BB-10, PG-Q-CON-EX-BB-60 | 80% | 3.4d | 2026-10-06 | 2026-10-26 | 35.7d | 0d | COST [13091.8]; Crane [8 h]; Labor / Helper [16 h]; Crane Operator [8 h]; Mechanical Technician [16 h] | 13,091.76 | 10,473.41 | Q | DIV-2 | Div-2.3 |
| PG-Q-CON-EX-BB-100 |  | Install Playground Benches | 18d | 2026-10-15 | 2026-11-05 | PG-Q-PR-LL-LS-DL-20_R, PG-Q-CON-EX-BB-10, PG-Q-CON-EX-BB-90 |  |  |  |  | 35.7d | 29.4d | COST [1545.12]; Mason [16 h]; Labor / Helper [16 h] | 1,545.12 |  | Q | DIV-2 | Div-2.3 |

| ID | WBS | Activity | Duration | Start | Finish | Predecessors | Complete | Remaining | Planned start | Planned finish | Total float | Free float | Resources | Cost | Actual cost | H,Q,T-Location | BOQ DIVISION | DIVISION-02-SITE WORKS | DIVISION 15-MECHANICAL WORKS |
| --- | --- | --- | --- | --- | --- | --- | --- | --- | --- | --- | --- | --- | --- | --- | --- | --- | --- | --- | --- |
|  | PP | **PADEL PLAYGROUND WORKS** |  | 2026-05-06 | 2026-12-09 |  |  |  |  |  |  |  |  |  |  |  |  |  |  |
| PG-Q-CON-EX-PD-10 |  | Excavation For Fence Footing(Completed) | 39d | 2026-05-06 A | 2026-06-24 A | PG-Q-CON-EX-CF-30, PG-Q-EN-ST-SD-AP-30, PG-Q-EN-LS-SD-AP-120, PG-Q-CON-EX-BB-20, PG-Q-EN-ST-SD-AP-30 FF | 100% |  |  |  |  |  | COST [16243.2]; Dump Truck [14.4 h]; Excavator [7.2 h]; Site Engineer [3.6 h]; Labor / Helper [14.4 h]; Surveyor [7.2 h]; Excavator Operator [7.2 h]; Dump Truck Driver [14.4 h]; Safety Officer [7.2 h] | 16,243.2 | 16,243.2 | Q | DIV-2 | Div-2.3 |  |
| PG-Q-CON-EX-PD-20 |  | RC Foundations For Fence(Completed) | 27d | 2026-05-20 A | 2026-06-24 A | PG-Q-EN-ST-SD-AP-40, PG-Q-EN-ST-SD-AP-30, PG-Q-CON-EX-PD-10 SS | 100% |  |  |  |  |  | COST [1767.48]; Concrete Mason [8 h]; Carpenter [8 h]; Steel Fixer [8 h] | 1,767.48 | 1,767.48 | Q | DIV-2 | Div-2.3 |  |
| PG-Q-CON-EX-PD-30 |  | Tartan Flooring Layers(Completed) | 7d | 2026-06-17 A | 2026-06-24 A | PG-Q-EN-LS-SD-AP-40, PG-Q-CON-EX-FB-30, PG-Q-CON-EX-PD-20 SS, PG-Q-PR-LL-SP-DL-40 SS | 100% |  |  |  |  |  | COST [130572]; Paving Machine [4 h]; Applicator [16 h]; Paving Machine Operator [4 h] | 130,572 | 130,572 | Q | DIV-2 | Div-2.3 |  |
| PG-Q-CON-EX-PD-10_R |  | Excavation For Fence Footing(Remaining) | 7d | 2026-08-06 A | 2026-08-14 A | PG-Q-CON-EX-CF-30, PG-Q-EN-ST-SD-AP-30, PG-Q-EN-LS-SD-AP-120, PG-Q-CON-EX-BB-20, PG-Q-EN-ST-SD-AP-30 FF, PG-Q-CON-EX-PD-10 | 100% |  | 2026-08-09 | 2026-08-16 |  |  | COST [1804.8]; Dump Truck [1.6 h]; Excavator [0.8 h]; Site Engineer [0.4 h]; Labor / Helper [1.6 h]; Surveyor [0.8 h]; Excavator Operator [0.8 h]; Dump Truck Driver [1.6 h]; Safety Officer [0.8 h] | 1,804.8 | 1,804.8 | Q | DIV-2 | Div-2.3 |  |
| PG-Q-CON-EX-PD-30_R |  | Tartan Flooring Layers(Remaining) | 16d | 2026-08-06 A | 2026-11-04 | PG-Q-EN-LS-SD-AP-40, PG-Q-CON-EX-FB-30, PG-Q-PR-LL-SP-DL-40_R SS, PG-Q-CON-EX-PD-30, PG-Q-CON-EX-PD-50 FF | 90% | 1.6d | 2026-11-24 | 2026-12-12 | 6.3d | 0d | COST [130572]; Paving Machine [4 h]; Applicator [16 h]; Paving Machine Operator [4 h] | 130,572 | 117,514.8 | Q | DIV-2 | Div-2.3 |  |
| PG-Q-CON-EX-PD-20_R |  | RC Foundations For Fence(Remaining) | 20d | 2026-08-07 A | 2026-08-27 A | PG-Q-EN-ST-SD-AP-40, PG-Q-EN-ST-SD-AP-30, PG-Q-CON-EX-PD-20, PG-Q-CON-EX-PD-10_R SS | 100% |  | 2026-08-15 | 2026-09-07 |  |  | COST [1767.48]; Concrete Mason [8 h]; Carpenter [8 h]; Steel Fixer [8 h] | 1,767.48 | 1,767.48 | Q | DIV-2 | Div-2.3 |  |
| PG-Q-CON-EX-PD-40 |  | Steel Structure & Fence Supports Installation | 18d | 2026-08-20 A | 2026-10-10 | PG-Q-EN-LS-SD-AP-130, PG-Q-EN-LS-SD-AP-100, PG-Q-PR-LL-LS-DL-30_R, PG-Q-PR-LL-SP-DL-30_R, PG-Q-PR-LL-SP-DL-30_R FF, PG-Q-CON-EX-PD-20_R, PG-Q-PR-LL-LS-DL-30_R SS, PG-Q-PR-LL-SP-DL-30_R SS, PG-Q-CON-EX-PD-20_R SS | 70% | 5.4d | 2026-09-02 | 2026-09-24 | 6.3d | 0d | COST [3534.96]; Crane [8 h]; Labor / Helper [16 h]; Crane Operator [8 h]; Mechanical Technician [32 h] | 3,534.96 | 2,474.47 | Q | DIV-2 | Div-2.3 |  |
| PG-Q-CON-EX-PD-60 |  | Chain Link Fence & Gates Installation | 16d | 2026-08-20 A | 2026-10-15 | PG-Q-EN-LS-SD-AP-130, PG-Q-CON-EX-PD-40, PG-Q-CON-EX-PD-40 SS | 70% | 4.8d | 2026-09-24 | 2026-10-13 | 6.3d | 0d | COST [5302.44]; Crane [8 h]; Labor / Helper [32 h]; Crane Operator [8 h]; Mechanical Technician [32 h] | 5,302.44 | 3,711.71 | Q | DIV-2 | Div-2.3 |  |
| PG-Q-CON-EX-PD-50 |  | Tempered Glass Installation | 17d | 2026-10-15 | 2026-11-04 | PG-Q-EN-LS-SD-AP-130, PG-Q-CON-EX-PD-60 |  |  |  |  | 6.3d | 0d | COST [5302.44]; Site Engineer [4 h]; Labor / Helper [32 h]; Glass Installer [48 h] | 5,302.44 |  | Q | DIV-2 | Div-2.3 |  |
| PG-Q-CON-EX-PD-70 |  | Court Accessories Installation | 15d | 2026-11-04 | 2026-11-22 | PG-Q-CON-EX-PD-30_R |  |  |  |  | 6.3d | 0d | COST [27072]; Mason [16 h]; Labor / Helper [16 h] | 27,072 |  | Q | DIV-2 | Div-2.3 |  |
| PG-Q-CON-EX-PD-80 |  | Install Playground Benches | 15d | 2026-11-22 | 2026-12-09 | PG-Q-PR-LL-LS-DL-20_R, PG-Q-CON-EX-PD-70 |  |  |  |  | 6.3d | 0d | COST [1545.12]; Mason [16 h]; Labor / Helper [16 h] | 1,545.12 |  | Q | DIV-2 | Div-2.3 |  |
|  | GN.SI | **GENERAL SITE WORKS** |  | 2026-04-16 | 2027-01-18 |  |  |  |  |  |  |  |  |  |  |  |  |  |  |
|  | 1 | **FENCE WORKS** |  | 2026-04-16 | 2026-10-29 |  |  |  |  |  |  |  |  |  |  |  |  |  |  |
| PG-Q-CON-EX-GN-FN-10 |  | Excavation for fence foundation | 3d | 2026-04-16 A | 2026-04-19 A | PG-Q-CON-EX-CF-30 SS, PG-Q-EN-ST-SD-AP-10, PG-Q-PR-SL-LS-DL-10, PG-GN-MS-10, PG-Q-EN-ST-SD-AP-10 SS | 100% |  |  |  |  |  | COST [6581.88]; Dump Truck [32 h]; Excavator [8 h]; Site Engineer [4 h]; Labor / Helper [32 h]; Surveyor [8 h]; Excavator Operator [8 h]; Dump Truck Driver [32 h]; Safety Officer [8 h] | 6,581.88 | 6,581.88 | Q | DIV-2 | Div-2.3 |  |
| PG-Q-CON-EX-GN-FN-20 |  | Concrete Foundations for Fence | 10d | 2026-08-13 A | 2026-08-20 A | PG-Q-CON-EX-GN-FN-10, PG-Q-EN-ST-SD-AP-20, PG-Q-PR-SL-CO-DL-10, PG-Q-PR-SL-CO-DL-20, PG-Q-PR-SL-CO-DL-10 SS, PG-GN-MS-10, PG-Q-EN-ST-SD-AP-20 SS, PG-Q-CON-EX-GN-FN-10 FF, PG-Q-CON-EX-FB-70 | 100% |  | 2026-08-23 | 2026-09-02 |  |  | COST [6581.88]; Site Engineer [4 h]; Concrete Mason [32 h]; Carpenter [16 h]; Steel Fixer [16 h] | 6,581.88 | 6,581.88 | Q | DIV-2 | Div-2.3 |  |
| PG-Q-CON-EX-GN-FN-30 |  | Installation of Galvanized Steel Posts & Framing | 12d | 2026-08-20 A | 2026-10-04 | PG-Q-PR-SL-LS-MS-30, PG-Q-PR-LL-LS-DL-30 SS, PG-Q-CON-EX-GN-FN-10, PG-Q-CON-EX-GN-FN-20 | 85% | 1.8d | 2026-08-22 | 2026-09-03 | 6.75d | 0d | COST [6581.88]; Crane [8 h]; Labor / Helper [32 h]; Crane Operator [8 h]; Mechanical Technician [16 h] | 6,581.88 | 5,594.6 | Q | DIV-2 | Div-2.3 |  |
| PG-Q-CON-EX-GN-FN-40 |  | Fixing of Chain Link Mesh, Tensioning & Bracing | 15d | 2026-09-27 A | 2026-10-18 | PG-Q-CON-EX-GN-FN-30, PG-Q-EN-ST-SD-AP-20, PG-Q-PR-LL-LS-DL-30 SS, PG-Q-CON-EX-GN-FN-10 | 25% | 11.25d | 2026-09-27 | 2026-10-14 | 6.75d | 0d | COST [6581.88]; Labor / Helper [32 h]; Mechanical Technician [16 h] | 6,581.88 | 1,645.47 | Q | DIV-2 | Div-2.3 |  |
| PG-Q-CON-EX-GN-FN-50 |  | Installation of Gates | 10d | 2026-10-18 | 2026-10-29 | PG-Q-CON-EX-GN-FN-40, PG-Q-CON-EX-GN-FN-20, PG-Q-CON-EX-GN-FN-10 |  |  |  |  | 6.75d | 0d | COST [6581.88]; Crane [8 h]; Labor / Helper [32 h]; Crane Operator [8 h]; Mechanical Technician [32 h] | 6,581.88 |  | Q | DIV-2 | Div-2.3 |  |
|  | 5 | **MECHANICAL WORK** |  | 2026-05-12 | 2026-11-01 |  |  |  |  |  |  |  |  |  |  |  |  |  |  |
|  | 2 | **STORM WATER AND UTILITY WORK** |  | 2026-05-12 | 2026-10-29 |  |  |  |  |  |  |  |  |  |  |  |  |  |  |
| PG-Q-CON-EX-GN-M-10 |  | Excavation | 2d | 2026-05-12 A | 2026-05-13 A | PG-Q-CON-EX-GN-FN-10, PG-Q-CON-EX-GN-FN-10 FF, PG-Q-CON-EX-CF-30, PG-Q-EN-ST-SD-AP-10 | 100% |  |  |  |  |  | COST [3096]; Dump Truck [32 h]; Excavator [8 h]; Site Engineer [4 h]; Labor / Helper [32 h]; Surveyor [8 h]; Excavator Operator [8 h]; Dump Truck Driver [32 h]; Safety Officer [8 h] | 3,096 | 3,096 | Q | DIV-15 |  | Div15.3 |
| PG-Q-CON-EX-GN-M-20 |  | Bedding preparation & level control(Completed) | 27d | 2026-05-20 A | 2026-06-24 A | PG-Q-CON-EX-GN-M-10 | 100% |  |  |  |  |  | COST [1651.2]; Labor / Helper [12.8 h]; Plumber [6.4 h]; Concrete Mason [6.4 h] | 1,651.2 | 1,651.2 | Q | DIV-15 |  | Div15.3 |
| PG-Q-CON-EX-GN-M-30 |  | Manhole Installation(Completed) | 7d | 2026-06-17 A | 2026-06-24 A | PG-Q-CON-EX-GN-M-20 SS | 100% |  |  |  |  |  | COST [1032]; Crane [1.6 h]; Labor / Helper [3.2 h]; Crane Operator [1.6 h]; Mechanical Technician [3.2 h]; Surveyor [1.6 h] | 1,032 | 1,032 | Q | DIV-15 |  | Div15.3 |
| PG-Q-CON-EX-GN-M-20_R |  | Bedding preparation & level control(Remaining) | 8d | 2026-08-07 A | 2026-08-27 A | PG-Q-CON-EX-GN-M-10, PG-Q-CON-EX-GN-M-20 | 100% |  | 2026-08-09 | 2026-08-17 |  |  | COST [412.8]; Labor / Helper [3.2 h]; Plumber [1.6 h]; Concrete Mason [1.6 h] | 412.8 | 412.8 | Q | DIV-15 |  | Div15.3 |
| PG-Q-CON-EX-GN-M-30_R |  | Manhole Installation(Remaining) | 6d | 2026-08-20 A | 2026-10-04 | PG-Q-CON-EX-GN-M-20_R, PG-Q-CON-EX-GN-M-30, PG-Q-CON-EX-GN-M-10, PG-Q-CON-EX-GN-M-20_R SS | 80% | 1.2d | 2026-08-23 | 2026-08-30 | -27.05d | 0d | COST [4128]; Crane [6.4 h]; Labor / Helper [12.8 h]; Crane Operator [6.4 h]; Mechanical Technician [12.8 h]; Surveyor [6.4 h] | 4,128 | 3,302.4 | Q | DIV-15 |  | Div15.3 |
| PG-Q-CON-EX-GN-M-40 |  | 150 mm uPVC pipe laying & jointing | 6d | 2026-08-20 A | 2026-10-05 | PG-Q-CON-EX-GN-M-30_R, PG-Q-CON-EX-GN-M-10, PG-Q-CON-EX-GN-M-30_R SS | 80% | 1.2d | 2026-08-30 | 2026-09-06 | -27.05d | 0d | COST [10740]; Labor / Helper [16 h]; Plumber [16 h] | 10,740 | 8,592 | Q | DIV-15 |  | Div15.3 |
| PG-Q-CON-EX-GN-M-50 |  | Concrete Encasement | 7d | 2026-10-05 | 2026-10-13 | PG-Q-CON-EX-GN-M-40, PG-Q-PR-SL-CO-DL-10, PG-Q-PR-SL-CO-DL-20, PG-Q-CON-EX-GN-M-10 |  |  |  |  | -27.05d | 0d | COST [2064]; Labor / Helper [8 h]; Concrete Mason [16 h] | 2,064 |  | Q | DIV-15 |  | Div15.3 |
| PG-Q-CON-EX-GN-M-60 |  | Backfilling & Compaction | 6d | 2026-10-13 | 2026-10-20 | PG-Q-CON-EX-GN-M-50, PG-Q-PR-SL-LS-DL-10, PG-Q-CON-EX-GN-M-10 |  |  |  |  | -27.05d | 0d | COST [2064]; Roller [16 h]; Loader [8 h]; Site Engineer [4 h]; Mason [16 h]; Surveyor [4 h]; Loader Operator [8 h]; Roller Operator [16 h] | 2,064 |  | Q | DIV-15 |  | Div15.3 |
| PG-Q-CON-EX-GN-M-70 |  | Surface Reinstatement & Civil Works | 6d | 2026-10-22 | 2026-10-29 | PG-Q-CON-EX-GN-M-60, PG-Q-PR-SL-CO-DL-50, PG-Q-CON-EX-GN-M-100, PG-Q-CON-EX-GN-M-10 |  |  |  |  | -27.05d | 0d | COST [2064]; Labor / Helper [8 h]; Concrete Mason [16 h] | 2,064 |  | Q | DIV-15 |  | Div15.3 |

| ID | WBS | Activity | Duration | Start | Finish | Predecessors | Complete | Remaining | Planned start | Planned finish | Total float | Free float | Resources | Cost | Actual cost | H,Q,T-Location | BOQ DIVISION | DIVISION 15-MECHANICAL WORKS | DIVISION 16 ELECTRICAL WORKS |
| --- | --- | --- | --- | --- | --- | --- | --- | --- | --- | --- | --- | --- | --- | --- | --- | --- | --- | --- | --- |
|  | IR.SY | **IRRIGATION SYSTEM WORKS** |  | 2026-06-17 | 2026-10-22 |  |  |  |  |  |  |  |  |  |  |  |  |  |  |
| PG-Q-CON-EX-GN-M-80 |  | Installation of HDPE Irrigation Pipe Network with Gate Valve and Box(Completed) | 7d | 2026-06-17 A | 2026-06-24 A | PG-Q-EN-ME-SD-AP-80, PG-Q-EN-ME-SD-AP-90, PG-Q-CON-EX-GN-M-20 SS, PG-Q-PR-LL-IR-DL-10 SS, PG-Q-PR-SL-IR-DL-10 SS | 100% |  |  |  |  |  | COST [148902]; Labor / Helper [11.2 h]; Plumber [16.8 h] | 148,902.18 | 148,902.18 | Q | DIV-15 | Div15.5 |  |
| PG-Q-CON-EX-GN-M-80_R |  | Installation of HDPE Irrigation Pipe Network with Gate Valve and Box(Remaining) | 2.6d | 2026-08-06 A | 2026-10-01 A | PG-Q-CON-EX-GN-M-60 FF, PG-Q-EN-ME-SD-AP-80, PG-Q-EN-ME-SD-AP-90, PG-Q-CON-EX-GN-M-80, PG-Q-CON-EX-GN-M-20_R SS, PG-Q-PR-LL-IR-DL-10_R SS, PG-Q-PR-SL-IR-DL-10_R SS | 100% |  | 2026-09-13 | 2026-09-15 |  |  | COST [276533]; Labor / Helper [20.8 h]; Plumber [31.2 h] | 276,532.62 | 276,532.62 | Q | DIV-15 | Div15.5 |  |
| PG-Q-CON-EX-GN-M-90 |  | Installation of Irrigation Control System | 3d | 2026-08-20 A | 2026-10-20 | PG-Q-CON-EX-GN-M-80_R, PG-Q-PR-LL-IR-DL-20_R, PG-Q-CON-EX-GN-M-80_R SS, PG-Q-PR-LL-IR-DL-20_R SS | 80% | 0.6d | 2026-09-21 | 2026-09-26 | -27.05d | 0d | COST [90915]; Labor / Helper [16 h]; Electrician [8 h]; ELV Technician [8 h] | 90,915 | 72,732 | Q | DIV-15 | Div15.5 |  |
| PG-Q-CON-EX-GN-M-100 |  | Installation of Bubblers and Sprinklers | 3d | 2026-08-27 A | 2026-10-22 | PG-Q-CON-EX-GN-M-90, PG-Q-PR-SL-IR-DL-20_R, PG-Q-CON-EX-GN-M-80_R, PG-Q-CON-EX-GN-M-90 SS, PG-Q-PR-SL-IR-DL-20_R SS, PG-Q-CON-EX-GN-M-80_R SS | 65% | 1.05d | 2026-09-19 | 2026-09-22 | -27.05d | 0d | COST [236788]; Labor / Helper [16 h]; Mechanical Technician [16 h] | 236,787.6 | 153,911.94 | Q | DIV-15 | Div15.5 |  |
|  | 1 | **FIRE PROTECTION SYSTEM** |  | 2026-10-29 | 2026-11-01 |  |  |  |  |  |  |  |  |  |  |  |  |  |  |
| PG-Q-CON-EX-GN-M-110 |  | Fire Extinguisher Installation | 2d | 2026-10-29 | 2026-11-01 | PG-Q-CON-EX-GN-M-70, PG-Q-PR-SL-FF-DL-10_R |  |  |  |  | -27.05d | 0d | COST [317.94]; Labor / Helper [16 h]; Mechanical Technician [16 h] | 317.94 |  | Q | DIV-15 | Div15.1 |  |
|  | 2 | **ELECTRICAL WORK** |  | 2026-05-20 | 2026-12-29 |  |  |  |  |  |  |  |  |  |  |  |  |  |  |
|  | 1 | **POWER, LIGHTING & GROUNDING** |  | 2026-05-20 | 2026-11-18 |  |  |  |  |  |  |  |  |  |  |  |  |  |  |
| PG-Q-CON-EX-GN-E-10 |  | Excavation(Completed) | 27d | 2026-05-20 A | 2026-06-24 A | PG-Q-CON-EX-FB-30 | 100% |  |  |  |  |  | COST [121837]; Dump Truck [22.4 h]; Excavator [5.6 h]; Site Engineer [2.8 h]; Labor / Helper [22.4 h]; Surveyor [5.6 h]; Excavator Operator [5.6 h]; Dump Truck Driver [22.4 h]; Safety Officer [5.6 h] | 121,836.96 | 121,836.96 | Q | DIV-16 |  | Div16.2 |
| PG-Q-CON-EX-GN-E-20 |  | Foundation Work for Site Lighting Poles(Completed) | 13d | 2026-06-10 A | 2026-06-24 A | PG-Q-PR-SL-CO-DL-10, PG-Q-PR-SL-CO-DL-20, PG-Q-CON-EX-GN-E-10 SS | 100% |  |  |  |  |  | COST [69621.1]; Site Engineer [1.2 h]; Concrete Mason [9.6 h]; Carpenter [4.8 h]; Steel Fixer [4.8 h] | 69,621.12 | 69,621.12 | Q | DIV-16 |  | Div16.2 |
| PG-Q-CON-EX-GN-E-10_R |  | Excavation(Remaining) | 3d | 2026-07-16 A | 2026-08-27 A | PG-Q-CON-EX-GN-M-70 FF, PG-Q-CON-EX-GN-E-10, PG-Q-PR-SL-CO-DL-50 | 100% |  | 2026-09-06 | 2026-09-08 |  |  | COST [52215.8]; Dump Truck [9.6 h]; Excavator [2.4 h]; Site Engineer [1.2 h]; Labor / Helper [9.6 h]; Surveyor [2.4 h]; Excavator Operator [2.4 h]; Dump Truck Driver [9.6 h]; Safety Officer [2.4 h] | 52,215.84 | 52,215.84 | Q | DIV-16 |  | Div16.2 |
| PG-Q-CON-EX-GN-E-20_R |  | Foundation Work for Site Lighting Poles(Remaining) | 3.5d | 2026-08-20 A | 2026-10-29 | PG-Q-PR-SL-CO-DL-10, PG-Q-PR-SL-CO-DL-20, PG-Q-CON-EX-GN-E-10_R SS, PG-Q-CON-EX-GN-E-20 | 80% | 0.7d | 2026-10-06 | 2026-10-10 | -25.75d | 1.3d | COST [162449]; Site Engineer [2.8 h]; Concrete Mason [22.4 h]; Carpenter [11.2 h]; Steel Fixer [11.2 h] | 162,449.28 | 129,959.42 | Q | DIV-16 |  | Div16.2 |
| PG-Q-CON-EX-GN-E-60 |  | Site Lighting Poles Installation | 3d | 2026-08-20 A | 2026-11-10 | PG-Q-CON-EX-GN-E-50, PG-Q-EN-EL-SD-AP-30, PG-Q-EN-EL-SD-AP-40, PG-Q-PR-LL-EL-DL-30_R, PG-Q-CON-EX-GN-E-10_R, PG-Q-CON-EX-GN-E-50 FF, PG-Q-PR-LL-EL-DL-30_R SS, PG-Q-CON-EX-GN-E-10_R SS | 80% | 0.6d | 2026-11-01 | 2026-11-04 | -27.05d | 0d | COST [174053]; Crane [8 h]; Labor / Helper [16 h]; Electrician [16 h]; Crane Operator [8 h] | 174,052.8 | 139,242.24 | Q | DIV-16 |  | Div16.2 |
| PG-Q-CON-EX-GN-E-30 |  | Lightning Protection System (LPS) | 3d | 2026-08-27 A | 2026-11-01 | PG-Q-CON-EX-GN-E-20_R, PG-Q-PR-LL-EL-DL-50_R, PG-Q-CON-EX-GN-M-110, PG-Q-CON-EX-GN-E-10_R, PG-Q-CON-EX-GN-E-20_R SS, PG-Q-PR-LL-EL-DL-50_R SS, PG-Q-CON-EX-GN-M-110 FF | 80% | 0.6d | 2026-10-27 | 2026-10-31 | -27.05d | 0d | COST [8265]; Labor / Helper [8 h]; Electrician [24 h] | 8,265 | 6,612 | Q | DIV-16 |  | Div16.7 |
| PG-Q-CON-EX-GN-E-40 |  | KWH Meter and MDB Installation | 2d | 2026-11-01 | 2026-11-03 | PG-Q-CON-EX-GN-E-30, PG-Q-EN-EL-SD-AP-10, PG-Q-PR-LL-EL-DL-10_R, PG-Q-CON-EX-GN-E-10_R, PG-Q-CON-EX-GN-M-70 |  |  |  |  | -27.05d | 0d | COST [4586.7]; Labor / Helper [16 h]; Electrician [16 h] | 4,586.7 |  | Q | DIV-16 |  | Div16.6 |
| PG-Q-CON-EX-GN-E-50 |  | Power Panels and Distribution Boards | 5d | 2026-11-03 | 2026-11-09 | PG-Q-CON-EX-GN-E-40, PG-Q-EN-EL-SD-AP-20, PG-Q-PR-LL-EL-DL-20_R, PG-Q-CON-EX-GN-E-10_R |  |  |  |  | -27.05d | 0d | COST [17397.9]; Labor / Helper [8 h]; Electrician [32 h] | 17,397.9 |  | Q | DIV-16 |  | Div16.6 |
| PG-Q-CON-EX-GN-E-70 |  | Wiring Works | 3d | 2026-11-10 | 2026-11-14 | PG-Q-CON-EX-GN-E-60, PG-Q-PR-SL-EL-DL-10_R, PG-Q-CON-EX-GN-E-10_R |  |  |  |  | -27.05d | 0d | COST [4224]; Electrician [32 h] | 4,224 |  | Q | DIV-16 |  | Div16.9 |
| PG-Q-CON-EX-GN-E-80 |  | Lighting Fixtures with outlets Installation | 4d | 2026-11-14 | 2026-11-18 | PG-Q-CON-EX-GN-E-70, PG-Q-PR-LL-EL-DL-40_R, PG-Q-CON-EX-GN-E-10_R |  |  |  |  | -27.05d | 0d | COST [22245.5]; Labor / Helper [8 h]; Electrician [32 h] | 22,245.48 |  | Q | DIV-16 |  | Div16.3 |
|  | 2 | **ELV SYSTEMS (TELECOM, DATA, AV & CCTV)** |  | 2026-11-18 | 2026-12-17 |  |  |  |  |  |  |  |  |  |  |  |  |  |  |
| PG-Q-CON-EX-GN-E-90 |  | ELV Containment & Cabling Works | 3d | 2026-11-18 | 2026-11-22 | PG-Q-CON-EX-GN-E-80, PG-Q-PR-LL-EL-DL-60_R |  |  |  |  | -27.05d | 0d | COST [619.8]; Labor / Helper [16 h]; Electrician [8 h]; ELV Technician [16 h] | 619.8 |  | Q | DIV-16 |  | Div16.5 |
| PG-Q-CON-EX-GN-E-100 |  | Fiber Optic Pull Box Installation | 3d | 2026-11-22 | 2026-11-25 | PG-Q-CON-EX-GN-E-90, PG-Q-EN-EL-SD-AP-50, PG-Q-PR-LL-EL-DL-60_R |  |  |  |  | -22.05d | 0d | COST [619.8]; Labor / Helper [16 h]; Electrician [8 h]; ELV Technician [8 h] | 619.8 |  | Q | DIV-16 |  | Div16.5 |
| PG-Q-CON-EX-GN-E-110 |  | Telephone and Data Outlet Installation | 4d | 2026-11-25 | 2026-11-30 | PG-Q-CON-EX-GN-E-100, PG-Q-EN-EL-SD-AP-50, PG-Q-PR-LL-EL-DL-60_R, PG-Q-CON-EX-GN-E-90 |  |  |  |  | -22.05d | 0d | COST [3718.8]; Labor / Helper [16 h]; Electrician [8 h]; ELV Technician [16 h] | 3,718.8 |  | Q | DIV-16 |  | Div16.4 |
| PG-Q-CON-EX-GN-E-120 |  | Telecom Equipment and AV HDMI Installation | 4d | 2026-11-30 | 2026-12-05 | PG-Q-CON-EX-GN-E-110, PG-Q-EN-EL-SD-AP-80, PG-Q-PR-LL-EL-DL-60_R, PG-Q-CON-EX-GN-E-90 |  |  |  |  | -22.05d | 0d | COST [15249.1]; Labor / Helper [16 h]; Electrician [8 h]; ELV Technician [16 h] | 15,249.12 |  | Q | DIV-16 |  | Div16.4 |
| PG-Q-CON-EX-GN-E-130 |  | CCTV Rack / Cabinet Installation | 4d | 2026-12-05 | 2026-12-09 | PG-Q-CON-EX-GN-E-120, PG-Q-EN-EL-SD-AP-60, PG-Q-PR-LL-EL-DL-70_R, PG-Q-CON-EX-GN-E-90 |  |  |  |  | -22.05d | 0d | COST [1446.48]; Labor / Helper [16 h]; Electrician [8 h]; ELV Technician [16 h] | 1,446.48 |  | Q | DIV-16 |  | Div16.5 |
| PG-Q-CON-EX-GN-E-140 |  | NVR and CCTV Monitor Installation | 4d | 2026-12-09 | 2026-12-14 | PG-Q-CON-EX-GN-E-130, PG-Q-EN-EL-SD-AP-70, PG-Q-PR-LL-EL-DL-70_R, PG-Q-CON-EX-GN-E-90 |  |  |  |  | -22.05d | 0d | COST [6612]; Labor / Helper [16 h]; Electrician [8 h]; ELV Technician [16 h] | 6,612 |  | Q | DIV-16 |  | Div16.5 |
| PG-Q-CON-EX-GN-E-150 |  | IP Camera Installation | 3d | 2026-12-14 | 2026-12-17 | PG-Q-CON-EX-GN-E-140, PG-Q-PR-LL-EL-DL-70_R, PG-Q-CON-EX-GN-E-90 |  |  |  |  | -22.05d | 0d | COST [14880]; Labor / Helper [16 h]; Electrician [8 h]; ELV Technician [16 h] | 14,880 |  | Q | DIV-16 |  | Div16.5 |

| ID | WBS | Activity | Duration | Start | Finish | Predecessors | Complete | Remaining | Planned start | Planned finish | Total float | Free float | Resources | Cost | Actual cost | H,Q,T-Location | BOQ DIVISION | DIVISION 16 ELECTRICAL WORKS | DIVISION-02-SITE WORKS | DIVISION 15-MECHANICAL WORKS |
| --- | --- | --- | --- | --- | --- | --- | --- | --- | --- | --- | --- | --- | --- | --- | --- | --- | --- | --- | --- | --- |
|  | 3 | **FIRE ALARM SYSTEM** |  | 2026-11-22 | 2026-12-29 |  |  |  |  |  |  |  |  |  |  |  |  |  |  |  |
| PG-Q-CON-EX-GN-E-160 |  | Fire Alarm Containment & Cabling | 8d | 2026-11-22 | 2026-12-01 | PG-Q-EN-EL-SD-AP-110, PG-Q-EN-EL-SD-AP-90, PG-Q-PR-LL-EL-DL-80_R, PG-Q-CON-EX-GN-E-90 |  |  |  |  | -27.05d | 0d | COST [1983.6]; Labor / Helper [8 h]; Electrician [16 h]; ELV Technician [8 h] | 1,983.6 |  | Q | DIV-16 | Div16.8 |  |  |
| PG-Q-CON-EX-GN-E-170 |  | Fire Alarm Control Panel (FACP) Installation | 8d | 2026-12-01 | 2026-12-10 | PG-Q-CON-EX-GN-E-160, PG-Q-EN-EL-SD-AP-110 |  |  |  |  | -27.05d | 0d | COST [2644.8]; Labor / Helper [8 h]; Electrician [16 h] | 2,644.8 |  | Q | DIV-16 | Div16.8 |  |  |
| PG-Q-CON-EX-GN-E-180 |  | Initiating Devices (Detectors & Manual Pull Station) | 8d | 2026-12-10 | 2026-12-20 | PG-Q-CON-EX-GN-E-170, PG-Q-EN-EL-SD-AP-100, PG-Q-CON-EX-GN-E-160 |  |  |  |  | -27.05d | 0d | COST [8097.6]; Labor / Helper [16 h]; Electrician [8 h]; ELV Technician [16 h] | 8,097.6 |  | Q | DIV-16 | Div16.8 |  |  |
| PG-Q-CON-EX-GN-E-190 |  | Notification Appliances (Strobe with Sounder) | 8d | 2026-12-20 | 2026-12-29 | PG-Q-CON-EX-GN-E-180, PG-Q-CON-EX-GN-E-160 |  |  |  |  | -27.05d | 0d | COST [1198.2]; Labor / Helper [16 h]; Electrician [8 h]; ELV Technician [16 h] | 1,198.2 |  | Q | DIV-16 | Div16.8 |  |  |
|  | 3 | **PARKING WORK** |  | 2026-06-17 | 2026-12-29 |  |  |  |  |  |  |  |  |  |  |  |  |  |  |  |
| PG-Q-CON-EX-GN-PR-20 |  | Interlock tiles(Completed) | 7d | 2026-06-17 A | 2026-06-24 A | PG-Q-EN-LS-SD-AP-20, PG-Q-PR-SL-LS-DL-20 | 100% |  |  |  |  |  | COST [19899]; Labor / Helper [7.2 h]; Tile Fixer [14.4 h] | 19,899 | 19,899 | Q | DIV-2 |  | Div-2.2 |  |
| PG-Q-CON-EX-GN-PR-20_R |  | Interlock tiles(Remaining) | 2.75d | 2026-07-06 A | 2026-07-10 A | PG-Q-EN-LS-SD-AP-20, PG-Q-PR-SL-LS-DL-20, PG-Q-CON-EX-GN-PR-20, PG-Q-EN-EL-SD-AP-70, PG-Q-PR-SL-AR-DL-30, PG-Q-EN-AR-SD-AP-30, PG-Q-EN-AR-SD-AP-90 | 100% |  | 2026-11-17 | 2026-11-19 |  |  | COST [24321]; Labor / Helper [8.8 h]; Tile Fixer [17.6 h] | 24,321 | 24,321 | Q | DIV-2 |  | Div-2.2 |  |
| PG-Q-CON-EX-GN-PR-10 |  | Installlation of Parking Accessories | 5d | 2026-08-20 A | 2026-10-01 A | PG-Q-CON-EX-GN-E-150, PG-IN-MS-30, PG-Q-CON-EX-GN-E-150 FF, PG-IN-MS-30 FF | 100% |  | 2026-12-13 | 2026-12-19 |  |  | COST [44220]; Mason [16 h]; Labor / Helper [16 h] | 44,220 | 44,220 | Q | DIV-2 |  | Div-2.2 |  |
| PG-Q-CON-EX-GN-PR-30 |  | Marking & Signages | 5d | 2026-12-23 | 2026-12-29 | PG-Q-CON-EX-GN-PR-20_R, PG-Q-EN-LS-SD-AP-80, PG-Q-PR-SL-LS-DL-50_R, PG-Q-PR-SL-LS-DL-60_R, PG-Q-CON-EX-GN-E-190 FF, PG-Q-CON-EX-GN-PR-10, PG-Q-CON-B-AR-RF-30, PG-Q-CON-B-AR-WF-60, PG-Q-CON-B-AR-GF-80 |  |  |  |  | -27.05d | 0d | COST [14479.8]; Spray Machine [48 h]; Site Engineer [4 h]; Labor / Helper [32 h]; Painter [48 h] | 14,479.8 |  | Q | DIV-2 |  | Div-2.2 |  |
|  | 4 | **SERVICE CONNECTION** |  | 2026-07-12 | 2027-01-18 |  |  |  |  |  |  |  |  |  |  |  |  |  |  |  |
| PG-Q-CON-EX-GN-SC-10 |  | Excavation & Trench Preparation | 8d | 2026-07-12 A | 2026-08-20 A | PG-Q-CON-EX-GN-PR-30 FF, PG-Q-CON-EX-GN-PR-20_R | 100% |  | 2026-11-21 | 2026-11-29 |  |  | COST [2232]; Dump Truck [32 h]; Excavator [8 h]; Site Engineer [4 h]; Labor / Helper [32 h]; Surveyor [8 h]; Excavator Operator [8 h]; Dump Truck Driver [32 h]; Safety Officer [8 h] | 2,232 | 2,232 | Q | DIV-15 |  |  | Div15.2 |
| PG-Q-CON-EX-GN-SC-20 |  | HDPE Pipe Laying & Valve Installation | 8d | 2026-08-14 A | 2026-12-30 | PG-Q-CON-EX-GN-SC-10 SS | 90% | 0.8d | 2026-12-19 | 2026-12-28 | -27.05d | 0d | COST [2232]; Labor / Helper [16 h]; Plumber [32 h] | 2,232 | 2,008.8 | Q | DIV-15 |  |  | Div15.2 |
| PG-Q-CON-EX-GN-SC-30 |  | Connection to City Network | 8d | 2026-12-30 | 2027-01-09 | PG-Q-CON-EX-GN-SC-20, PG-Q-CON-EX-GN-SC-10, PG-Q-CON-EX-GN-PR-30 |  |  |  |  | -27.05d | 0d | COST [1488]; Labor / Helper [16 h]; Plumber [32 h] | 1,488 |  | Q | DIV-15 |  |  | Div15.2 |
| PG-Q-CON-EX-GN-SC-40 |  | Backfilling | 8d | 2027-01-09 | 2027-01-18 | PG-Q-PR-SL-LS-DL-10, PG-Q-CON-EX-GN-SC-30, PG-Q-CON-EX-GN-SC-10 |  |  |  |  | -27.05d | 5.6d | COST [1488]; Roller [16 h]; Loader [8 h]; Site Engineer [4 h]; Mason [16 h]; Surveyor [4 h]; Loader Operator [8 h]; Roller Operator [16 h] | 1,488 |  | Q | DIV-15 |  |  | Div15.2 |
|  | LS | **LANDSCAPING WORKS** |  | 2026-05-30 | 2026-12-09 |  |  |  |  |  |  |  |  |  |  |  |  |  |  |  |
|  | HSP | **HARDSCAPE WORK** |  | 2026-05-30 | 2026-12-09 |  |  |  |  |  |  |  |  |  |  |  |  |  |  |  |
| PG-Q-CON-EX-LS-HS-10 |  | Curbstone Installation(Completed) | 22d | 2026-05-30 A | 2026-06-24 A | PG-Q-EN-LS-SD-AP-10, PG-Q-PR-SL-LS-DL-40, PG-Q-CON-EX-TW-ST-70, PG-Q-CON-EX-TW-ST-70 FF | 100% |  | 2026-05-31 | 2026-06-24 |  |  | COST [604590]; Mason [11.2 h]; Labor / Helper [11.2 h] | 604,590 | 604,590 | Q | DIV-2 |  | Div-2.3 |  |
| PG-Q-CON-EX-LS-HS-20 |  | Interlock Tiles Grey Scale with Black Marble Chips(Completed) | 22d | 2026-05-30 A | 2026-06-24 A | PG-Q-CON-EX-LS-HS-10 SS | 100% |  | 2026-05-31 | 2026-06-24 |  |  | COST [36960]; Labor / Helper [6.4 h]; Tile Fixer [12.8 h] | 36,960 | 36,960 | Q | DIV-2 |  | Div-2.3 |  |
| PG-Q-CON-EX-LS-HS-40 |  | Bike Path and Walking Path Construction(Completed) | 22d | 2026-05-30 A | 2026-06-24 A | PG-Q-EN-LS-SD-AP-50, PG-Q-EN-LS-SD-AP-60, PG-Q-CON-EX-LS-HS-30 SS, PG-Q-PR-LL-LS-DL-10 SS | 100% |  | 2026-05-31 | 2026-06-24 |  |  | COST [146025]; Labor / Helper [8.8 h]; Applicator [8.8 h]; Concrete Mason [8.8 h] | 146,025 | 146,025 | Q | DIV-2 |  | Div-2.3 |  |
| PG-Q-CON-EX-LS-HS-30 |  | Stamped Concrete Floor(Completed) | 13d | 2026-06-10 A | 2026-06-24 A | PG-Q-EN-LS-SD-AP-30, PG-Q-CON-EX-LS-HS-20 SS | 100% |  |  |  |  |  | COST [207900]; Labor / Helper [8 h]; Concrete Mason [8 h] | 207,900 | 207,900 | Q | DIV-2 |  | Div-2.3 |  |
| PG-Q-CON-EX-LS-HS-50 |  | Install Recycled Precast Concrete Seats(Completed) | 7d | 2026-06-17 A | 2026-06-24 A | PG-Q-CON-EX-LS-HS-40 SS, PG-Q-PR-LL-LS-DL-20 SS | 100% |  |  |  |  |  | COST [6959.7]; Mason [1.6 h]; Labor / Helper [1.6 h] | 6,959.7 | 6,959.7 | Q | DIV-2 |  | Div-2.3 |  |
| PG-Q-CON-EX-LS-HS-10_R |  | Curbstone Installation(Remaining) | 10d | 2026-07-07 A | 2026-08-14 A | PG-Q-CON-EX-GN-FN-50 FF, PG-Q-EN-LS-SD-AP-10, PG-Q-PR-SL-LS-DL-40, PG-Q-CON-EX-TW-ST-70, PG-Q-CON-EX-TW-ST-70 FF, PG-Q-CON-EX-LS-HS-10, PG-Q-CON-EX-TW-IR-40 FF, PG-Q-CON-EX-LS-HS-40_R SS, PG-Q-CON-EX-GN-FN-10, PG-Q-EN-ME-SD-AP-40 | 100% |  | 2026-09-19 | 2026-09-30 |  |  | COST [259110]; Mason [4.8 h]; Labor / Helper [4.8 h] | 259,110 | 259,110 | Q | DIV-2 |  | Div-2.3 |  |
| PG-Q-CON-EX-LS-HS-40_R |  | Bike Path and Walking Path Construction(Remaining) | 17d | 2026-07-08 A | 2026-08-14 A | PG-Q-EN-LS-SD-AP-50, PG-Q-EN-LS-SD-AP-60, PG-Q-CON-EX-LS-HS-40, PG-Q-PR-LL-LS-DL-10_R FF, PG-Q-PR-LL-LS-DL-10_R SS | 100% |  | 2026-08-03 | 2026-08-22 |  |  | COST [119475]; Labor / Helper [7.2 h]; Applicator [7.2 h]; Concrete Mason [7.2 h] | 119,475 | 119,475 | Q | DIV-2 |  | Div-2.3 |  |
| PG-Q-CON-EX-LS-HS-30_R |  | Stamped Concrete Floor(Remaining) | 13d | 2026-07-31 A | 2026-08-27 A | PG-Q-EN-LS-SD-AP-30, PG-Q-CON-EX-LS-HS-30, PG-Q-CON-EX-LS-HS-10_R SS | 100% |  | 2026-09-30 | 2026-10-15 |  |  | COST [207900]; Labor / Helper [8 h]; Concrete Mason [8 h] | 207,900 | 207,900 | Q | DIV-2 |  | Div-2.3 |  |
| PG-Q-CON-EX-LS-HS-50_R |  | Install Recycled Precast Concrete Seats(Remaining) | 10d | 2026-08-20 A | 2026-11-28 | PG-Q-PR-LL-LS-DL-20_R SS, PG-Q-CON-EX-LS-HS-50, PG-Q-CON-EX-LS-SS-10, PG-Q-CON-EX-LS-SS-10 FF | 75% | 2.5d | 2026-11-26 | 2026-12-07 | 6.75d | 0d | COST [62637.3]; Mason [14.4 h]; Labor / Helper [14.4 h] | 62,637.3 | 46,977.97 | Q | DIV-2 |  | Div-2.3 |  |
| PG-Q-CON-EX-LS-HS-20_R |  | Interlock Tiles Grey Scale with Black Marble Chips(Remaining) | 13d | 2026-08-27 A | 2026-10-31 | PG-Q-CON-EX-LS-HS-20, PG-Q-CON-EX-LS-HS-30_R, PG-Q-CON-EX-GN-FN-50, PG-Q-CON-EX-TW-IR-40, PG-Q-CON-EX-GN-FN-50 FF, PG-Q-CON-EX-TW-IR-40 FF | 85% | 1.95d | 2026-10-06 | 2026-10-21 | 6.75d | 0d | COST [55440]; Labor / Helper [9.6 h]; Tile Fixer [19.2 h] | 55,440 | 47,124 | Q | DIV-2 |  | Div-2.3 |  |
| PG-Q-CON-EX-LS-HS-60 |  | Install Recycled Precast Concrete Trash Bins | 10d | 2026-11-28 | 2026-12-09 | PG-Q-CON-EX-LS-HS-50_R |  |  |  |  | 6.75d | 39.4d | COST [5412]; Mason [16 h]; Labor / Helper [16 h] | 5,412 |  | Q | DIV-2 |  | Div-2.3 |  |

| ID | WBS | Activity | Duration | Start | Finish | Predecessors | Complete | Remaining | Planned start | Planned finish | Total float | Free float | Resources | Cost | Actual cost | H,Q,T-Location | BOQ DIVISION | DIVISION-02-SITE WORKS | DIVISION-3 CONCRETE | DIVISION 15-MECHANICAL WORKS | Air Dome |
| --- | --- | --- | --- | --- | --- | --- | --- | --- | --- | --- | --- | --- | --- | --- | --- | --- | --- | --- | --- | --- | --- |
|  | SSP | **SOFTSCAPE WORK** |  | 2026-06-10 | 2026-11-24 |  |  |  |  |  |  |  |  |  |  |  |  |  |  |  |  |
| PG-Q-CON-EX-LS-SS-20 |  | Lawn Area Preparation & Planting / Turfing(Completed) | 13d | 2026-06-10 A | 2026-06-24 A | PG-Q-EN-LS-SD-AP-70, PG-Q-PR-SL-LS-DL-80 SS | 100% |  |  |  |  |  | COST [115500]; Site Engineer [2 h]; Labor / Helper [16 h]; Gardener [24 h] | 115,500 | 115,500 | Q | DIV-2 | Div-2.3 |  |  |  |
| PG-Q-CON-EX-LS-SS-20_R |  | Lawn Area Preparation & Planting / Turfing(Remaining) | 15d | 2026-08-27 A | 2026-11-04 | PG-Q-EN-LS-SD-AP-70, PG-Q-PR-SL-LS-DL-80_R, PG-Q-CON-EX-LS-SS-20, PG-Q-CON-EX-LS-HS-20_R, PG-Q-PR-SL-LS-DL-80_R FF, PG-Q-CON-EX-LS-HS-20_R SS | 75% | 3.75d | 2026-10-21 | 2026-11-08 | 6.75d | 0d | COST [115500]; Site Engineer [2 h]; Labor / Helper [16 h]; Gardener [24 h] | 115,500 | 86,625 | Q | DIV-2 | Div-2.3 |  |  |  |
| PG-Q-CON-EX-LS-SS-10 |  | Planting Trees | 17d | 2026-11-04 | 2026-11-24 | PG-Q-EN-LS-SD-AP-70, PG-Q-PR-SL-LS-DL-70_R, PG-Q-CON-EX-LS-SS-20_R |  |  |  |  | 6.75d | 0d | COST [190926]; Site Engineer [4 h]; Labor / Helper [32 h]; Gardener [48 h] | 190,926 |  | Q | DIV-2 | Div-2.3 |  |  |  |
|  | W.T | **TANK WORKS** |  | 2026-05-13 | 2026-10-13 |  |  |  |  |  |  |  |  |  |  |  |  |  |  |  |  |
|  | 1 | **SEPTIC TANK** |  | 2026-05-13 | 2026-06-24 |  |  |  |  |  |  |  |  |  |  |  |  |  |  |  |  |
| PG-Q-CON-EX-TW-ST-10 |  | Excavation | 29d | 2026-05-13 A | 2026-06-20 A | PG-Q-CON-EX-CF-30 SS | 100% |  |  |  |  |  | COST [252.18]; Dump Truck [32 h]; Excavator [8 h]; Site Engineer [4 h]; Labor / Helper [32 h]; Surveyor [8 h]; Excavator Operator [8 h]; Dump Truck Driver [32 h]; Safety Officer [8 h] | 252.18 | 252.18 | Q | DIV-3 |  | Div-3 |  |  |
| PG-Q-CON-EX-TW-ST-20 |  | PCC / Lean Concrete laying | 24d | 2026-05-20 A | 2026-06-21 A | PG-Q-CON-EX-TW-ST-10, PG-Q-CON-EX-TW-ST-10 SS | 100% |  |  |  |  |  | COST [168.12]; Site Engineer [4 h]; Labor / Helper [8 h]; Surveyor [8 h]; Safety Officer [4 h]; Concrete Mason [16 h] | 168.12 | 168.12 | Q | DIV-3 |  | Div-3 |  |  |
| PG-Q-CON-EX-TW-ST-40 |  | RCC Wall | 4d | 2026-06-20 A | 2026-06-23 A | PG-Q-CON-EX-TW-ST-30 | 100% |  |  |  |  |  | COST [2757.6]; Labor / Helper [8 h]; Concrete Mason [16 h]; Carpenter [16 h]; Steel Fixer [16 h] | 2,757.6 | 2,757.6 | Q | DIV-3 |  | Div-3 |  |  |
| PG-Q-CON-EX-TW-ST-30 |  | RCC Foundation | 2d | 2026-06-21 A | 2026-06-22 A | PG-Q-CON-EX-TW-ST-20, PG-Q-EN-ST-SD-AP-110, PG-Q-EN-ST-SD-AP-120 | 100% |  |  |  |  |  | COST [1277.64]; Labor / Helper [8 h]; Concrete Mason [16 h]; Carpenter [16 h]; Steel Fixer [16 h] | 1,277.64 | 1,277.64 | Q | DIV-3 |  | Div-3 |  |  |
| PG-Q-CON-EX-TW-ST-50 |  | RCC Slab | 4d | 2026-06-21 A | 2026-06-24 A | PG-Q-CON-EX-TW-ST-40 | 100% |  |  |  |  |  | COST [2599.38]; Labor / Helper [8 h]; Concrete Mason [16 h]; Carpenter [16 h]; Steel Fixer [16 h] | 2,599.38 | 2,599.38 | Q | DIV-3 |  | Div-3 |  |  |
| PG-Q-CON-EX-TW-ST-60 |  | Finishing Work | 3d | 2026-06-22 A | 2026-06-24 A | PG-Q-CON-EX-TW-ST-50 | 100% |  |  |  |  |  | COST [252.18]; Labor / Helper [8 h]; Applicator [16 h] | 252.18 | 252.18 | Q | DIV-3 |  | Div-3 |  |  |
| PG-Q-CON-EX-TW-ST-70 |  | Backfilling | 2d | 2026-06-23 A | 2026-06-24 A | PG-Q-CON-EX-TW-ST-60 | 100% |  |  |  |  |  | COST [168.12]; Roller [8 h]; Loader [8 h]; Site Engineer [4 h]; Mason [16 h]; Surveyor [4 h]; Loader Operator [8 h]; Roller Operator [8 h] | 168.12 | 168.12 | Q | DIV-3 |  | Div-3 |  |  |
|  | 2 | **WATER STORAGE TANK** |  | 2026-05-13 | 2026-10-13 |  |  |  |  |  |  |  |  |  |  |  |  |  |  |  |  |
| PG-Q-CON-EX-TW-IR-10 |  | Excavation(Completed) | 33d | 2026-05-13 A | 2026-06-24 A | PG-Q-EN-ST-SD-AP-90, PG-Q-CON-EX-TW-ST-70, PG-Q-CON-EX-TW-ST-70 FF | 100% |  |  |  |  |  | COST [766.58]; Dump Truck [28.8 h]; Excavator [7.2 h]; Site Engineer [3.6 h]; Labor / Helper [28.8 h]; Surveyor [7.2 h]; Excavator Operator [7.2 h]; Dump Truck Driver [28.8 h]; Safety Officer [7.2 h] | 766.58 | 766.58 | Q | DIV-3 |  | Div-3 |  |  |
| PG-Q-CON-EX-TW-IR-10_R |  | Excavation(Remaining) | 7d | 2026-07-07 A | 2026-07-08 A | PG-Q-EN-ST-SD-AP-90, PG-Q-CON-EX-TW-ST-70, PG-Q-CON-EX-TW-ST-70 FF, PG-Q-CON-EX-TW-IR-10 | 100% |  | 2026-07-12 | 2026-07-19 |  |  | COST [85.18]; Dump Truck [3.2 h]; Excavator [0.8 h]; Site Engineer [0.4 h]; Labor / Helper [3.2 h]; Surveyor [0.8 h]; Excavator Operator [0.8 h]; Dump Truck Driver [3.2 h]; Safety Officer [0.8 h] | 85.18 | 85.18 | Q | DIV-3 |  | Div-3 |  |  |
| PG-Q-CON-EX-TW-IR-20 |  | RCC Foundation | 15d | 2026-07-09 A | 2026-08-26 A | PG-Q-CON-EX-TW-IR-10_R, PG-Q-EN-ST-SD-AP-100 | 100% |  | 2026-07-12 | 2026-07-28 |  |  | COST [4136.4]; Labor / Helper [16 h]; Concrete Mason [24 h]; Carpenter [16 h]; Steel Fixer [16 h] | 4,136.4 | 4,136.4 | Q | DIV-3 |  | Div-3 |  |  |
| PG-Q-CON-EX-TW-IR-30 |  | Backfilling | 7d | 2026-08-20 A | 2026-08-27 A | PG-Q-CON-EX-TW-IR-20, PG-Q-CON-EX-TW-IR-10_R | 100% |  | 2026-08-30 | 2026-09-07 |  |  | COST [1114.02]; Roller [16 h]; Loader [8 h]; Site Engineer [4 h]; Mason [16 h]; Surveyor [4 h]; Loader Operator [8 h]; Roller Operator [16 h] | 1,114.02 | 1,114.02 | Q | DIV-3 |  | Div-3 |  |  |
| PG-Q-CON-EX-TW-IR-40 |  | GRP Water Tank Installation | 8d | 2026-10-04 | 2026-10-13 | PG-Q-CON-EX-TW-IR-30, PG-Q-EN-ME-SD-AP-40, PG-Q-PR-LL-PB-DL-20_R, PG-Q-PR-LL-PB-MA-20_R, PG-Q-CON-EX-TW-IR-10_R |  |  |  |  | 20.3d | 13.55d | COST [34713]; Crane [4 h]; Mason [32 h]; Labor / Helper [16 h]; Crane Operator [4 h] | 34,713 |  | Q | DIV-15 |  |  | Div15.2 |  |
|  | AD | **AIR DOME CONSTRUCTION** |  | 2026-05-13 | 2027-01-04 |  |  |  |  |  |  |  |  |  |  |  |  |  |  |  |  |
|  | 1 | **CIVIL WORK** |  | 2026-05-13 | 2026-10-25 |  |  |  |  |  |  |  |  |  |  |  |  |  |  |  |  |
| PG-Q-CON-EX-AD-CL-10 |  | Excavation For Footing(Completed) | 33d | 2026-05-13 A | 2026-06-24 A | PG-Q-CON-EX-FB-10 | 100% |  |  |  |  |  | COST [25048.8]; Dump Truck [3.2 h]; Excavator [1.6 h]; Site Engineer [0.4 h]; Labor / Helper [3.2 h]; Surveyor [0.8 h]; Excavator Operator [1.6 h]; Dump Truck Driver [3.2 h]; Safety Officer [0.8 h] | 25,048.83 | 25,048.83 | Q | DIV-2 | AD |  |  | A.D |
| PG-Q-CON-EX-AD-CL-10_R |  | Excavation For Footing(Remaining) | 6d | 2026-07-09 A | 2026-07-10 A | PG-Q-EN-ST-SD-AP-50, PG-Q-CON-EX-FB-10, PG-Q-EN-ST-SD-AP-50 FF, PG-Q-CON-EX-AD-CL-10 | 100% |  | 2026-07-26 | 2026-08-01 |  |  | COST [225439]; Dump Truck [28.8 h]; Excavator [14.4 h]; Site Engineer [3.6 h]; Labor / Helper [28.8 h]; Surveyor [7.2 h]; Excavator Operator [14.4 h]; Dump Truck Driver [28.8 h]; Safety Officer [7.2 h] | 225,439.46 | 225,439.46 | Q | DIV-2 | AD |  |  | A.D |
| PG-Q-CON-EX-AD-CL-20 |  | Anti-Termite Treatment | 2d | 2026-07-11 A | 2026-07-12 A | PG-Q-CON-EX-AD-CL-10_R | 100% |  | 2026-07-14 | 2026-07-15 |  |  | COST [83496.1]; Mason [16 h]; Labor / Helper [16 h] | 83,496.1 | 83,496.1 | Q | DIV-2 | AD |  |  | A.D |
| PG-Q-CON-EX-AD-CL-30 |  | PCC / Blinding Concrete | 3d | 2026-07-23 A | 2026-08-06 A | PG-Q-CON-EX-AD-CL-20, PG-Q-EN-ST-SD-AP-60 | 100% |  | 2026-07-26 | 2026-07-28 |  |  | COST [125244]; Site Engineer [4 h]; Labor / Helper [16 h]; Surveyor [8 h]; Safety Officer [4 h]; Concrete Mason [32 h] | 125,244.14 | 125,244.14 | Q | DIV-2 | AD |  |  | A.D |
| PG-Q-CON-EX-AD-CL-40 |  | RCC Foundation Works | 12d | 2026-07-31 A | 2026-08-13 A | PG-Q-EN-ST-SD-AP-60, PG-Q-PR-SL-CO-DL-10, PG-Q-PR-SL-CO-DL-20, PG-Q-EN-ST-SD-SB-50, PG-Q-EN-ST-SD-SB-60, PG-Q-CON-EX-AD-CL-30 SS | 100% |  | 2026-08-03 | 2026-08-17 |  |  | COST [250488]; Labor / Helper [24 h]; Concrete Mason [32 h]; Carpenter [16 h]; Steel Fixer [16 h] | 250,488.29 | 250,488.29 | Q | DIV-2 | AD |  |  | A.D |
| PG-Q-CON-EX-AD-CL-50 |  | Backfilling with Compaction | 6d | 2026-08-06 A | 2026-08-14 A | PG-Q-PR-SL-LS-DL-10, PG-Q-CON-EX-AD-CL-40 SS | 100% |  | 2026-08-17 | 2026-08-24 |  |  | COST [250488]; Roller [16 h]; Loader [8 h]; Site Engineer [4 h]; Mason [16 h]; Surveyor [4 h]; Loader Operator [8 h]; Roller Operator [16 h] | 250,488.29 | 250,488.29 | Q | DIV-2 | AD |  |  | A.D |
| PG-Q-CON-EX-AD-CL-60 |  | Installation of Anchorage System | 8d | 2026-08-27 A | 2026-09-29 A | PG-Q-CON-EX-AD-CL-50, PG-Q-PR-LL-SP-DL-50 SS, PG-IN-MS-10, PG-IN-MS-10 FF | 100% |  | 2026-09-20 | 2026-09-29 |  |  | COST [250488]; Site Engineer [4 h]; Labor / Helper [32 h]; Mechanical Technician [24 h] | 250,488.29 | 250,488.29 | Q | DIV-2 | AD |  |  | A.D |
| PG-Q-CON-EX-AD-CL-70 |  | Installation of Steel Cable Structural System | 10d | 2026-10-04 | 2026-10-15 | PG-Q-CON-EX-AD-CL-60, PG-Q-EN-AR-SD-AP-120 |  |  |  |  | -32.8d | 0d | COST [250488]; Crane [8 h]; Site Engineer [4 h]; Labor / Helper [32 h]; Crane Operator [8 h]; Mechanical Technician [32 h] | 250,488.29 |  | Q | DIV-2 | AD |  |  | A.D |
| PG-Q-CON-EX-AD-CL-80 |  | Installation of Membrane System | 8d | 2026-10-15 | 2026-10-25 | PG-Q-CON-EX-AD-CL-70, PG-Q-EN-AR-SD-AP-110 |  |  |  |  | -32.8d | 0d | COST [250488]; Site Engineer [4 h]; Labor / Helper [32 h]; Mechanical Technician [32 h] | 250,488.29 |  | Q | DIV-2 | AD |  |  | A.D |

| ID | WBS | Activity | Duration | Start | Finish | Predecessors | Complete | Remaining | Planned start | Planned finish | Total float | Free float | Resources | Cost | Actual cost | H,Q,T-Location | BOQ DIVISION | DIVISION-02-SITE WORKS | Air Dome | DIVISION-3 CONCRETE | DIVISION 07-THERMAL & MOISTURE PROTECTIO |
| --- | --- | --- | --- | --- | --- | --- | --- | --- | --- | --- | --- | --- | --- | --- | --- | --- | --- | --- | --- | --- | --- |
|  | 2 | **ARCHITECTURAL WORK** |  | 2026-08-27 | 2027-01-04 |  |  |  |  |  |  |  |  |  |  |  |  |  |  |  |  |
| PG-Q-CON-EX-AD-AR-10 |  | Installation of Thermal Insulation System | 8d | 2026-08-27 A | 2026-12-13 | PG-Q-CON-EX-AD-CL-80, PG-Q-PR-LL-SP-DL-50, PG-Q-EN-AR-SD-AP-110, PG-Q-CON-EX-AD-EL-50, PG-Q-CON-EX-AD-EL-20, PG-Q-CON-EX-AD-CL-80 FF, PG-Q-PR-LL-SP-DL-50 SS, PG-Q-EN-AR-SD-AP-110 SS, PG-Q-CON-EX-AD-EL-50 FF, PG-Q-CON-EX-AD-EL-20 FF | 50% | 4d | 2026-12-05 | 2026-12-13 | -32.8d | 0d | COST [250488]; Site Engineer [4 h]; Labor / Helper [24 h]; Applicator [32 h] | 250,488.29 | 125,244.14 | Q | DIV-2 | AD | A.D |  |  |
| PG-Q-CON-EX-AD-AR-40 |  | Final Fixing of Accessories & Finishes | 8d | 2026-12-13 | 2026-12-22 | PG-Q-CON-EX-AD-CL-80, PG-Q-CON-EX-AD-AR-10 |  |  |  |  | -32.8d | 0d | COST [208740]; Labor / Helper [16 h]; Applicator [40 h] | 208,740.24 |  | Q | DIV-2 | AD | A.D |  |  |
| PG-Q-CON-EX-AD-AR-20 |  | Installation of Doors & Access Systems | 6d | 2026-12-22 | 2026-12-29 | PG-Q-CON-EX-AD-AR-10, PG-Q-EN-AR-SD-AP-130, PG-Q-CON-EX-AD-AR-40 |  |  |  |  | -32.8d | 0d | COST [250488]; Labor / Helper [24 h]; Electrician [32 h] | 250,488.29 |  | Q | DIV-2 | AD | A.D |  |  |
| PG-Q-CON-EX-AD-AR-30 |  | Installation of Logo | 5d | 2026-12-29 | 2027-01-04 | PG-Q-CON-EX-AD-AR-20, PG-Q-CON-EX-AD-AR-40 |  |  |  |  | -32.8d | 0d | COST [3236.4]; Mason [24 h]; Labor / Helper [16 h] | 3,236.4 |  | Q | DIV-10 | AD | A.D |  |  |
|  | 3 | **MECHANICAL WORK** |  | 2026-10-25 | 2026-11-12 |  |  |  |  |  |  |  |  |  |  |  |  |  |  |  |  |
| PG-Q-CON-EX-AD-ME-10 |  | Installation of Main Air Package Units | 5d | 2026-10-25 | 2026-10-31 | PG-Q-EN-ME-SD-AP-100, PG-Q-CON-EX-AD-CL-80 |  |  |  |  | -32.8d | 0d | COST [250488]; Labor / Helper [16 h]; Electrician [8 h]; HVAC Technician [32 h] | 250,488.29 |  | Q | DIV-2 | AD | A.D |  |  |
| PG-Q-CON-EX-AD-ME-20 |  | Installation of Backup Air Package Unit | 5d | 2026-10-31 | 2026-11-05 | PG-Q-CON-EX-AD-ME-10, PG-Q-EN-ME-SD-AP-100 |  |  |  |  | -32.8d | 0d | COST [208740]; Labor / Helper [16 h]; Electrician [8 h]; HVAC Technician [32 h] | 208,740.24 |  | Q | DIV-2 | AD | A.D |  |  |
| PG-Q-CON-EX-AD-ME-30 |  | Installation of Complete HVAC System | 6d | 2026-11-05 | 2026-11-12 | PG-Q-CON-EX-AD-ME-20, PG-Q-CON-EX-AD-EL-10, PG-Q-EN-ME-SD-AP-100 |  |  |  |  | -32.8d | 0d | COST [208740]; Labor / Helper [16 h]; HVAC Technician [32 h] | 208,740.24 |  | Q | DIV-2 | AD | A.D |  |  |
|  | 4 | **ELECTRICAL WORK** |  | 2026-08-27 | 2026-12-08 |  |  |  |  |  |  |  |  |  |  |  |  |  |  |  |  |
| PG-Q-CON-EX-AD-EL-10 |  | Installation of Electrical Boxes & MDBs | 12d | 2026-08-27 A | 2026-10-08 | PG-Q-EN-EL-SD-AP-120, PG-Q-EN-EL-SD-AP-120 SS | 60% | 4.8d | 2026-09-15 | 2026-09-30 | -14.8d | 0d | COST [208740]; Labor / Helper [8 h]; Electrician [32 h] | 208,740.24 | 125,244.14 | Q | DIV-2 | AD | A.D |  |  |
| PG-Q-CON-EX-AD-EL-20 |  | Installation of Lighting System | 12d | 2026-10-08 | 2026-10-22 | PG-Q-CON-EX-AD-EL-10, PG-Q-EN-EL-SD-AP-120 |  |  |  |  | -14.8d | 18d | COST [208740]; Electrician [32 h] | 208,740.24 |  | Q | DIV-2 | AD | A.D |  |  |
| PG-Q-CON-EX-AD-EL-30 |  | Electrical Connections to Main Power Source (Excluding kWh Meter) | 5d | 2026-11-12 | 2026-11-18 | PG-Q-CON-EX-AD-EL-20, PG-Q-CON-EX-AD-ME-30 |  |  |  |  | -32.8d | 0d | COST [208740]; Labor / Helper [8 h]; Electrician [32 h] | 208,740.24 |  | Q | DIV-2 | AD | A.D |  |  |
| PG-Q-CON-EX-AD-EL-40 |  | Installation of Backup Generator | 6d | 2026-11-18 | 2026-11-25 | PG-Q-CON-EX-AD-EL-30, PG-Q-EN-EL-SD-AP-130 |  |  |  |  | -32.8d | 0d | COST [208740]; Labor / Helper [24 h]; Electrician [24 h] | 208,740.24 |  | Q | DIV-2 | AD | A.D |  |  |
| PG-Q-CON-EX-AD-EL-50 |  | Installation of Smart Dome System | 11d | 2026-11-25 | 2026-12-08 | PG-Q-CON-EX-AD-EL-40, PG-Q-EN-EL-SD-AP-140 |  |  |  |  | -32.8d | 0d | COST [250488]; Labor / Helper [24 h]; Electrician [8 h]; ELV Technician [16 h] | 250,488.29 |  | Q | DIV-2 | AD | A.D |  |  |
|  | B | **TOILET BUILDING WORKS** |  | 2026-05-06 | 2026-11-22 |  |  |  |  |  |  |  |  |  |  |  |  |  |  |  |  |
|  | CVL | **CIVIL WORK** |  | 2026-05-06 | 2026-11-21 |  |  |  |  |  |  |  |  |  |  |  |  |  |  |  |  |
|  | ST | **STRUCTURAL WORK** |  | 2026-05-06 | 2026-07-10 |  |  |  |  |  |  |  |  |  |  |  |  |  |  |  |  |
| PG-Q-CON-B-STR-10 |  | Excavation up to bottom of footing | 7d | 2026-05-06 A | 2026-05-13 A | PG-Q-EN-ST-SD-AP-70, PG-Q-MOB-CAM-40 | 100% |  |  |  |  |  | COST [1900.8]; Dump Truck [32 h]; Excavator [8 h]; Site Engineer [4 h]; Labor / Helper [32 h]; Surveyor [8 h]; Excavator Operator [8 h]; Dump Truck Driver [32 h]; Safety Officer [8 h] | 1,900.8 | 1,900.8 | Q | DIV-3 |  |  | Div-3 |  |
| PG-Q-CON-B-STR-20 |  | Anti-termite treatment and Polyethene Sheet | 2d | 2026-05-12 A | 2026-05-13 A | PG-Q-CON-B-STR-10 | 100% |  |  |  |  |  | COST [3294]; Mason [16 h]; Labor / Helper [16 h] | 3,294 | 3,294 | Q | DIV-7 |  |  |  | Div-07 |
| PG-Q-CON-B-STR-30 |  | Backfilling with selected fill material (under footing) | 1d | 2026-05-13 A | 2026-05-13 A | PG-Q-CON-B-STR-20, PG-Q-PR-SL-LS-DL-10 | 100% |  |  |  |  |  | COST [1900.8]; Roller [8 h]; Loader [8 h]; Site Engineer [4 h]; Mason [16 h]; Surveyor [4 h]; Loader Operator [8 h]; Roller Operator [8 h] | 1,900.8 | 1,900.8 | Q | DIV-3 |  |  | Div-3 |  |
| PG-Q-CON-B-STR-40 |  | Raft Foundation Work | 21d | 2026-05-13 A | 2026-06-10 A | PG-Q-CON-B-STR-30, PG-Q-EN-ST-SD-AP-80, PG-Q-PR-SL-CO-DL-10, PG-Q-PR-SL-CO-DL-20 | 100% |  |  |  |  |  | COST [2534.4]; Labor / Helper [32 h]; Carpenter [16 h]; Steel Fixer [16 h] | 2,534.4 | 2,534.4 | Q | DIV-3 |  |  | Div-3 |  |
| PG-Q-CON-B-STR-50 |  | Autoclaved aerated panel (walls) | 4d | 2026-07-08 A | 2026-07-09 A | PG-Q-CON-B-STR-40, PG-Q-PR-LL-CO-DL-10_R | 100% |  | 2026-08-10 | 2026-08-13 |  |  | COST [11340]; Mason [32 h]; Labor / Helper [16 h] | 11,340 | 11,340 | Q | DIV-3 |  |  | Div-3 |  |
| PG-Q-CON-B-STR-60 |  | Autoclaved aerated panel (ceiling) | 3d | 2026-07-09 A | 2026-07-10 A | PG-Q-CON-B-STR-50, PG-Q-PR-LL-CO-DL-10_R | 100% |  | 2026-08-15 | 2026-08-17 |  |  | COST [8505]; Mason [32 h]; Labor / Helper [16 h] | 8,505 | 8,505 | Q | DIV-3 |  |  | Div-3 |  |
| PG-Q-CON-B-STR-70 |  | Autoclaved aerated panel (parapet) | 3d | 2026-07-09 A | 2026-07-10 A | PG-Q-CON-B-STR-60, PG-Q-PR-LL-CO-DL-10_R | 100% |  | 2026-07-12 | 2026-07-15 |  |  | COST [8505]; Mason [32 h]; Labor / Helper [16 h] | 8,505 | 8,505 | Q | DIV-3 |  |  | Div-3 |  |

| ID | WBS | Activity | Duration | Start | Finish | Predecessors | Complete | Remaining | Planned start | Planned finish | Total float | Free float | Resources | Cost | Actual cost | H,Q,T-Location | BOQ DIVISION | DIVISION-4 MASONRY | DIVISION 9-FINISHES | DIVISION 8- DOORS & WINDOWS | DIVISION 10-SPECIALTIES | DIVISION 07-THERMAL & MOISTURE PROTECTIO | DIVISION 15-MECHANICAL WORKS | DIVISION-5-METALS |
| --- | --- | --- | --- | --- | --- | --- | --- | --- | --- | --- | --- | --- | --- | --- | --- | --- | --- | --- | --- | --- | --- | --- | --- | --- |
|  | AR | **ARCHITECTURAL WORK** |  | 2026-07-12 | 2026-11-21 |  |  |  |  |  |  |  |  |  |  |  |  |  |  |  |  |  |  |  |
|  | 1 | **GENERAL FINISHES** |  | 2026-07-12 | 2026-11-21 |  |  |  |  |  |  |  |  |  |  |  |  |  |  |  |  |  |  |  |
| PG-Q-CON-B-AR-GF-10 |  | Block Works | 6d | 2026-07-12 A | 2026-07-16 A | PG-Q-CON-B-STR-70, PG-Q-EN-AR-SD-AP-10, PG-Q-EN-AR-SD-AP-40, PG-Q-PR-SL-CO-DL-40 | 100% |  | 2026-07-14 | 2026-07-20 |  |  | COST [2484]; Mason [32 h]; Labor / Helper [16 h] | 2,484 | 2,484 | Q | DIV-4 | Div-4 |  |  |  |  |  |  |
| PG-Q-CON-B-AR-GF-20 |  | Plaster | 7d | 2026-07-22 A | 2026-08-05 A | PG-Q-CON-B-AR-GF-10, PG-Q-CON-B-GF-EL-10, PG-Q-PR-SL-AR-DL-40 | 100% |  | 2026-08-22 | 2026-08-29 |  |  | COST [4427.4]; Mason [32 h]; Labor / Helper [16 h] | 4,427.4 | 4,427.4 | Q | DIV-9 |  | Div-9.2 |  |  |  |  |  |
| PG-Q-CON-B-AR-GF-30 |  | False Ceiling Installation & Finishing | 7d | 2026-08-20 A | 2026-09-10 A | PG-Q-CON-B-AR-GF-20, PG-Q-CON-B-GF-DR-20, PG-Q-EN-AR-SD-AP-60, PG-Q-PR-SL-AR-DL-100, PG-Q-PR-SL-EL-DL-10_R, PG-Q-PR-SL-EL-DL-10_R FF | 100% |  | 2026-09-09 | 2026-09-16 |  |  | COST [873.6]; Labor / Helper [16 h]; Applicator [16 h]; Ceiling Installer [16 h] | 873.6 | 873.6 | Q | DIV-9 |  | Div-9.3 |  |  |  |  |  |
| PG-Q-CON-B-AR-GF-40 |  | Wall Paint | 12d | 2026-08-20 A | 2026-09-06 A | PG-Q-CON-B-AR-GF-30, PG-Q-PR-SL-AR-DL-50, PG-Q-CON-B-GF-EL-20, PG-Q-CON-B-AR-GF-30 SS, PG-Q-CON-B-GF-EL-20 SS | 100% |  | 2026-10-07 | 2026-10-20 |  |  | COST [2958]; Spray Machine [32 h]; Labor / Helper [16 h]; Painter [32 h] | 2,958 | 2,958 | Q | DIV-9 |  | Div-9.2 |  |  |  |  |  |
| PG-Q-CON-B-AR-GF-50 |  | Epoxy Flooring | 6d | 2026-08-20 A | 2026-09-23 A | PG-Q-CON-B-AR-GF-40, PG-Q-EN-AR-SD-AP-50, PG-Q-PR-SL-AR-DL-30, PG-Q-CON-B-AR-GF-40 SS | 100% |  | 2026-10-21 | 2026-10-27 |  |  | COST [273.6]; Labor / Helper [16 h]; Applicator [40 h] | 273.6 | 273.6 | Q | DIV-9 |  | Div-9.1 |  |  |  |  |  |
| PG-Q-CON-B-AR-GF-80 |  | Facade Finishing Work | 8d | 2026-08-20 A | 2026-09-10 A | PG-Q-EN-AR-SD-AP-90, PG-Q-EN-AR-SD-AP-100, PG-Q-PR-LL-MT-DL-20_R, PG-Q-PR-SL-AR-DL-60, PG-Q-PR-SL-AR-DL-70, PG-Q-CON-B-AR-GF-50 SS, PG-Q-PR-LL-MT-MA-20_R, PG-Q-PR-LL-MT-DL-20_R FF, PG-Q-PR-LL-MT-MA-20_R FF | 100% |  | 2026-10-21 | 2026-10-29 |  |  | COST [52278]; Labor / Helper [16 h]; Facade Technician [32 h] | 52,278 | 52,278 | Q | DIV-9 |  | Div-9.2 |  |  |  |  |  |
| PG-Q-CON-B-AR-GF-60 |  | Install Doors & Windows | 5d | 2026-08-27 A | 2026-10-14 | PG-Q-CON-B-AR-GF-50, PG-Q-EN-AR-SD-AP-30, PG-Q-EN-AR-SD-AP-80, PG-Q-EN-AR-SD-AP-40, PG-Q-PR-LL-MT-DL-10_R, PG-Q-PR-LL-MT-MA-10_R, PG-Q-CON-B-AR-GF-50 SS, PG-Q-PR-LL-MT-DL-10_R SS, PG-Q-PR-LL-MT-MA-10_R FF | 70% | 1.5d | 2026-10-15 | 2026-10-20 | 29.45d | 29.5d | COST [13273.8]; Labor / Helper [16 h]; Carpenter [16 h] | 13,273.8 | 9,291.66 | Q | DIV-8 |  |  | Div-8.1 |  |  |  |  |
| PG-Q-CON-B-AR-GF-70 |  | Lockers and Furniture Installation | 5d | 2026-09-19 A | 2026-11-21 | PG-Q-CON-B-AR-GF-60, PG-Q-CON-B-AR-GF-80 SS | 50% | 2.5d | 2026-11-11 | 2026-11-16 | -0.05d | 0d | COST [7551.6]; Labor / Helper [16 h]; Carpenter [32 h] | 7,551.6 | 3,775.8 | Q | DIV-10 |  |  |  | Div-10 |  |  |  |
|  | 2 | **WET AREA FINISHES** |  | 2026-08-06 | 2026-10-15 |  |  |  |  |  |  |  |  |  |  |  |  |  |  |  |  |  |  |  |
| PG-Q-CON-B-AR-WF-20 |  | Wall Tiles and Partition Work | 6d | 2026-08-06 A | 2026-08-14 A | PG-Q-EN-AR-SD-AP-70, PG-Q-EN-AR-SD-AP-30, PG-Q-PR-SL-AR-DL-10, PG-Q-PR-SL-AR-DL-80, PG-Q-PR-SL-AR-DL-90, PG-Q-CON-B-GF-WS-20, PG-Q-CON-B-AR-WF-10 FF, PG-Q-CON-B-AR-GF-40 FF, PG-Q-EN-AR-SD-AP-60, PG-Q-PR-SL-AR-DL-50 | 100% |  | 2026-10-12 | 2026-10-19 |  |  | COST [21283.2]; Mason [16 h]; Labor / Helper [16 h]; Tile Fixer [16 h] | 21,283.2 | 21,283.2 | Q | DIV-9 |  | Div-9.2 |  |  |  |  |  |
| PG-Q-CON-B-AR-WF-30 |  | Waterproofing on Floor | 6d | 2026-08-14 A | 2026-09-07 A | PG-Q-CON-B-AR-WF-20, PG-Q-EN-AR-SD-AP-50, PG-Q-PR-SL-CO-DL-30, PG-Q-PR-SL-AR-DL-120 | 100% |  | 2026-10-14 | 2026-10-20 |  |  | COST [5784]; Labor / Helper [16 h]; Applicator [16 h] | 5,784 | 5,784 | Q | DIV-7 |  |  |  |  | Div-07 |  |  |
| PG-Q-CON-B-AR-WF-40 |  | Floor Tiles Works | 6d | 2026-08-14 A | 2026-09-07 A | PG-Q-PR-SL-AR-DL-20, PG-Q-CON-B-AR-WF-30 FF | 100% |  | 2026-10-27 | 2026-11-03 |  |  | COST [6489]; Labor / Helper [16 h]; Tile Fixer [16 h] | 6,489 | 6,489 | Q | DIV-9 |  | Div-9.1 |  |  |  |  |  |
| PG-Q-CON-B-AR-WF-10 |  | False Ceiling Installation & Finishing | 7d | 2026-08-27 A | 2026-09-04 A | PG-Q-CON-B-AR-GF-30 SS, PG-Q-EN-AR-SD-AP-60, PG-Q-PR-SL-AR-DL-100 | 100% |  | 2026-09-09 | 2026-09-16 |  |  | COST [2898]; Labor / Helper [16 h]; Applicator [16 h]; Ceiling Installer [16 h] | 2,898 | 2,898 | Q | DIV-9 |  | Div-9.3 |  |  |  |  |  |
| PG-Q-CON-B-AR-WF-50 |  | Toliet accessories Installation Works | 6d | 2026-08-27 A | 2026-09-10 A | PG-Q-CON-B-AR-WF-40, PG-Q-EN-AR-SD-AP-70, PG-Q-PR-SL-AR-DL-110, PG-Q-CON-B-AR-WF-40 SS | 100% |  | 2026-08-30 | 2026-09-06 |  |  | COST [39308]; Labor / Helper [8 h]; Plumber [16 h] | 39,307.98 | 39,307.98 | Q | DIV-15 |  |  |  |  |  | Div15.3 |  |
| PG-Q-CON-B-AR-WF-60 |  | Install Doors | 5d | 2026-10-01 A | 2026-10-15 | PG-Q-EN-AR-SD-AP-30, PG-Q-EN-AR-SD-AP-80, PG-Q-EN-AR-SD-AP-40, PG-Q-PR-LL-MT-DL-10_R, PG-Q-CON-B-AR-WF-40 | 50% | 2.5d | 2026-11-02 | 2026-11-08 | 31.7d | 31.75d | COST [5361.6]; Labor / Helper [16 h]; Carpenter [16 h] | 5,361.6 | 2,680.8 | Q | DIV-9 |  | Div-9.2 |  |  |  |  |  |
|  | 3 | **ROOF FINISHES** |  | 2026-08-20 | 2026-11-21 |  |  |  |  |  |  |  |  |  |  |  |  |  |  |  |  |  |  |  |
| PG-Q-CON-B-AR-RF-10 |  | Waterproofing on Floor | 4d | 2026-08-20 A | 2026-09-08 A | PG-Q-CON-B-AR-WF-30, PG-Q-EN-AR-SD-AP-20, PG-Q-PR-SL-CO-DL-30, PG-Q-PR-SL-AR-DL-120, PG-Q-CON-B-AR-WF-10, PG-Q-CON-B-AR-GF-40, PG-Q-CON-B-AR-WF-30 SS, PG-Q-CON-B-AR-WF-10 SS, PG-Q-CON-B-AR-GF-40 SS | 100% |  | 2026-10-21 | 2026-10-25 |  |  | COST [4158]; Labor / Helper [16 h]; Applicator [16 h] | 4,158 | 4,158 | Q | DIV-7 |  |  |  |  | Div-07 |  |  |
| PG-Q-CON-B-AR-RF-20 |  | Epoxy Flooring and Finishes | 6d | 2026-08-20 A | 2026-10-13 | PG-Q-CON-B-AR-RF-10, PG-Q-PR-SL-AR-DL-30, PG-Q-CON-B-AR-RF-10 SS | 90% | 0.6d | 2026-10-13 | 2026-10-20 | 31.85d | 31.9d | COST [10158]; Labor / Helper [16 h]; Applicator [40 h] | 10,158 | 9,142.2 | Q | DIV-7 |  |  |  |  | Div-07 |  |  |
| PG-Q-CON-B-AR-RF-30 |  | Steel ladder and Steel roof scupper Installation | 1d | 2026-11-19 | 2026-11-21 | PG-Q-CON-B-AR-RF-20, PG-Q-PR-SL-MT-DL-10_R, PG-Q-PR-SL-MT-DL-20_R, PG-Q-PR-SL-MT-DL-30_R, PG-Q-CON-B-AR-GF-70 FF |  |  |  |  | -0.05d | 0d | COST [9577.8]; Labor / Helper [16 h]; Mechanical Technician [32 h] | 9,577.8 |  | Q | DIV-5 |  |  |  |  |  |  | Div-5 |
|  | MEP | **MEP WORK** |  | 2026-06-16 | 2026-11-22 |  |  |  |  |  |  |  |  |  |  |  |  |  |  |  |  |  |  |  |
|  | MEC | **MECANICAL WORKS** |  | 2026-06-16 | 2026-11-22 |  |  |  |  |  |  |  |  |  |  |  |  |  |  |  |  |  |  |  |
|  | FF | **FIRE FIGHTING SYSTEM** |  | 2026-10-01 | 2026-11-22 |  |  |  |  |  |  |  |  |  |  |  |  |  |  |  |  |  |  |  |
| PG-Q-CON-B-GF-FF-10 |  | Fire Extinguisher Installation | 1d | 2026-10-01 A | 2026-11-22 | PG-Q-PR-SL-FF-DL-10_R, PG-Q-CON-B-AR-RF-30 | 25% | 0.75d | 2026-11-17 | 2026-11-17 | -0.05d | 0d | COST [136.26]; Labor / Helper [16 h]; Mechanical Technician [16 h] | 136.26 | 34.06 | Q | DIV-15 |  |  |  |  |  | Div15.1 |  |

| ID | WBS | Activity | Duration | Start | Finish | Predecessors | Complete | Remaining | Planned start | Planned finish | Total float | Free float | Resources | Cost | Actual cost | H,Q,T-Location | BOQ DIVISION | DIVISION 15-MECHANICAL WORKS | DIVISION 16 ELECTRICAL WORKS | DIVISION-02-SITE WORKS | Air Dome |
| --- | --- | --- | --- | --- | --- | --- | --- | --- | --- | --- | --- | --- | --- | --- | --- | --- | --- | --- | --- | --- | --- |
|  | DS | **SEWER AND DRAINAGE SYSTEM** |  | 2026-06-16 | 2026-10-12 |  |  |  |  |  |  |  |  |  |  |  |  |  |  |  |  |
| PG-Q-CON-B-GF-DR-10 |  | Sewer and Drainge System Main Lines Installation | 2d | 2026-06-16 A | 2026-06-17 A | PG-Q-CON-B-GF-WS-10, PG-Q-EN-ME-SD-AP-50, PG-Q-PR-SL-PB-DL-20 | 100% |  |  |  |  |  | COST [3225.72]; Plumber [32 h]; Fitter [16 h] | 3,225.72 | 3,225.72 | Q | DIV-15 | Div15.3 |  |  |  |
| PG-Q-CON-B-GF-DR-20 |  | Sewer and Drainge System Pipes and fittings Installation | 2d | 2026-06-16 A | 2026-06-17 A | PG-Q-CON-B-GF-DR-10, PG-Q-EN-ME-SD-AP-60, PG-Q-EN-ME-SD-AP-70, PG-Q-PR-SL-PB-DL-20, PG-Q-PR-SL-PB-DL-30, PG-Q-CON-B-GF-WS-10 | 100% |  |  |  |  |  | COST [4838.58]; Plumber [32 h]; Fitter [16 h] | 4,838.58 | 4,838.58 | Q | DIV-15 | Div15.3 |  |  |  |
| PG-Q-CON-B-GF-DR-30 |  | Sanitaryware Installation (Final Fix) | 2d | 2026-10-01 A | 2026-10-12 | PG-Q-CON-B-GF-DR-20, PG-Q-CON-B-GF-WS-30, PG-Q-EN-ME-SD-AP-70, PG-Q-CON-B-GF-WS-20 | 25% | 1.5d | 2026-10-13 | 2026-10-14 | 29.45d | 0d | COST [3225.72]; Plumber [32 h]; Fitter [16 h] | 3,225.72 | 806.43 | Q | DIV-15 | Div15.3 |  |  |  |
|  | HV | **HVAC SYSTEM** |  | 2026-08-13 | 2026-10-05 |  |  |  |  |  |  |  |  |  |  |  |  |  |  |  |  |
| PG-Q-CON-B-GF-AC-10 |  | Duct Work and Exhaust Fan Installation | 7d | 2026-08-13 A | 2026-08-20 A | PG-Q-CON-B-AR-GF-10, PG-Q-PR-SL-AC-DL-20_R, PG-Q-PR-SL-AC-DL-40_R, PG-Q-PR-SL-AC-PO-20, PG-Q-PR-SL-AC-PO-40 | 100% |  | 2026-09-06 | 2026-09-13 |  |  | COST [4442.4]; Labor / Helper [16 h]; HVAC Technician [32 h] | 4,442.4 | 4,442.4 | Q | DIV-15 | Div15.4 |  |  |  |
| PG-Q-CON-B-GF-AC-20 |  | Split AC, Grills & Diffuser Installation | 3d | 2026-10-01 A | 2026-10-05 | PG-Q-CON-B-GF-AC-10, PG-Q-CON-B-AR-GF-20, PG-Q-PR-SL-AC-DL-10_R, PG-Q-PR-SL-AC-DL-30_R, PG-Q-PR-SL-AC-DL-20_R, PG-Q-PR-SL-AC-DL-40_R | 25% | 2.25d | 2026-10-04 | 2026-10-07 | 34.7d | 5.25d | COST [7684.8]; Labor / Helper [16 h]; HVAC Technician [32 h] | 7,684.8 | 1,921.2 | Q | DIV-15 | Div15.4 |  |  |  |
|  | WS | **WATER SUPPLY SYSTEM** |  | 2026-06-16 | 2026-09-07 |  |  |  |  |  |  |  |  |  |  |  |  |  |  |  |  |
| PG-Q-CON-B-GF-WS-10 |  | Water Supply Main Lines Installation | 2d | 2026-06-16 A | 2026-06-17 A | PG-Q-EN-ME-SD-AP-10, PG-Q-PR-SL-PB-DL-10, PG-Q-EN-AR-SD-AP-10 | 100% |  |  |  |  |  | COST [5702.4]; Plumber [32 h]; Fitter [16 h] | 5,702.4 | 5,702.4 | Q | DIV-15 | Div15.3 |  |  |  |
| PG-Q-CON-B-GF-WS-20 |  | Water Supply Pipes Installation (Cold and Hot Water) | 2d | 2026-07-22 A | 2026-07-31 A | PG-Q-CON-B-GF-WS-10, PG-Q-EN-ME-SD-AP-10, PG-Q-PR-SL-PB-DL-10, PG-Q-CON-B-AR-GF-10 | 100% |  | 2026-09-02 | 2026-09-03 |  |  | COST [13857.6]; Plumber [32 h]; Fitter [16 h] | 13,857.6 | 13,857.6 | Q | DIV-15 | Div15.2 |  |  |  |
| PG-Q-CON-B-GF-WS-30 |  | Water Supply Accesories and Booster pump Installation | 3d | 2026-08-20 A | 2026-09-07 A | PG-Q-CON-B-GF-WS-20, PG-Q-CON-B-AR-WF-10, PG-Q-EN-ME-SD-AP-20, PG-Q-EN-ME-SD-AP-30, PG-Q-PR-LL-PB-DL-10_R, PG-Q-PR-LL-PB-MA-10_R, PG-Q-CON-B-GF-AC-20, PG-Q-CON-B-GF-AC-10, PG-Q-CON-B-AR-WF-10 SS, PG-Q-PR-LL-PB-DL-10_R SS, PG-Q-CON-B-GF-AC-20 FF | 100% |  | 2026-09-13 | 2026-09-16 |  |  | COST [36366]; Labor / Helper [16 h]; Plumber [8 h]; Electrician [8 h] | 36,366 | 36,366 | Q | DIV-15 | Div15.2 |  |  |  |
|  | ELC | **ELECTRICAL WORKS** |  | 2026-07-22 | 2026-09-08 |  |  |  |  |  |  |  |  |  |  |  |  |  |  |  |  |
| PG-Q-CON-B-GF-EL-10 |  | Pipes & Conduits Installation | 8d | 2026-07-22 A | 2026-07-23 A | PG-Q-CON-B-GF-DR-10, PG-Q-PR-SL-EL-PO-10 | 100% |  | 2026-08-12 | 2026-08-20 |  |  | COST [1983.6]; Labor / Helper [16 h]; Electrician [32 h] | 1,983.6 | 1,983.6 | Q | DIV-16 |  | Div16.1 |  |  |
| PG-Q-CON-B-GF-EL-20 |  | Electrical & ELV Wiring Works | 3d | 2026-08-20 A | 2026-09-08 A | PG-Q-CON-B-GF-EL-40, PG-Q-CON-B-GF-EL-40 SS | 100% |  | 2026-10-04 | 2026-10-06 |  |  | COST [1983.6]; Labor / Helper [16 h]; Electrician [16 h]; ELV Technician [16 h] | 1,983.6 | 1,983.6 | Q | DIV-16 |  | Div16.1 |  |  |
| PG-Q-CON-B-GF-EL-30 |  | Fire Alarm Devices Installation | 3d | 2026-08-20 A | 2026-09-08 A | PG-Q-CON-B-GF-EL-50, PG-Q-CON-B-GF-EL-50 SS | 100% |  | 2026-09-27 | 2026-09-29 |  |  | COST [1983.6]; Labor / Helper [16 h]; Mechanical Technician [16 h] | 1,983.6 | 1,983.6 | Q | DIV-16 |  | Div16.8 |  |  |
| PG-Q-CON-B-GF-EL-40 |  | Telecom & CCTV Devices Installation | 3d | 2026-08-20 A | 2026-09-08 A | PG-Q-CON-B-GF-EL-30, PG-Q-CON-B-GF-EL-30 SS | 100% |  | 2026-09-30 | 2026-10-03 |  |  | COST [4959]; Labor / Helper [16 h]; Electrician [8 h]; ELV Technician [16 h] | 4,959 | 4,959 | Q | DIV-16 |  | Div16.5 |  |  |
| PG-Q-CON-B-GF-EL-50 |  | Electrical Light Fixtures Installation | 2d | 2026-08-20 A | 2026-09-08 A | PG-Q-CON-B-GF-DR-30, PG-Q-PR-LL-EL-DL-40_R, PG-Q-CON-B-GF-DR-30 FF, PG-Q-PR-LL-EL-DL-40_R SS | 100% |  | 2026-09-24 | 2026-09-26 |  |  | COST [7337.52]; Labor / Helper [8 h]; Electrician [32 h] | 7,337.52 | 7,337.52 | Q | DIV-16 |  | Div16.3 |  |  |
|  | TE & CO | **PROJECT CLOSOUT** |  | 2026-05-22 | 2027-01-24 |  |  |  |  |  |  |  |  |  |  |  |  |  |  |  |  |
| PG-Q-PCL-10 |  | Testing, Commessioning for All Systems(Completed) | 25d | 2026-05-22 A | 2026-06-24 A | PG-Q-CON-EX-LS-SS-20 SS | 100% |  | 2026-05-23 | 2026-06-24 |  |  | COST [52612.6]; Site Engineer [3.2 h]; Electrician [1.6 h]; HVAC Technician [1.6 h]; ELV Technician [1.6 h]; Mechanical Technician [1.6 h]; Safety Officer [1.6 h] | 52,612.62 | 52,612.62 | Q | Closing |  |  |  |  |
| PG-Q-PCL-10_R |  | Testing, Commessioning for All Systems(Remaining) | 10.8d | 2026-08-06 A | 2027-01-04 | PG-Q-CON-B-GF-EL-20 FF, PG-Q-CON-B-GF-WS-30 FF, PG-Q-CON-B-GF-AC-20 FF, PG-Q-CON-B-GF-DR-30 FF, PG-Q-CON-B-GF-FF-10 FF, PG-Q-CON-EX-AD-AR-30 FF, PG-Q-CON-EX-AD-EL-50 FF, PG-Q-CON-EX-AD-ME-30 FF, PG-Q-PCL-10, PG-Q-CON-EX-LS-SS-20_R FF | 50% | 5.4d | 2026-12-14 | 2026-12-26 | -32.8d | 0d | COST [473514]; Site Engineer [28.8 h]; Electrician [14.4 h]; HVAC Technician [14.4 h]; ELV Technician [14.4 h]; Mechanical Technician [14.4 h]; Safety Officer [14.4 h] | 473,513.58 | 236,756.79 | Q | Closing |  |  |  |  |
| PG-Q-PCL-20 |  | As-Built Drawings | 15d | 2026-09-23 A | 2027-01-12 | PG-Q-PCL-10_R SS | 20% | 12d | 2026-12-17 | 2027-01-04 | -26.4d | 6.4d | COST [175375] | 175,375.4 | 35,075.08 | Q | Closing |  |  |  |  |
| PG-Q-PCL-30 |  | Snag list Submission | 3d | 2027-01-04 | 2027-01-07 | PG-Q-PCL-10_R, PG-Q-CON-EX-AD-AR-30 |  |  |  |  | -32.8d | 0d | COST [350751]; Site Engineer [32 h]; Mason [16 h]; Labor / Helper [32 h]; Applicator [16 h]; Painter [16 h]; Safety Officer [16 h]; Concrete Mason [8 h] | 350,750.8 |  | Q | Closing |  |  | AD | A.D |
| PG-Q-PCL-40 |  | Snag list Closeout | 10d | 2027-01-07 | 2027-01-19 | PG-Q-PCL-30, PG-Q-PCL-20 FF |  |  |  |  | -32.8d | 0d | COST [350751]; Site Engineer [32 h]; Mason [16 h]; Labor / Helper [32 h]; Applicator [16 h]; Painter [16 h]; Safety Officer [16 h]; Concrete Mason [8 h] | 350,750.8 |  | Q | Closing |  |  | AD | A.D |
| PG-Q-PCL-50 |  | Issuing Approvals | 3d | 2027-01-19 | 2027-01-23 | PG-Q-PCL-40, PG-Q-PCL-20 |  |  |  |  | -32.8d | 0d | COST [175375] | 175,375.4 |  | Q | Closing |  |  | AD | A.D |
| PG-Q-PCL-60 |  | Handing Over | 1d | 2027-01-23 | 2027-01-24 | PG-Q-PCL-50 |  |  |  |  | -32.8d | 8.6d | COST [175375] | 175,375.4 |  | Q | Closing |  |  |  |  |

| ID | WBS | Activity | Duration | Start | Finish | Predecessors | Complete | Planned start | Planned finish | H,Q,T-Location |
| --- | --- | --- | --- | --- | --- | --- | --- | --- | --- | --- |
|  | HAIL | **HAIL** |  | 2026-02-17 | 2027-01-16 |  |  |  |  |  |
|  | MOB | **MOBILIZATION** |  | 2026-02-17 | 2026-03-28 |  |  |  |  |  |
|  | CAM | **TEMPORARY CAMP** |  | 2026-02-17 | 2026-03-27 |  |  |  |  |  |
| PG-H-MOB-CAM-10 |  | Temporary Underground Utilities works | 28.12d | 2026-02-17 A | 2026-03-27 A | PG-GN-MS-10 SS | 100% | 2026-02-17 | 2026-03-28 | H |
| PG-H-MOB-CAM-20 |  | Temporary Porta-Cabins | 21.12d | 2026-02-26 A | 2026-03-27 A | PG-H-MOB-CAM-10 | 100% | 2026-02-26 | 2026-03-28 | H |
| PG-H-MOB-CAM-30 |  | Temporary Toilets | 21.12d | 2026-02-26 A | 2026-03-27 A | PG-H-MOB-CAM-10 | 100% | 2026-02-26 | 2026-03-28 | H |
| PG-H-MOB-CAM-40 |  | Temporary Mosque | 13.12d | 2026-03-08 A | 2026-03-27 A | PG-H-MOB-CAM-20, PG-H-MOB-CAM-30 | 100% | 2026-03-08 | 2026-03-28 | H |
|  | OF | **SITE OFFICES** |  | 2026-02-17 | 2026-03-28 |  |  |  |  |  |
| PG-H-MOB-SO-10 |  | Temporary Underground Utilities works | 29.25d | 2026-02-17 A | 2026-03-28 A | PG-GN-MS-10 SS | 100% | 2026-02-17 | 2026-03-29 | H |
| PG-H-MOB-SO-20 |  | Temporary Porta-Cabins | 23.25d | 2026-02-25 A | 2026-03-28 A | PG-H-MOB-SO-10 | 100% | 2026-02-25 | 2026-03-29 | H |
| PG-H-MOB-SO-30 |  | Temporary Toilets | 23.25d | 2026-02-25 A | 2026-03-28 A | PG-H-MOB-SO-10 | 100% | 2026-02-25 | 2026-03-29 | H |
| PG-H-MOB-SO-40 |  | Temporary Mosque | 17.25d | 2026-03-04 A | 2026-03-28 A | PG-H-MOB-SO-20, PG-H-MOB-SO-30 | 100% | 2026-03-04 | 2026-03-29 | H |
| PG-H-MOB-SO-50 |  | Car Parking Area | 10.25d | 2026-03-12 A | 2026-03-28 A | PG-H-MOB-SO-40, PG-H-GEN-20, PG-H-GEN-30, PG-H-GEN-40 | 100% | 2026-03-12 | 2026-03-29 | H |
|  | GE.REQ | **GENERAL REQUIEREMENTS** |  | 2026-02-17 | 2026-04-22 |  |  |  |  |  |
| PG-H-GEN-20 |  | HSSE Submission Plan | 51.25d | 2026-02-17 A | 2026-04-22 A | PG-GN-MS-10 SS | 100% | 2026-02-17 | 2026-04-23 | H |
| PG-H-GEN-30 |  | Surveying report Submission Plan | 51.25d | 2026-02-17 A | 2026-04-22 A | PG-GN-MS-10 SS | 100% | 2026-02-17 | 2026-04-23 | H |
| PG-H-GEN-40 |  | Baseline Submission | 6.25d | 2026-02-28 A | 2026-03-05 A | PG-GN-MS-10 SS | 100% | 2026-02-28 | 2026-03-07 | H |
| PG-H-GEN-10 |  | QA/QC Submission Plan | 16.25d | 2026-03-12 A | 2026-04-04 A | PG-H-GEN-30, PG-GN-MS-10 SS | 100% | 2026-03-12 | 2026-04-05 | H |
|  | ENG | **ENGINEERING** |  | 2026-02-17 | 2026-09-17 |  |  |  |  |  |
|  | 1 | **SHOP DRAWINGS SUBMITTALS** |  | 2026-02-17 | 2026-06-15 |  |  |  |  |  |
|  | 1 | **STRUCTURAL DRAWINGS** |  | 2026-02-17 | 2026-05-04 |  |  |  |  |  |
|  | 1 | **PROJECT FENCE** |  | 2026-02-17 | 2026-04-29 |  |  |  |  |  |
| PG-H-EN-ST-SD-SB-10 |  | Excavation Drawings | 57.25d | 2026-02-17 A | 2026-04-29 A | PG-GN-MS-10 SS | 100% | 2026-02-17 | 2026-04-30 | H |
| PG-H-EN-ST-SD-SB-20 |  | Foundation Drawings | 55.25d | 2026-02-19 A | 2026-04-29 A | PG-H-EN-ST-SD-SB-10 | 100% | 2026-02-19 | 2026-04-30 | H |

| ID | WBS | Activity | Duration | Start | Finish | Predecessors | Complete | Planned start | Planned finish | H,Q,T-Location |
| --- | --- | --- | --- | --- | --- | --- | --- | --- | --- | --- |
|  | 4 | **TOILET BUILDING** |  | 2026-02-19 | 2026-04-13 |  |  |  |  |  |
| PG-H-EN-ST-SD-SB-30 |  | Excavation Drawings | 41.25d | 2026-02-19 A | 2026-04-13 A | PG-H-EN-ST-SD-SB-10 | 100% | 2026-02-19 | 2026-04-14 | H |
| PG-H-EN-ST-SD-SB-40 |  | Foundation Drawings | 39.25d | 2026-02-23 A | 2026-04-13 A | PG-H-EN-ST-SD-SB-30 | 100% | 2026-02-23 | 2026-04-14 | H |
|  | 5 | **WATER STORAGE TANK** |  | 2026-02-23 | 2026-04-13 |  |  |  |  |  |
| PG-H-EN-ST-SD-SB-60 |  | Excavation Drawings | 39.25d | 2026-02-23 A | 2026-04-13 A | PG-H-EN-ST-SD-SB-30 | 100% | 2026-02-23 | 2026-04-14 | H |
| PG-H-EN-ST-SD-SB-50 |  | Foundation Drawings | 37.25d | 2026-02-25 A | 2026-04-13 A | PG-H-EN-ST-SD-SB-60 | 100% | 2026-02-25 | 2026-04-14 | H |
|  | 6 | **SEPTIC TANK** |  | 2026-02-25 | 2026-05-04 |  |  |  |  |  |
| PG-H-EN-ST-SD-SB-70 |  | Reinforcement Detail Drawings | 55.25d | 2026-02-25 A | 2026-05-04 A | PG-H-EN-ST-SD-SB-60 | 100% | 2026-02-25 | 2026-05-05 | H |
| PG-H-EN-ST-SD-SB-80 |  | Concrete Detail Drawings | 52.25d | 2026-03-01 A | 2026-05-04 A | PG-H-EN-ST-SD-SB-70, PG-H-EN-ST-SD-SB-70 SS | 100% | 2026-03-01 | 2026-05-05 | H |
|  | 2 | **ARCHITECTURAL DRAWINGS** |  | 2026-02-23 | 2026-04-13 |  |  |  |  |  |
|  | 1 | **TOILET BUILDING** |  | 2026-02-23 | 2026-04-13 |  |  |  |  |  |
| PG-H-EN-AR-SD-SB-10 |  | Ground Floor Plan | 36.25d | 2026-02-23 A | 2026-04-09 A | PG-H-EN-ST-SD-SB-30 | 100% | 2026-02-23 | 2026-04-11 | H |
| PG-H-EN-AR-SD-SB-20 |  | Roof Floor Plan | 35.25d | 2026-02-28 A | 2026-04-13 A | PG-H-EN-AR-SD-SB-10 | 100% | 2026-02-28 | 2026-04-14 | H |
| PG-H-EN-AR-SD-SB-50 |  | Floor Finish Layout | 31.62d | 2026-02-28 A | 2026-04-09 A | PG-H-EN-AR-SD-SB-10 | 100% |  |  | H |
| PG-H-EN-AR-SD-SB-60 |  | Reflected Ceiling Layout | 32.25d | 2026-02-28 A | 2026-04-09 A | PG-H-EN-AR-SD-SB-10 | 100% | 2026-02-28 | 2026-04-11 | H |
| PG-H-EN-AR-SD-SB-70 |  | Enlarged Toilets Layout | 35.25d | 2026-02-28 A | 2026-04-13 A | PG-H-EN-AR-SD-SB-10 | 100% | 2026-02-28 | 2026-04-14 | H |
| PG-H-EN-AR-SD-SB-100 |  | Cladding Details | 32.25d | 2026-03-03 A | 2026-04-13 A | PG-H-EN-AR-SD-SB-50 | 100% | 2026-03-03 | 2026-04-14 | H |
| PG-H-EN-AR-SD-SB-30 |  | Elevations | 29.25d | 2026-03-03 A | 2026-04-09 A | PG-H-EN-AR-SD-SB-20 | 100% | 2026-03-03 | 2026-04-11 | H |
| PG-H-EN-AR-SD-SB-80 |  | Doors & Windows Schedule | 32.25d | 2026-03-03 A | 2026-04-13 A | PG-H-EN-AR-SD-SB-50 | 100% | 2026-03-03 | 2026-04-14 | H |
| PG-H-EN-AR-SD-SB-90 |  | Aluminum Work | 32.25d | 2026-03-03 A | 2026-04-13 A | PG-H-EN-AR-SD-SB-50 | 100% | 2026-03-03 | 2026-04-14 | H |
| PG-H-EN-AR-SD-SB-40 |  | Sections | 27.25d | 2026-03-05 A | 2026-04-09 A | PG-H-EN-AR-SD-SB-30 | 100% | 2026-03-05 | 2026-04-11 | H |
|  | 3 | **LANDSCAPE DRAWINGS** |  | 2026-02-24 | 2026-04-13 |  |  |  |  |  |
| PG-H-EN-LS-SD-SB-10 |  | Hardscape Layout Plan | 38.25d | 2026-02-24 A | 2026-04-13 A | PG-H-EN-ST-SD-SB-20 | 100% | 2026-02-24 | 2026-04-14 | H |
| PG-H-EN-LS-SD-SB-100 |  | Playground Details | 35.25d | 2026-02-24 A | 2026-04-09 A | PG-H-EN-ST-SD-SB-20 | 100% | 2026-02-24 | 2026-04-11 | H |
| PG-H-EN-LS-SD-SB-20 |  | Interlock Tile Details | 35.25d | 2026-02-24 A | 2026-04-09 A | PG-H-EN-ST-SD-SB-20 | 100% | 2026-02-24 | 2026-04-11 | H |
| PG-H-EN-LS-SD-SB-30 |  | Stamped Concrete Pattern & Section | 38.25d | 2026-02-24 A | 2026-04-13 A | PG-H-EN-ST-SD-SB-20 | 100% | 2026-02-24 | 2026-04-14 | H |
| PG-H-EN-LS-SD-SB-40 |  | Tartan Flooring Layout & Details | 38.25d | 2026-02-24 A | 2026-04-13 A | PG-H-EN-ST-SD-SB-20 | 100% | 2026-02-24 | 2026-04-14 | H |
| PG-H-EN-LS-SD-SB-50 |  | Bike Path Layout & Details | 35.25d | 2026-02-24 A | 2026-04-09 A | PG-H-EN-ST-SD-SB-20 | 100% | 2026-02-24 | 2026-04-11 | H |
| PG-H-EN-LS-SD-SB-60 |  | Walking Path layout & Details | 35.25d | 2026-02-24 A | 2026-04-09 A | PG-H-EN-ST-SD-SB-20 | 100% | 2026-02-24 | 2026-04-11 | H |
| PG-H-EN-LS-SD-SB-70 |  | Tree Planting Plan & Details | 35.25d | 2026-02-24 A | 2026-04-09 A | PG-H-EN-ST-SD-SB-20 | 100% | 2026-02-24 | 2026-04-11 | H |
| PG-H-EN-LS-SD-SB-80 |  | Traffic Sign Location & Details | 38.25d | 2026-02-24 A | 2026-04-13 A | PG-H-EN-ST-SD-SB-20 | 100% | 2026-02-24 | 2026-04-14 | H |
| PG-H-EN-LS-SD-SB-90 |  | Football Playground Layout | 38.25d | 2026-02-24 A | 2026-04-13 A | PG-H-EN-ST-SD-SB-20 | 100% | 2026-02-24 | 2026-04-14 | H |

| ID | WBS | Activity | Duration | Start | Finish | Predecessors | Complete | Planned start | Planned finish | H,Q,T-Location |
| --- | --- | --- | --- | --- | --- | --- | --- | --- | --- | --- |
|  | 4 | **MECHANICAL DRAWINGS** |  | 2026-03-01 | 2026-05-04 |  |  |  |  |  |
|  | 1 | **WATER SUPPLY SYSTEM** |  | 2026-03-01 | 2026-04-09 |  |  |  |  |  |
| PG-H-EN-ME-SD-SB-20 |  | Pump Room Layout | 31.25d | 2026-03-01 A | 2026-04-09 A | PG-H-EN-LS-SD-SB-10 | 100% | 2026-03-01 | 2026-04-11 | H |
| PG-H-EN-ME-SD-SB-10 |  | Cold & Hot Water Piping Layout | 27.25d | 2026-03-05 A | 2026-04-09 A | PG-H-EN-ME-SD-SB-20 | 100% | 2026-03-05 | 2026-04-11 | H |
| PG-H-EN-ME-SD-SB-30 |  | Booster Pump Details | 27.25d | 2026-03-05 A | 2026-04-09 A | PG-H-EN-ME-SD-SB-20 | 100% | 2026-03-05 | 2026-04-11 | H |
| PG-H-EN-ME-SD-SB-40 |  | GRP Water Tank Details | 23.25d | 2026-03-10 A | 2026-04-09 A | PG-H-EN-ME-SD-SB-10, PG-H-EN-ME-SD-SB-20 | 100% | 2026-03-10 | 2026-04-11 | H |
|  | 2 | **SEWER AND DRAINAGE SYSTEM** |  | 2026-03-05 | 2026-04-09 |  |  |  |  |  |
| PG-H-EN-ME-SD-SB-50 |  | Drainage Layout | 27.25d | 2026-03-05 A | 2026-04-09 A | PG-H-EN-ME-SD-SB-20 | 100% | 2026-03-05 | 2026-04-11 | H |
| PG-H-EN-ME-SD-SB-60 |  | Floor Drains & Cleanouts Details | 23.25d | 2026-03-10 A | 2026-04-09 A | PG-H-EN-ME-SD-SB-50 | 100% | 2026-03-10 | 2026-04-11 | H |
| PG-H-EN-ME-SD-SB-70 |  | Inspection Chamber Details | 20.25d | 2026-03-14 A | 2026-04-09 A | PG-H-EN-ME-SD-SB-60 | 100% | 2026-03-14 | 2026-04-11 | H |
|  | 3 | **IRRIGATION SYSTEM** |  | 2026-03-10 | 2026-05-04 |  |  |  |  |  |
| PG-H-EN-ME-SD-SB-80 |  | HDPE Pipe Routing | 44.25d | 2026-03-10 A | 2026-05-04 A | PG-H-EN-ME-SD-SB-50 | 100% | 2026-03-10 | 2026-05-05 | H |
| PG-H-EN-ME-SD-SB-90 |  | Irrigation Network Layout | 41.25d | 2026-03-14 A | 2026-05-04 A | PG-H-EN-ME-SD-SB-80, PG-H-EN-ME-SD-SB-80 SS | 100% | 2026-03-14 | 2026-05-05 | H |
|  | 5 | **ELECTRICAL DRAWINGS** |  | 2026-05-11 | 2026-06-15 |  |  |  |  |  |
|  | 1 | **POWER AND LIGHTING SYSTEM** |  | 2026-05-11 | 2026-06-15 |  |  |  |  |  |
| PG-H-EN-EL-SD-SB-10 |  | Main Distribution Board (MDB) Layout | 27.25d | 2026-05-11 A | 2026-06-15 A | PG-H-EN-ME-SD-SB-20 | 100% | 2026-05-11 | 2026-06-16 | H |
| PG-H-EN-EL-SD-SB-20 |  | Pump Room Power Panel | 27.25d | 2026-05-11 A | 2026-06-15 A | PG-H-EN-EL-SD-SB-10, PG-H-EN-EL-SD-SB-10 SS | 100% | 2026-05-11 | 2026-06-16 | H |
| PG-H-EN-EL-SD-SB-30 |  | Street Lighting Power Panel | 27.25d | 2026-05-11 A | 2026-06-15 A | PG-H-EN-EL-SD-SB-10, PG-H-EN-EL-SD-SB-10 SS | 100% | 2026-05-11 | 2026-06-16 | H |
| PG-H-EN-EL-SD-SB-40 |  | Site Lighting Pole Layout | 27.25d | 2026-05-11 A | 2026-06-15 A | PG-H-EN-EL-SD-SB-30, PG-H-EN-EL-SD-SB-30 SS | 100% | 2026-05-11 | 2026-06-16 | H |
|  | 2 | **ELV SYSTEM** |  | 2026-05-11 | 2026-06-15 |  |  |  |  |  |
| PG-H-EN-EL-SD-SB-50 |  | Telecom & Data Layout | 27.25d | 2026-05-11 A | 2026-06-15 A | PG-H-EN-ME-SD-SB-20 | 100% | 2026-05-11 | 2026-06-16 | H |
| PG-H-EN-EL-SD-SB-60 |  | CCTV Camera Layout | 27.25d | 2026-05-11 A | 2026-06-15 A | PG-H-EN-EL-SD-SB-50, PG-H-EN-EL-SD-SB-50 SS | 100% | 2026-05-11 | 2026-06-16 | H |
| PG-H-EN-EL-SD-SB-70 |  | Access Control Layout | 27.25d | 2026-05-11 A | 2026-06-15 A | PG-H-EN-EL-SD-SB-60, PG-H-EN-EL-SD-SB-60 SS | 100% | 2026-05-11 | 2026-06-16 | H |
| PG-H-EN-EL-SD-SB-80 |  | AV System Layout | 27.25d | 2026-05-11 A | 2026-06-15 A | PG-H-EN-EL-SD-SB-50, PG-H-EN-EL-SD-SB-50 SS | 100% | 2026-05-11 | 2026-06-16 | H |

| ID | WBS | Activity | Duration | Start | Finish | Predecessors | Complete | Planned start | Planned finish | H,Q,T-Location |
| --- | --- | --- | --- | --- | --- | --- | --- | --- | --- | --- |
|  | 3 | **FIRE ALARM SYSTEM** |  | 2026-05-11 | 2026-06-15 |  |  |  |  |  |
| PG-H-EN-EL-SD-SB-100 |  | Detector & Manual Call Point Details | 27.25d | 2026-05-11 A | 2026-06-15 A | PG-H-EN-EL-SD-SB-90, PG-H-EN-EL-SD-SB-90 SS | 100% | 2026-05-11 | 2026-06-16 | H |
| PG-H-EN-EL-SD-SB-110 |  | Control Panel Wiring Diagram | 27.25d | 2026-05-11 A | 2026-06-15 A | PG-H-EN-EL-SD-SB-100, PG-H-EN-EL-SD-SB-100 SS | 100% | 2026-05-11 | 2026-06-16 | H |
| PG-H-EN-EL-SD-SB-90 |  | Fire Alarm Layout | 27.25d | 2026-05-11 A | 2026-06-15 A | PG-H-EN-ME-SD-SB-20 | 100% | 2026-05-11 | 2026-06-16 | H |
|  | 2 | **SHOP DRAWINGS APPROVALS** |  | 2026-02-19 | 2026-06-16 |  |  |  |  |  |
|  | 1 | **STRUCTURAL DRAWINGS** |  | 2026-02-19 | 2026-05-06 |  |  |  |  |  |
|  | 1 | **PROJECT FENCE** |  | 2026-02-19 | 2026-04-29 |  |  |  |  |  |
| PG-H-EN-ST-SD-AP-10 |  | Excavation Drawings | 55.25d | 2026-02-19 A | 2026-04-29 A | PG-H-EN-ST-SD-SB-10 | 100% | 2026-02-19 | 2026-04-30 | H |
| PG-H-EN-ST-SD-AP-20 |  | Foundation Drawings | 52.25d | 2026-02-24 A | 2026-04-29 A | PG-H-EN-ST-SD-SB-20, PG-H-EN-ST-SD-AP-10 | 100% | 2026-02-24 | 2026-04-30 | H |
|  | 4 | **TOILET BUILDING** |  | 2026-02-23 | 2026-04-16 |  |  |  |  |  |
| PG-H-EN-ST-SD-AP-30 |  | Excavation Drawings | 42.25d | 2026-02-23 A | 2026-04-16 A | PG-H-EN-ST-SD-SB-30 | 100% | 2026-02-23 | 2026-04-18 | H |
| PG-H-EN-ST-SD-AP-40 |  | Foundation Drawings | 39.25d | 2026-02-26 A | 2026-04-16 A | PG-H-EN-ST-SD-SB-40, PG-H-EN-ST-SD-AP-30 | 100% | 2026-02-26 | 2026-04-18 | H |
|  | 5 | **WATER STORAGE TANK** |  | 2026-02-25 | 2026-04-16 |  |  |  |  |  |
| PG-H-EN-ST-SD-AP-50 |  | Excavation Drawings | 40.25d | 2026-02-25 A | 2026-04-16 A | PG-H-EN-ST-SD-SB-60 | 100% | 2026-02-25 | 2026-04-18 | H |
| PG-H-EN-ST-SD-AP-60 |  | Foundation Drawings | 37.25d | 2026-03-01 A | 2026-04-16 A | PG-H-EN-ST-SD-SB-50, PG-H-EN-ST-SD-AP-50 | 100% | 2026-03-01 | 2026-04-18 | H |
|  | 6 | **SEPTIC TANK** |  | 2026-03-01 | 2026-05-06 |  |  |  |  |  |
| PG-H-EN-ST-SD-AP-70 |  | Reinforcement Detail Drawings | 54.25d | 2026-03-01 A | 2026-05-06 A | PG-H-EN-ST-SD-SB-70 | 100% | 2026-03-01 | 2026-05-07 | H |
| PG-H-EN-ST-SD-AP-80 |  | Concrete Detail Drawings | 51.25d | 2026-03-04 A | 2026-05-06 A | PG-H-EN-ST-SD-SB-80, PG-H-EN-ST-SD-AP-70 | 100% | 2026-03-04 | 2026-05-07 | H |
|  | 2 | **ARCHITECTURAL DRAWINGS** |  | 2026-02-28 | 2026-04-16 |  |  |  |  |  |
|  | 1 | **TOILET BUILDING** |  | 2026-02-28 | 2026-04-16 |  |  |  |  |  |
| PG-H-EN-AR-SD-AP-10 |  | Ground Floor Plan | 38.25d | 2026-02-28 A | 2026-04-16 A | PG-H-EN-AR-SD-SB-10 | 100% | 2026-02-28 | 2026-04-18 | H |
| PG-H-EN-AR-SD-AP-20 |  | Roof Floor Plan | 35.25d | 2026-03-03 A | 2026-04-16 A | PG-H-EN-AR-SD-SB-20 | 100% | 2026-03-03 | 2026-04-18 | H |
| PG-H-EN-AR-SD-AP-50 |  | Floor Finish Layout | 33.25d | 2026-03-05 A | 2026-04-16 A | PG-H-EN-AR-SD-SB-50, PG-H-EN-AR-SD-AP-10 | 100% | 2026-03-05 | 2026-04-18 | H |
| PG-H-EN-AR-SD-AP-60 |  | Reflected Ceiling Layout | 33.25d | 2026-03-05 A | 2026-04-16 A | PG-H-EN-AR-SD-SB-60, PG-H-EN-AR-SD-AP-10 | 100% | 2026-03-05 | 2026-04-18 | H |
| PG-H-EN-AR-SD-AP-70 |  | Enlarged Toilets Layout | 33.25d | 2026-03-05 A | 2026-04-16 A | PG-H-EN-AR-SD-SB-70, PG-H-EN-AR-SD-AP-10 | 100% | 2026-03-05 | 2026-04-18 | H |
| PG-H-EN-AR-SD-AP-30 |  | Elevations | 32.25d | 2026-03-07 A | 2026-04-16 A | PG-H-EN-AR-SD-SB-30, PG-H-EN-AR-SD-AP-20 | 100% | 2026-03-07 | 2026-04-18 | H |
| PG-H-EN-AR-SD-AP-80 |  | Doors & Windows Schedule | 32.25d | 2026-03-07 A | 2026-04-16 A | PG-H-EN-AR-SD-SB-80 | 100% | 2026-03-07 | 2026-04-18 | H |
| PG-H-EN-AR-SD-AP-100 |  | Cladding Details | 31.25d | 2026-03-08 A | 2026-04-16 A | PG-H-EN-AR-SD-SB-100 | 100% | 2026-03-08 | 2026-04-18 | H |
| PG-H-EN-AR-SD-AP-90 |  | Aluminum Work | 31.25d | 2026-03-08 A | 2026-04-16 A | PG-H-EN-AR-SD-SB-90 | 100% | 2026-03-08 | 2026-04-18 | H |
| PG-H-EN-AR-SD-AP-40 |  | Sections | 29.25d | 2026-03-10 A | 2026-04-16 A | PG-H-EN-AR-SD-SB-40, PG-H-EN-AR-SD-AP-30 | 100% | 2026-03-10 | 2026-04-18 | H |

| ID | WBS | Activity | Duration | Start | Finish | Predecessors | Complete | Planned start | Planned finish | H,Q,T-Location |
| --- | --- | --- | --- | --- | --- | --- | --- | --- | --- | --- |
|  | 3 | **LANDSCAPE DRAWINGS** |  | 2026-02-28 | 2026-04-16 |  |  |  |  |  |
| PG-H-EN-LS-SD-AP-50 |  | Bike Path Layout & Details | 38.25d | 2026-02-28 A | 2026-04-16 A | PG-H-EN-LS-SD-SB-50 | 100% | 2026-02-28 | 2026-04-18 | H |
| PG-H-EN-LS-SD-AP-60 |  | Walking Path layout & Details | 38.25d | 2026-02-28 A | 2026-04-16 A | PG-H-EN-LS-SD-SB-60 | 100% | 2026-02-28 | 2026-04-18 | H |
| PG-H-EN-LS-SD-AP-80 |  | Traffic Sign Location & Details | 38.25d | 2026-02-28 A | 2026-04-16 A | PG-H-EN-LS-SD-SB-80 | 100% | 2026-02-28 | 2026-04-18 | H |
| PG-H-EN-LS-SD-AP-10 |  | Hardscape Layout Plan | 37.25d | 2026-03-01 A | 2026-04-16 A | PG-H-EN-LS-SD-SB-10 | 100% | 2026-03-01 | 2026-04-18 | H |
| PG-H-EN-LS-SD-AP-100 |  | Playground Details | 37.25d | 2026-03-01 A | 2026-04-16 A | PG-H-EN-LS-SD-SB-100 | 100% | 2026-03-01 | 2026-04-18 | H |
| PG-H-EN-LS-SD-AP-40 |  | Tartan Flooring Layout & Details | 37.25d | 2026-03-01 A | 2026-04-16 A | PG-H-EN-LS-SD-SB-40 | 100% | 2026-03-01 | 2026-04-18 | H |
| PG-H-EN-LS-SD-AP-70 |  | Tree Planting Plan & Details | 37.25d | 2026-03-01 A | 2026-04-16 A | PG-H-EN-LS-SD-SB-70 | 100% | 2026-03-01 | 2026-04-18 | H |
| PG-H-EN-LS-SD-AP-90 |  | Football Playground Layout | 37.25d | 2026-03-01 A | 2026-04-16 A | PG-H-EN-LS-SD-SB-90 | 100% | 2026-03-01 | 2026-04-18 | H |
| PG-H-EN-LS-SD-AP-20 |  | Interlock Tile Details | 29.25d | 2026-03-10 A | 2026-04-16 A | PG-H-EN-LS-SD-SB-20, PG-H-EN-LS-SD-AP-10 | 100% | 2026-03-10 | 2026-04-18 | H |
| PG-H-EN-LS-SD-AP-30 |  | Stamped Concrete Pattern & Section | 23.25d | 2026-03-17 A | 2026-04-16 A | PG-H-EN-LS-SD-SB-30, PG-H-EN-LS-SD-AP-20 | 100% | 2026-03-17 | 2026-04-18 | H |
|  | 4 | **MECHANICAL DRAWINGS** |  | 2026-03-10 | 2026-05-06 |  |  |  |  |  |
|  | 1 | **WATER SUPPLY SYSTEM** |  | 2026-03-10 | 2026-04-13 |  |  |  |  |  |
| PG-H-EN-ME-SD-AP-10 |  | Cold & Hot Water Piping Layout | 26.25d | 2026-03-10 A | 2026-04-13 A | PG-H-EN-ME-SD-SB-10 | 100% | 2026-03-10 | 2026-04-14 | H |
| PG-H-EN-ME-SD-AP-30 |  | Booster Pump Details | 25.25d | 2026-03-11 A | 2026-04-13 A | PG-H-EN-ME-SD-SB-30 | 100% | 2026-03-11 | 2026-04-14 | H |
| PG-H-EN-ME-SD-AP-40 |  | GRP Water Tank Details | 22.25d | 2026-03-15 A | 2026-04-13 A | PG-H-EN-ME-SD-SB-40 | 100% | 2026-03-15 | 2026-04-14 | H |
| PG-H-EN-ME-SD-AP-20 |  | Pump Room Layout | 20.25d | 2026-03-17 A | 2026-04-13 A | PG-H-EN-ME-SD-SB-20, PG-H-EN-ME-SD-AP-10 | 100% | 2026-03-17 | 2026-04-14 | H |
|  | 2 | **SEWER AND DRAINAGE SYSTEM** |  | 2026-03-10 | 2026-04-13 |  |  |  |  |  |
| PG-H-EN-ME-SD-AP-50 |  | Drainage Layout | 26.25d | 2026-03-10 A | 2026-04-13 A | PG-H-EN-ME-SD-SB-50 | 100% | 2026-03-10 | 2026-04-14 | H |
| PG-H-EN-ME-SD-AP-60 |  | Floor Drains & Cleanouts Details | 20.25d | 2026-03-17 A | 2026-04-13 A | PG-H-EN-ME-SD-SB-60, PG-H-EN-ME-SD-AP-50 | 100% | 2026-03-17 | 2026-04-14 | H |
| PG-H-EN-ME-SD-AP-70 |  | Inspection Chamber Details | 20.25d | 2026-03-17 A | 2026-04-13 A | PG-H-EN-ME-SD-SB-70 | 100% | 2026-03-17 | 2026-04-14 | H |
|  | 3 | **IRRIGATION SYSTEM** |  | 2026-03-14 | 2026-05-06 |  |  |  |  |  |
| PG-H-EN-ME-SD-AP-80 |  | HDPE Pipe Routing | 43.25d | 2026-03-14 A | 2026-05-06 A | PG-H-EN-ME-SD-SB-80 | 100% | 2026-03-14 | 2026-05-07 | H |
| PG-H-EN-ME-SD-AP-90 |  | Irrigation Network Layout | 39.25d | 2026-03-18 A | 2026-05-06 A | PG-H-EN-ME-SD-SB-90 | 100% | 2026-03-18 | 2026-05-07 | H |

| ID | WBS | Activity | Duration | Start | Finish | Predecessors | Complete | Planned start | Planned finish | H,Q,T-Location |
| --- | --- | --- | --- | --- | --- | --- | --- | --- | --- | --- |
|  | 5 | **ELECTRICAL DRAWINGS** |  | 2026-05-12 | 2026-06-16 |  |  |  |  |  |
|  | 1 | **POWER AND LIGHTING SYSTEM** |  | 2026-05-12 | 2026-06-16 |  |  |  |  |  |
| PG-H-EN-EL-SD-AP-10 |  | Main Distribution Board (MDB) Layout | 27.25d | 2026-05-12 A | 2026-06-16 A | PG-H-EN-EL-SD-SB-10, PG-H-EN-EL-SD-SB-10 SS | 100% | 2026-05-12 | 2026-06-17 | H |
| PG-H-EN-EL-SD-AP-20 |  | Pump Room Power Panel | 27.25d | 2026-05-12 A | 2026-06-16 A | PG-H-EN-EL-SD-SB-20, PG-H-EN-EL-SD-SB-20 SS | 100% | 2026-05-12 | 2026-06-17 | H |
| PG-H-EN-EL-SD-AP-30 |  | Street Lighting Power Panel | 27.25d | 2026-05-12 A | 2026-06-16 A | PG-H-EN-EL-SD-SB-30, PG-H-EN-EL-SD-SB-30 SS | 100% | 2026-05-12 | 2026-06-17 | H |
| PG-H-EN-EL-SD-AP-40 |  | Site Lighting Pole Layout | 27.25d | 2026-05-12 A | 2026-06-16 A | PG-H-EN-EL-SD-SB-40, PG-H-EN-EL-SD-SB-40 SS | 100% | 2026-05-12 | 2026-06-17 | H |
|  | 2 | **ELV SYSTEM** |  | 2026-05-12 | 2026-06-16 |  |  |  |  |  |
| PG-H-EN-EL-SD-AP-50 |  | Telecom & Data Layout | 27.25d | 2026-05-12 A | 2026-06-16 A | PG-H-EN-EL-SD-SB-50, PG-H-EN-EL-SD-SB-50 SS | 100% | 2026-05-12 | 2026-06-17 | H |
| PG-H-EN-EL-SD-AP-60 |  | CCTV Camera Layout | 27.25d | 2026-05-12 A | 2026-06-16 A | PG-H-EN-EL-SD-SB-60, PG-H-EN-EL-SD-SB-60 SS | 100% | 2026-05-12 | 2026-06-17 | H |
| PG-H-EN-EL-SD-AP-70 |  | Access Control Layout | 27.25d | 2026-05-12 A | 2026-06-16 A | PG-H-EN-EL-SD-SB-70, PG-H-EN-EL-SD-SB-70 SS | 100% | 2026-05-12 | 2026-06-17 | H |
| PG-H-EN-EL-SD-AP-80 |  | AV System Layout | 27.25d | 2026-05-12 A | 2026-06-16 A | PG-H-EN-EL-SD-SB-80, PG-H-EN-EL-SD-SB-80 SS | 100% | 2026-05-12 | 2026-06-17 | H |
|  | 3 | **FIRE ALARM SYSTEM** |  | 2026-05-12 | 2026-06-16 |  |  |  |  |  |
| PG-H-EN-EL-SD-AP-100 |  | Detector & Manual Call Point Details | 27.25d | 2026-05-12 A | 2026-06-16 A | PG-H-EN-EL-SD-SB-100, PG-H-EN-EL-SD-SB-100 SS | 100% | 2026-05-12 | 2026-06-17 | H |
| PG-H-EN-EL-SD-AP-110 |  | Control Panel Wiring Diagram | 27.25d | 2026-05-12 A | 2026-06-16 A | PG-H-EN-EL-SD-SB-110, PG-H-EN-EL-SD-SB-110 SS | 100% | 2026-05-12 | 2026-06-17 | H |
| PG-H-EN-EL-SD-AP-90 |  | Fire Alarm Layout | 27.25d | 2026-05-12 A | 2026-06-16 A | PG-H-EN-EL-SD-SB-90, PG-H-EN-EL-SD-SB-90 SS | 100% | 2026-05-12 | 2026-06-17 | H |
|  | 3 | **MATERIAL SUBMITTALS** |  | 2026-02-17 | 2026-09-01 |  |  |  |  |  |
|  | 1 | **LONG LEAD ITEMS** |  | 2026-02-21 | 2026-09-01 |  |  |  |  |  |
|  | 2 | **EXTERNAL / LANDSCAPE WORK** |  | 2026-02-25 | 2026-05-05 |  |  |  |  |  |
| PG-H-PR-LL-LS-MS-20 |  | Benches, Seats (Rectangular & Circular) | 56.25d | 2026-02-25 A | 2026-05-05 A | PG-H-PR-SL-LS-MS-30 | 100% | 2026-02-25 | 2026-05-06 | H |
| PG-H-PR-LL-LS-MS-30 |  | Fence, gates and accessories | 56.25d | 2026-02-25 A | 2026-05-05 A | PG-H-PR-SL-LS-MS-30 | 100% | 2026-02-25 | 2026-05-06 | H |
| PG-H-PR-LL-LS-MS-10 |  | Bike and Walk Path Materials | 48.25d | 2026-03-07 A | 2026-05-05 A | PG-H-PR-SL-LS-MS-10, PG-H-EN-LS-SD-AP-50, PG-H-EN-LS-SD-AP-60 | 100% | 2026-03-07 | 2026-05-06 | H |
|  | 3 | **SPORTS & RECREATIONAL FACILITIES WORK** |  | 2026-03-08 | 2026-05-05 |  |  |  |  |  |
| PG-H-PR-LL-SP-MS-10 |  | Football Playground Materials (Flooring, goal post, nets, paints, etc) | 47.25d | 2026-03-08 A | 2026-05-05 A | PG-H-EN-LS-SD-AP-90, PG-H-EN-LS-SD-AP-100 | 100% | 2026-03-08 | 2026-05-06 | H |
| PG-H-PR-LL-SP-MS-20 |  | Tartan Floor | 47.25d | 2026-03-08 A | 2026-05-05 A | PG-H-EN-LS-SD-AP-40 | 100% | 2026-03-08 | 2026-05-06 | H |

| ID | WBS | Activity | Duration | Start | Finish | Predecessors | Complete | Planned start | Planned finish | H,Q,T-Location |
| --- | --- | --- | --- | --- | --- | --- | --- | --- | --- | --- |
|  | 4 | **CONCRETE WORK** |  | 2026-03-07 | 2026-04-27 |  |  |  |  |  |
| PG-H-PR-LL-CO-MS-10 |  | Autoclaved Aerated Panel | 41.25d | 2026-03-07 A | 2026-04-27 A | PG-H-EN-AR-SD-AP-10, PG-H-EN-AR-SD-AP-20 | 100% | 2026-03-07 | 2026-04-28 | H |
|  | 5 | **METAL WORK** |  | 2026-03-11 | 2026-05-05 |  |  |  |  |  |
| PG-H-PR-LL-MT-MS-10 |  | Metal Doors | 44.25d | 2026-03-11 A | 2026-05-05 A | PG-H-EN-AR-SD-AP-80 | 100% | 2026-03-11 | 2026-05-06 | H |
| PG-H-PR-LL-MT-MS-20 |  | Curtain Wall | 44.25d | 2026-03-11 A | 2026-05-05 A | PG-H-PR-LL-CO-MS-10 | 100% | 2026-03-11 | 2026-05-06 | H |
|  | 7 | **PLUMBING WORK** |  | 2026-03-11 | 2026-05-05 |  |  |  |  |  |
| PG-H-PR-LL-PB-MS-10 |  | Booster Pump | 44.25d | 2026-03-11 A | 2026-05-05 A | PG-H-EN-ME-SD-AP-30 SS | 100% | 2026-03-11 | 2026-05-06 | H |
| PG-H-PR-LL-PB-MS-20 |  | GRP Sectional Panel Water Tanks (4x3x3m) | 40.25d | 2026-03-16 A | 2026-05-05 A | PG-H-PR-LL-PB-MS-10 | 100% | 2026-03-16 | 2026-05-06 | H |
|  | 8 | **IRRIGATION WORK** |  | 2026-02-21 | 2026-05-06 |  |  |  |  |  |
| PG-H-PR-LL-IR-MS-10 |  | HDPE Pipes | 60.25d | 2026-02-21 A | 2026-05-06 A | PG-H-PR-LL-IR-MS-20 SS | 100% | 2026-02-21 | 2026-05-07 | H |
| PG-H-PR-LL-IR-MS-20 |  | Irrigation Control System | 60.25d | 2026-02-21 A | 2026-05-06 A | PG-H-PR-LL-EL-MS-50 SS | 100% | 2026-02-21 | 2026-05-07 | H |
|  | 9 | **ELECTRICAL WORK** |  | 2026-05-12 | 2026-09-01 |  |  |  |  |  |
| PG-H-PR-LL-EL-MS-10 |  | Main Distribution Board(Completed) | 34.25d | 2026-05-12 A | 2026-06-24 A | PG-H-EN-EL-SD-AP-10 SS | 100% | 2026-05-12 | 2026-06-25 | H |
| PG-H-PR-LL-EL-MS-20 |  | Power Panels (Pump, Street Light)(Completed) | 34.25d | 2026-05-12 A | 2026-06-24 A | PG-H-PR-LL-EL-MS-10 SS | 100% | 2026-05-12 | 2026-06-25 | H |
| PG-H-PR-LL-EL-MS-30 |  | Site Lighting Poles(Completed) | 34.25d | 2026-05-12 A | 2026-06-24 A | PG-H-EN-EL-SD-AP-30 SS | 100% | 2026-05-12 | 2026-06-25 | H |
| PG-H-PR-LL-EL-MS-40 |  | Lighting Fixtures(Completed) | 34.25d | 2026-05-12 A | 2026-06-24 A | PG-H-PR-LL-EL-MS-10 SS | 100% | 2026-05-12 | 2026-06-25 | H |
| PG-H-PR-LL-EL-MS-50 |  | Grounding System Materials (Earth pit rod, LPS, etc)(Completed) | 34.25d | 2026-05-12 A | 2026-06-24 A | PG-GN-MS-10 SS | 100% | 2026-05-12 | 2026-06-25 | H |
| PG-H-PR-LL-EL-MS-60 |  | Telecommunications & Data System Materials (Telephone outlet, CCTV, etc)(Completed) | 34.25d | 2026-05-12 A | 2026-06-24 A | PG-H-EN-EL-SD-AP-50, PG-H-EN-EL-SD-AP-60 SS, PG-H-EN-EL-SD-AP-50 SS | 100% | 2026-05-12 | 2026-06-25 | H |
| PG-H-PR-LL-EL-MS-70 |  | Security and Access Control System Materials(Completed) | 34.25d | 2026-05-12 A | 2026-06-24 A | PG-H-EN-EL-SD-AP-80 SS | 100% | 2026-05-12 | 2026-06-25 | H |
| PG-H-PR-LL-EL-MS-80 |  | Fire Alarm System Materials(Completed) | 34.25d | 2026-05-12 A | 2026-06-24 A | PG-H-EN-EL-SD-AP-90, PG-H-EN-EL-SD-AP-110 SS, PG-H-EN-EL-SD-AP-90 SS | 100% | 2026-05-12 | 2026-06-25 | H |
| PG-H-PR-LL-EL-MS-10_R |  | Main Distribution Board(Remaining) | 8d | 2026-07-11 A | 2026-08-03 A | PG-H-EN-EL-SD-AP-10 SS, PG-H-PR-LL-EL-MS-10 | 100% | 2026-07-14 | 2026-07-22 | H |
| PG-H-PR-LL-EL-MS-20_R |  | Power Panels (Pump, Street Light)(Remaining) | 8d | 2026-07-11 A | 2026-08-03 A | PG-H-PR-LL-EL-MS-10_R SS, PG-H-PR-LL-EL-MS-20 | 100% | 2026-07-14 | 2026-07-22 | H |
| PG-H-PR-LL-EL-MS-30_R |  | Site Lighting Poles(Remaining) | 10d | 2026-07-11 A | 2026-08-03 A | PG-H-EN-EL-SD-AP-30 SS, PG-H-PR-LL-EL-MS-30 | 100% | 2026-07-14 | 2026-07-25 | H |
| PG-H-PR-LL-EL-MS-40_R |  | Lighting Fixtures(Remaining) | 10d | 2026-07-11 A | 2026-07-23 A | PG-H-PR-LL-EL-MS-10_R SS, PG-H-PR-LL-EL-MS-40 | 100% | 2026-07-14 | 2026-07-25 | H |
| PG-H-PR-LL-EL-MS-50_R |  | Grounding System Materials (Earth pit rod, LPS, etc)(Remaining) | 7d | 2026-07-11 A | 2026-09-01 A | PG-GN-MS-10 SS, PG-H-PR-LL-EL-MS-50 | 100% | 2026-07-14 | 2026-07-21 | H |
| PG-H-PR-LL-EL-MS-60_R |  | Telecommunications & Data System Materials (Telephone outlet, CCTV, etc)(Remaining) | 10d | 2026-07-11 A | 2026-09-01 A | PG-H-EN-EL-SD-AP-50, PG-H-EN-EL-SD-AP-60 SS, PG-H-EN-EL-SD-AP-50 SS, PG-H-PR-LL-EL-MS-60 | 100% | 2026-07-14 | 2026-07-25 | H |
| PG-H-PR-LL-EL-MS-70_R |  | Security and Access Control System Materials(Remaining) | 10d | 2026-07-11 A | 2026-09-01 A | PG-H-EN-EL-SD-AP-80 SS, PG-H-PR-LL-EL-MS-70 | 100% | 2026-07-14 | 2026-07-25 | H |
| PG-H-PR-LL-EL-MS-80_R |  | Fire Alarm System Materials(Remaining) | 10d | 2026-08-27 A | 2026-09-01 A | PG-H-EN-EL-SD-AP-90, PG-H-EN-EL-SD-AP-110 SS, PG-H-EN-EL-SD-AP-90 SS, PG-H-PR-LL-EL-MS-80 | 100% | 2026-08-29 | 2026-09-08 | H |

| ID | WBS | Activity | Duration | Start | Finish | Predecessors | Complete | Planned start | Planned finish | H,Q,T-Location |
| --- | --- | --- | --- | --- | --- | --- | --- | --- | --- | --- |
|  | 2 | **SHORT LEAD ITEMS** |  | 2026-02-17 | 2026-03-26 |  |  |  |  |  |
|  | 2 | **EXTERNAL / LANDSCAPE WORK** |  | 2026-02-17 | 2026-03-16 |  |  |  |  |  |
| PG-H-PR-SL-LS-MS-10 |  | Backfilling Materials | 23.25d | 2026-02-17 A | 2026-03-16 A | PG-GN-MS-10 SS | 100% | 2026-02-17 | 2026-03-17 | H |
| PG-H-PR-SL-LS-MS-30 |  | Compacted Natural Ground Soil | 20.25d | 2026-02-21 A | 2026-03-16 A | PG-H-PR-SL-LS-MS-10 | 100% | 2026-02-21 | 2026-03-17 | H |
| PG-H-PR-SL-LS-MS-60 |  | Traffic Signages | 8.25d | 2026-03-08 A | 2026-03-16 A | PG-H-EN-LS-SD-AP-80 | 100% | 2026-03-08 | 2026-03-17 | H |
| PG-H-PR-SL-LS-MS-20 |  | Interlock tiles | 4.25d | 2026-03-12 A | 2026-03-16 A | PG-H-PR-SL-LS-MS-10, PG-H-EN-LS-SD-AP-20 | 100% | 2026-03-12 | 2026-03-17 | H |
| PG-H-PR-SL-LS-MS-40 |  | Curb Stone | 4.25d | 2026-03-12 A | 2026-03-16 A | PG-H-PR-SL-LS-MS-10, PG-H-EN-LS-SD-AP-10 | 100% | 2026-03-12 | 2026-03-17 | H |
| PG-H-PR-SL-LS-MS-50 |  | Thermoplastic pavement road marking | 4.25d | 2026-03-12 A | 2026-03-16 A | PG-H-PR-SL-LS-MS-40 | 100% | 2026-03-12 | 2026-03-17 | H |
| PG-H-PR-SL-LS-MS-70 |  | Trees | 4.25d | 2026-03-12 A | 2026-03-16 A | PG-H-PR-SL-LS-MS-60, PG-H-EN-LS-SD-AP-70 | 100% | 2026-03-12 | 2026-03-17 | H |
| PG-H-PR-SL-LS-MS-80 |  | Lawn | 4.25d | 2026-03-12 A | 2026-03-16 A | PG-H-PR-SL-LS-MS-60, PG-H-EN-LS-SD-AP-70 | 100% | 2026-03-12 | 2026-03-17 | H |
|  | 3 | **CONCRETE WORK** |  | 2026-02-17 | 2026-03-26 |  |  |  |  |  |
| PG-H-PR-SL-CO-MS-10 |  | Steel Rebar | 17.25d | 2026-02-17 A | 2026-03-09 A | PG-GN-MS-10 SS | 100% | 2026-02-17 | 2026-03-10 | H |
| PG-H-PR-SL-CO-MS-20 |  | Concrete | 13.25d | 2026-02-23 A | 2026-03-09 A | PG-H-PR-SL-CO-MS-10 | 100% | 2026-02-23 | 2026-03-10 | H |
| PG-H-PR-SL-CO-MS-40 |  | CMU Block | 19.25d | 2026-03-01 A | 2026-03-26 A | PG-H-PR-SL-CO-MS-20 | 100% | 2026-03-01 | 2026-03-28 | H |
| PG-H-PR-SL-CO-MS-50 |  | Concrete Repair & Protection Materials | 19.25d | 2026-03-01 A | 2026-03-26 A | PG-H-PR-SL-CO-MS-20 | 100% | 2026-03-01 | 2026-03-28 | H |
| PG-H-PR-SL-CO-MS-30 |  | Screed | 10.25d | 2026-03-11 A | 2026-03-26 A | PG-H-PR-SL-CO-MS-20, PG-H-EN-AR-SD-AP-50 | 100% | 2026-03-11 | 2026-03-28 | H |
|  | 4 | **ARCHITECTURAL & FINISHES WORK** |  | 2026-03-10 | 2026-03-14 |  |  |  |  |  |
| PG-H-PR-SL-AR-MS-10 |  | Ceramic tiles | 4.25d | 2026-03-10 A | 2026-03-14 A | PG-H-EN-AR-SD-AP-50 | 100% | 2026-03-10 | 2026-03-15 | H |
| PG-H-PR-SL-AR-MS-100 |  | Gypsum Boards | 4.25d | 2026-03-10 A | 2026-03-14 A | PG-H-EN-AR-SD-AP-60 | 100% | 2026-03-10 | 2026-03-15 | H |
| PG-H-PR-SL-AR-MS-110 |  | Specialities Materials (Toilet accessories, lockers, logo, etc) | 4.25d | 2026-03-10 A | 2026-03-14 A | PG-H-EN-AR-SD-AP-70 | 100% | 2026-03-10 | 2026-03-15 | H |
| PG-H-PR-SL-AR-MS-120 |  | Waterproofing System Materials | 4.25d | 2026-03-10 A | 2026-03-14 A | PG-H-EN-AR-SD-AP-50 | 100% | 2026-03-10 | 2026-03-15 | H |
| PG-H-PR-SL-AR-MS-20 |  | Anti-slip Granite tiles | 4.25d | 2026-03-10 A | 2026-03-14 A | PG-H-PR-SL-AR-MS-10, PG-H-EN-AR-SD-AP-50 | 100% | 2026-03-10 | 2026-03-15 | H |
| PG-H-PR-SL-AR-MS-30 |  | Epoxy Paint | 4.25d | 2026-03-10 A | 2026-03-14 A | PG-H-EN-AR-SD-AP-50 | 100% | 2026-03-10 | 2026-03-15 | H |
| PG-H-PR-SL-AR-MS-40 |  | Cement Plaster | 4.25d | 2026-03-10 A | 2026-03-14 A | PG-H-EN-AR-SD-AP-50 | 100% | 2026-03-10 | 2026-03-15 | H |
| PG-H-PR-SL-AR-MS-50 |  | Acrylic Paint | 4.25d | 2026-03-10 A | 2026-03-14 A | PG-H-PR-SL-AR-MS-40, PG-H-EN-AR-SD-AP-10, PG-H-EN-AR-SD-AP-30 | 100% | 2026-03-10 | 2026-03-15 | H |
| PG-H-PR-SL-AR-MS-60 |  | Stone Cladding | 4.25d | 2026-03-10 A | 2026-03-14 A | PG-H-EN-AR-SD-AP-100 | 100% | 2026-03-10 | 2026-03-15 | H |
| PG-H-PR-SL-AR-MS-70 |  | Aluminum Plates | 4.25d | 2026-03-10 A | 2026-03-14 A | PG-H-EN-AR-SD-AP-90 | 100% | 2026-03-10 | 2026-03-15 | H |
| PG-H-PR-SL-AR-MS-80 |  | Phenolic Partition | 4.25d | 2026-03-10 A | 2026-03-14 A | PG-H-EN-AR-SD-AP-10 | 100% | 2026-03-10 | 2026-03-15 | H |
| PG-H-PR-SL-AR-MS-90 |  | Glass Partition | 4.25d | 2026-03-10 A | 2026-03-14 A | PG-H-EN-AR-SD-AP-10 | 100% | 2026-03-10 | 2026-03-15 | H |

| ID | WBS | Activity | Duration | Start | Finish | Predecessors | Complete | Planned start | Planned finish | Resources | Cost | Actual cost | H,Q,T-Location | BOQ DIVISION | DIVISION-02-SITE WORKS |
| --- | --- | --- | --- | --- | --- | --- | --- | --- | --- | --- | --- | --- | --- | --- | --- |
|  | 5 | **METAL WORK** |  | 2026-03-07 | 2026-03-16 |  |  |  |  |  |  |  |  |  |  |
| PG-H-PR-SL-MT-MS-20 |  | Galvanized Steel Roof Scupper | 9.25d | 2026-03-07 A | 2026-03-16 A | PG-H-EN-AR-SD-AP-20 | 100% | 2026-03-07 | 2026-03-17 |  |  |  | H |  |  |
| PG-H-PR-SL-MT-MS-30 |  | Galvanized Steel Cover with frame | 9.25d | 2026-03-07 A | 2026-03-16 A | PG-H-EN-AR-SD-AP-20 | 100% | 2026-03-07 | 2026-03-17 |  |  |  | H |  |  |
| PG-H-PR-SL-MT-MS-10 |  | Galvanized Steel Ladder | 4.25d | 2026-03-12 A | 2026-03-16 A | PG-H-EN-AR-SD-AP-20, PG-H-EN-AR-SD-AP-30 | 100% | 2026-03-12 | 2026-03-17 |  |  |  | H |  |  |
|  | 6 | **HVAC WORK** |  | 2026-02-23 | 2026-03-16 |  |  |  |  |  |  |  |  |  |  |
| PG-H-PR-SL-AC-MS-10 |  | Split Air Conditioning Unit | 19.25d | 2026-02-23 A | 2026-03-16 A | PG-H-PR-SL-CO-MS-10 | 100% | 2026-02-23 | 2026-03-17 |  |  |  | H |  |  |
| PG-H-PR-SL-AC-MS-20 |  | Air Duct | 15.25d | 2026-02-28 A | 2026-03-16 A | PG-H-PR-SL-AC-MS-10 | 100% | 2026-02-28 | 2026-03-17 |  |  |  | H |  |  |
| PG-H-PR-SL-AC-MS-30 |  | Diffusers and Grills | 11.25d | 2026-03-04 A | 2026-03-16 A | PG-H-PR-SL-AC-MS-20 | 100% | 2026-03-04 | 2026-03-17 |  |  |  | H |  |  |
| PG-H-PR-SL-AC-MS-40 |  | Exhaust fans | 11.25d | 2026-03-04 A | 2026-03-16 A | PG-H-PR-SL-AC-MS-20 | 100% | 2026-03-04 | 2026-03-17 |  |  |  | H |  |  |
|  | 7 | **PLUMBING WORK** |  | 2026-03-12 | 2026-03-16 |  |  |  |  |  |  |  |  |  |  |
| PG-H-PR-SL-PB-MS-10 |  | PPR Pipes & Valves | 4.25d | 2026-03-12 A | 2026-03-16 A | PG-H-EN-ME-SD-AP-10 | 100% | 2026-03-12 | 2026-03-17 |  |  |  | H |  |  |
| PG-H-PR-SL-PB-MS-20 |  | UPCV Pipes | 4.25d | 2026-03-12 A | 2026-03-16 A | PG-H-EN-ME-SD-AP-10, PG-H-EN-ME-SD-AP-50 | 100% | 2026-03-12 | 2026-03-17 |  |  |  | H |  |  |
| PG-H-PR-SL-PB-MS-30 |  | Sanitary Drainage Fixtures | 4.25d | 2026-03-12 A | 2026-03-16 A | PG-H-PR-SL-PB-MS-20, PG-H-EN-ME-SD-AP-60, PG-H-EN-ME-SD-AP-70 | 100% | 2026-03-12 | 2026-03-17 |  |  |  | H |  |  |
|  | 8 | **IRRIGATION WORK** |  | 2026-03-12 | 2026-03-16 |  |  |  |  |  |  |  |  |  |  |
| PG-H-PR-SL-IR-MS-10 |  | Gate Valve including valve box | 4.25d | 2026-03-12 A | 2026-03-16 A | PG-H-EN-ME-SD-AP-80, PG-H-EN-ME-SD-AP-90, PG-H-EN-ME-SD-SB-50 | 100% | 2026-03-12 | 2026-03-17 |  |  |  | H |  |  |
| PG-H-PR-SL-IR-MS-20 |  | Bulbblers and Spreyers | 4.25d | 2026-03-12 A | 2026-03-16 A | PG-H-EN-ME-SD-AP-90, PG-H-EN-ME-SD-SB-50 | 100% | 2026-03-12 | 2026-03-17 |  |  |  | H |  |  |
|  | 9 | **ELECTRICAL WORK** |  | 2026-03-12 | 2026-03-16 |  |  |  |  |  |  |  |  |  |  |
| PG-H-PR-SL-EL-MS-10 |  | Wiring Devices Materials | 4.25d | 2026-03-12 A | 2026-03-16 A | PG-H-PR-SL-PB-MS-30 | 100% | 2026-03-12 | 2026-03-17 |  |  |  | H |  |  |
|  | 10 | **FIRE FIGHTING WORK** |  | 2026-03-12 | 2026-03-16 |  |  |  |  |  |  |  |  |  |  |
| PG-H-PR-SL-FF-MS-10 |  | Fire Extinguishers | 4.25d | 2026-03-12 A | 2026-03-16 A | PG-H-PR-SL-PB-MS-30 | 100% | 2026-03-12 | 2026-03-17 |  |  |  | H |  |  |
|  | 4 | **MATERIAL APPROVALS** |  | 2026-02-21 | 2026-09-17 |  |  |  |  |  |  |  |  |  |  |
|  | 1 | **LONG LEAD ITEMS** |  | 2026-02-25 | 2026-09-17 |  |  |  |  |  |  |  |  |  |  |
|  | 1 | **EXTERNAL / LANDSCAPE WORK** |  | 2026-02-25 | 2026-05-06 |  |  |  |  |  |  |  |  |  |  |
| PG-H-PR-LL-LS-MA-20 |  | Benches, Seats (Rectangular & Circular) | 57d | 2026-02-25 A | 2026-05-06 A | PG-H-PR-LL-LS-MS-20 SS | 100% |  |  | COST [6327.69] | 6,327.69 | 6,327.69 | H | DIV-2 | Div-2.3 |
| PG-H-PR-LL-LS-MA-30 |  | Fence, gates and accessories | 51d | 2026-03-04 A | 2026-05-06 A | PG-H-PR-LL-LS-MS-30 | 100% |  |  | COST [3290.94] | 3,290.94 | 3,290.94 | H | DIV-2 | Div-2.3 |
| PG-H-PR-LL-LS-MA-10 |  | Bike and Walk Path Materials | 41d | 2026-03-16 A | 2026-05-06 A | PG-H-PR-LL-LS-MS-10 | 100% |  |  | COST [16461] | 16,461 | 16,461 | H | DIV-2 | Div-2.3 |

| ID | WBS | Activity | Duration | Start | Finish | Predecessors | Complete | Planned start | Planned finish | Resources | Cost | Actual cost | H,Q,T-Location | BOQ DIVISION | DIVISION-02-SITE WORKS | DIVISION-3 CONCRETE | DIVISION 8- DOORS & WINDOWS | DIVISION 15-MECHANICAL WORKS | DIVISION 16 ELECTRICAL WORKS |
| --- | --- | --- | --- | --- | --- | --- | --- | --- | --- | --- | --- | --- | --- | --- | --- | --- | --- | --- | --- |
|  | 3 | **SPORTS & RECREATIONAL FACILITIES WORK** |  | 2026-03-14 | 2026-05-06 |  |  |  |  |  |  |  |  |  |  |  |  |  |  |
| PG-H-PR-LL-SP-MA-20 |  | Tartan Floor | 43d | 2026-03-14 A | 2026-05-06 A | PG-H-PR-LL-SP-MS-20 | 100% |  |  | COST [24570] | 24,570 | 24,570 | H | DIV-2 | Div-2.3 |  |  |  |  |
| PG-H-PR-LL-SP-MA-10 |  | Football Playground Materials (Flooring, goal post, nets, paints, etc) | 42d | 2026-03-15 A | 2026-05-06 A | PG-H-PR-LL-SP-MS-10 | 100% |  |  | COST [14269.5] | 14,269.5 | 14,269.5 | H | DIV-2 | Div-2.3 |  |  |  |  |
|  | 4 | **CONCRETE WORK** |  | 2026-03-11 | 2026-05-06 |  |  |  |  |  |  |  |  |  |  |  |  |  |  |
| PG-H-PR-LL-CO-MA-10 |  | Autoclaved Aerated Panel | 45d | 2026-03-11 A | 2026-05-06 A | PG-H-PR-LL-CO-MS-10 | 100% |  |  | COST [1417.5] | 1,417.5 | 1,417.5 | H | DIV-3 |  | Div-3 |  |  |  |
|  | 5 | **METAL WORK** |  | 2026-03-15 | 2026-05-06 |  |  |  |  |  |  |  |  |  |  |  |  |  |  |
| PG-H-PR-LL-MT-MA-10 |  | Metal Doors | 42d | 2026-03-15 A | 2026-05-06 A | PG-H-PR-LL-MT-MS-10 | 100% |  |  | COST [127.53] | 127.53 | 127.53 | H | DIV-8 |  |  | Div-8.1 |  |  |
| PG-H-PR-LL-MT-MA-20 |  | Curtain Wall | 42d | 2026-03-15 A | 2026-05-06 A | PG-H-PR-LL-MT-MS-20 | 100% |  |  | COST [761.7] | 761.7 | 761.7 | H | DIV-8 |  |  | Div-8.2 |  |  |
|  | 7 | **PLUMBING WORK** |  | 2026-03-16 | 2026-05-06 |  |  |  |  |  |  |  |  |  |  |  |  |  |  |
| PG-H-PR-LL-PB-MA-10 |  | Booster Pump | 41d | 2026-03-16 A | 2026-05-06 A | PG-H-PR-LL-PB-MS-10 | 100% |  |  | COST [1818.3] | 1,818.3 | 1,818.3 | H | DIV-15 |  |  |  | Div15.2 |  |
| PG-H-PR-LL-PB-MA-20 |  | GRP Sectional Panel Water Tanks (4x3x3m) | 38d | 2026-03-24 A | 2026-05-06 A | PG-H-PR-LL-PB-MS-20 | 100% |  |  | COST [1735.65] | 1,735.65 | 1,735.65 | H | DIV-15 |  |  |  | Div15.2 |  |
|  | 8 | **IRRIGATION WORK** |  | 2026-02-28 | 2026-05-06 |  |  |  |  |  |  |  |  |  |  |  |  |  |  |
| PG-H-PR-LL-IR-MA-10 |  | HDPE Pipes | 55d | 2026-02-28 A | 2026-05-06 A | PG-H-PR-LL-IR-MS-10 | 100% |  |  | COST [8272.5] | 8,272.5 | 8,272.5 | H | DIV-15 |  |  |  | Div15.5 |  |
| PG-H-PR-LL-IR-MA-20 |  | Irrigation Control System | 55d | 2026-02-28 A | 2026-05-06 A | PG-H-PR-LL-IR-MS-20 | 100% |  |  | COST [4545.75] | 4,545.75 | 4,545.75 | H | DIV-15 |  |  |  | Div15.5 |  |
|  | 9 | **ELECTRICAL WORK** |  | 2026-05-12 | 2026-09-17 |  |  |  |  |  |  |  |  |  |  |  |  |  |  |
| PG-H-PR-LL-EL-MA-10 |  | Main Distribution Board(Completed) | 34d | 2026-05-12 A | 2026-06-24 A | PG-H-PR-LL-EL-MS-10 SS | 100% |  |  | COST [347.13] | 347.13 | 347.13 | H | DIV-16 |  |  |  |  | Div16.1 |
| PG-H-PR-LL-EL-MA-20 |  | Power Panels (Pump, Street Light)(Completed) | 34d | 2026-05-12 A | 2026-06-24 A | PG-H-PR-LL-EL-MS-20 SS | 100% |  |  | COST [277.7] | 277.7 | 277.7 | H | DIV-16 |  |  |  |  | Div16.1 |
| PG-H-PR-LL-EL-MA-30 |  | Site Lighting Poles(Completed) | 34d | 2026-05-12 A | 2026-06-24 A | PG-H-PR-LL-EL-MS-30 SS | 100% |  |  | COST [14891.2] | 14,891.18 | 14,891.18 | H | DIV-16 |  |  |  |  | Div16.2 |
| PG-H-PR-LL-EL-MA-40 |  | Lighting Fixtures(Completed) | 34d | 2026-05-12 A | 2026-06-24 A | PG-H-PR-LL-EL-MS-40 SS | 100% |  |  | COST [897.98] | 897.98 | 897.98 | H | DIV-16 |  |  |  |  | Div16.3 |
| PG-H-PR-LL-EL-MA-50 |  | Grounding System Materials (Earth pit rod, LPS, etc)(Completed) | 34d | 2026-05-12 A | 2026-06-24 A | PG-H-PR-LL-EL-MS-50 SS | 100% |  |  | COST [702.93] | 702.93 | 702.93 | H | DIV-16 |  |  |  |  | Div16.6 |
| PG-H-PR-LL-EL-MA-60 |  | Telecommunications & Data System Materials (Telephone outlet, CCTV, etc)(Completed) | 34d | 2026-05-12 A | 2026-06-24 A | PG-H-PR-LL-EL-MS-60 SS | 100% |  |  | COST [685.57] | 685.57 | 685.57 | H | DIV-16 |  |  |  |  | Div16.4 |
| PG-H-PR-LL-EL-MA-70 |  | Security and Access Control System Materials(Completed) | 34d | 2026-05-12 A | 2026-06-24 A | PG-H-PR-LL-EL-MS-70 SS | 100% |  |  | COST [867.93] | 867.93 | 867.93 | H | DIV-16 |  |  |  |  | Div16.5 |
| PG-H-PR-LL-EL-MA-80 |  | Fire Alarm System Materials(Completed) | 34d | 2026-05-12 A | 2026-06-24 A | PG-H-PR-LL-EL-MS-80 SS | 100% |  |  | COST [556.77] | 556.77 | 556.77 | H | DIV-16 |  |  |  |  | Div16.8 |
| PG-H-PR-LL-EL-MA-40_R |  | Lighting Fixtures(Remaining) | 10d | 2026-07-23 A | 2026-07-23 A | PG-H-PR-LL-EL-MS-40_R SS, PG-H-PR-LL-EL-MA-40 | 100% | 2026-07-26 | 2026-08-05 | COST [384.85] | 384.85 | 384.85 | H | DIV-16 |  |  |  |  | Div16.3 |
| PG-H-PR-LL-EL-MA-10_R |  | Main Distribution Board(Remaining) | 10d | 2026-07-30 A | 2026-09-17 A | PG-H-PR-LL-EL-MS-10_R SS, PG-H-PR-LL-EL-MA-10 | 100% | 2026-08-02 | 2026-08-12 | COST [148.77] | 148.77 | 148.77 | H | DIV-16 |  |  |  |  | Div16.1 |
| PG-H-PR-LL-EL-MA-20_R |  | Power Panels (Pump, Street Light)(Remaining) | 10d | 2026-07-30 A | 2026-09-17 A | PG-H-PR-LL-EL-MS-20_R SS, PG-H-PR-LL-EL-MA-20 | 100% | 2026-08-02 | 2026-08-12 | COST [119.02] | 119.02 | 119.02 | H | DIV-16 |  |  |  |  | Div16.1 |
| PG-H-PR-LL-EL-MA-30_R |  | Site Lighting Poles(Remaining) | 10d | 2026-07-30 A | 2026-09-17 A | PG-H-PR-LL-EL-MS-30_R SS, PG-H-PR-LL-EL-MA-30 | 100% | 2026-08-02 | 2026-08-12 | COST [6381.94] | 6,381.94 | 6,381.94 | H | DIV-16 |  |  |  |  | Div16.2 |
| PG-H-PR-LL-EL-MA-50_R |  | Grounding System Materials (Earth pit rod, LPS, etc)(Remaining) | 10d | 2026-08-27 A | 2026-09-17 A | PG-H-PR-LL-EL-MS-50_R, PG-H-PR-LL-EL-MA-50, PG-H-PR-LL-EL-MS-50_R SS | 100% | 2026-08-31 | 2026-09-12 | COST [301.26] | 301.26 | 301.26 | H | DIV-16 |  |  |  |  | Div16.6 |
| PG-H-PR-LL-EL-MA-60_R |  | Telecommunications & Data System Materials (Telephone outlet, CCTV, etc)(Remaining) | 10d | 2026-08-27 A | 2026-09-17 A | PG-H-PR-LL-EL-MS-60_R SS, PG-H-PR-LL-EL-MA-60 | 100% | 2026-08-29 | 2026-09-08 | COST [293.81] | 293.81 | 293.81 | H | DIV-16 |  |  |  |  | Div16.4 |
| PG-H-PR-LL-EL-MA-70_R |  | Security and Access Control System Materials(Remaining) | 10d | 2026-08-27 A | 2026-09-17 A | PG-H-PR-LL-EL-MS-70_R SS, PG-H-PR-LL-EL-MA-70 | 100% | 2026-08-29 | 2026-09-08 | COST [371.97] | 371.97 | 371.97 | H | DIV-16 |  |  |  |  | Div16.5 |
| PG-H-PR-LL-EL-MA-80_R |  | Fire Alarm System Materials(Remaining) | 10d | 2026-08-27 A | 2026-09-17 A | PG-H-PR-LL-EL-MS-80_R SS, PG-H-PR-LL-EL-MA-80 | 100% | 2026-08-29 | 2026-09-08 | COST [238.62] | 238.62 | 238.62 | H | DIV-16 |  |  |  |  | Div16.8 |

| ID | WBS | Activity | Duration | Start | Finish | Predecessors | Complete | Resources | Cost | Actual cost | H,Q,T-Location | BOQ DIVISION | DIVISION-02-SITE WORKS | DIVISION-3 CONCRETE | DIVISION-4 MASONRY | DIVISION 15-MECHANICAL WORKS | DIVISION 07-THERMAL & MOISTURE PROTECTIO | DIVISION 9-FINISHES | DIVISION 10-SPECIALTIES |
| --- | --- | --- | --- | --- | --- | --- | --- | --- | --- | --- | --- | --- | --- | --- | --- | --- | --- | --- | --- |
|  | 2 | **SHORT LEAD ITEMS** |  | 2026-02-21 | 2026-03-26 |  |  |  |  |  |  |  |  |  |  |  |  |  |  |
|  | 1 | **EXTERNAL / LANDSCAPE WORK** |  | 2026-02-21 | 2026-03-26 |  |  |  |  |  |  |  |  |  |  |  |  |  |  |
| PG-H-PR-SL-LS-MA-10 |  | Backfilling Materials | 25d | 2026-02-21 A | 2026-03-26 A | PG-H-PR-SL-LS-MS-10 | 100% | COST [19575] | 19,575 | 19,575 | H | DIV-2 | Div-2.1 |  |  |  |  |  |  |
| PG-H-PR-SL-LS-MA-30 |  | Compacted Natural Ground Soil | 22d | 2026-02-25 A | 2026-03-26 A | PG-H-PR-SL-LS-MS-30 | 100% | COST [3120] | 3,120 | 3,120 | H | DIV-2 | Div-2.3 |  |  |  |  |  |  |
| PG-H-PR-SL-LS-MA-60 |  | Traffic Signages | 10d | 2026-03-11 A | 2026-03-26 A | PG-H-PR-SL-LS-MS-60 | 100% | COST [198.36] | 198.36 | 198.36 | H | DIV-2 | Div-2.3 |  |  |  |  |  |  |
| PG-H-PR-SL-LS-MA-70 |  | Trees | 7d | 2026-03-15 A | 2026-03-26 A | PG-H-PR-SL-LS-MS-70 | 100% | COST [4831.95] | 4,831.95 | 4,831.95 | H | DIV-2 | Div-2.3 |  |  |  |  |  |  |
| PG-H-PR-SL-LS-MA-80 |  | Lawn | 7d | 2026-03-15 A | 2026-03-26 A | PG-H-PR-SL-LS-MS-80 | 100% | COST [5460] | 5,460 | 5,460 | H | DIV-2 | Div-2.3 |  |  |  |  |  |  |
| PG-H-PR-SL-LS-MA-20 |  | Interlock tiles | 2d | 2026-03-25 A | 2026-03-26 A | PG-H-PR-SL-LS-MS-20 | 100% | COST [17494.5] | 17,494.5 | 17,494.5 | H | DIV-2 | Div-2.2 |  |  |  |  |  |  |
| PG-H-PR-SL-LS-MA-40 |  | Curb Stone | 2d | 2026-03-25 A | 2026-03-26 A | PG-H-PR-SL-LS-MS-40 | 100% | COST [20928] | 20,928 | 20,928 | H | DIV-2 | Div-2.3 |  |  |  |  |  |  |
| PG-H-PR-SL-LS-MA-50 |  | Thermoplastic pavement road marking | 2d | 2026-03-25 A | 2026-03-26 A | PG-H-PR-SL-LS-MS-50 | 100% | COST [525.63] | 525.63 | 525.63 | H | DIV-2 | Div-2.3 |  |  |  |  |  |  |
|  | 3 | **CONCRETE WORK** |  | 2026-02-23 | 2026-03-26 |  |  |  |  |  |  |  |  |  |  |  |  |  |  |
| PG-H-PR-SL-CO-MA-10 |  | Steel Rebar | 14d | 2026-02-23 A | 2026-03-10 A | PG-H-PR-SL-CO-MS-10 | 100% | COST [476.82] | 476.82 | 476.82 | H | DIV-3 |  | Div-3 |  |  |  |  |  |
| PG-H-PR-SL-CO-MA-20 |  | Concrete | 9d | 2026-03-01 A | 2026-03-10 A | PG-H-PR-SL-CO-MS-20 | 100% | COST [518.85] | 518.85 | 518.85 | H | DIV-3 |  | Div-3 |  |  |  |  |  |
| PG-H-PR-SL-CO-MA-40 |  | CMU Block | 15d | 2026-03-05 A | 2026-03-26 A | PG-H-PR-SL-CO-MS-40 | 100% | COST [124.2] | 124.2 | 124.2 | H | DIV-4 |  |  | Div-4 |  |  |  |  |
| PG-H-PR-SL-CO-MA-50 |  | Concrete Repair & Protection Materials | 15d | 2026-03-05 A | 2026-03-26 A | PG-H-PR-SL-CO-MS-50 | 100% | COST [372] | 372 | 372 | H | DIV-15 |  |  |  | Div15.2 |  |  |  |
| PG-H-PR-SL-CO-MA-30 |  | Screed | 1d | 2026-03-26 A | 2026-03-26 A | PG-H-PR-SL-CO-MS-30 | 100% | COST [117.6] | 117.6 | 117.6 | H | DIV-7 |  |  |  |  | Div-07 |  |  |
|  | 4 | **ARCHITECTURAL & FINISHES WORK** |  | 2026-03-15 | 2026-03-16 |  |  |  |  |  |  |  |  |  |  |  |  |  |  |
| PG-H-PR-SL-AR-MA-10 |  | Ceramic tiles | 2d | 2026-03-15 A | 2026-03-16 A | PG-H-PR-SL-AR-MS-10 | 100% | COST [571.95] | 571.95 | 571.95 | H | DIV-9 |  |  |  |  |  | Div-9.1 |  |
| PG-H-PR-SL-AR-MA-100 |  | Gypsum Boards | 2d | 2026-03-15 A | 2026-03-16 A | PG-H-PR-SL-AR-MS-100 | 100% | COST [188.58] | 188.58 | 188.58 | H | DIV-9 |  |  |  |  |  | Div-9.3 |  |
| PG-H-PR-SL-AR-MA-110 |  | Specialities Materials (Toilet accessories, lockers, logo, etc) | 2d | 2026-03-15 A | 2026-03-16 A | PG-H-PR-SL-AR-MS-110 | 100% | COST [2262.87] | 2,262.87 | 2,262.87 | H | DIV-10 |  |  |  |  |  |  | Div-10 |
| PG-H-PR-SL-AR-MA-120 |  | Waterproofing System Materials | 2d | 2026-03-15 A | 2026-03-16 A | PG-H-PR-SL-AR-MS-120 | 100% | COST [544.2] | 544.2 | 544.2 | H | DIV-7 |  |  |  |  | Div-07 |  |  |
| PG-H-PR-SL-AR-MA-20 |  | Anti-slip Granite tiles | 2d | 2026-03-15 A | 2026-03-16 A | PG-H-PR-SL-AR-MS-20 | 100% | COST [535.5] | 535.5 | 535.5 | H | DIV-9 |  |  |  |  |  | Div-9.1 |  |
| PG-H-PR-SL-AR-MA-30 |  | Epoxy Paint | 2d | 2026-03-15 A | 2026-03-16 A | PG-H-PR-SL-AR-MS-30 | 100% | COST [111.18] | 111.18 | 111.18 | H | DIV-7 |  |  |  |  | Div-07 |  |  |
| PG-H-PR-SL-AR-MA-40 |  | Cement Plaster | 2d | 2026-03-15 A | 2026-03-16 A | PG-H-PR-SL-AR-MS-40 | 100% | COST [221.37] | 221.37 | 221.37 | H | DIV-9 |  |  |  |  |  | Div-9.2 |  |
| PG-H-PR-SL-AR-MA-50 |  | Acrylic Paint | 2d | 2026-03-15 A | 2026-03-16 A | PG-H-PR-SL-AR-MS-50 | 100% | COST [147.9] | 147.9 | 147.9 | H | DIV-9 |  |  |  |  |  | Div-9.2 |  |
| PG-H-PR-SL-AR-MA-60 |  | Stone Cladding | 2d | 2026-03-15 A | 2026-03-16 A | PG-H-PR-SL-AR-MS-60 | 100% | COST [1852.2] | 1,852.2 | 1,852.2 | H | DIV-9 |  |  |  |  |  | Div-9.2 |  |
| PG-H-PR-SL-AR-MA-70 |  | Aluminum Plates | 2d | 2026-03-15 A | 2026-03-16 A | PG-H-PR-SL-AR-MS-70 | 100% | COST [182.46] | 182.46 | 182.46 | H | DIV-9 |  |  |  |  |  | Div-9.2 |  |
| PG-H-PR-SL-AR-MA-80 |  | Phenolic Partition | 2d | 2026-03-15 A | 2026-03-16 A | PG-H-PR-SL-AR-MS-80 | 100% | COST [1340.4] | 1,340.4 | 1,340.4 | H | DIV-9 |  |  |  |  |  | Div-9.2 |  |
| PG-H-PR-SL-AR-MA-90 |  | Glass Partition | 2d | 2026-03-15 A | 2026-03-16 A | PG-H-PR-SL-AR-MS-90 | 100% | COST [155.4] | 155.4 | 155.4 | H | DIV-9 |  |  |  |  |  | Div-9.2 |  |

| ID | WBS | Activity | Duration | Start | Finish | Predecessors | Complete | Planned start | Planned finish | Resources | Cost | Actual cost | H,Q,T-Location | BOQ DIVISION | DIVISION-5-METALS | DIVISION 15-MECHANICAL WORKS | DIVISION 16 ELECTRICAL WORKS |
| --- | --- | --- | --- | --- | --- | --- | --- | --- | --- | --- | --- | --- | --- | --- | --- | --- | --- |
|  | 5 | **METAL WORK** |  | 2026-03-11 | 2026-03-26 |  |  |  |  |  |  |  |  |  |  |  |  |
| PG-H-PR-SL-MT-MA-20 |  | Galvanized Steel Roof Scupper | 10d | 2026-03-11 A | 2026-03-26 A | PG-H-PR-SL-MT-MS-20 | 100% |  |  | COST [31.32] | 31.32 | 31.32 | H | DIV-5 | Div-5 |  |  |
| PG-H-PR-SL-MT-MA-30 |  | Galvanized Steel Cover with frame | 10d | 2026-03-11 A | 2026-03-26 A | PG-H-PR-SL-MT-MS-30 | 100% |  |  | COST [85.71] | 85.71 | 85.71 | H | DIV-5 | Div-5 |  |  |
| PG-H-PR-SL-MT-MA-10 |  | Galvanized Steel Ladder | 7d | 2026-03-15 A | 2026-03-26 A | PG-H-PR-SL-MT-MS-10 | 100% |  |  | COST [361.86] | 361.86 | 361.86 | H | DIV-5 | Div-5 |  |  |
|  | 6 | **HVAC WORK** |  | 2026-02-28 | 2026-03-26 |  |  |  |  |  |  |  |  |  |  |  |  |
| PG-H-PR-SL-AC-MA-10 |  | Split Air Conditioning Unit | 20d | 2026-02-28 A | 2026-03-26 A | PG-H-PR-SL-AC-MS-10 | 100% |  |  | COST [309.93] | 309.93 | 309.93 | H | DIV-15 |  | Div15.4 |  |
| PG-H-PR-SL-AC-MA-20 |  | Air Duct | 16d | 2026-03-04 A | 2026-03-26 A | PG-H-PR-SL-AC-MS-20 | 100% |  |  | COST [156] | 156 | 156 | H | DIV-15 |  | Div15.4 |  |
| PG-H-PR-SL-AC-MA-30 |  | Diffusers and Grills | 2d | 2026-03-25 A | 2026-03-26 A | PG-H-PR-SL-AC-MS-30 | 100% |  |  | COST [74.31] | 74.31 | 74.31 | H | DIV-15 |  | Div15.4 |  |
| PG-H-PR-SL-AC-MA-40 |  | Exhaust fans | 2d | 2026-03-25 A | 2026-03-26 A | PG-H-PR-SL-AC-MS-40 | 100% |  |  | COST [66.12] | 66.12 | 66.12 | H | DIV-15 |  | Div15.4 |  |
|  | 7 | **PLUMBING WORK** |  | 2026-03-25 | 2026-03-26 |  |  |  |  |  |  |  |  |  |  |  |  |
| PG-H-PR-SL-PB-MA-10 |  | PPR Pipes & Valves | 2d | 2026-03-25 A | 2026-03-26 A | PG-H-PR-SL-PB-MS-10 | 100% |  |  | COST [265.2] | 265.2 | 265.2 | H | DIV-15 |  | Div15.2 |  |
| PG-H-PR-SL-PB-MA-20 |  | UPCV Pipes | 2d | 2026-03-25 A | 2026-03-26 A | PG-H-PR-SL-PB-MS-20 | 100% |  |  | COST [335.19] | 335.19 | 335.19 | H | DIV-15 |  | Div15.3 |  |
| PG-H-PR-SL-PB-MA-30 |  | Sanitary Drainage Fixtures | 2d | 2026-03-25 A | 2026-03-26 A | PG-H-PR-SL-PB-MS-30 | 100% |  |  | COST [2546.64] | 2,546.64 | 2,546.64 | H | DIV-15 |  | Div15.3 |  |
|  | 8 | **IRRIGATION WORK** |  | 2026-03-25 | 2026-03-26 |  |  |  |  |  |  |  |  |  |  |  |  |
| PG-H-PR-SL-IR-MA-10 |  | Gate Valve including valve box | 2d | 2026-03-25 A | 2026-03-26 A | PG-H-PR-SL-IR-MS-10 | 100% |  |  | COST [756.3] | 756.3 | 756.3 | H | DIV-15 |  | Div15.5 |  |
| PG-H-PR-SL-IR-MA-20 |  | Bulbblers and Spreyers | 2d | 2026-03-25 A | 2026-03-26 A | PG-H-PR-SL-IR-MS-20 | 100% |  |  | COST [6098.34] | 6,098.34 | 6,098.34 | H | DIV-15 |  | Div15.5 |  |
|  | 9 | **ELECTRICAL WORK** |  | 2026-03-25 | 2026-03-26 |  |  |  |  |  |  |  |  |  |  |  |  |
| PG-H-PR-SL-EL-MA-10 |  | Wiring Devices Materials | 2d | 2026-03-25 A | 2026-03-26 A | PG-H-PR-SL-EL-MS-10 | 100% |  |  | COST [407.52] | 407.52 | 407.52 | H | DIV-16 |  |  | Div16.9 |
|  | 10 | **FIRE FIGHTING WORK** |  | 2026-03-25 | 2026-03-26 |  |  |  |  |  |  |  |  |  |  |  |  |
| PG-H-PR-SL-FF-MA-10 |  | Fire Extinguishers | 2d | 2026-03-25 A | 2026-03-26 A | PG-H-PR-SL-FF-MS-10 | 100% |  |  | COST [22.71] | 22.71 | 22.71 | H | DIV-15 |  | Div15.1 |  |
|  | PR | **PROCUREMENT** |  | 2026-02-26 | 2026-11-03 |  |  |  |  |  |  |  |  |  |  |  |  |
|  | 1 | **LONG LEAD ITEMS** |  | 2026-03-05 | 2026-11-03 |  |  |  |  |  |  |  |  |  |  |  |  |
|  | 2 | **PURCHASE ORDER** |  | 2026-03-05 | 2026-09-08 |  |  |  |  |  |  |  |  |  |  |  |  |
|  | 1 | **EXTERNAL / LANDSCAPE WORK** |  | 2026-03-07 | 2026-05-06 |  |  |  |  |  |  |  |  |  |  |  |  |
| PG-H-PR-LL-LS-PO-20 |  | Benches, Seats (Rectangular & Circular) | 49.25d | 2026-03-07 A | 2026-05-06 A | PG-H-PR-LL-LS-MA-20 | 100% | 2026-03-07 | 2026-05-07 |  |  |  | H |  |  |  |  |
| PG-H-PR-LL-LS-PO-30 |  | Fence, gates and accessories | 43.25d | 2026-03-14 A | 2026-05-06 A | PG-H-PR-LL-LS-MA-30 | 100% | 2026-03-14 | 2026-05-07 |  |  |  | H |  |  |  |  |
| PG-H-PR-LL-LS-PO-10 |  | Bike and Walk Path Materials | 33.25d | 2026-03-30 A | 2026-05-06 A | PG-H-PR-LL-LS-MA-10 | 100% | 2026-03-30 | 2026-05-07 |  |  |  | H |  |  |  |  |

| ID | WBS | Activity | Duration | Start | Finish | Predecessors | Complete | Planned start | Planned finish | H,Q,T-Location |
| --- | --- | --- | --- | --- | --- | --- | --- | --- | --- | --- |
|  | 2 | **SPORTS & RECREATIONAL FACILITIES WORK** |  | 2026-03-28 | 2026-05-06 |  |  |  |  |  |
| PG-H-PR-LL-SP-PO-20 |  | Tartan Floor | 35.25d | 2026-03-28 A | 2026-05-06 A | PG-H-PR-LL-SP-MA-20 | 100% | 2026-03-28 | 2026-05-07 | H |
| PG-H-PR-LL-SP-PO-10 |  | Football Playground Materials (Flooring, goal post, nets, paints, etc) | 34.25d | 2026-03-29 A | 2026-05-06 A | PG-H-PR-LL-SP-MA-10 | 100% | 2026-03-29 | 2026-05-07 | H |
|  | 3 | **CONCRETE WORK** |  | 2026-03-18 | 2026-05-06 |  |  |  |  |  |
| PG-H-PR-LL-CO-PO-10 |  | Autoclaved Aerated Panel | 39.25d | 2026-03-18 A | 2026-05-06 A | PG-H-PR-LL-CO-MA-10 | 100% | 2026-03-18 | 2026-05-07 | H |
|  | 5 | **METAL WORK** |  | 2026-03-24 | 2026-05-06 |  |  |  |  |  |
| PG-H-PR-LL-MT-PO-10 |  | Metal Doors | 38.25d | 2026-03-24 A | 2026-05-06 A | PG-H-PR-LL-MT-MA-10 | 100% | 2026-03-24 | 2026-05-07 | H |
| PG-H-PR-LL-MT-PO-20 |  | Curtain Wall | 38.25d | 2026-03-24 A | 2026-05-06 A | PG-H-PR-LL-MT-MA-20 | 100% | 2026-03-24 | 2026-05-07 | H |
|  | 7 | **PLUMBING WORK** |  | 2026-03-29 | 2026-05-06 |  |  |  |  |  |
| PG-H-PR-LL-PB-PO-10 |  | Booster Pump | 34.25d | 2026-03-29 A | 2026-05-06 A | PG-H-PR-LL-PB-MA-10 | 100% | 2026-03-29 | 2026-05-07 | H |
| PG-H-PR-LL-PB-PO-20 |  | GRP Sectional Panel Water Tanks (4x3x3m) | 33.25d | 2026-03-30 A | 2026-05-06 A | PG-H-PR-LL-PB-MA-20 | 100% | 2026-03-30 | 2026-05-07 | H |
|  | 8 | **IRRIGATION WORK** |  | 2026-03-05 | 2026-05-06 |  |  |  |  |  |
| PG-H-PR-LL-IR-PO-20 |  | Irrigation Control System | 50.25d | 2026-03-05 A | 2026-05-06 A | PG-H-PR-LL-IR-MA-20 | 100% | 2026-03-05 | 2026-05-07 | H |
| PG-H-PR-LL-IR-PO-10 |  | HDPE Pipes | 49.25d | 2026-03-07 A | 2026-05-06 A | PG-H-PR-LL-IR-MA-10 | 100% | 2026-03-07 | 2026-05-07 | H |
|  | 9 | **ELECTRICAL WORK** |  | 2026-05-11 | 2026-09-08 |  |  |  |  |  |
| PG-H-PR-LL-EL-PO-10 |  | Main Distribution Board(Completed) | 35.25d | 2026-05-11 A | 2026-06-24 A | PG-H-PR-LL-EL-MA-10 SS | 100% | 2026-05-11 | 2026-06-25 | H |
| PG-H-PR-LL-EL-PO-20 |  | Power Panels (Pump, Street Light)(Completed) | 35.25d | 2026-05-11 A | 2026-06-24 A | PG-H-PR-LL-EL-MA-20 SS | 100% | 2026-05-11 | 2026-06-25 | H |
| PG-H-PR-LL-EL-PO-30 |  | Site Lighting Poles(Completed) | 35.25d | 2026-05-11 A | 2026-06-24 A | PG-H-PR-LL-EL-MA-30 SS | 100% | 2026-05-11 | 2026-06-25 | H |
| PG-H-PR-LL-EL-PO-40 |  | Lighting Fixtures(Completed) | 35.25d | 2026-05-11 A | 2026-06-24 A | PG-H-PR-LL-EL-MA-40 SS | 100% | 2026-05-11 | 2026-06-25 | H |
| PG-H-PR-LL-EL-PO-50 |  | Grounding System Materials (Earth pit rod, LPS, etc)(Completed) | 35.25d | 2026-05-11 A | 2026-06-24 A | PG-H-PR-LL-EL-MA-50 SS | 100% | 2026-05-11 | 2026-06-25 | H |
| PG-H-PR-LL-EL-PO-60 |  | Telecommunications & Data System Materials (Telephone outlet, CCTV, etc)(Completed) | 35.25d | 2026-05-11 A | 2026-06-24 A | PG-H-PR-LL-EL-MA-60 SS | 100% | 2026-05-11 | 2026-06-25 | H |
| PG-H-PR-LL-EL-PO-70 |  | Security and Access Control System Materials(Completed) | 35.25d | 2026-05-11 A | 2026-06-24 A | PG-H-PR-LL-EL-MA-70 SS | 100% | 2026-05-11 | 2026-06-25 | H |
| PG-H-PR-LL-EL-PO-80 |  | Fire Alarm System Materials(Completed) | 35.25d | 2026-05-11 A | 2026-06-24 A | PG-H-PR-LL-EL-MA-80 SS | 100% | 2026-05-11 | 2026-06-25 | H |
| PG-H-PR-LL-EL-PO-40_R |  | Lighting Fixtures(Remaining) | 7d | 2026-07-23 A | 2026-07-23 A | PG-H-PR-LL-EL-PO-40, PG-H-PR-LL-EL-MA-40_R | 100% | 2026-08-06 | 2026-08-13 | H |
| PG-H-PR-LL-EL-PO-10_R |  | Main Distribution Board(Remaining) | 7d | 2026-08-05 A | 2026-09-08 A | PG-H-PR-LL-EL-PO-10, PG-H-PR-LL-EL-MA-10_R SS | 100% | 2026-08-18 | 2026-08-25 | H |
| PG-H-PR-LL-EL-PO-20_R |  | Power Panels (Pump, Street Light)(Remaining) | 7d | 2026-08-05 A | 2026-09-08 A | PG-H-PR-LL-EL-PO-20, PG-H-PR-LL-EL-MA-20_R SS | 100% | 2026-08-18 | 2026-08-25 | H |
| PG-H-PR-LL-EL-PO-30_R |  | Site Lighting Poles(Remaining) | 7d | 2026-08-05 A | 2026-09-08 A | PG-H-PR-LL-EL-PO-30, PG-H-PR-LL-EL-MA-30_R SS | 100% | 2026-08-18 | 2026-08-25 | H |
| PG-H-PR-LL-EL-PO-50_R |  | Grounding System Materials (Earth pit rod, LPS, etc)(Remaining) | 7d | 2026-08-27 A | 2026-09-08 A | PG-H-PR-LL-EL-PO-50, PG-H-PR-LL-EL-MA-50_R, PG-H-PR-LL-EL-MA-50_R SS | 100% | 2026-09-12 | 2026-09-20 | H |
| PG-H-PR-LL-EL-PO-60_R |  | Telecommunications & Data System Materials (Telephone outlet, CCTV, etc)(Remaining) | 7d | 2026-08-27 A | 2026-09-08 A | PG-H-PR-LL-EL-PO-60, PG-H-PR-LL-EL-MA-60_R, PG-H-PR-LL-EL-MA-60_R SS | 100% | 2026-09-09 | 2026-09-16 | H |
| PG-H-PR-LL-EL-PO-70_R |  | Security and Access Control System Materials(Remaining) | 7d | 2026-08-27 A | 2026-09-08 A | PG-H-PR-LL-EL-PO-70, PG-H-PR-LL-EL-MA-70_R, PG-H-PR-LL-EL-MA-70_R SS | 100% | 2026-09-09 | 2026-09-16 | H |
| PG-H-PR-LL-EL-PO-80_R |  | Fire Alarm System Materials(Remaining) | 7d | 2026-08-27 A | 2026-09-08 A | PG-H-PR-LL-EL-PO-80, PG-H-PR-LL-EL-MA-80_R, PG-H-PR-LL-EL-MA-80_R SS | 100% | 2026-09-09 | 2026-09-16 | H |

| ID | WBS | Activity | Duration | Start | Finish | Predecessors | Complete | Planned start | Planned finish | Total float | Free float | H,Q,T-Location |
| --- | --- | --- | --- | --- | --- | --- | --- | --- | --- | --- | --- | --- |
|  | 3 | **MANUFACTURE / FABRICATION** |  | 2026-04-01 | 2026-10-31 |  |  |  |  |  |  |  |
|  | 1 | **EXTERNAL / LANDSCAPE WORK** |  | 2026-05-05 | 2026-09-10 |  |  |  |  |  |  |  |
| PG-H-PR-LL-LS-MF-10 |  | Bike and Walk Path Materials(Completed) | 40.25d | 2026-05-05 A | 2026-06-24 A | PG-H-PR-LL-LS-PO-10 | 100% | 2026-05-05 | 2026-06-25 |  |  | H |
| PG-H-PR-LL-LS-MF-20 |  | Benches, Seats (Rectangular & Circular)(Completed) | 40.25d | 2026-05-05 A | 2026-06-24 A | PG-H-PR-LL-LS-PO-20 | 100% | 2026-05-05 | 2026-06-25 |  |  | H |
| PG-H-PR-LL-LS-MF-30 |  | Fence, gates and accessories(Completed) | 40.25d | 2026-05-05 A | 2026-06-24 A | PG-H-PR-LL-LS-PO-30 | 100% | 2026-05-05 | 2026-06-25 |  |  | H |
| PG-H-PR-LL-LS-MF-30_R |  | Fence, gates and accessories(Remaining) | 5d | 2026-07-23 A | 2026-09-10 A | PG-H-PR-LL-LS-PO-30, PG-H-PR-LL-LS-MF-30 | 100% | 2026-07-26 | 2026-07-30 |  |  | H |
| PG-H-PR-LL-LS-MF-10_R |  | Bike and Walk Path Materials(Remaining) | 25d | 2026-07-30 A | 2026-09-10 A | PG-H-PR-LL-LS-PO-10, PG-H-PR-LL-LS-MF-10 | 100% | 2026-08-02 | 2026-08-30 |  |  | H |
| PG-H-PR-LL-LS-MF-20_R |  | Benches, Seats (Rectangular & Circular)(Remaining) | 25d | 2026-08-05 A | 2026-09-10 A | PG-H-PR-LL-LS-PO-20, PG-H-PR-LL-LS-MF-20 | 100% | 2026-08-09 | 2026-09-06 |  |  | H |
|  | 2 | **SPORTS & RECREATIONAL FACILITIES WORK** |  | 2026-05-05 | 2026-09-10 |  |  |  |  |  |  |  |
| PG-H-PR-LL-SP-MF-10 |  | Football Playground Materials (Flooring, goal post, nets, paints, etc)(Completed) | 40.25d | 2026-05-05 A | 2026-06-24 A | PG-H-PR-LL-SP-PO-10 | 100% | 2026-05-05 | 2026-06-25 |  |  | H |
| PG-H-PR-LL-SP-MF-20 |  | Tartan Floor(Completed) | 40.25d | 2026-05-05 A | 2026-06-24 A | PG-H-PR-LL-SP-PO-20 | 100% | 2026-05-05 | 2026-06-25 |  |  | H |
| PG-H-PR-LL-SP-MF-10_R |  | Football Playground Materials (Flooring, goal post, nets, paints, etc)(Remaining) | 25d | 2026-07-30 A | 2026-09-10 A | PG-H-PR-LL-SP-PO-10, PG-H-PR-LL-SP-MF-10 | 100% | 2026-08-02 | 2026-08-30 |  |  | H |
| PG-H-PR-LL-SP-MF-20_R |  | Tartan Floor(Remaining) | 25d | 2026-07-30 A | 2026-09-10 A | PG-H-PR-LL-SP-PO-20, PG-H-PR-LL-SP-MF-20 | 100% | 2026-08-02 | 2026-08-30 |  |  | H |
|  | 3 | **CONCRETE WORK** |  | 2026-04-01 | 2026-06-27 |  |  |  |  |  |  |  |
| PG-H-PR-LL-CO-MF-10 |  | Autoclaved Aerated Panel(Completed) | 69.25d | 2026-04-01 A | 2026-06-24 A | PG-H-PR-LL-CO-PO-10, PG-H-PR-LL-CO-PO-10 SS | 100% | 2026-04-01 | 2026-06-25 |  |  | H |
| PG-H-PR-LL-CO-MF-10_R |  | Autoclaved Aerated Panel(Remaining) | 10d | 2026-06-24 A | 2026-06-27 A | PG-H-PR-LL-CO-PO-10, PG-H-PR-LL-CO-PO-10 SS, PG-H-PR-LL-CO-MF-10 | 100% | 2026-07-12 | 2026-07-22 |  |  | H |
|  | 5 | **METAL WORK** |  | 2026-05-05 | 2026-10-31 |  |  |  |  |  |  |  |
| PG-H-PR-LL-MT-MF-10 |  | Metal Doors(Completed) | 40.25d | 2026-05-05 A | 2026-06-24 A | PG-H-PR-LL-MT-PO-10 | 100% | 2026-05-05 | 2026-06-25 |  |  | H |
| PG-H-PR-LL-MT-MF-20 |  | Curtain Wall(Completed) | 40.25d | 2026-05-05 A | 2026-06-24 A | PG-H-PR-LL-MT-PO-20 | 100% | 2026-05-05 | 2026-06-25 |  |  | H |
| PG-H-PR-LL-MT-MF-10_R |  | Metal Doors(Remaining) | 25d | 2026-09-26 A | 2026-10-02 A | PG-H-PR-LL-MT-PO-10, PG-H-PR-LL-MT-MF-10 | 100% | 2026-09-26 | 2026-10-24 |  |  | H |
| PG-H-PR-LL-MT-MF-20_R |  | Curtain Wall(Remaining) | 25d | 2026-10-03 | 2026-10-31 | PG-H-PR-LL-MT-PO-20, PG-H-PR-LL-MT-MF-20 |  |  |  | 1.6d | 0d | H |
|  | 7 | **PLUMBING WORK** |  | 2026-05-05 | 2026-09-10 |  |  |  |  |  |  |  |
| PG-H-PR-LL-PB-MF-10 |  | Booster Pump(Completed) | 40.25d | 2026-05-05 A | 2026-06-24 A | PG-H-PR-LL-PB-PO-10 | 100% | 2026-05-05 | 2026-06-25 |  |  | H |
| PG-H-PR-LL-PB-MF-20 |  | GRP Sectional Panel Water Tanks (4x3x3m)(Completed) | 40.25d | 2026-05-05 A | 2026-06-24 A | PG-H-PR-LL-PB-PO-20 | 100% | 2026-05-05 | 2026-06-25 |  |  | H |
| PG-H-PR-LL-PB-MF-10_R |  | Booster Pump(Remaining) | 25d | 2026-08-27 A | 2026-09-10 A | PG-H-PR-LL-PB-PO-10, PG-H-PR-LL-PB-MF-10 | 100% | 2026-08-29 | 2026-09-27 |  |  | H |
| PG-H-PR-LL-PB-MF-20_R |  | GRP Sectional Panel Water Tanks (4x3x3m)(Remaining) | 25d | 2026-08-27 A | 2026-09-10 A | PG-H-PR-LL-PB-PO-20, PG-H-PR-LL-PB-MF-20 | 100% | 2026-08-29 | 2026-09-27 |  |  | H |

| ID | WBS | Activity | Duration | Start | Finish | Predecessors | Complete | Remaining | Planned start | Planned finish | Total float | Free float | Resources | Cost | Actual cost | H,Q,T-Location | BOQ DIVISION | DIVISION-02-SITE WORKS |
| --- | --- | --- | --- | --- | --- | --- | --- | --- | --- | --- | --- | --- | --- | --- | --- | --- | --- | --- |
|  | 8 | **IRRIGATION WORK** |  | 2026-05-05 | 2026-09-10 |  |  |  |  |  |  |  |  |  |  |  |  |  |
| PG-H-PR-LL-IR-MF-10 |  | HDPE Pipes(Completed) | 40.25d | 2026-05-05 A | 2026-06-24 A | PG-H-PR-LL-IR-PO-10 | 100% |  | 2026-05-05 | 2026-06-25 |  |  |  |  |  | H |  |  |
| PG-H-PR-LL-IR-MF-20 |  | Irrigation Control System(Completed) | 40.25d | 2026-05-05 A | 2026-06-24 A | PG-H-PR-LL-IR-PO-20 | 100% |  | 2026-05-05 | 2026-06-25 |  |  |  |  |  | H |  |  |
| PG-H-PR-LL-IR-MF-10_R |  | HDPE Pipes(Remaining) | 12d | 2026-08-27 A | 2026-09-10 A | PG-H-PR-LL-IR-PO-10, PG-H-PR-LL-IR-MF-10 | 100% |  | 2026-08-29 | 2026-09-10 |  |  |  |  |  | H |  |  |
| PG-H-PR-LL-IR-MF-20_R |  | Irrigation Control System(Remaining) | 12d | 2026-08-27 A | 2026-09-10 A | PG-H-PR-LL-IR-PO-20, PG-H-PR-LL-IR-MF-20 | 100% |  | 2026-08-29 | 2026-09-10 |  |  |  |  |  | H |  |  |
|  | 9 | **ELECTRICAL WORK** |  | 2026-05-12 | 2026-09-10 |  |  |  |  |  |  |  |  |  |  |  |  |  |
| PG-H-PR-LL-EL-MF-10 |  | Main Distribution Board(Completed) | 34.25d | 2026-05-12 A | 2026-06-24 A | PG-H-PR-LL-EL-PO-10 SS | 100% |  | 2026-05-12 | 2026-06-25 |  |  |  |  |  | H |  |  |
| PG-H-PR-LL-EL-MF-20 |  | Power Panels (Pump, Street Light)(Completed) | 34.25d | 2026-05-12 A | 2026-06-24 A | PG-H-PR-LL-EL-PO-20 SS | 100% |  | 2026-05-12 | 2026-06-25 |  |  |  |  |  | H |  |  |
| PG-H-PR-LL-EL-MF-30 |  | Site Lighting Poles(Completed) | 34.25d | 2026-05-12 A | 2026-06-24 A | PG-H-PR-LL-EL-PO-30 SS | 100% |  | 2026-05-12 | 2026-06-25 |  |  |  |  |  | H |  |  |
| PG-H-PR-LL-EL-MF-40 |  | Lighting Fixtures(Completed) | 34.25d | 2026-05-12 A | 2026-06-24 A | PG-H-PR-LL-EL-PO-40 SS | 100% |  | 2026-05-12 | 2026-06-25 |  |  |  |  |  | H |  |  |
| PG-H-PR-LL-EL-MF-50 |  | Grounding System Materials (Earth pit rod, LPS, etc)(Completed) | 34.25d | 2026-05-12 A | 2026-06-24 A | PG-H-PR-LL-EL-PO-50 SS | 100% |  | 2026-05-12 | 2026-06-25 |  |  |  |  |  | H |  |  |
| PG-H-PR-LL-EL-MF-60 |  | Telecommunications & Data System Materials (Telephone outlet, CCTV, etc)(Completed) | 34.25d | 2026-05-12 A | 2026-06-24 A | PG-H-PR-LL-EL-PO-60 SS | 100% |  | 2026-05-12 | 2026-06-25 |  |  |  |  |  | H |  |  |
| PG-H-PR-LL-EL-MF-70 |  | Security and Access Control System Materials(Completed) | 34.25d | 2026-05-12 A | 2026-06-24 A | PG-H-PR-LL-EL-PO-70 SS | 100% |  | 2026-05-12 | 2026-06-25 |  |  |  |  |  | H |  |  |
| PG-H-PR-LL-EL-MF-80 |  | Fire Alarm System Materials(Completed) | 34.25d | 2026-05-12 A | 2026-06-24 A | PG-H-PR-LL-EL-PO-80 SS | 100% |  | 2026-05-12 | 2026-06-25 |  |  |  |  |  | H |  |  |
| PG-H-PR-LL-EL-MF-10_R |  | Main Distribution Board(Remaining) | 13d | 2026-07-30 A | 2026-09-10 A | PG-H-PR-LL-EL-MF-10, PG-H-PR-LL-EL-PO-10_R FF | 100% |  | 2026-08-22 | 2026-09-05 |  |  |  |  |  | H |  |  |
| PG-H-PR-LL-EL-MF-20_R |  | Power Panels (Pump, Street Light)(Remaining) | 13d | 2026-07-30 A | 2026-09-10 A | PG-H-PR-LL-EL-MF-20, PG-H-PR-LL-EL-PO-20_R FF | 100% |  | 2026-08-22 | 2026-09-05 |  |  |  |  |  | H |  |  |
| PG-H-PR-LL-EL-MF-30_R |  | Site Lighting Poles(Remaining) | 25d | 2026-07-30 A | 2026-09-10 A | PG-H-PR-LL-EL-MF-30, PG-H-PR-LL-EL-PO-30_R FF | 100% |  | 2026-08-22 | 2026-09-19 |  |  |  |  |  | H |  |  |
| PG-H-PR-LL-EL-MF-40_R |  | Lighting Fixtures(Remaining) | 25d | 2026-07-30 A | 2026-09-10 A | PG-H-PR-LL-EL-PO-40_R, PG-H-PR-LL-EL-MF-40 | 100% |  | 2026-08-02 | 2026-08-30 |  |  |  |  |  | H |  |  |
| PG-H-PR-LL-EL-MF-50_R |  | Grounding System Materials (Earth pit rod, LPS, etc)(Remaining) | 13d | 2026-08-27 A | 2026-09-10 A | PG-H-PR-LL-EL-PO-50_R, PG-H-PR-LL-EL-MF-50, PG-H-PR-LL-EL-PO-50_R SS | 100% |  | 2026-09-20 | 2026-10-06 |  |  |  |  |  | H |  |  |
| PG-H-PR-LL-EL-MF-60_R |  | Telecommunications & Data System Materials (Telephone outlet, CCTV, etc)(Remaining) | 25d | 2026-08-27 A | 2026-09-10 A | PG-H-PR-LL-EL-PO-60_R, PG-H-PR-LL-EL-MF-60, PG-H-PR-LL-EL-PO-60_R SS | 100% |  | 2026-09-17 | 2026-10-17 |  |  |  |  |  | H |  |  |
| PG-H-PR-LL-EL-MF-70_R |  | Security and Access Control System Materials(Remaining) | 25d | 2026-08-27 A | 2026-09-10 A | PG-H-PR-LL-EL-PO-70_R, PG-H-PR-LL-EL-MF-70, PG-H-PR-LL-EL-PO-70_R SS | 100% |  | 2026-09-17 | 2026-10-17 |  |  |  |  |  | H |  |  |
| PG-H-PR-LL-EL-MF-80_R |  | Fire Alarm System Materials(Remaining) | 25d | 2026-08-27 A | 2026-09-10 A | PG-H-PR-LL-EL-PO-80_R, PG-H-PR-LL-EL-MF-80, PG-H-PR-LL-EL-PO-80_R SS | 100% |  | 2026-09-17 | 2026-10-17 |  |  |  |  |  | H |  |  |
|  | 4 | **DELIVERY TO SITE** |  | 2026-05-06 | 2026-11-03 |  |  |  |  |  |  |  |  |  |  |  |  |  |
|  | 1 | **EXTERNAL / LANDSCAPE WORK** |  | 2026-05-06 | 2026-10-04 |  |  |  |  |  |  |  |  |  |  |  |  |  |
| PG-H-PR-LL-LS-DL-10 |  | Bike and Walk Path Materials(Completed) | 38d | 2026-05-06 A | 2026-06-24 A | PG-H-PR-LL-LS-MF-10 SS | 100% |  | 2026-05-07 | 2026-06-24 |  |  | COST [103704] | 103,704.3 | 103,704.3 | H | DIV-2 | Div-2.3 |
| PG-H-PR-LL-LS-DL-20 |  | Benches, Seats (Rectangular & Circular)(Completed) | 38d | 2026-05-06 A | 2026-06-24 A | PG-H-PR-LL-LS-MF-20 SS | 100% |  | 2026-05-07 | 2026-06-24 |  |  | COST [28474.6] | 28,474.6 | 28,474.6 | H | DIV-2 | Div-2.3 |
| PG-H-PR-LL-LS-DL-30 |  | Fence, gates and accessories(Completed) | 38d | 2026-05-06 A | 2026-06-24 A | PG-H-PR-LL-LS-MF-30 SS | 100% |  | 2026-05-07 | 2026-06-24 |  |  | COST [11847.4] | 11,847.38 | 11,847.38 | H | DIV-2 | Div-2.3 |
| PG-H-PR-LL-LS-DL-30_R |  | Fence, gates and accessories(Remaining) | 5d | 2026-07-22 A | 2026-09-19 A | PG-H-PR-LL-LS-DL-30, PG-H-PR-LL-LS-MF-30_R SS | 100% |  | 2026-08-01 | 2026-08-05 |  |  | COST [17771.1] | 17,771.08 | 17,771.08 | H | DIV-2 | Div-2.3 |
| PG-H-PR-LL-LS-DL-10_R |  | Bike and Walk Path Materials(Remaining) | 12d | 2026-08-06 A | 2026-10-03 | PG-H-PR-LL-LS-DL-10, PG-H-PR-LL-LS-MF-10_R SS | 95% | 0.6d | 2026-08-23 | 2026-09-06 | 20.8d | 40.5d | COST [44444.7] | 44,444.7 | 42,222.46 | H | DIV-2 | Div-2.3 |
| PG-H-PR-LL-LS-DL-20_R |  | Benches, Seats (Rectangular & Circular)(Remaining) | 12d | 2026-08-20 A | 2026-10-04 | PG-H-PR-LL-LS-MF-20_R, PG-H-PR-LL-LS-DL-20, PG-H-PR-LL-LS-MF-20_R SS | 85% | 1.8d | 2026-09-12 | 2026-09-27 | 25.2d | 13.95d | COST [28474.6] | 28,474.6 | 24,203.41 | H | DIV-2 | Div-2.3 |

| ID | WBS | Activity | Duration | Start | Finish | Predecessors | Complete | Remaining | Planned start | Planned finish | Total float | Free float | Resources | Cost | Actual cost | H,Q,T-Location | BOQ DIVISION | DIVISION-02-SITE WORKS | DIVISION-3 CONCRETE | DIVISION 8- DOORS & WINDOWS | DIVISION 15-MECHANICAL WORKS | DIVISION 16 ELECTRICAL WORKS |
| --- | --- | --- | --- | --- | --- | --- | --- | --- | --- | --- | --- | --- | --- | --- | --- | --- | --- | --- | --- | --- | --- | --- |
|  | 2 | **SPORTS & RECREATIONAL FACILITIES WORK** |  | 2026-05-06 | 2026-10-04 |  |  |  |  |  |  |  |  |  |  |  |  |  |  |  |  |  |
| PG-H-PR-LL-SP-DL-10 |  | Football Playground Materials (Flooring, goal post, nets, paints, etc)(Completed) | 38d | 2026-05-06 A | 2026-06-24 A | PG-H-PR-LL-SP-MF-10 SS | 100% |  | 2026-05-07 | 2026-06-24 |  |  | COST [64212.8] | 64,212.75 | 64,212.75 | H | DIV-2 | Div-2.3 |  |  |  |  |
| PG-H-PR-LL-SP-DL-20 |  | Tartan Floor(Completed) | 38d | 2026-05-06 A | 2026-06-24 A | PG-H-PR-LL-SP-MF-20 SS | 100% |  | 2026-05-07 | 2026-06-24 |  |  | COST [121622] | 121,621.5 | 121,621.5 | H | DIV-2 | Div-2.3 |  |  |  |  |
| PG-H-PR-LL-SP-DL-10_R |  | Football Playground Materials (Flooring, goal post, nets, paints, etc)(Remaining) | 12d | 2026-08-06 A | 2026-10-03 | PG-H-PR-LL-SP-DL-10, PG-H-PR-LL-SP-MF-10_R SS | 95% | 0.6d | 2026-08-29 | 2026-09-12 | 43.7d | 9.7d | COST [64212.8] | 64,212.75 | 61,002.11 | H | DIV-2 | Div-2.3 |  |  |  |  |
| PG-H-PR-LL-SP-DL-20_R |  | Tartan Floor(Remaining) | 12d | 2026-08-06 A | 2026-10-04 | PG-H-PR-LL-SP-DL-20, PG-H-PR-LL-SP-MF-20_R SS | 90% | 1.2d | 2026-08-29 | 2026-09-12 | 43.7d | 9.7d | COST [99508.5] | 99,508.5 | 89,557.65 | H | DIV-2 | Div-2.3 |  |  |  |  |
|  | 3 | **CONCRETE WORK** |  | 2026-05-06 | 2026-07-07 |  |  |  |  |  |  |  |  |  |  |  |  |  |  |  |  |  |
| PG-H-PR-LL-CO-DL-10 |  | Autoclaved Aerated Panel(Completed) | 38d | 2026-05-06 A | 2026-06-24 A | PG-H-PR-LL-CO-MF-10 SS | 100% |  | 2026-05-07 | 2026-06-24 |  |  | COST [7654.5] | 7,654.5 | 7,654.5 | H | DIV-3 |  | Div-3 |  |  |  |
| PG-H-PR-LL-CO-DL-10_R |  | Autoclaved Aerated Panel(Remaining) | 5d | 2026-07-06 A | 2026-07-07 A | PG-H-PR-LL-CO-DL-10, PG-H-PR-LL-CO-MF-10_R | 100% |  | 2026-07-23 | 2026-07-28 |  |  | COST [5103] | 5,103 | 5,103 | H | DIV-3 |  | Div-3 |  |  |  |
|  | 5 | **METAL WORK** |  | 2026-05-06 | 2026-11-03 |  |  |  |  |  |  |  |  |  |  |  |  |  |  |  |  |  |
| PG-H-PR-LL-MT-DL-10 |  | Metal Doors(Completed) | 38d | 2026-05-06 A | 2026-06-24 A | PG-H-PR-LL-MT-MF-10 SS | 100% |  | 2026-05-07 | 2026-06-24 |  |  | COST [459.11] | 459.11 | 459.11 | H | DIV-8 |  |  | Div-8.1 |  |  |
| PG-H-PR-LL-MT-DL-20 |  | Curtain Wall(Completed) | 38d | 2026-05-06 A | 2026-06-24 A | PG-H-PR-LL-MT-MF-20 SS | 100% |  | 2026-05-07 | 2026-06-24 |  |  | COST [2742.12] | 2,742.12 | 2,742.12 | H | DIV-8 |  |  | Div-8.2 |  |  |
| PG-H-PR-LL-MT-DL-10_R |  | Metal Doors(Remaining) | 12d | 2026-08-27 A | 2026-10-05 | PG-H-PR-LL-MT-MF-10_R, PG-H-PR-LL-MT-DL-10, PG-H-PR-LL-MT-MF-10_R FF | 80% | 2.4d | 2026-09-28 | 2026-10-11 | 25.1d | 4.5d | COST [688.66] | 688.66 | 550.93 | H | DIV-8 |  |  | Div-8.1 |  |  |
| PG-H-PR-LL-MT-DL-20_R |  | Curtain Wall(Remaining) | 12d | 2026-08-27 A | 2026-11-03 | PG-H-PR-LL-MT-MF-20_R, PG-H-PR-LL-MT-DL-20, PG-H-PR-LL-MT-MF-20_R FF | 80% | 2.4d | 2026-09-28 | 2026-10-11 | 1.6d | 0d | COST [4113.18] | 4,113.18 | 3,290.54 | H | DIV-8 |  |  | Div-8.2 |  |  |
|  | 7 | **PLUMBING WORK** |  | 2026-05-06 | 2026-10-05 |  |  |  |  |  |  |  |  |  |  |  |  |  |  |  |  |  |
| PG-H-PR-LL-PB-DL-10 |  | Booster Pump(Completed) | 38d | 2026-05-06 A | 2026-06-24 A | PG-H-PR-LL-PB-MF-10 SS | 100% |  | 2026-05-07 | 2026-06-24 |  |  | COST [6545.88] | 6,545.88 | 6,545.88 | H | DIV-15 |  |  |  | Div15.2 |  |
| PG-H-PR-LL-PB-DL-20 |  | GRP Sectional Panel Water Tanks (4x3x3m)(Completed) | 38d | 2026-05-06 A | 2026-06-24 A | PG-H-PR-LL-PB-MF-20 SS | 100% |  | 2026-05-07 | 2026-06-24 |  |  | COST [6248.34] | 6,248.34 | 6,248.34 | H | DIV-15 |  |  |  | Div15.2 |  |
| PG-H-PR-LL-PB-DL-10_R |  | Booster Pump(Remaining) | 12d | 2026-08-27 A | 2026-09-21 A | PG-H-PR-LL-PB-MF-10_R, PG-H-PR-LL-PB-DL-10, PG-H-PR-LL-PB-MF-10_R SS | 100% |  | 2026-09-28 | 2026-10-11 |  |  | COST [9818.82] | 9,818.82 | 9,818.82 | H | DIV-15 |  |  |  | Div15.2 |  |
| PG-H-PR-LL-PB-DL-20_R |  | GRP Sectional Panel Water Tanks (4x3x3m)(Remaining) | 12d | 2026-08-27 A | 2026-10-05 | PG-H-PR-LL-PB-MF-20_R, PG-H-PR-LL-PB-DL-20, PG-H-PR-LL-PB-MF-20_R SS | 80% | 2.4d | 2026-09-28 | 2026-10-11 | 0.1d | 19.8d | COST [9372.51] | 9,372.51 | 7,498.01 | H | DIV-15 |  |  |  | Div15.2 |  |
|  | 8 | **IRRIGATION WORK** |  | 2026-05-06 | 2026-09-04 |  |  |  |  |  |  |  |  |  |  |  |  |  |  |  |  |  |
| PG-H-PR-LL-IR-DL-10 |  | HDPE Pipes(Completed) | 38d | 2026-05-06 A | 2026-06-24 A | PG-H-PR-LL-IR-MF-10 SS | 100% |  | 2026-05-07 | 2026-06-24 |  |  | COST [37226.2] | 37,226.25 | 37,226.25 | H | DIV-15 |  |  |  | Div15.5 |  |
| PG-H-PR-LL-IR-DL-20 |  | Irrigation Control System(Completed) | 38d | 2026-05-06 A | 2026-06-24 A | PG-H-PR-LL-IR-MF-20 SS | 100% |  | 2026-05-07 | 2026-06-24 |  |  | COST [16364.7] | 16,364.7 | 16,364.7 | H | DIV-15 |  |  |  | Div15.5 |  |
| PG-H-PR-LL-IR-DL-10_R |  | HDPE Pipes(Remaining) | 8d | 2026-08-20 A | 2026-08-27 A | PG-H-PR-LL-IR-MF-10_R, PG-H-PR-LL-IR-DL-10, PG-H-PR-LL-IR-MF-10_R SS | 100% |  | 2026-09-06 | 2026-09-14 |  |  | COST [37226.2] | 37,226.25 | 37,226.25 | H | DIV-15 |  |  |  | Div15.5 |  |
| PG-H-PR-LL-IR-DL-20_R |  | Irrigation Control System(Remaining) | 8d | 2026-08-20 A | 2026-09-04 A | PG-H-PR-LL-IR-MF-20_R, PG-H-PR-LL-IR-DL-20, PG-H-PR-LL-IR-MF-20_R FF | 100% |  | 2026-09-06 | 2026-09-14 |  |  | COST [24547] | 24,547.05 | 24,547.05 | H | DIV-15 |  |  |  | Div15.5 |  |
|  | 9 | **ELECTRICAL WORK** |  | 2026-05-13 | 2026-10-04 |  |  |  |  |  |  |  |  |  |  |  |  |  |  |  |  |  |
| PG-H-PR-LL-EL-DL-10 |  | Main Distribution Board(Completed) | 33d | 2026-05-13 A | 2026-06-24 A | PG-H-PR-LL-EL-MF-10 SS | 100% |  |  |  |  |  | COST [1338.93] | 1,338.93 | 1,338.93 | H | DIV-16 |  |  |  |  | Div16.1 |
| PG-H-PR-LL-EL-DL-20 |  | Power Panels (Pump, Street Light)(Completed) | 33d | 2026-05-13 A | 2026-06-24 A | PG-H-PR-LL-EL-MF-20 SS | 100% |  |  |  |  |  | COST [1071.14] | 1,071.14 | 1,071.14 | H | DIV-16 |  |  |  |  | Div16.1 |
| PG-H-PR-LL-EL-DL-30 |  | Site Lighting Poles(Completed) | 33d | 2026-05-13 A | 2026-06-24 A | PG-H-PR-LL-EL-MF-30 SS | 100% |  |  |  |  |  | COST [57437.4] | 57,437.42 | 57,437.42 | H | DIV-16 |  |  |  |  | Div16.2 |
| PG-H-PR-LL-EL-DL-40 |  | Lighting Fixtures(Completed) | 33d | 2026-05-13 A | 2026-06-24 A | PG-H-PR-LL-EL-MF-40 SS | 100% |  |  |  |  |  | COST [3463.64] | 3,463.64 | 3,463.64 | H | DIV-16 |  |  |  |  | Div16.3 |
| PG-H-PR-LL-EL-DL-50 |  | Grounding System Materials (Earth pit rod, LPS, etc)(Completed) | 33d | 2026-05-13 A | 2026-06-24 A | PG-H-PR-LL-EL-MF-50 SS | 100% |  |  |  |  |  | COST [2711.31] | 2,711.31 | 2,711.31 | H | DIV-16 |  |  |  |  | Div16.6 |
| PG-H-PR-LL-EL-DL-60 |  | Telecommunications & Data System Materials (Telephone outlet, CCTV, etc)(Completed) | 33d | 2026-05-13 A | 2026-06-24 A | PG-H-PR-LL-EL-MF-60 SS | 100% |  |  |  |  |  | COST [2644.33] | 2,644.33 | 2,644.33 | H | DIV-16 |  |  |  |  | Div16.4 |
| PG-H-PR-LL-EL-DL-70 |  | Security and Access Control System Materials(Completed) | 33d | 2026-05-13 A | 2026-06-24 A | PG-H-PR-LL-EL-MF-70 SS | 100% |  |  |  |  |  | COST [3347.73] | 3,347.73 | 3,347.73 | H | DIV-16 |  |  |  |  | Div16.5 |
| PG-H-PR-LL-EL-DL-80 |  | Fire Alarm System Materials(Completed) | 33d | 2026-05-13 A | 2026-06-24 A | PG-H-PR-LL-EL-MF-80 SS | 100% |  |  |  |  |  | COST [2147.55] | 2,147.55 | 2,147.55 | H | DIV-16 |  |  |  |  | Div16.8 |
| PG-H-PR-LL-EL-DL-30_R |  | Site Lighting Poles(Remaining) | 12d | 2026-08-20 A | 2026-10-03 | PG-H-PR-LL-EL-DL-30, PG-H-PR-LL-EL-MF-30_R, PG-H-PR-LL-EL-MF-30_R SS | 95% | 0.6d | 2026-09-06 | 2026-09-20 | 7d | 32.35d | COST [134021] | 134,020.66 | 127,319.62 | H | DIV-16 |  |  |  |  | Div16.2 |
| PG-H-PR-LL-EL-DL-40_R |  | Lighting Fixtures(Remaining) | 12d | 2026-08-20 A | 2026-10-04 | PG-H-PR-LL-EL-DL-40, PG-H-PR-LL-EL-MF-40_R, PG-H-PR-LL-EL-MF-40_R SS | 85% | 1.8d | 2026-09-06 | 2026-09-20 | 11.8d | 2.45d | COST [8081.83] | 8,081.83 | 6,869.55 | H | DIV-16 |  |  |  |  | Div16.3 |
| PG-H-PR-LL-EL-DL-10_R |  | Main Distribution Board(Remaining) | 8d | 2026-08-27 A | 2026-10-04 | PG-H-PR-LL-EL-DL-10, PG-H-PR-LL-EL-MF-10_R, PG-H-PR-LL-EL-MF-10_R SS | 85% | 1.2d | 2026-09-05 | 2026-09-14 | -0.6d | 24.75d | COST [3124.17] | 3,124.17 | 2,655.54 | H | DIV-16 |  |  |  |  | Div16.1 |
| PG-H-PR-LL-EL-DL-20_R |  | Power Panels (Pump, Street Light)(Remaining) | 8d | 2026-08-27 A | 2026-10-04 | PG-H-PR-LL-EL-DL-20, PG-H-PR-LL-EL-MF-20_R, PG-H-PR-LL-EL-MF-20_R SS | 85% | 1.2d | 2026-09-05 | 2026-09-14 | 1.4d | 26.75d | COST [2499.34] | 2,499.34 | 2,124.44 | H | DIV-16 |  |  |  |  | Div16.1 |
| PG-H-PR-LL-EL-DL-50_R |  | Grounding System Materials (Earth pit rod, LPS, etc)(Remaining) | 8d | 2026-08-27 A | 2026-10-04 | PG-H-PR-LL-EL-DL-50, PG-H-PR-LL-EL-MF-50_R, PG-H-PR-LL-EL-MF-50_R SS | 85% | 1.2d | 2026-10-06 | 2026-10-15 | -3.6d | 21.75d | COST [6326.4] | 6,326.4 | 5,377.44 | H | DIV-16 |  |  |  |  | Div16.6 |
| PG-H-PR-LL-EL-DL-60_R |  | Telecommunications & Data System Materials (Telephone outlet, CCTV, etc)(Remaining) | 12d | 2026-08-27 A | 2026-10-04 | PG-H-PR-LL-EL-DL-60, PG-H-PR-LL-EL-MF-60_R, PG-H-PR-LL-EL-MF-60_R SS | 85% | 1.8d | 2026-10-18 | 2026-10-31 | 15.8d | 41.15d | COST [6170.09] | 6,170.09 | 5,244.58 | H | DIV-16 |  |  |  |  | Div16.4 |
| PG-H-PR-LL-EL-DL-70_R |  | Security and Access Control System Materials(Remaining) | 12d | 2026-08-27 A | 2026-10-04 | PG-H-PR-LL-EL-DL-70, PG-H-PR-LL-EL-MF-70_R, PG-H-PR-LL-EL-MF-70_R SS | 85% | 1.8d | 2026-10-18 | 2026-10-31 | 33.55d | 55.15d | COST [7811.37] | 7,811.37 | 6,639.66 | H | DIV-16 |  |  |  |  | Div16.5 |
| PG-H-PR-LL-EL-DL-80_R |  | Fire Alarm System Materials(Remaining) | 12d | 2026-08-27 A | 2026-10-04 | PG-H-PR-LL-EL-DL-80, PG-H-PR-LL-EL-MF-80_R, PG-H-PR-LL-EL-MF-80_R SS | 85% | 1.8d | 2026-10-18 | 2026-10-31 | 18.8d | 44.15d | COST [5010.96] | 5,010.96 | 4,259.31 | H | DIV-16 |  |  |  |  | Div16.8 |

| ID | WBS | Activity | Duration | Start | Finish | Predecessors | Complete | Planned start | Planned finish | H,Q,T-Location |
| --- | --- | --- | --- | --- | --- | --- | --- | --- | --- | --- |
|  | 2 | **SHORT LEAD ITEMS** |  | 2026-02-26 | 2026-10-15 |  |  |  |  |  |
|  | 1 | **MATERIAL SUBMITTALS** |  |  |  |  |  |  |  |  |
|  | 2 | **PURCHASE ORDER** |  | 2026-02-26 | 2026-08-27 |  |  |  |  |  |
|  | 1 | **EXTERNAL / LANDSCAPE WORK** |  | 2026-02-26 | 2026-08-27 |  |  |  |  |  |
| PG-H-PR-SL-LS-PO-10 |  | Backfilling Materials | 44.25d | 2026-02-26 A | 2026-04-22 A | PG-H-PR-SL-LS-MA-10 | 100% | 2026-02-26 | 2026-04-23 | H |
| PG-H-PR-SL-LS-PO-30 |  | Compacted Natural Ground Soil | 42.25d | 2026-03-01 A | 2026-04-22 A | PG-H-PR-SL-LS-MA-30 | 100% | 2026-03-01 | 2026-04-23 | H |
| PG-H-PR-SL-LS-PO-20 |  | Interlock tiles | 27.25d | 2026-03-30 A | 2026-04-29 A | PG-H-PR-SL-LS-MA-20 | 100% | 2026-03-30 | 2026-04-30 | H |
| PG-H-PR-SL-LS-PO-40 |  | Curb Stone | 22.25d | 2026-04-05 A | 2026-04-29 A | PG-H-PR-SL-LS-MA-40 | 100% | 2026-04-05 | 2026-04-30 | H |
| PG-H-PR-SL-LS-PO-50 |  | Thermoplastic pavement road marking(Completed) | 36.25d | 2026-05-10 A | 2026-06-24 A | PG-H-PR-SL-LS-MA-50 | 100% | 2026-05-10 | 2026-06-25 | H |
| PG-H-PR-SL-LS-PO-60 |  | Traffic Signages(Completed) | 36.25d | 2026-05-10 A | 2026-06-24 A | PG-H-PR-SL-LS-MA-60 | 100% | 2026-05-10 | 2026-06-25 | H |
| PG-H-PR-SL-LS-PO-70 |  | Trees(Completed) | 36.25d | 2026-05-10 A | 2026-06-24 A | PG-H-PR-SL-LS-MA-70 | 100% | 2026-05-10 | 2026-06-25 | H |
| PG-H-PR-SL-LS-PO-80 |  | Lawn(Completed) | 36.25d | 2026-05-10 A | 2026-06-24 A | PG-H-PR-SL-LS-MA-80 | 100% | 2026-05-10 | 2026-06-25 | H |
| PG-H-PR-SL-LS-PO-50_R |  | Thermoplastic pavement road marking(Remaining) | 7d | 2026-08-20 A | 2026-08-27 A | PG-H-PR-SL-LS-MA-50, PG-H-PR-SL-LS-PO-50 | 100% | 2026-08-29 | 2026-09-05 | H |
| PG-H-PR-SL-LS-PO-60_R |  | Traffic Signages(Remaining) | 7d | 2026-08-20 A | 2026-08-27 A | PG-H-PR-SL-LS-MA-60, PG-H-PR-SL-LS-PO-60 | 100% | 2026-08-29 | 2026-09-05 | H |
| PG-H-PR-SL-LS-PO-70_R |  | Trees(Remaining) | 7d | 2026-08-20 A | 2026-08-27 A | PG-H-PR-SL-LS-MA-70, PG-H-PR-SL-LS-PO-70 | 100% | 2026-08-29 | 2026-09-05 | H |
| PG-H-PR-SL-LS-PO-80_R |  | Lawn(Remaining) | 7d | 2026-08-20 A | 2026-08-27 A | PG-H-PR-SL-LS-MA-80, PG-H-PR-SL-LS-PO-80 | 100% | 2026-08-29 | 2026-09-05 | H |
|  | 3 | **CONCRETE WORK** |  | 2026-03-02 | 2026-04-22 |  |  |  |  |  |
| PG-H-PR-SL-CO-PO-10 |  | Steel Rebar | 41.25d | 2026-03-02 A | 2026-04-22 A | PG-H-PR-SL-CO-MA-10 | 100% | 2026-03-02 | 2026-04-23 | H |
| PG-H-PR-SL-CO-PO-20 |  | Concrete | 36.25d | 2026-03-08 A | 2026-04-22 A | PG-H-PR-SL-CO-MA-20 | 100% | 2026-03-08 | 2026-04-23 | H |
| PG-H-PR-SL-CO-PO-40 |  | CMU Block | 33.25d | 2026-03-11 A | 2026-04-22 A | PG-H-PR-SL-CO-MA-40 | 100% | 2026-03-11 | 2026-04-23 | H |
| PG-H-PR-SL-CO-PO-50 |  | Concrete Repair & Protection Materials | 32.25d | 2026-03-12 A | 2026-04-22 A | PG-H-PR-SL-CO-MA-50 | 100% | 2026-03-12 | 2026-04-23 | H |
| PG-H-PR-SL-CO-PO-30 |  | Screed | 23.25d | 2026-03-28 A | 2026-04-22 A | PG-H-PR-SL-CO-MA-30 | 100% | 2026-03-28 | 2026-04-23 | H |
|  | 4 | **ARCHITECTURAL & FINISHES WORK** |  | 2026-05-05 | 2026-05-12 |  |  |  |  |  |
| PG-H-PR-SL-AR-PO-10 |  | Ceramic tiles | 7.25d | 2026-05-05 A | 2026-05-12 A | PG-H-PR-SL-AR-MA-10 | 100% | 2026-05-05 | 2026-05-13 | H |
| PG-H-PR-SL-AR-PO-100 |  | Gypsum Boards | 7.25d | 2026-05-05 A | 2026-05-12 A | PG-H-PR-SL-AR-MA-100 | 100% | 2026-05-05 | 2026-05-13 | H |
| PG-H-PR-SL-AR-PO-110 |  | Specialities Materials (Toilet accessories, lockers, logo, etc) | 7.25d | 2026-05-05 A | 2026-05-12 A | PG-H-PR-SL-AR-MA-110 | 100% | 2026-05-05 | 2026-05-13 | H |
| PG-H-PR-SL-AR-PO-120 |  | Waterproofing System Materials | 7.25d | 2026-05-05 A | 2026-05-12 A | PG-H-PR-SL-AR-MA-120 | 100% | 2026-05-05 | 2026-05-13 | H |
| PG-H-PR-SL-AR-PO-20 |  | Anti-slip Granite tiles | 7.25d | 2026-05-05 A | 2026-05-12 A | PG-H-PR-SL-AR-MA-20 | 100% | 2026-05-05 | 2026-05-13 | H |
| PG-H-PR-SL-AR-PO-30 |  | Epoxy Paint | 7.25d | 2026-05-05 A | 2026-05-12 A | PG-H-PR-SL-AR-MA-30 | 100% | 2026-05-05 | 2026-05-13 | H |
| PG-H-PR-SL-AR-PO-40 |  | Cement Plaster | 7.25d | 2026-05-05 A | 2026-05-12 A | PG-H-PR-SL-AR-MA-40 | 100% | 2026-05-05 | 2026-05-13 | H |
| PG-H-PR-SL-AR-PO-50 |  | Acrylic Paint | 7.25d | 2026-05-05 A | 2026-05-12 A | PG-H-PR-SL-AR-MA-50 | 100% | 2026-05-05 | 2026-05-13 | H |
| PG-H-PR-SL-AR-PO-60 |  | Stone Cladding | 7.25d | 2026-05-05 A | 2026-05-12 A | PG-H-PR-SL-AR-MA-60 | 100% | 2026-05-05 | 2026-05-13 | H |
| PG-H-PR-SL-AR-PO-70 |  | Aluminum Plates | 7.25d | 2026-05-05 A | 2026-05-12 A | PG-H-PR-SL-AR-MA-70 | 100% | 2026-05-05 | 2026-05-13 | H |
| PG-H-PR-SL-AR-PO-80 |  | Phenolic Partition | 7.25d | 2026-05-05 A | 2026-05-12 A | PG-H-PR-SL-AR-MA-80 | 100% | 2026-05-05 | 2026-05-13 | H |
| PG-H-PR-SL-AR-PO-90 |  | Glass Partition | 7.25d | 2026-05-05 A | 2026-05-12 A | PG-H-PR-SL-AR-MA-90 | 100% | 2026-05-05 | 2026-05-13 | H |

| ID | WBS | Activity | Duration | Start | Finish | Predecessors | Complete | Planned start | Planned finish | H,Q,T-Location |
| --- | --- | --- | --- | --- | --- | --- | --- | --- | --- | --- |
|  | 5 | **METAL WORK** |  | 2026-05-05 | 2026-05-12 |  |  |  |  |  |
| PG-H-PR-SL-MT-PO-10 |  | Galvanized Steel Ladder | 7.25d | 2026-05-05 A | 2026-05-12 A | PG-H-PR-SL-MT-MA-10 | 100% | 2026-05-05 | 2026-05-13 | H |
| PG-H-PR-SL-MT-PO-20 |  | Galvanized Steel Roof Scupper | 7.25d | 2026-05-05 A | 2026-05-12 A | PG-H-PR-SL-MT-MA-20, PG-H-PR-SL-MT-PO-10 | 100% | 2026-05-05 | 2026-05-13 | H |
| PG-H-PR-SL-MT-PO-30 |  | Galvanized Steel Cover with frame | 7.25d | 2026-05-05 A | 2026-05-12 A | PG-H-PR-SL-MT-MA-30, PG-H-PR-SL-MT-PO-20 | 100% | 2026-05-05 | 2026-05-13 | H |
|  | 6 | **HVAC WORK** |  | 2026-05-05 | 2026-05-12 |  |  |  |  |  |
| PG-H-PR-SL-AC-PO-10 |  | Split Air Conditioning Unit | 7.25d | 2026-05-05 A | 2026-05-12 A | PG-H-PR-SL-AC-MA-10 | 100% | 2026-05-05 | 2026-05-13 | H |
| PG-H-PR-SL-AC-PO-20 |  | Air Duct | 7.25d | 2026-05-05 A | 2026-05-12 A | PG-H-PR-SL-AC-MA-20 | 100% | 2026-05-05 | 2026-05-13 | H |
| PG-H-PR-SL-AC-PO-30 |  | Diffusers and Grills | 7.25d | 2026-05-05 A | 2026-05-12 A | PG-H-PR-SL-AC-MA-30, PG-H-PR-SL-AC-PO-20 | 100% | 2026-05-05 | 2026-05-13 | H |
| PG-H-PR-SL-AC-PO-40 |  | Exhaust fans | 7.25d | 2026-05-05 A | 2026-05-12 A | PG-H-PR-SL-AC-MA-40, PG-H-PR-SL-AC-PO-10 | 100% | 2026-05-05 | 2026-05-13 | H |
|  | 7 | **PLUMBING WORK** |  | 2026-05-05 | 2026-05-12 |  |  |  |  |  |
| PG-H-PR-SL-PB-PO-10 |  | PPR Pipes & Valves | 7.25d | 2026-05-05 A | 2026-05-12 A | PG-H-PR-SL-PB-MA-10 | 100% | 2026-05-05 | 2026-05-13 | H |
| PG-H-PR-SL-PB-PO-20 |  | UPCV Pipes | 7.25d | 2026-05-05 A | 2026-05-12 A | PG-H-PR-SL-PB-MA-20 | 100% | 2026-05-05 | 2026-05-13 | H |
| PG-H-PR-SL-PB-PO-30 |  | Sanitary Drainage Fixtures | 7.25d | 2026-05-05 A | 2026-05-12 A | PG-H-PR-SL-PB-MA-30 | 100% | 2026-05-05 | 2026-05-13 | H |
|  | 8 | **IRRIGATION WORK** |  | 2026-05-05 | 2026-08-27 |  |  |  |  |  |
| PG-H-PR-SL-IR-PO-10 |  | Gate Valve including valve box(Completed) | 40.25d | 2026-05-05 A | 2026-06-24 A | PG-H-PR-SL-IR-MA-10, PG-H-EN-ME-SD-AP-80, PG-H-EN-ME-SD-AP-90 | 100% | 2026-05-05 | 2026-06-25 | H |
| PG-H-PR-SL-IR-PO-20 |  | Bulbblers and Spreyers(Completed) | 40.25d | 2026-05-05 A | 2026-06-24 A | PG-H-PR-SL-IR-MA-20, PG-H-EN-ME-SD-AP-90 | 100% | 2026-05-05 | 2026-06-25 | H |
| PG-H-PR-SL-IR-PO-10_R |  | Gate Valve including valve box(Remaining) | 7d | 2026-08-20 A | 2026-08-27 A | PG-H-PR-SL-IR-MA-10, PG-H-EN-ME-SD-AP-80, PG-H-EN-ME-SD-AP-90, PG-H-PR-SL-IR-PO-10 | 100% | 2026-08-29 | 2026-09-05 | H |
| PG-H-PR-SL-IR-PO-20_R |  | Bulbblers and Spreyers(Remaining) | 7d | 2026-08-20 A | 2026-08-27 A | PG-H-PR-SL-IR-MA-20, PG-H-EN-ME-SD-AP-90, PG-H-PR-SL-IR-PO-20 | 100% | 2026-08-29 | 2026-09-05 | H |
|  | 9 | **ELECTRICAL WORK** |  | 2026-05-12 | 2026-08-27 |  |  |  |  |  |
| PG-H-PR-SL-EL-PO-10 |  | Wiring Devices Materials(Completed) | 34.25d | 2026-05-12 A | 2026-06-24 A | PG-H-PR-SL-EL-MA-10 | 100% | 2026-05-12 | 2026-06-25 | H |
| PG-H-PR-SL-EL-PO-10_R |  | Wiring Devices Materials(Remaining) | 7d | 2026-08-27 A | 2026-08-27 A | PG-H-PR-SL-EL-MA-10, PG-H-PR-SL-EL-PO-10 | 100% | 2026-08-29 | 2026-09-05 | H |
|  | 10 | **FIRE FIGHTING WORK** |  | 2026-05-12 | 2026-08-27 |  |  |  |  |  |
| PG-H-PR-SL-FF-PO-10 |  | Fire Extinguishers(Completed) | 34.25d | 2026-05-12 A | 2026-06-24 A | PG-H-PR-SL-FF-MA-10 | 100% | 2026-05-12 | 2026-06-25 | H |
| PG-H-PR-SL-FF-PO-10_R |  | Fire Extinguishers(Remaining) | 7d | 2026-08-20 A | 2026-08-27 A | PG-H-PR-SL-FF-MA-10, PG-H-PR-SL-FF-PO-10 | 100% | 2026-08-29 | 2026-09-05 | H |

| ID | WBS | Activity | Duration | Start | Finish | Predecessors | Complete | Remaining | Planned start | Planned finish | Total float | Free float | Resources | Cost | Actual cost | H,Q,T-Location | BOQ DIVISION | DIVISION-02-SITE WORKS | DIVISION-3 CONCRETE | DIVISION 07-THERMAL & MOISTURE PROTECTIO | DIVISION-5-METALS | DIVISION 15-MECHANICAL WORKS | DIVISION 9-FINISHES | DIVISION 10-SPECIALTIES |
| --- | --- | --- | --- | --- | --- | --- | --- | --- | --- | --- | --- | --- | --- | --- | --- | --- | --- | --- | --- | --- | --- | --- | --- | --- |
|  | 3 | **DELIVERY TO SITE** |  | 2026-03-01 | 2026-10-15 |  |  |  |  |  |  |  |  |  |  |  |  |  |  |  |  |  |  |  |
|  | 1 | **EXTERNAL / LANDSCAPE WORK** |  | 2026-03-01 | 2026-10-05 |  |  |  |  |  |  |  |  |  |  |  |  |  |  |  |  |  |  |  |
| PG-H-PR-SL-LS-DL-10 |  | Backfilling Materials | 43d | 2026-03-01 A | 2026-04-24 A | PG-H-PR-SL-LS-PO-10 | 100% |  | 2026-03-01 | 2026-04-23 |  |  | COST [176175] | 176,175 | 176,175 | H | DIV-2 | Div-2.1 |  |  |  |  |  |  |
| PG-H-PR-SL-LS-DL-30 |  | Compacted Natural Ground Soil | 41d | 2026-03-03 A | 2026-04-24 A | PG-H-PR-SL-LS-PO-30 | 100% |  | 2026-03-03 | 2026-04-23 |  |  | COST [28080] | 28,080 | 28,080 | H | DIV-2 | Div-2.3 |  |  |  |  |  |  |
| PG-H-PR-SL-LS-DL-20 |  | Interlock tiles | 12d | 2026-04-30 A | 2026-05-13 A | PG-H-PR-SL-LS-PO-20, PG-H-PR-SL-LS-DL-10 | 100% |  |  |  |  |  | COST [157450] | 157,450.5 | 157,450.5 | H | DIV-2 | Div-2.2 |  |  |  |  |  |  |
| PG-H-PR-SL-LS-DL-40 |  | Curb Stone | 12d | 2026-04-30 A | 2026-05-13 A | PG-H-PR-SL-LS-PO-40, PG-H-PR-SL-LS-DL-10 | 100% |  |  |  |  |  | COST [188352] | 188,352 | 188,352 | H | DIV-2 | Div-2.3 |  |  |  |  |  |  |
| PG-H-PR-SL-LS-DL-50 |  | Thermoplastic pavement road marking(Completed) | 33d | 2026-05-13 A | 2026-06-24 A | PG-H-PR-SL-LS-DL-40, PG-H-PR-SL-LS-PO-50 SS | 100% |  |  |  |  |  | COST [1419.2] | 1,419.2 | 1,419.2 | H | DIV-2 | Div-2.3 |  |  |  |  |  |  |
| PG-H-PR-SL-LS-DL-60 |  | Traffic Signages(Completed) | 33d | 2026-05-13 A | 2026-06-24 A | PG-H-PR-SL-LS-PO-60 SS, PG-H-PR-SL-LS-DL-50 SS | 100% |  |  |  |  |  | COST [535.57] | 535.57 | 535.57 | H | DIV-2 | Div-2.3 |  |  |  |  |  |  |
| PG-H-PR-SL-LS-DL-70 |  | Trees(Completed) | 33d | 2026-05-13 A | 2026-06-24 A | PG-H-PR-SL-LS-PO-70 SS, PG-H-PR-SL-LS-DL-60 SS | 100% |  |  |  |  |  | COST [13046.3] | 13,046.26 | 13,046.26 | H | DIV-2 | Div-2.3 |  |  |  |  |  |  |
| PG-H-PR-SL-LS-DL-80 |  | Lawn(Completed) | 33d | 2026-05-13 A | 2026-06-24 A | PG-H-PR-SL-LS-PO-80 SS, PG-H-PR-SL-LS-DL-70 SS | 100% |  |  |  |  |  | COST [24570] | 24,570 | 24,570 | H | DIV-2 | Div-2.3 |  |  |  |  |  |  |
| PG-H-PR-SL-LS-DL-50_R |  | Thermoplastic pavement road marking(Remaining) | 12d | 2026-08-27 A | 2026-10-05 | PG-H-PR-SL-LS-DL-40, PG-H-PR-SL-LS-PO-50_R, PG-H-PR-SL-LS-DL-50 | 75% | 3d | 2026-09-06 | 2026-09-19 | 8.4d | 0d | COST [3311.47] | 3,311.47 | 2,483.6 | H | DIV-2 | Div-2.3 |  |  |  |  |  |  |
| PG-H-PR-SL-LS-DL-60_R |  | Traffic Signages(Remaining) | 12d | 2026-08-27 A | 2026-10-05 | PG-H-PR-SL-LS-PO-60_R, PG-H-PR-SL-LS-DL-50_R SS, PG-H-PR-SL-LS-DL-60 | 75% | 3d | 2026-09-06 | 2026-09-19 | 8.4d | 0d | COST [1249.67] | 1,249.67 | 937.25 | H | DIV-2 | Div-2.3 |  |  |  |  |  |  |
| PG-H-PR-SL-LS-DL-70_R |  | Trees(Remaining) | 12d | 2026-08-27 A | 2026-10-05 | PG-H-PR-SL-LS-PO-70_R, PG-H-PR-SL-LS-DL-60_R SS, PG-H-PR-SL-LS-DL-70 | 75% | 3d | 2026-09-06 | 2026-09-19 | 8.4d | 0d | COST [30441.3] | 30,441.28 | 22,830.96 | H | DIV-2 | Div-2.3 |  |  |  |  |  |  |
| PG-H-PR-SL-LS-DL-80_R |  | Lawn(Remaining) | 12d | 2026-08-27 A | 2026-10-05 | PG-H-PR-SL-LS-PO-80_R, PG-H-PR-SL-LS-DL-70_R SS, PG-H-PR-SL-LS-DL-80 | 75% | 3d | 2026-09-06 | 2026-09-19 | 32.38d | 52.08d | COST [24570] | 24,570 | 18,427.5 | H | DIV-2 | Div-2.3 |  |  |  |  |  |  |
|  | 3 | **CONCRETE WORK** |  | 2026-03-10 | 2026-05-13 |  |  |  |  |  |  |  |  |  |  |  |  |  |  |  |  |  |  |  |
| PG-H-PR-SL-CO-DL-20 |  | Concrete | 35d | 2026-03-10 A | 2026-04-24 A | PG-H-PR-SL-CO-PO-20, PG-H-PR-SL-CO-DL-10, PG-H-PR-SL-CO-DL-10 SS | 100% |  | 2026-03-10 | 2026-04-23 |  |  | COST [4669.65] | 4,669.65 | 4,669.65 | H | DIV-3 |  | Div-3 |  |  |  |  |  |
| PG-H-PR-SL-CO-DL-10 |  | Steel Rebar | 12d | 2026-04-23 A | 2026-05-06 A | PG-H-PR-SL-CO-PO-10 | 100% |  |  |  |  |  | COST [4291.38] | 4,291.38 | 4,291.38 | H | DIV-3 |  | Div-3 |  |  |  |  |  |
| PG-H-PR-SL-CO-DL-30 |  | Screed | 18d | 2026-04-23 A | 2026-05-13 A | PG-H-PR-SL-CO-PO-30, PG-H-PR-SL-CO-DL-20 | 100% |  |  |  |  |  | COST [1058.4] | 1,058.4 | 1,058.4 | H | DIV-7 |  |  | Div-07 |  |  |  |  |
| PG-H-PR-SL-CO-DL-40 |  | CMU Block | 18d | 2026-04-23 A | 2026-05-13 A | PG-H-PR-SL-CO-PO-40, PG-H-PR-SL-CO-DL-30, PG-H-PR-SL-CO-DL-30 SS | 100% |  |  |  |  |  | COST [1117.8] | 1,117.8 | 1,117.8 | H | DIV-4 |  |  |  | Div-5 |  |  |  |
| PG-H-PR-SL-CO-DL-50 |  | Concrete Repair & Protection Materials | 18d | 2026-04-23 A | 2026-05-13 A | PG-H-PR-SL-CO-PO-50, PG-H-PR-SL-CO-DL-40, PG-H-PR-SL-CO-DL-40 SS | 100% |  |  |  |  |  | COST [3348] | 3,348 | 3,348 | H | DIV-15 |  |  |  |  | Div15.2 |  |  |
|  | 4 | **ARCHITECTURAL & FINISHES WORK** |  | 2026-05-06 | 2026-05-12 |  |  |  |  |  |  |  |  |  |  |  |  |  |  |  |  |  |  |  |
| PG-H-PR-SL-AR-DL-10 |  | Ceramic tiles | 6d | 2026-05-06 A | 2026-05-12 A | PG-H-PR-SL-AR-PO-10 | 100% |  |  |  |  |  | COST [5147.55] | 5,147.55 | 5,147.55 | H | DIV-9 |  |  |  |  |  | Div-9.1 |  |
| PG-H-PR-SL-AR-DL-100 |  | Gypsum Boards | 6d | 2026-05-06 A | 2026-05-12 A | PG-H-PR-SL-AR-PO-100 | 100% |  |  |  |  |  | COST [1697.22] | 1,697.22 | 1,697.22 | H | DIV-9 |  |  |  |  |  | Div-9.3 |  |
| PG-H-PR-SL-AR-DL-110 |  | Specialities Materials (Toilet accessories, lockers, logo, etc) | 6d | 2026-05-06 A | 2026-05-12 A | PG-H-PR-SL-AR-PO-110 | 100% |  |  |  |  |  | COST [20365.8] | 20,365.83 | 20,365.83 | H | DIV-10 |  |  |  |  |  |  | Div-10 |
| PG-H-PR-SL-AR-DL-120 |  | Waterproofing System Materials | 6d | 2026-05-06 A | 2026-05-12 A | PG-H-PR-SL-AR-PO-120 | 100% |  |  |  |  |  | COST [4897.8] | 4,897.8 | 4,897.8 | H | DIV-7 |  |  | Div-07 |  |  |  |  |
| PG-H-PR-SL-AR-DL-20 |  | Anti-slip Granite tiles | 6d | 2026-05-06 A | 2026-05-12 A | PG-H-PR-SL-AR-PO-20, PG-H-PR-SL-AR-DL-10 | 100% |  |  |  |  |  | COST [4819.5] | 4,819.5 | 4,819.5 | H | DIV-9 |  |  |  |  |  | Div-9.1 |  |
| PG-H-PR-SL-AR-DL-30 |  | Epoxy Paint | 6d | 2026-05-06 A | 2026-05-12 A | PG-H-PR-SL-AR-PO-30, PG-H-PR-SL-AR-DL-20 | 100% |  |  |  |  |  | COST [1000.62] | 1,000.62 | 1,000.62 | H | DIV-7 |  |  | Div-07 |  |  |  |  |
| PG-H-PR-SL-AR-DL-40 |  | Cement Plaster | 6d | 2026-05-06 A | 2026-05-12 A | PG-H-PR-SL-AR-PO-40 | 100% |  |  |  |  |  | COST [1992.33] | 1,992.33 | 1,992.33 | H | DIV-9 |  |  |  |  |  | Div-9.2 |  |
| PG-H-PR-SL-AR-DL-50 |  | Acrylic Paint | 6d | 2026-05-06 A | 2026-05-12 A | PG-H-PR-SL-AR-PO-50, PG-H-PR-SL-AR-DL-40 | 100% |  |  |  |  |  | COST [1331.1] | 1,331.1 | 1,331.1 | H | DIV-9 |  |  |  |  |  | Div-9.2 |  |
| PG-H-PR-SL-AR-DL-60 |  | Stone Cladding | 6d | 2026-05-06 A | 2026-05-12 A | PG-H-PR-SL-AR-PO-60, PG-H-PR-SL-AR-DL-50 | 100% |  |  |  |  |  | COST [16669.8] | 16,669.8 | 16,669.8 | H | DIV-9 |  |  |  |  |  | Div-9.2 |  |
| PG-H-PR-SL-AR-DL-70 |  | Aluminum Plates | 6d | 2026-05-06 A | 2026-05-12 A | PG-H-PR-SL-AR-PO-70, PG-H-PR-SL-AR-DL-50 | 100% |  |  |  |  |  | COST [1642.14] | 1,642.14 | 1,642.14 | H | DIV-9 |  |  |  |  |  | Div-9.2 |  |
| PG-H-PR-SL-AR-DL-80 |  | Phenolic Partition | 6d | 2026-05-06 A | 2026-05-12 A | PG-H-PR-SL-AR-PO-80 | 100% |  |  |  |  |  | COST [12063.6] | 12,063.6 | 12,063.6 | H | DIV-9 |  |  |  |  |  | Div-9.2 |  |
| PG-H-PR-SL-AR-DL-90 |  | Glass Partition | 6d | 2026-05-06 A | 2026-05-12 A | PG-H-PR-SL-AR-PO-90 | 100% |  |  |  |  |  | COST [1398.6] | 1,398.6 | 1,398.6 | H | DIV-9 |  |  |  |  |  | Div-9.2 |  |

| ID | WBS | Activity | Duration | Start | Finish | Predecessors | Complete | Remaining | Planned start | Planned finish | Total float | Free float | Resources | Cost | Actual cost | H,Q,T-Location | BOQ DIVISION | DIVISION-5-METALS | DIVISION 15-MECHANICAL WORKS | DIVISION 16 ELECTRICAL WORKS |
| --- | --- | --- | --- | --- | --- | --- | --- | --- | --- | --- | --- | --- | --- | --- | --- | --- | --- | --- | --- | --- |
|  | 5 | **METAL WORK** |  | 2026-05-06 | 2026-05-12 |  |  |  |  |  |  |  |  |  |  |  |  |  |  |  |
| PG-H-PR-SL-MT-DL-10 |  | Galvanized Steel Ladder | 6d | 2026-05-06 A | 2026-05-12 A | PG-H-PR-SL-MT-PO-10 | 100% |  |  |  |  |  | COST [3256.74] | 3,256.74 | 3,256.74 | H | DIV-5 | Div-5 |  |  |
| PG-H-PR-SL-MT-DL-20 |  | Galvanized Steel Roof Scupper | 6d | 2026-05-06 A | 2026-05-12 A | PG-H-PR-SL-MT-PO-20, PG-H-PR-SL-MT-DL-10 | 100% |  |  |  |  |  | COST [281.88] | 281.88 | 281.88 | H | DIV-5 | Div-5 |  |  |
| PG-H-PR-SL-MT-DL-30 |  | Galvanized Steel Cover with frame | 6d | 2026-05-06 A | 2026-05-12 A | PG-H-PR-SL-MT-PO-30, PG-H-PR-SL-MT-DL-20 | 100% |  |  |  |  |  | COST [771.39] | 771.39 | 771.39 | H | DIV-5 | Div-5 |  |  |
|  | 6 | **HVAC WORK** |  | 2026-05-06 | 2026-05-12 |  |  |  |  |  |  |  |  |  |  |  |  |  |  |  |
| PG-H-PR-SL-AC-DL-10 |  | Split Air Conditioning Unit | 6d | 2026-05-06 A | 2026-05-12 A | PG-H-PR-SL-AC-PO-10 | 100% |  |  |  |  |  | COST [2789.37] | 2,789.37 | 2,789.37 | H | DIV-15 |  | Div15.4 |  |
| PG-H-PR-SL-AC-DL-20 |  | Air Duct | 6d | 2026-05-06 A | 2026-05-12 A | PG-H-PR-SL-AC-PO-20 | 100% |  |  |  |  |  | COST [1404] | 1,404 | 1,404 | H | DIV-15 |  | Div15.4 |  |
| PG-H-PR-SL-AC-DL-30 |  | Diffusers and Grills | 6d | 2026-05-06 A | 2026-05-12 A | PG-H-PR-SL-AC-PO-30, PG-H-PR-SL-AC-DL-20 | 100% |  |  |  |  |  | COST [668.79] | 668.79 | 668.79 | H | DIV-15 |  | Div15.4 |  |
| PG-H-PR-SL-AC-DL-40 |  | Exhaust fans | 6d | 2026-05-06 A | 2026-05-12 A | PG-H-PR-SL-AC-PO-40, PG-H-PR-SL-AC-DL-20 | 100% |  |  |  |  |  | COST [595.08] | 595.08 | 595.08 | H | DIV-15 |  | Div15.4 |  |
|  | 7 | **PLUMBING WORK** |  | 2026-05-06 | 2026-05-12 |  |  |  |  |  |  |  |  |  |  |  |  |  |  |  |
| PG-H-PR-SL-PB-DL-10 |  | PPR Pipes & Valves | 6d | 2026-05-06 A | 2026-05-12 A | PG-H-PR-SL-PB-PO-10 | 100% |  |  |  |  |  | COST [2386.8] | 2,386.8 | 2,386.8 | H | DIV-15 |  | Div15.2 |  |
| PG-H-PR-SL-PB-DL-20 |  | UPCV Pipes | 6d | 2026-05-06 A | 2026-05-12 A | PG-H-PR-SL-PB-PO-20 | 100% |  |  |  |  |  | COST [3016.71] | 3,016.71 | 3,016.71 | H | DIV-15 |  | Div15.3 |  |
| PG-H-PR-SL-PB-DL-30 |  | Sanitary Drainage Fixtures | 6d | 2026-05-06 A | 2026-05-12 A | PG-H-PR-SL-PB-PO-30, PG-H-PR-SL-PB-DL-20 | 100% |  |  |  |  |  | COST [22919.8] | 22,919.76 | 22,919.76 | H | DIV-15 |  | Div15.3 |  |
|  | 8 | **IRRIGATION WORK** |  | 2026-05-06 | 2026-10-04 |  |  |  |  |  |  |  |  |  |  |  |  |  |  |  |
| PG-H-PR-SL-IR-DL-10 |  | Gate Valve including valve box(Completed) | 39d | 2026-05-06 A | 2026-06-24 A | PG-H-PR-SL-IR-PO-10 SS | 100% |  |  |  |  |  | COST [3403.35] | 3,403.35 | 3,403.35 | H | DIV-15 |  | Div15.5 |  |
| PG-H-PR-SL-IR-DL-20 |  | Bulbblers and Spreyers(Completed) | 39d | 2026-05-06 A | 2026-06-24 A | PG-H-PR-SL-IR-PO-20 SS | 100% |  |  |  |  |  | COST [27442.5] | 27,442.53 | 27,442.53 | H | DIV-15 |  | Div15.5 |  |
| PG-H-PR-SL-IR-DL-10_R |  | Gate Valve including valve box(Remaining) | 12d | 2026-08-20 A | 2026-10-04 | PG-H-PR-SL-IR-PO-10_R, PG-H-PR-SL-IR-DL-10, PG-H-PR-SL-IR-PO-10_R FF | 85% | 1.8d | 2026-08-31 | 2026-09-13 | -14.4d | 10.95d | COST [3403.35] | 3,403.35 | 2,892.85 | H | DIV-15 |  | Div15.5 |  |
| PG-H-PR-SL-IR-DL-20_R |  | Bulbblers and Spreyers(Remaining) | 12d | 2026-08-27 A | 2026-10-04 | PG-H-PR-SL-IR-PO-20_R, PG-H-PR-SL-IR-DL-20, PG-H-PR-SL-IR-PO-20_R SS | 85% | 1.8d | 2026-09-06 | 2026-09-19 | -13.2d | 12.15d | COST [27442.5] | 27,442.53 | 23,326.15 | H | DIV-15 |  | Div15.5 |  |
|  | 9 | **ELECTRICAL WORK** |  | 2026-05-20 | 2026-10-08 |  |  |  |  |  |  |  |  |  |  |  |  |  |  |  |
| PG-H-PR-SL-EL-DL-10 |  | Wiring Devices Materials(Completed) | 27d | 2026-05-20 A | 2026-06-24 A | PG-H-PR-SL-EL-PO-10 SS | 100% |  |  |  |  |  | COST [1100.3] | 1,100.3 | 1,100.3 | H | DIV-16 |  |  | Div16.9 |
| PG-H-PR-SL-EL-DL-10_R |  | Wiring Devices Materials(Remaining) | 12d | 2026-09-26 A | 2026-10-08 | PG-H-PR-SL-EL-PO-10_R, PG-H-PR-SL-EL-DL-10 | 25% | 6d |  |  | 4.6d | 0d | COST [2567.38] | 2,567.38 | 1,283.69 | H | DIV-16 |  |  | Div16.9 |
|  | 10 | **FIRE FIGHTING WORK** |  | 2026-05-20 | 2026-10-15 |  |  |  |  |  |  |  |  |  |  |  |  |  |  |  |
| PG-H-PR-SL-FF-DL-10 |  | Fire Extinguishers(Completed) | 27d | 2026-05-20 A | 2026-06-24 A | PG-H-PR-SL-FF-PO-10 SS | 100% |  |  |  |  |  | COST [61.32] | 61.32 | 61.32 | H | DIV-15 |  | Div15.1 |  |
| PG-H-PR-SL-FF-DL-10_R |  | Fire Extinguishers(Remaining) | 12d | 2026-10-03 | 2026-10-15 | PG-H-PR-SL-FF-PO-10_R, PG-H-PR-SL-FF-DL-10 |  |  |  |  | -16.4d | 8.95d | COST [143.07] | 143.07 |  | H | DIV-15 |  | Div15.1 |  |

| ID | WBS | Activity | Duration | Start | Finish | Predecessors | Complete | Remaining | Planned start | Planned finish | Total float | Free float | Resources | Cost | Actual cost | H,Q,T-Location | BOQ DIVISION | DIVISION-02-SITE WORKS |
| --- | --- | --- | --- | --- | --- | --- | --- | --- | --- | --- | --- | --- | --- | --- | --- | --- | --- | --- |
|  | CO | **CONSTRUCTION STAGE** |  | 2026-04-05 | 2027-01-16 |  |  |  |  |  |  |  |  |  |  |  |  |  |
|  | EX.SIT | **PLAYGROUND AND LANDSCAPING WORKS** |  | 2026-04-05 | 2027-01-16 |  |  |  |  |  |  |  |  |  |  |  |  |  |
|  | CF | **CUT AND FILL** |  | 2026-04-05 | 2026-05-06 |  |  |  |  |  |  |  |  |  |  |  |  |  |
| PG-H-CON-EX-CF-10 |  | Existing Soil Excavation Works | 26d | 2026-04-05 A | 2026-05-04 A | PG-H-EN-ST-SD-AP-10, PG-H-MOB-SO-20, PG-H-MOB-SO-50, PG-Q-CON-EX-CF-10, PG-Q-CON-EX-CF-10 SS | 100% |  |  |  |  |  | COST [125280]; Dump Truck [64 h]; Excavator [40 h]; Site Engineer [4 h]; Labor / Helper [48 h]; Surveyor [8 h]; Excavator Operator [40 h]; Dump Truck Driver [64 h]; Safety Officer [8 h] | 125,280 | 125,280 | H | DIV-2 | Div-2.1 |
| PG-H-CON-EX-CF-20 |  | Soil Replacement Works | 21d | 2026-04-12 A | 2026-05-05 A | PG-H-CON-EX-CF-10, PG-H-PR-SL-LS-DL-30, PG-H-CON-EX-CF-10 SS | 100% |  |  |  |  |  | COST [62400]; Roller [16 h]; Loader [8 h]; Water tanker [8 h]; Motor Grader [8 h]; Site Engineer [4 h]; Labor / Helper [48 h]; Water tanker driver [8 h]; Surveyor [8 h]; Loader Operator [8 h]; Roller Operator [16 h]; Motor Grader Operator [8 h] | 62,400 | 62,400 | H | DIV-2 | Div-2.3 |
| PG-H-CON-EX-CF-30 |  | Levelling & Backfilling Works | 18d | 2026-04-16 A | 2026-05-06 A | PG-H-CON-EX-CF-20, PG-H-PR-SL-LS-DL-10, PG-H-MOB-CAM-40 | 100% |  |  |  |  |  | COST [266220]; Roller [16 h]; Loader [8 h]; Water tanker [8 h]; Motor Grader [8 h]; Site Engineer [8 h]; Labor / Helper [48 h]; Water tanker driver [8 h]; Surveyor [8 h]; Loader Operator [8 h]; Roller Operator [16 h]; Motor Grader Operator [8 h] | 266,220 | 266,220 | H | DIV-2 | Div-2.1 |
|  | 1 | **PLAYGROUND WORKS** |  | 2026-04-19 | 2026-11-07 |  |  |  |  |  |  |  |  |  |  |  |  |  |
|  | FP | **FOOTBALL PLAYGROUND WORKS** |  | 2026-04-19 | 2026-11-07 |  |  |  |  |  |  |  |  |  |  |  |  |  |
| PG-H-CON-EX-FB-10 |  | Subgrade Preparation and Compaction | 16d | 2026-04-19 A | 2026-05-06 A | PG-H-EN-LS-SD-AP-90, PG-H-CON-EX-CF-10, PG-H-CON-EX-CF-20, PG-H-CON-EX-CF-30 | 100% |  |  |  |  |  | COST [23667]; Roller [16 h]; Loader [8 h]; Motor Grader [8 h]; Site Engineer [8 h]; Labor / Helper [48 h]; Surveyor [8 h]; Loader Operator [8 h]; Roller Operator [16 h]; Motor Grader Operator [8 h] | 23,667 | 23,667 | H | DIV-2 | Div-2.3 |
| PG-H-CON-EX-FB-20 |  | Sub-Base Laying and Compaction | 12d | 2026-04-23 A | 2026-05-06 A | PG-H-CON-EX-FB-10 | 100% |  |  |  |  |  | COST [23667]; Roller [16 h]; Loader [8 h]; Motor Grader [8 h]; Site Engineer [8 h]; Labor / Helper [48 h]; Surveyor [8 h]; Loader Operator [8 h]; Roller Operator [16 h]; Motor Grader Operator [8 h] | 23,667 | 23,667 | H | DIV-2 | Div-2.3 |
| PG-H-CON-EX-FB-30 |  | Base Course Laying and Compaction | 33d | 2026-05-06 A | 2026-06-17 A | PG-H-CON-EX-FB-20 | 100% |  |  |  |  |  | COST [23667]; Roller [16 h]; Loader [8 h]; Motor Grader [8 h]; Site Engineer [8 h]; Labor / Helper [48 h]; Surveyor [8 h]; Loader Operator [8 h]; Roller Operator [16 h]; Motor Grader Operator [8 h] | 23,667 | 23,667 | H | DIV-2 | Div-2.3 |
| PG-H-CON-EX-FB-70 |  | Topsoil Placement(Completed) | 33d | 2026-05-13 A | 2026-06-24 A | PG-H-CON-EX-FB-20 | 100% |  |  |  |  |  | COST [7100.1]; Roller [4.8 h]; Loader [2.4 h]; Water tanker [2.4 h]; Motor Grader [2.4 h]; Site Engineer [1.2 h]; Labor / Helper [9.6 h]; Water tanker driver [2.4 h]; Surveyor [2.4 h]; Loader Operator [2.4 h]; Roller Operator [4.8 h]; Motor Grader Operator [2.4 h] | 7,100.1 | 7,100.1 | H | DIV-2 | Div-2.3 |
| PG-H-CON-EX-FB-40 |  | Tartan flooring(Completed) | 7d | 2026-06-17 A | 2026-06-24 A | PG-H-CON-EX-FB-30, PG-H-EN-LS-SD-AP-40, PG-H-PR-LL-SP-DL-20 SS, PG-H-PR-LL-SP-DL-10 SS | 100% |  |  |  |  |  | COST [147420]; Paving Machine [4.8 h]; Applicator [14.4 h]; Paving Machine Operator [4.8 h] | 147,420 | 147,420 | H | DIV-2 | Div-2.3 |
| PG-H-CON-EX-FB-80 |  | Fine Grading & Leveling | 15d | 2026-07-12 A | 2026-08-14 A | PG-H-CON-EX-FB-30 | 100% |  | 2026-07-14 | 2026-07-30 |  |  | COST [23667]; Roller [16 h]; Loader [8 h]; Motor Grader [8 h]; Site Engineer [4 h]; Labor / Helper [32 h]; Surveyor [8 h]; Loader Operator [8 h]; Roller Operator [16 h]; Motor Grader Operator [8 h] | 23,667 | 23,667 | H | DIV-2 | Div-2.3 |
| PG-H-CON-EX-FB-70_R |  | Topsoil Placement(Remaining) | 14d | 2026-07-30 A | 2026-08-14 A | PG-H-CON-EX-FB-70, PG-H-CON-EX-FB-80 SS | 100% |  | 2026-08-06 | 2026-08-23 |  |  | COST [16566.9]; Roller [11.2 h]; Loader [5.6 h]; Water tanker [5.6 h]; Motor Grader [5.6 h]; Site Engineer [2.8 h]; Labor / Helper [22.4 h]; Water tanker driver [5.6 h]; Surveyor [5.6 h]; Loader Operator [5.6 h]; Roller Operator [11.2 h]; Motor Grader Operator [5.6 h] | 16,566.9 | 16,566.9 | H | DIV-2 | Div-2.3 |
| PG-H-CON-EX-FB-40_R |  | Tartan flooring(Remaining) | 15d | 2026-08-06 A | 2026-10-15 | PG-H-EN-LS-SD-AP-40, PG-H-CON-EX-FB-40, PG-H-PR-LL-SP-DL-20_R SS, PG-H-PR-LL-SP-DL-10_R SS, PG-H-CON-EX-FB-90 FF | 90% | 1.5d | 2026-10-12 | 2026-10-29 | 34d | 0d | COST [343980]; Paving Machine [11.2 h]; Applicator [33.6 h]; Paving Machine Operator [11.2 h] | 343,980 | 309,582 | H | DIV-2 | Div-2.3 |
| PG-H-CON-EX-FB-90 |  | Turfing / Seeding Works | 12d | 2026-08-14 A | 2026-10-15 | PG-H-CON-EX-FB-120, PG-H-CON-EX-FB-120 FF | 80% | 2.4d | 2026-09-21 | 2026-10-06 | 34d | 0d | COST [23667]; Labor / Helper [16 h]; Turf Installer [32 h] | 23,667 | 18,933.6 | H | DIV-2 | Div-2.3 |
| PG-H-CON-EX-FB-50 |  | Goal Post Foundation | 17d | 2026-08-20 A | 2026-10-07 | PG-H-CON-EX-FB-70_R | 75% | 4.25d | 2026-08-23 | 2026-09-10 | 34d | 0d | COST [35500.5]; Roller [8 h]; Excavator [8 h]; Site Engineer [4 h]; Labor / Helper [48 h]; Excavator Operator [8 h]; Carpenter [16 h]; Steel Fixer [16 h]; Roller Operator [8 h] | 35,500.5 | 26,625.38 | H | DIV-2 | Div-2.3 |
| PG-H-CON-EX-FB-60 |  | Goal Post Installation & Alignment | 13d | 2026-08-20 A | 2026-10-20 | PG-H-CON-EX-FB-40_R, PG-H-CON-EX-FB-40_R SS | 65% | 4.55d | 2026-09-20 | 2026-10-06 | 34d | 0d | COST [35500.5]; Crane [8 h]; Labor / Helper [32 h]; Crane Operator [8 h]; Mechanical Technician [16 h] | 35,500.5 | 23,075.33 | H | DIV-2 | Div-2.3 |
| PG-H-CON-EX-FB-110 |  | Install Playground Benches | 15d | 2026-08-27 A | 2026-10-26 | PG-H-PR-LL-LS-DL-20_R, PG-H-CON-EX-FB-60, PG-H-PR-LL-LS-DL-20_R SS, PG-H-CON-EX-FB-60 SS | 65% | 5.25d | 2026-10-03 | 2026-10-20 | 34d | 0d | COST [5150.4]; Mason [16 h]; Labor / Helper [16 h] | 5,150.4 | 3,347.76 | H | DIV-2 | Div-2.3 |
| PG-H-CON-EX-FB-120 |  | Installation of Lighting System | 13d | 2026-08-27 A | 2026-10-12 | PG-H-CON-EX-FB-50, PG-H-CON-EX-FB-50 SS | 65% | 4.55d | 2026-09-07 | 2026-09-22 | 34d | 0d | COST [48720]; Electrician [32 h] | 48,720 | 31,668 | H | DIV-2 | Div-2.3 |
| PG-H-CON-EX-FB-100 |  | Markings and Signages | 10d | 2026-10-27 | 2026-11-07 | PG-H-CON-EX-FB-110 |  |  |  |  | 34d | 27.7d | COST [23667]; Spray Machine [48 h]; Site Engineer [4 h]; Labor / Helper [32 h]; Painter [48 h] | 23,667 |  | H | DIV-2 | Div-2.3 |
|  | GN.SI | **GENERAL SITE WORKS** |  | 2026-04-16 | 2027-01-16 |  |  |  |  |  |  |  |  |  |  |  |  |  |
|  | 1 | **FENCE WORKS** |  | 2026-04-16 | 2026-10-13 |  |  |  |  |  |  |  |  |  |  |  |  |  |
| PG-H-CON-EX-GN-FN-10 |  | Excavation for fence foundation | 3d | 2026-04-16 A | 2026-04-19 A | PG-H-CON-EX-CF-30, PG-H-EN-ST-SD-AP-10, PG-H-PR-SL-LS-DL-10 | 100% |  |  |  |  |  | COST [13163.8]; Dump Truck [32 h]; Excavator [8 h]; Site Engineer [4 h]; Labor / Helper [32 h]; Surveyor [8 h]; Excavator Operator [8 h]; Dump Truck Driver [32 h]; Safety Officer [8 h] | 13,163.76 | 13,163.76 | H | DIV-2 | Div-2.3 |
| PG-H-CON-EX-GN-FN-20 |  | Concrete Foundations for Fence | 9d | 2026-08-13 A | 2026-08-20 A | PG-H-CON-EX-GN-FN-10, PG-H-EN-ST-SD-AP-20, PG-H-PR-SL-CO-DL-10, PG-H-PR-SL-CO-DL-20, PG-H-PR-SL-CO-DL-10 SS, PG-H-CON-EX-FB-80 | 100% |  | 2026-08-23 | 2026-09-01 |  |  | COST [13163.8]; Site Engineer [4 h]; Concrete Mason [32 h]; Carpenter [16 h]; Steel Fixer [16 h] | 13,163.76 | 13,163.76 | H | DIV-2 | Div-2.3 |
| PG-H-CON-EX-GN-FN-30 |  | Installation of Galvanized Steel Posts & Framing | 9d | 2026-08-27 A | 2026-10-04 | PG-H-CON-EX-GN-FN-20, PG-H-PR-LL-LS-DL-30_R, PG-H-PR-LL-LS-DL-30_R FF, PG-H-PR-LL-LS-DL-30_R SS | 80% | 1.8d | 2026-08-30 | 2026-09-08 | -19.7d | 0d | COST [13163.8]; Crane [8 h]; Labor / Helper [32 h]; Crane Operator [8 h]; Mechanical Technician [16 h] | 13,163.76 | 10,531.01 | H | DIV-2 | Div-2.3 |
| PG-H-CON-EX-GN-FN-40 |  | Fixing of Chain Link Mesh, Tensioning & Bracing | 8d | 2026-09-27 A | 2026-10-08 | PG-H-CON-EX-GN-FN-30 | 20% | 3.4d | 2026-09-27 | 2026-10-06 | -19.7d | 0d | COST [13163.8]; Labor / Helper [32 h]; Mechanical Technician [16 h] | 13,163.76 | 7,569.16 | H | DIV-2 | Div-2.3 |
| PG-H-CON-EX-GN-FN-50 |  | Installation of Gates | 4d | 2026-10-08 | 2026-10-13 | PG-H-CON-EX-GN-FN-40 |  |  |  |  | -19.7d | 0d | COST [13163.8]; Crane [8 h]; Labor / Helper [32 h]; Crane Operator [8 h]; Mechanical Technician [32 h] | 13,163.76 |  | H | DIV-2 | Div-2.3 |

| ID | WBS | Activity | Duration | Start | Finish | Predecessors | Complete | Remaining | Planned start | Planned finish | Total float | Free float | Resources | Cost | Actual cost | H,Q,T-Location | BOQ DIVISION | DIVISION 15-MECHANICAL WORKS | DIVISION 16 ELECTRICAL WORKS |
| --- | --- | --- | --- | --- | --- | --- | --- | --- | --- | --- | --- | --- | --- | --- | --- | --- | --- | --- | --- |
|  | 5 | **MECHANICAL WORK** |  | 2026-05-12 | 2026-10-28 |  |  |  |  |  |  |  |  |  |  |  |  |  |  |
|  | 2 | **STORM WATER AND UTILITY WORK** |  | 2026-05-12 | 2026-10-26 |  |  |  |  |  |  |  |  |  |  |  |  |  |  |
| PG-H-CON-EX-GN-M-10 |  | Excavation | 2d | 2026-05-12 A | 2026-05-13 A | PG-H-CON-EX-GN-FN-10, PG-H-CON-EX-GN-FN-10 FF, PG-H-CON-EX-CF-30 | 100% |  |  |  |  |  | COST [3096]; Dump Truck [32 h]; Excavator [8 h]; Site Engineer [4 h]; Labor / Helper [32 h]; Surveyor [8 h]; Excavator Operator [8 h]; Dump Truck Driver [32 h]; Safety Officer [8 h] | 3,096 | 3,096 | H | DIV-15 | Div15.3 |  |
| PG-H-CON-EX-GN-M-20 |  | Bedding preparation & level control(Completed) | 27d | 2026-05-20 A | 2026-06-24 A | PG-H-CON-EX-GN-M-10 | 100% |  |  |  |  |  | COST [1032]; Labor / Helper [8 h]; Plumber [4 h]; Concrete Mason [4 h] | 1,032 | 1,032 | H | DIV-15 | Div15.3 |  |
| PG-H-CON-EX-GN-M-20_R |  | Bedding preparation & level control(Remaining) | 10d | 2026-08-14 A | 2026-10-04 | PG-H-CON-EX-GN-M-10, PG-H-CON-EX-GN-M-20 | 85% | 1.5d | 2026-08-16 | 2026-08-26 | -25.35d | 0d | COST [1032]; Labor / Helper [8 h]; Plumber [4 h]; Concrete Mason [4 h] | 1,032 | 877.2 | H | DIV-15 | Div15.3 |  |
| PG-H-CON-EX-GN-M-30 |  | Manhole Installation | 5d | 2026-08-27 A | 2026-10-05 | PG-H-CON-EX-GN-M-20_R, PG-H-CON-EX-GN-M-20_R SS | 75% | 1.25d | 2026-09-06 | 2026-09-10 | -25.35d | 0d | COST [5160]; Crane [8 h]; Labor / Helper [16 h]; Crane Operator [8 h]; Mechanical Technician [16 h]; Surveyor [8 h] | 5,160 | 3,870 | H | DIV-15 | Div15.3 |  |
| PG-H-CON-EX-GN-M-40 |  | 150 mm uPVC pipe laying & jointing | 4d | 2026-10-05 | 2026-10-10 | PG-H-CON-EX-GN-M-30 |  |  |  |  | -25.35d | 0d | COST [10740]; Labor / Helper [16 h]; Plumber [16 h] | 10,740 |  | H | DIV-15 | Div15.3 |  |
| PG-H-CON-EX-GN-M-50 |  | Concrete Encasement | 3d | 2026-10-10 | 2026-10-13 | PG-H-CON-EX-GN-M-40, PG-H-PR-SL-CO-DL-10, PG-H-PR-SL-CO-DL-20 |  |  |  |  | -25.35d | 0d | COST [2064]; Labor / Helper [8 h]; Concrete Mason [16 h] | 2,064 |  | H | DIV-15 | Div15.3 |  |
| PG-H-CON-EX-GN-M-60 |  | Backfilling & Compaction | 3d | 2026-10-13 | 2026-10-17 | PG-H-CON-EX-GN-M-50, PG-H-PR-SL-LS-DL-10 |  |  |  |  | -25.35d | 0d | COST [2064]; Roller [16 h]; Loader [8 h]; Site Engineer [4 h]; Mason [16 h]; Surveyor [4 h]; Loader Operator [8 h]; Roller Operator [16 h] | 2,064 |  | H | DIV-15 | Div15.3 |  |
| PG-H-CON-EX-GN-M-70 |  | Surface Reinstatement & Civil Works | 4d | 2026-10-21 | 2026-10-26 | PG-H-CON-EX-GN-M-60, PG-H-PR-SL-CO-DL-50, PG-H-CON-EX-GN-M-100 |  |  |  |  | -25.35d | 0d | COST [2064]; Labor / Helper [8 h]; Concrete Mason [16 h] | 2,064 |  | H | DIV-15 | Div15.3 |  |
|  | IR.SY | **IRRIGATION SYSTEM WORKS** |  | 2026-06-02 | 2026-10-21 |  |  |  |  |  |  |  |  |  |  |  |  |  |  |
| PG-H-CON-EX-GN-M-80 |  | Installation of HDPE Irrigation Pipe Network with Gate Valve and Box(Completed) | 19.8d | 2026-06-02 A | 2026-06-24 A | PG-H-EN-ME-SD-AP-80, PG-H-EN-ME-SD-AP-90, PG-H-CON-EX-GN-M-20 SS, PG-H-PR-LL-IR-DL-10 SS, PG-H-PR-SL-IR-DL-10 SS | 100% |  |  |  |  |  | COST [72230.4]; Labor / Helper [12.8 h]; Plumber [19.2 h] | 72,230.4 | 72,230.4 | H | DIV-15 | Div15.5 |  |
| PG-H-CON-EX-GN-M-80_R |  | Installation of HDPE Irrigation Pipe Network with Gate Valve and Box(Remaining) | 2.4d | 2026-08-14 A | 2026-10-17 | PG-H-CON-EX-GN-M-60 FF, PG-H-EN-ME-SD-AP-80, PG-H-EN-ME-SD-AP-90, PG-H-CON-EX-GN-M-20_R SS, PG-H-CON-EX-GN-M-80, PG-H-PR-LL-IR-DL-10_R FF, PG-H-PR-SL-IR-DL-10_R FF | 85% | 0.36d | 2026-09-10 | 2026-09-13 | -25.35d | 0d | COST [108346]; Labor / Helper [19.2 h]; Plumber [28.8 h] | 108,345.6 | 92,074.95 | H | DIV-15 | Div15.5 |  |
| PG-H-CON-EX-GN-M-90 |  | Installation of Irrigation Control System | 3d | 2026-08-26 A | 2026-10-18 | PG-H-CON-EX-GN-M-80_R, PG-H-PR-LL-IR-DL-20_R, PG-H-CON-EX-GN-M-80_R SS, PG-H-PR-LL-IR-DL-20_R SS | 60% | 1.2d | 2026-09-24 | 2026-09-27 | -25.35d | 0d | COST [90915]; Labor / Helper [16 h]; Electrician [8 h]; ELV Technician [8 h] | 90,915 | 54,549 | H | DIV-15 | Div15.5 |  |
| PG-H-CON-EX-GN-M-100 |  | Installation of Bubblers and Sprinklers | 3d | 2026-10-18 | 2026-10-21 | PG-H-CON-EX-GN-M-90, PG-H-PR-SL-IR-DL-20_R |  |  |  |  | -25.35d | 0d | COST [121967]; Labor / Helper [16 h]; Mechanical Technician [16 h] | 121,966.8 |  | H | DIV-15 | Div15.5 |  |
|  | 1 | **FIRE PROTECTION SYSTEM** |  | 2026-10-26 | 2026-10-28 |  |  |  |  |  |  |  |  |  |  |  |  |  |  |
| PG-H-CON-EX-GN-M-110 |  | Fire Extinguisher Installation | 2d | 2026-10-26 | 2026-10-28 | PG-H-CON-EX-GN-M-70, PG-H-PR-SL-FF-DL-10_R |  |  |  |  | -25.35d | 0d | COST [317.94]; Labor / Helper [16 h]; Mechanical Technician [16 h] | 317.94 |  | H | DIV-15 | Div15.1 |  |
|  | 2 | **ELECTRICAL WORK** |  | 2026-05-20 | 2026-12-31 |  |  |  |  |  |  |  |  |  |  |  |  |  |  |
|  | 1 | **POWER, LIGHTING & GROUNDING** |  | 2026-05-20 | 2026-11-21 |  |  |  |  |  |  |  |  |  |  |  |  |  |  |
| PG-H-CON-EX-GN-E-10 |  | Excavation(Completed) | 27d | 2026-05-20 A | 2026-06-24 A | PG-H-CON-EX-FB-30 | 100% |  |  |  |  |  | COST [63819.4]; Dump Truck [16 h]; Excavator [4 h]; Site Engineer [2 h]; Labor / Helper [16 h]; Surveyor [4 h]; Excavator Operator [4 h]; Dump Truck Driver [16 h]; Safety Officer [4 h] | 63,819.36 | 63,819.36 | H | DIV-16 |  | Div16.2 |
| PG-H-CON-EX-GN-E-20 |  | Foundation Work for Site Lighting Poles(Completed) | 13d | 2026-06-10 A | 2026-06-24 A | PG-H-PR-SL-CO-DL-10, PG-H-PR-SL-CO-DL-20, PG-H-CON-EX-GN-E-10 SS | 100% |  |  |  |  |  | COST [51055.5]; Site Engineer [1.2 h]; Concrete Mason [9.6 h]; Carpenter [4.8 h]; Steel Fixer [4.8 h] | 51,055.49 | 51,055.49 | H | DIV-16 |  | Div16.2 |
| PG-H-CON-EX-GN-E-10_R |  | Excavation(Remaining) | 1d | 2026-07-16 A | 2026-08-27 A | PG-H-CON-EX-GN-M-70 FF, PG-H-CON-EX-GN-E-10, PG-H-PR-SL-CO-DL-50 | 100% |  | 2026-08-27 | 2026-08-27 |  |  | COST [63819.4]; Dump Truck [16 h]; Excavator [4 h]; Site Engineer [2 h]; Labor / Helper [16 h]; Surveyor [4 h]; Excavator Operator [4 h]; Dump Truck Driver [16 h]; Safety Officer [4 h] | 63,819.36 | 63,819.36 | H | DIV-16 |  | Div16.2 |
| PG-H-CON-EX-GN-E-20_R |  | Foundation Work for Site Lighting Poles(Remaining) | 3.5d | 2026-08-20 A | 2026-10-27 | PG-H-PR-SL-CO-DL-10, PG-H-PR-SL-CO-DL-20, PG-H-CON-EX-GN-E-20, PG-H-CON-EX-GN-E-10_R, PG-H-CON-EX-GN-E-10_R SS | 70% | 1.05d | 2026-09-30 | 2026-10-04 | -24.4d | 0.95d | COST [119129]; Site Engineer [2.8 h]; Concrete Mason [22.4 h]; Carpenter [11.2 h]; Steel Fixer [11.2 h] | 119,129.47 | 83,390.63 | H | DIV-16 |  | Div16.2 |
| PG-H-CON-EX-GN-E-30 |  | Lightning Protection System (LPS) | 3d | 2026-10-28 | 2026-11-01 | PG-H-CON-EX-GN-E-20_R, PG-H-PR-LL-EL-DL-50_R, PG-H-CON-EX-GN-M-110, PG-H-CON-EX-GN-M-70 |  |  |  |  | -25.35d | 0d | COST [8265]; Labor / Helper [8 h]; Electrician [24 h] | 8,265 |  | H | DIV-16 |  | Div16.7 |
| PG-H-CON-EX-GN-E-40 |  | KWH Meter and MDB Installation | 2d | 2026-11-01 | 2026-11-03 | PG-H-CON-EX-GN-E-30, PG-H-EN-EL-SD-AP-10, PG-H-PR-LL-EL-DL-10_R |  |  |  |  | -25.35d | 0d | COST [4586.7]; Labor / Helper [16 h]; Electrician [16 h] | 4,586.7 |  | H | DIV-16 |  | Div16.6 |
| PG-H-CON-EX-GN-E-50 |  | Power Panels and Distribution Boards | 5d | 2026-11-03 | 2026-11-09 | PG-H-CON-EX-GN-E-40, PG-H-EN-EL-SD-AP-20, PG-H-PR-LL-EL-DL-20_R |  |  |  |  | -25.35d | 0d | COST [17397.9]; Labor / Helper [8 h]; Electrician [32 h] | 17,397.9 |  | H | DIV-16 |  | Div16.6 |
| PG-H-CON-EX-GN-E-60 |  | Site Lighting Poles Installation | 3d | 2026-11-09 | 2026-11-12 | PG-H-CON-EX-GN-E-50, PG-H-EN-EL-SD-AP-30, PG-H-EN-EL-SD-AP-40, PG-H-PR-LL-EL-DL-30_R |  |  |  |  | -25.35d | 0d | COST [127639]; Crane [8 h]; Labor / Helper [16 h]; Electrician [16 h]; Crane Operator [8 h] | 127,638.72 |  | H | DIV-16 |  | Div16.2 |
| PG-H-CON-EX-GN-E-70 |  | Wiring Works | 3d | 2026-11-12 | 2026-11-16 | PG-H-CON-EX-GN-E-60, PG-H-PR-SL-EL-DL-10_R |  |  |  |  | -25.35d | 0d | COST [4224]; Electrician [32 h] | 4,224 |  | H | DIV-16 |  | Div16.9 |
| PG-H-CON-EX-GN-E-80 |  | Lighting Fixtures with outlets Installation | 4d | 2026-11-16 | 2026-11-21 | PG-H-CON-EX-GN-E-70, PG-H-PR-LL-EL-DL-40_R |  |  |  |  | -25.35d | 0d | COST [22245.5]; Labor / Helper [8 h]; Electrician [32 h] | 22,245.48 |  | H | DIV-16 |  | Div16.3 |

| ID | WBS | Activity | Duration | Start | Finish | Predecessors | Complete | Remaining | Planned start | Planned finish | Total float | Free float | Resources | Cost | Actual cost | H,Q,T-Location | BOQ DIVISION | DIVISION 16 ELECTRICAL WORKS | DIVISION-02-SITE WORKS | DIVISION 15-MECHANICAL WORKS |
| --- | --- | --- | --- | --- | --- | --- | --- | --- | --- | --- | --- | --- | --- | --- | --- | --- | --- | --- | --- | --- |
|  | 2 | **ELV SYSTEMS (TELECOM, DATA, AV & CCTV)** |  | 2026-11-21 | 2026-12-20 |  |  |  |  |  |  |  |  |  |  |  |  |  |  |  |
| PG-H-CON-EX-GN-E-90 |  | ELV Containment & Cabling Works | 3d | 2026-11-21 | 2026-11-24 | PG-H-CON-EX-GN-E-80, PG-H-PR-LL-EL-DL-60_R |  |  |  |  | -25.35d | 0d | COST [619.8]; Labor / Helper [16 h]; Electrician [8 h]; ELV Technician [16 h] | 619.8 |  | H | DIV-16 | Div16.5 |  |  |
| PG-H-CON-EX-GN-E-100 |  | Fiber Optic Pull Box Installation | 3d | 2026-11-24 | 2026-11-28 | PG-H-CON-EX-GN-E-90, PG-H-EN-EL-SD-AP-50, PG-H-PR-LL-EL-DL-60_R |  |  |  |  | -21.6d | 0d | COST [619.8]; Labor / Helper [16 h]; Electrician [8 h]; ELV Technician [8 h] | 619.8 |  | H | DIV-16 | Div16.5 |  |  |
| PG-H-CON-EX-GN-E-110 |  | Telephone and Data Outlet Installation | 4d | 2026-11-28 | 2026-12-02 | PG-H-CON-EX-GN-E-100, PG-H-EN-EL-SD-AP-50, PG-H-PR-LL-EL-DL-60_R |  |  |  |  | -21.6d | 0d | COST [3718.8]; Labor / Helper [16 h]; Electrician [8 h]; ELV Technician [16 h] | 3,718.8 |  | H | DIV-16 | Div16.4 |  |  |
| PG-H-CON-EX-GN-E-120 |  | Telecom Equipment and AV HDMI Installation | 4d | 2026-12-02 | 2026-12-07 | PG-H-CON-EX-GN-E-110, PG-H-EN-EL-SD-AP-80, PG-H-PR-LL-EL-DL-60_R |  |  |  |  | -21.6d | 0d | COST [15249.1]; Labor / Helper [16 h]; Electrician [8 h]; ELV Technician [16 h] | 15,249.12 |  | H | DIV-16 | Div16.4 |  |  |
| PG-H-CON-EX-GN-E-130 |  | CCTV Rack / Cabinet Installation | 4d | 2026-12-07 | 2026-12-12 | PG-H-CON-EX-GN-E-120, PG-H-EN-EL-SD-AP-60, PG-H-PR-LL-EL-DL-70_R |  |  |  |  | -21.6d | 0d | COST [1446.48]; Labor / Helper [16 h]; Electrician [8 h]; ELV Technician [16 h] | 1,446.48 |  | H | DIV-16 | Div16.5 |  |  |
| PG-H-CON-EX-GN-E-140 |  | NVR and CCTV Monitor Installation | 4d | 2026-12-12 | 2026-12-16 | PG-H-CON-EX-GN-E-130, PG-H-EN-EL-SD-AP-70, PG-H-PR-LL-EL-DL-70_R |  |  |  |  | -21.6d | 0d | COST [6612]; Labor / Helper [16 h]; Electrician [8 h]; ELV Technician [16 h] | 6,612 |  | H | DIV-16 | Div16.5 |  |  |
| PG-H-CON-EX-GN-E-150 |  | IP Camera Installation | 3d | 2026-12-16 | 2026-12-20 | PG-H-CON-EX-GN-E-140, PG-H-PR-LL-EL-DL-70_R |  |  |  |  | -21.6d | 0d | COST [14880]; Labor / Helper [16 h]; Electrician [8 h]; ELV Technician [16 h] | 14,880 |  | H | DIV-16 | Div16.5 |  |  |
|  | 3 | **FIRE ALARM SYSTEM** |  | 2026-11-24 | 2026-12-31 |  |  |  |  |  |  |  |  |  |  |  |  |  |  |  |
| PG-H-CON-EX-GN-E-160 |  | Fire Alarm Containment & Cabling | 8d | 2026-11-24 | 2026-12-03 | PG-H-EN-EL-SD-AP-110, PG-H-EN-EL-SD-AP-90, PG-H-PR-LL-EL-DL-80_R, PG-H-CON-EX-GN-E-90 |  |  |  |  | -25.35d | 0d | COST [1983.6]; Labor / Helper [8 h]; Electrician [16 h]; ELV Technician [8 h] | 1,983.6 |  | H | DIV-16 | Div16.8 |  |  |
| PG-H-CON-EX-GN-E-170 |  | Fire Alarm Control Panel (FACP) Installation | 8d | 2026-12-03 | 2026-12-13 | PG-H-CON-EX-GN-E-160, PG-H-EN-EL-SD-AP-110 |  |  |  |  | -25.35d | 0d | COST [2644.8]; Labor / Helper [8 h]; Electrician [16 h] | 2,644.8 |  | H | DIV-16 | Div16.8 |  |  |
| PG-H-CON-EX-GN-E-180 |  | Initiating Devices (Detectors & Manual Pull Station) | 8d | 2026-12-13 | 2026-12-22 | PG-H-CON-EX-GN-E-170, PG-H-EN-EL-SD-AP-100 |  |  |  |  | -25.35d | 0d | COST [8097.6]; Labor / Helper [16 h]; Electrician [8 h]; ELV Technician [16 h] | 8,097.6 |  | H | DIV-16 | Div16.8 |  |  |
| PG-H-CON-EX-GN-E-190 |  | Notification Appliances (Strobe with Sounder) | 8d | 2026-12-22 | 2026-12-31 | PG-H-CON-EX-GN-E-180 |  |  |  |  | -25.35d | 0d | COST [1198.2]; Labor / Helper [16 h]; Electrician [8 h]; ELV Technician [16 h] | 1,198.2 |  | H | DIV-16 | Div16.8 |  |  |
|  | 3 | **PARKING WORK** |  | 2026-06-17 | 2026-12-31 |  |  |  |  |  |  |  |  |  |  |  |  |  |  |  |
| PG-H-CON-EX-GN-PR-20 |  | Interlock tiles(Completed) | 7d | 2026-06-17 A | 2026-06-24 A | PG-H-EN-LS-SD-AP-20, PG-H-PR-SL-LS-DL-20 | 100% |  |  |  |  |  | COST [38893.5]; Labor / Helper [7.2 h]; Tile Fixer [14.4 h] | 38,893.5 | 38,893.5 | H | DIV-2 |  | Div-2.2 |  |
| PG-H-CON-EX-GN-PR-20_R |  | Interlock tiles(Remaining) | 2.75d | 2026-07-11 A | 2026-07-30 A | PG-H-EN-LS-SD-AP-20, PG-H-PR-SL-LS-DL-20, PG-H-CON-EX-GN-PR-20, PG-H-EN-EL-SD-AP-70, PG-H-PR-SL-MT-DL-10, PG-H-EN-AR-SD-AP-30, PG-H-EN-AR-SD-AP-90 | 100% |  | 2026-10-31 | 2026-11-02 |  |  | COST [47536.5]; Labor / Helper [8.8 h]; Tile Fixer [17.6 h] | 47,536.5 | 47,536.5 | H | DIV-2 |  | Div-2.2 |  |
| PG-H-CON-EX-GN-PR-10 |  | Installlation of Parking Accessories | 5d | 2026-08-20 A | 2026-12-22 | PG-H-CON-EX-GN-E-150, PG-H-CON-EX-GN-E-150 FF | 75% | 1.25d | 2026-12-01 | 2026-12-07 | -21.6d | 3.75d | COST [86430]; Mason [16 h]; Labor / Helper [16 h] | 86,430 | 64,822.5 | H | DIV-2 |  | Div-2.2 |  |
| PG-H-CON-EX-GN-PR-30 |  | Marking & Signages | 5d | 2026-12-26 | 2026-12-31 | PG-H-CON-EX-GN-PR-20_R, PG-H-EN-LS-SD-AP-80, PG-H-PR-SL-LS-DL-50_R, PG-H-PR-SL-LS-DL-60_R, PG-H-CON-EX-GN-E-190 FF, PG-H-CON-EX-GN-PR-10, PG-H-CON-B-AR-RF-30, PG-H-CON-B-AR-WF-60, PG-H-CON-B-AR-GF-70 |  |  |  |  | -25.35d | 0d | COST [17716.2]; Spray Machine [48 h]; Site Engineer [4 h]; Labor / Helper [32 h]; Painter [48 h] | 17,716.2 |  | H | DIV-10 |  | Div-2.2 |  |
|  | 4 | **SERVICE CONNECTION** |  | 2026-07-30 | 2027-01-16 |  |  |  |  |  |  |  |  |  |  |  |  |  |  |  |
| PG-H-CON-EX-GN-SC-10 |  | Excavation & Trench Preparation | 8d | 2026-07-30 A | 2026-08-27 A | PG-H-CON-EX-GN-PR-30 FF, PG-H-CON-EX-GN-PR-20_R | 100% |  | 2026-11-26 | 2026-12-05 |  |  | COST [2232]; Dump Truck [32 h]; Excavator [8 h]; Site Engineer [4 h]; Labor / Helper [32 h]; Surveyor [8 h]; Excavator Operator [8 h]; Dump Truck Driver [32 h]; Safety Officer [8 h] | 2,232 | 2,232 | H | DIV-15 |  |  | Div15.2 |
| PG-H-CON-EX-GN-SC-20 |  | HDPE Pipe Laying & Valve Installation | 8d | 2026-08-20 A | 2027-01-03 | PG-H-CON-EX-GN-SC-10, PG-H-CON-EX-GN-SC-10 SS | 85% | 1.2d | 2026-12-13 | 2026-12-22 | -25.35d | 0d | COST [2232]; Labor / Helper [16 h]; Plumber [32 h] | 2,232 | 1,897.2 | H | DIV-15 |  |  | Div15.2 |
| PG-H-CON-EX-GN-SC-40 |  | Backfilling | 8d | 2026-08-27 A | 2027-01-16 | PG-H-PR-SL-LS-DL-10, PG-H-CON-EX-GN-SC-30, PG-H-CON-EX-GN-SC-30 FF | 60% | 3.2d | 2026-12-10 | 2026-12-20 | -25.35d | 7.3d | COST [1488]; Roller [16 h]; Loader [8 h]; Site Engineer [4 h]; Mason [16 h]; Surveyor [4 h]; Loader Operator [8 h]; Roller Operator [16 h] | 1,488 | 892.8 | H | DIV-15 |  |  | Div15.2 |
| PG-H-CON-EX-GN-SC-30 |  | Connection to City Network | 8d | 2027-01-03 | 2027-01-12 | PG-H-CON-EX-GN-SC-20, PG-H-CON-EX-GN-PR-30 |  |  |  |  | -25.35d | 0d | COST [1488]; Labor / Helper [16 h]; Plumber [32 h] | 1,488 |  | H | DIV-15 |  |  | Div15.2 |
|  | LS | **LANDSCAPING WORKS** |  | 2026-05-30 | 2026-12-07 |  |  |  |  |  |  |  |  |  |  |  |  |  |  |  |
|  | HSP | **HARDSCAPE WORK** |  | 2026-05-30 | 2026-12-07 |  |  |  |  |  |  |  |  |  |  |  |  |  |  |  |
| PG-H-CON-EX-LS-HS-10 |  | Curbstone Installation(Completed) | 22d | 2026-05-30 A | 2026-06-24 A | PG-H-EN-LS-SD-AP-10, PG-H-PR-SL-LS-DL-40 | 100% |  | 2026-05-31 | 2026-06-24 |  |  | COST [251136]; Mason [9.6 h]; Labor / Helper [9.6 h] | 251,136 | 251,136 | H | DIV-2 |  | Div-2.3 |  |
| PG-H-CON-EX-LS-HS-20 |  | Interlock Tiles Grey Scale with Black Marble Chips(Completed) | 22d | 2026-05-30 A | 2026-06-24 A | PG-H-CON-EX-LS-HS-10 SS | 100% |  | 2026-05-31 | 2026-06-24 |  |  | COST [36036]; Labor / Helper [6.4 h]; Tile Fixer [12.8 h] | 36,036 | 36,036 | H | DIV-2 |  | Div-2.3 |  |
| PG-H-CON-EX-LS-HS-40 |  | Bike Path and Walking Path Construction(Completed) | 22d | 2026-05-30 A | 2026-06-24 A | PG-H-EN-LS-SD-AP-50, PG-H-EN-LS-SD-AP-60, PG-H-CON-EX-LS-HS-30 SS, PG-H-PR-LL-LS-DL-10 SS | 100% |  | 2026-05-31 | 2026-06-24 |  |  | COST [181071]; Labor / Helper [8.8 h]; Applicator [8.8 h]; Concrete Mason [8.8 h] | 181,071 | 181,071 | H | DIV-2 |  | Div-2.3 |  |
| PG-H-CON-EX-LS-HS-50 |  | Install Recycled Precast Concrete Seats(Completed) | 22d | 2026-05-30 A | 2026-06-24 A | PG-H-CON-EX-LS-HS-40 SS, PG-H-PR-LL-LS-DL-20 SS | 100% |  | 2026-05-31 | 2026-06-24 |  |  | COST [11599.1]; Mason [1.6 h]; Labor / Helper [1.6 h] | 11,599.14 | 11,599.14 | H | DIV-2 |  | Div-2.3 |  |
| PG-H-CON-EX-LS-HS-30 |  | Stamped Concrete Floor(Completed) | 13d | 2026-06-10 A | 2026-06-24 A | PG-H-EN-LS-SD-AP-30, PG-H-CON-EX-LS-HS-20 SS | 100% |  |  |  |  |  | COST [43470]; Labor / Helper [8 h]; Concrete Mason [8 h] | 43,470 | 43,470 | H | DIV-2 |  | Div-2.3 |  |
| PG-H-CON-EX-LS-HS-40_R |  | Bike Path and Walking Path Construction(Remaining) | 8d | 2026-07-09 A | 2026-11-19 | PG-H-CON-EX-LS-SS-10 FF, PG-H-EN-LS-SD-AP-50, PG-H-EN-LS-SD-AP-60, PG-H-CON-EX-LS-HS-40, PG-H-PR-LL-LS-DL-10_R FF, PG-H-CON-EX-LS-HS-30_R FF | 95% | 0.4d | 2026-10-25 | 2026-11-02 | -19.7d | 0d | COST [148149]; Labor / Helper [7.2 h]; Applicator [7.2 h]; Concrete Mason [7.2 h] | 148,149 | 140,741.55 | H | DIV-2 |  | Div-2.3 |  |
| PG-H-CON-EX-LS-HS-10_R |  | Curbstone Installation(Remaining) | 8d | 2026-07-22 A | 2026-08-27 A | PG-H-CON-EX-GN-FN-50 FF, PG-H-CON-EX-TW-IR-40 FF, PG-H-CON-EX-TW-ST-70 FF, PG-H-EN-LS-SD-AP-10, PG-H-PR-SL-LS-DL-40, PG-H-CON-EX-LS-HS-10, PG-H-CON-EX-GN-FN-20, PG-H-EN-ME-SD-AP-40, PG-H-CON-EX-TW-ST-30_R | 100% |  | 2026-09-29 | 2026-10-08 |  |  | COST [167424]; Mason [6.4 h]; Labor / Helper [6.4 h] | 167,424 | 167,424 | H | DIV-2 |  | Div-2.3 |  |
| PG-H-CON-EX-LS-HS-30_R |  | Stamped Concrete Floor(Remaining) | 15d | 2026-07-30 A | 2026-11-08 | PG-H-EN-LS-SD-AP-30, PG-H-CON-EX-LS-HS-30, PG-H-CON-EX-LS-HS-20_R FF | 90% | 1.5d | 2026-10-14 | 2026-10-31 | -9.7d | 10d | COST [43470]; Labor / Helper [8 h]; Concrete Mason [8 h] | 43,470 | 39,123 | H | DIV-2 |  | Div-2.3 |  |
| PG-H-CON-EX-LS-HS-50_R |  | Install Recycled Precast Concrete Seats(Remaining) | 10d | 2026-07-30 A | 2026-11-25 | PG-H-CON-EX-LS-HS-50, PG-H-PR-LL-LS-DL-20_R FF, PG-H-CON-EX-LS-HS-40_R SS | 40% | 6d | 2026-11-10 | 2026-11-21 | -19.7d | 0d | COST [104392]; Mason [14.4 h]; Labor / Helper [14.4 h] | 104,392.26 | 41,756.9 | H | DIV-2 |  | Div-2.3 |  |
| PG-H-CON-EX-LS-HS-20_R |  | Interlock Tiles Grey Scale with Black Marble Chips(Remaining) | 13d | 2026-08-27 A | 2026-11-08 | PG-H-CON-EX-LS-HS-10_R, PG-H-CON-EX-LS-HS-20 | 70% | 3.9d | 2026-10-18 | 2026-11-02 | -19.7d | 0d | COST [54054]; Labor / Helper [9.6 h]; Tile Fixer [19.2 h] | 54,054 | 37,837.8 | H | DIV-2 |  | Div-2.3 |  |
| PG-H-CON-EX-LS-HS-60 |  | Install Recycled Precast Concrete Trash Bins | 10d | 2026-11-25 | 2026-12-07 | PG-H-CON-EX-LS-HS-50_R |  |  |  |  | -19.7d | 0d | COST [5412]; Mason [16 h]; Labor / Helper [16 h] | 5,412 |  | H | DIV-2 |  | Div-2.3 |  |

| ID | WBS | Activity | Duration | Start | Finish | Predecessors | Complete | Remaining | Planned start | Planned finish | Total float | Free float | Resources | Cost | Actual cost | H,Q,T-Location | BOQ DIVISION | DIVISION-02-SITE WORKS | DIVISION-3 CONCRETE | DIVISION 15-MECHANICAL WORKS | DIVISION 07-THERMAL & MOISTURE PROTECTIO |
| --- | --- | --- | --- | --- | --- | --- | --- | --- | --- | --- | --- | --- | --- | --- | --- | --- | --- | --- | --- | --- | --- |
|  | SSP | **SOFTSCAPE WORK** |  | 2026-06-03 | 2026-12-07 |  |  |  |  |  |  |  |  |  |  |  |  |  |  |  |  |
| PG-H-CON-EX-LS-SS-20 |  | Lawn Area Preparation & Planting / Turfing(Completed) | 18.75d | 2026-06-03 A | 2026-06-24 A | PG-H-EN-LS-SD-AP-70, PG-H-PR-SL-LS-DL-80 SS | 100% |  |  |  |  |  | COST [54600]; Site Engineer [2 h]; Labor / Helper [16 h]; Gardener [24 h] | 54,600 | 54,600 | H | DIV-2 | Div-2.3 |  |  |  |
| PG-H-CON-EX-LS-SS-20_R |  | Lawn Area Preparation & Planting / Turfing(Remaining) | 6.5d | 2026-08-27 A | 2026-12-07 | PG-H-CON-EX-LS-SS-10 FF, PG-H-CON-EX-LS-HS-60 FF, PG-H-EN-LS-SD-AP-70, PG-H-PR-SL-LS-DL-80_R, PG-H-CON-EX-LS-SS-20, PG-H-PR-SL-LS-DL-80_R FF | 75% | 1.62d | 2026-11-25 | 2026-12-02 | -19.7d | 0d | COST [54600]; Site Engineer [2 h]; Labor / Helper [16 h]; Gardener [24 h] | 54,600 | 40,950 | H | DIV-2 | Div-2.3 |  |  |  |
| PG-H-CON-EX-LS-SS-10 |  | Planting Trees | 10d | 2026-11-08 | 2026-11-19 | PG-H-EN-LS-SD-AP-70, PG-H-PR-SL-LS-DL-70_R, PG-H-CON-EX-LS-HS-20_R, PG-H-CON-EX-GN-FN-50, PG-H-CON-EX-TW-IR-40, PG-H-CON-EX-TW-ST-70 |  |  |  |  | -19.7d | 0d | COST [96639]; Site Engineer [4 h]; Labor / Helper [32 h]; Gardener [48 h] | 96,639 |  | H | DIV-2 | Div-2.3 |  |  |  |
|  | W.T | **TANK WORKS** |  | 2026-05-13 | 2026-11-03 |  |  |  |  |  |  |  |  |  |  |  |  |  |  |  |  |
|  | 1 | **SEPTIC TANK** |  | 2026-05-13 | 2026-10-28 |  |  |  |  |  |  |  |  |  |  |  |  |  |  |  |  |
| PG-H-CON-EX-TW-ST-10 |  | Excavation | 32d | 2026-05-13 A | 2026-06-23 A | PG-H-CON-EX-CF-30 | 100% |  |  |  |  |  | COST [252.18]; Dump Truck [32 h]; Excavator [8 h]; Site Engineer [4 h]; Labor / Helper [32 h]; Surveyor [8 h]; Excavator Operator [8 h]; Dump Truck Driver [32 h]; Safety Officer [8 h] | 252.18 | 252.18 | H | DIV-3 |  | Div-3 |  |  |
| PG-H-CON-EX-TW-ST-20 |  | PCC / Lean Concrete laying | 27d | 2026-05-20 A | 2026-06-24 A | PG-H-CON-EX-TW-ST-10, PG-H-CON-EX-TW-ST-10 SS | 100% |  |  |  |  |  | COST [168.12]; Site Engineer [4 h]; Labor / Helper [8 h]; Surveyor [8 h]; Safety Officer [4 h]; Concrete Mason [16 h] | 168.12 | 168.12 | H | DIV-3 |  | Div-3 |  |  |
| PG-H-CON-EX-TW-ST-30 |  | RCC Foundation(Completed) | 13d | 2026-06-10 A | 2026-06-24 A | PG-H-CON-EX-TW-ST-20, PG-H-EN-ST-SD-AP-70, PG-H-EN-ST-SD-AP-80, PG-H-CON-EX-TW-ST-20 SS | 100% |  |  |  |  |  | COST [766.58]; Labor / Helper [4.8 h]; Concrete Mason [9.6 h]; Carpenter [9.6 h]; Steel Fixer [9.6 h] | 766.58 | 766.58 | H | DIV-3 |  | Div-3 |  |  |
| PG-H-CON-EX-TW-ST-30_R |  | RCC Foundation(Remaining) | 6d | 2026-07-30 A | 2026-08-27 A | PG-H-CON-EX-TW-ST-20, PG-H-EN-ST-SD-AP-70, PG-H-EN-ST-SD-AP-80, PG-H-CON-EX-TW-ST-20 SS, PG-H-CON-EX-TW-ST-30 | 100% |  | 2026-08-02 | 2026-08-08 |  |  | COST [511.06]; Labor / Helper [3.2 h]; Concrete Mason [6.4 h]; Carpenter [6.4 h]; Steel Fixer [6.4 h] | 511.06 | 511.06 | H | DIV-3 |  | Div-3 |  |  |
| PG-H-CON-EX-TW-ST-40 |  | RCC Wall | 7d | 2026-08-14 A | 2026-10-05 | PG-H-CON-EX-TW-ST-30_R SS | 70% | 2.1d | 2026-08-16 | 2026-08-24 | -15.05d | 0d | COST [2757.6]; Labor / Helper [8 h]; Concrete Mason [16 h]; Carpenter [16 h]; Steel Fixer [16 h] | 2,757.6 | 1,930.32 | H | DIV-3 |  | Div-3 |  |  |
| PG-H-CON-EX-TW-ST-50 |  | RCC Slab | 7d | 2026-08-27 A | 2026-10-07 | PG-H-CON-EX-TW-ST-40, PG-H-CON-EX-TW-ST-40 SS | 65% | 2.45d | 2026-08-31 | 2026-09-08 | -15.05d | 4.65d | COST [2599.38]; Labor / Helper [8 h]; Concrete Mason [16 h]; Carpenter [16 h]; Steel Fixer [16 h] | 2,599.38 | 1,689.6 | H | DIV-3 |  | Div-3 |  |  |
| PG-H-CON-EX-TW-ST-60 |  | Finishing Work | 7d | 2026-10-13 | 2026-10-21 | PG-H-CON-EX-TW-ST-50, PG-H-CON-EX-GN-FN-50 |  |  |  |  | -19.7d | 0d | COST [252.18]; Labor / Helper [8 h]; Applicator [16 h] | 252.18 |  | H | DIV-3 |  | Div-3 |  |  |
| PG-H-CON-EX-TW-ST-70 |  | Backfilling | 6d | 2026-10-21 | 2026-10-28 | PG-H-CON-EX-TW-ST-60 |  |  |  |  | -19.7d | 0d | COST [168.12]; Roller [8 h]; Loader [8 h]; Site Engineer [4 h]; Mason [16 h]; Surveyor [4 h]; Loader Operator [8 h]; Roller Operator [8 h] | 168.12 |  | H | DIV-3 |  | Div-3 |  |  |
|  | 2 | **WATER STORAGE TANK** |  | 2026-05-13 | 2026-11-03 |  |  |  |  |  |  |  |  |  |  |  |  |  |  |  |  |
| PG-H-CON-EX-TW-IR-10 |  | Excavation(Completed) | 33d | 2026-05-13 A | 2026-06-24 A | PG-H-EN-ST-SD-AP-50 | 100% |  |  |  |  |  | COST [766.58]; Dump Truck [28.8 h]; Excavator [7.2 h]; Site Engineer [3.6 h]; Labor / Helper [28.8 h]; Surveyor [7.2 h]; Excavator Operator [7.2 h]; Dump Truck Driver [28.8 h]; Safety Officer [7.2 h] | 766.58 | 766.58 | H | DIV-3 |  | Div-3 |  |  |
| PG-H-CON-EX-TW-IR-10_R |  | Excavation(Remaining) | 3d | 2026-07-08 A | 2026-07-09 A | PG-H-EN-ST-SD-AP-50, PG-H-CON-EX-TW-IR-10, PG-H-CON-EX-TW-ST-20 | 100% |  | 2026-09-14 | 2026-09-16 |  |  | COST [85.18]; Dump Truck [3.2 h]; Excavator [0.8 h]; Site Engineer [0.4 h]; Labor / Helper [3.2 h]; Surveyor [0.8 h]; Excavator Operator [0.8 h]; Dump Truck Driver [3.2 h]; Safety Officer [0.8 h] | 85.18 | 85.18 | H | DIV-3 |  | Div-3 |  |  |
| PG-H-CON-EX-TW-IR-20 |  | RCC Foundation | 6d | 2026-07-23 A | 2026-08-27 A | PG-H-CON-EX-TW-IR-10_R, PG-H-EN-ST-SD-AP-60, PG-H-CON-EX-TW-ST-70 FF, PG-H-CON-EX-TW-ST-30_R | 100% |  | 2026-09-26 | 2026-10-01 |  |  | COST [4136.4]; Labor / Helper [16 h]; Concrete Mason [24 h]; Carpenter [16 h]; Steel Fixer [16 h] | 4,136.4 | 4,136.4 | H | DIV-3 |  | Div-3 |  |  |
| PG-H-CON-EX-TW-IR-30 |  | Backfilling | 5d | 2026-08-14 A | 2026-08-27 A | PG-H-CON-EX-TW-IR-20 SS | 100% |  | 2026-10-08 | 2026-10-14 |  |  | COST [1114.02]; Roller [16 h]; Loader [8 h]; Site Engineer [4 h]; Mason [16 h]; Surveyor [4 h]; Loader Operator [8 h]; Roller Operator [16 h] | 1,114.02 | 1,114.02 | H | DIV-3 |  | Div-3 |  |  |
| PG-H-CON-EX-TW-IR-40 |  | GRP Water Tank Installation | 5d | 2026-10-28 | 2026-11-03 | PG-H-CON-EX-TW-IR-30, PG-H-EN-ME-SD-AP-40, PG-H-PR-LL-PB-DL-20_R, PG-H-CON-EX-TW-ST-70 |  |  |  |  | -19.7d | 0d | COST [34713]; Crane [4 h]; Mason [32 h]; Labor / Helper [16 h]; Crane Operator [4 h] | 34,713 |  | H | DIV-15 |  |  | Div15.2 |  |
|  | B | **TOILET BUILDING WORKS** |  | 2026-05-12 | 2026-11-12 |  |  |  |  |  |  |  |  |  |  |  |  |  |  |  |  |
|  | CVL | **CIVIL WORK** |  | 2026-05-12 | 2026-11-11 |  |  |  |  |  |  |  |  |  |  |  |  |  |  |  |  |
|  | ST | **STRUCTURAL WORK** |  | 2026-05-12 | 2026-07-23 |  |  |  |  |  |  |  |  |  |  |  |  |  |  |  |  |
| PG-H-CON-B-STR-10 |  | Excavation up to bottom of footing | 2d | 2026-05-12 A | 2026-05-13 A | PG-H-EN-ST-SD-AP-30, PG-Q-MOB-CAM-40 | 100% |  |  |  |  |  | COST [1900.8]; Dump Truck [32 h]; Excavator [8 h]; Site Engineer [4 h]; Labor / Helper [32 h]; Surveyor [8 h]; Excavator Operator [8 h]; Dump Truck Driver [32 h]; Safety Officer [8 h] | 1,900.8 | 1,900.8 | H | DIV-3 |  | Div-3 |  |  |
| PG-H-CON-B-STR-20 |  | Anti-termite treatment and Polyethene Sheet | 2d | 2026-05-12 A | 2026-05-13 A | PG-H-CON-B-STR-10 | 100% |  |  |  |  |  | COST [3294]; Mason [16 h]; Labor / Helper [16 h] | 3,294 | 3,294 | H | DIV-7 |  |  |  | Div-07 |
| PG-H-CON-B-STR-30 |  | Backfilling with selected fill material (under footing) | 1d | 2026-05-13 A | 2026-05-13 A | PG-H-CON-B-STR-20, PG-H-PR-SL-LS-DL-10 | 100% |  |  |  |  |  | COST [1900.8]; Roller [8 h]; Loader [8 h]; Site Engineer [4 h]; Mason [16 h]; Surveyor [4 h]; Loader Operator [8 h]; Roller Operator [8 h] | 1,900.8 | 1,900.8 | H | DIV-3 |  | Div-3 |  |  |
| PG-H-CON-B-STR-40 |  | Raft Foundation Work | 27d | 2026-05-13 A | 2026-06-17 A | PG-H-CON-B-STR-30, PG-H-EN-ST-SD-AP-40, PG-H-PR-SL-CO-DL-10, PG-H-PR-SL-CO-DL-20 | 100% |  |  |  |  |  | COST [2534.4]; Labor / Helper [32 h]; Carpenter [16 h]; Steel Fixer [16 h] | 2,534.4 | 2,534.4 | H | DIV-3 |  | Div-3 |  |  |
| PG-H-CON-B-STR-50 |  | Autoclaved aerated panel (walls) | 4d | 2026-07-11 A | 2026-07-12 A | PG-H-CON-B-STR-40, PG-H-PR-LL-CO-DL-10_R | 100% |  | 2026-07-14 | 2026-07-18 |  |  | COST [11340]; Mason [32 h]; Labor / Helper [16 h] | 11,340 | 11,340 | H | DIV-3 |  | Div-3 |  |  |
| PG-H-CON-B-STR-60 |  | Autoclaved aerated panel (ceiling) | 3d | 2026-07-12 A | 2026-07-16 A | PG-H-CON-B-STR-50, PG-H-PR-LL-CO-DL-10_R | 100% |  | 2026-07-19 | 2026-07-21 |  |  | COST [8505]; Mason [32 h]; Labor / Helper [16 h] | 8,505 | 8,505 | H | DIV-3 |  | Div-3 |  |  |
| PG-H-CON-B-STR-70 |  | Autoclaved aerated panel (parapet) | 2d | 2026-07-12 A | 2026-07-23 A | PG-H-CON-B-STR-60, PG-H-PR-LL-CO-DL-10_R | 100% |  | 2026-07-22 | 2026-07-23 |  |  | COST [8505]; Mason [32 h]; Labor / Helper [16 h] | 8,505 | 8,505 | H | DIV-3 |  | Div-3 |  |  |

| ID | WBS | Activity | Duration | Start | Finish | Predecessors | Complete | Remaining | Planned start | Planned finish | Total float | Free float | Resources | Cost | Actual cost | H,Q,T-Location | BOQ DIVISION | DIVISION-4 MASONRY | DIVISION 9-FINISHES | DIVISION 8- DOORS & WINDOWS | DIVISION 10-SPECIALTIES | DIVISION 07-THERMAL & MOISTURE PROTECTIO | DIVISION 15-MECHANICAL WORKS | DIVISION-5-METALS |
| --- | --- | --- | --- | --- | --- | --- | --- | --- | --- | --- | --- | --- | --- | --- | --- | --- | --- | --- | --- | --- | --- | --- | --- | --- |
|  | AR | **ARCHITECTURAL WORK** |  | 2026-07-31 | 2026-11-11 |  |  |  |  |  |  |  |  |  |  |  |  |  |  |  |  |  |  |  |
|  | 1 | **GENERAL FINISHES** |  | 2026-07-31 | 2026-11-11 |  |  |  |  |  |  |  |  |  |  |  |  |  |  |  |  |  |  |  |
| PG-H-CON-B-AR-GF-10 |  | Block Works | 4d | 2026-07-31 A | 2026-08-05 A | PG-H-CON-B-STR-70, PG-H-EN-AR-SD-AP-10, PG-H-EN-AR-SD-AP-40, PG-H-PR-SL-CO-DL-40 | 100% |  | 2026-08-02 | 2026-08-05 |  |  | COST [2484]; Mason [32 h]; Labor / Helper [16 h] | 2,484 | 2,484 | H | DIV-4 | Div-4 |  |  |  |  |  |  |
| PG-H-CON-B-AR-GF-20 |  | Plaster | 4d | 2026-08-06 A | 2026-08-07 A | PG-H-CON-B-AR-GF-10, PG-H-CON-B-GF-EL-10, PG-H-PR-SL-AR-DL-40 | 100% |  | 2026-09-02 | 2026-09-06 |  |  | COST [4427.4]; Mason [32 h]; Labor / Helper [16 h] | 4,427.4 | 4,427.4 | H | DIV-9 |  | Div-9.2 |  |  |  |  |  |
| PG-H-CON-B-AR-GF-30 |  | False Ceiling Installation & Finishing | 8d | 2026-08-20 A | 2026-09-15 A | PG-H-CON-B-AR-GF-20, PG-H-CON-B-GF-DR-20, PG-H-EN-AR-SD-AP-60, PG-H-PR-SL-AR-DL-100, PG-H-PR-SL-EL-DL-10_R, PG-H-PR-SL-EL-DL-10_R FF | 100% |  | 2026-09-14 | 2026-09-22 |  |  | COST [873.6]; Labor / Helper [16 h]; Applicator [16 h]; Ceiling Installer [16 h] | 873.6 | 873.6 | H | DIV-9 |  | Div-9.3 |  |  |  |  |  |
| PG-H-CON-B-AR-GF-40 |  | Wall Paint | 3d | 2026-08-20 A | 2026-10-10 | PG-H-CON-B-AR-GF-30, PG-H-PR-SL-AR-DL-50, PG-H-CON-B-GF-EL-50, PG-H-CON-B-AR-GF-30 SS, PG-H-CON-B-GF-EL-50 SS | 70% | 0.9d | 2026-10-25 | 2026-10-27 | 18.5d | 0d | COST [2958]; Spray Machine [32 h]; Labor / Helper [16 h]; Painter [32 h] | 2,958 | 2,070.6 | H | DIV-9 |  | Div-9.2 |  |  |  |  |  |
| PG-H-CON-B-AR-GF-50 |  | Epoxy Flooring | 7d | 2026-08-20 A | 2026-10-12 | PG-H-CON-B-AR-GF-40, PG-H-EN-AR-SD-AP-50, PG-H-PR-SL-AR-DL-30, PG-H-CON-B-AR-GF-40 SS | 70% | 2.1d | 2026-10-28 | 2026-11-04 | 18.5d | 0d | COST [273.6]; Labor / Helper [16 h]; Applicator [40 h] | 273.6 | 191.52 | H | DIV-9 |  | Div-9.1 |  |  |  |  |  |
| PG-H-CON-B-AR-GF-70 |  | Facade Finishing Work | 18d | 2026-08-20 A | 2026-09-16 A | PG-H-EN-AR-SD-AP-90, PG-H-EN-AR-SD-AP-100, PG-H-PR-LL-MT-DL-20_R, PG-H-PR-SL-AR-DL-60, PG-H-PR-SL-AR-DL-70, PG-H-CON-B-AR-GF-50, PG-H-PR-LL-MT-DL-20_R FF, PG-H-CON-B-AR-GF-50 SS | 100% |  | 2026-11-05 | 2026-11-25 |  |  | COST [7551.6]; Labor / Helper [16 h]; Carpenter [32 h] | 7,551.6 | 7,551.6 | H | DIV-9 |  | Div-9.2 |  |  |  |  |  |
| PG-H-CON-B-AR-GF-60 |  | Install Doors & Windows | 5d | 2026-08-27 A | 2026-10-14 | PG-H-CON-B-AR-GF-50, PG-H-EN-AR-SD-AP-30, PG-H-EN-AR-SD-AP-80, PG-H-EN-AR-SD-AP-40, PG-H-PR-LL-MT-DL-10_R, PG-H-CON-B-AR-GF-50 SS, PG-H-PR-LL-MT-DL-10_R SS | 70% | 1.5d | 2026-10-12 | 2026-10-17 | 18.5d | 16.9d | COST [13273.8]; Labor / Helper [16 h]; Carpenter [16 h] | 13,273.8 | 9,291.66 | H | DIV-8 |  |  | Div-8.1 |  |  |  |  |
| PG-H-CON-B-AR-GF-80 |  | Lockers and Furniture Installation | 7d | 2026-11-03 | 2026-11-11 | PG-H-CON-B-AR-GF-60, PG-H-CON-B-AR-GF-70 SS |  |  |  |  | 1.6d | 0d | COST [55927.2]; Labor / Helper [16 h]; Facade Technician [32 h] | 55,927.2 |  | H | DIV-10 |  |  |  | Div-10 |  |  |  |
|  | 2 | **WET AREA FINISHES** |  | 2026-08-07 | 2026-10-12 |  |  |  |  |  |  |  |  |  |  |  |  |  |  |  |  |  |  |  |
| PG-H-CON-B-AR-WF-20 |  | Wall Tiles and Partition Work | 3d | 2026-08-07 A | 2026-08-14 A | PG-H-EN-AR-SD-AP-70, PG-H-EN-AR-SD-AP-30, PG-H-PR-SL-AR-DL-10, PG-H-PR-SL-AR-DL-80, PG-H-PR-SL-AR-DL-90, PG-H-CON-B-GF-WS-20, PG-H-CON-B-AR-WF-10 FF, PG-H-CON-B-AR-GF-40 FF, PG-H-EN-AR-SD-AP-60, PG-H-PR-SL-AR-DL-50 | 100% |  | 2026-10-14 | 2026-10-17 |  |  | COST [21283.2]; Mason [16 h]; Labor / Helper [16 h]; Tile Fixer [16 h] | 21,283.2 | 21,283.2 | H | DIV-9 |  | Div-9.2 |  |  |  |  |  |
| PG-H-CON-B-AR-WF-30 |  | Waterproofing on Floor | 2d | 2026-08-14 A | 2026-09-16 A | PG-H-EN-AR-SD-AP-50, PG-H-PR-SL-CO-DL-30, PG-H-PR-SL-AR-DL-120, PG-H-CON-B-AR-WF-20 SS | 100% |  | 2026-10-21 | 2026-10-24 |  |  | COST [5784]; Labor / Helper [16 h]; Applicator [16 h] | 5,784 | 5,784 | H | DIV-7 |  |  |  |  | Div-07 |  |  |
| PG-H-CON-B-AR-WF-40 |  | Floor Tiles Works | 10d | 2026-08-14 A | 2026-09-16 A | PG-H-CON-B-AR-WF-30, PG-H-PR-SL-AR-DL-20, PG-H-CON-B-AR-WF-30 SS | 100% |  | 2026-10-22 | 2026-11-03 |  |  | COST [6489]; Labor / Helper [16 h]; Tile Fixer [16 h] | 6,489 | 6,489 | H | DIV-9 |  | Div-9.1 |  |  |  |  |  |
| PG-H-CON-B-AR-WF-10 |  | False Ceiling Installation & Finishing | 4d | 2026-08-20 A | 2026-09-16 A | PG-H-EN-AR-SD-AP-60, PG-H-PR-SL-AR-DL-100, PG-H-CON-B-AR-GF-20 | 100% |  | 2026-08-23 | 2026-08-26 |  |  | COST [2898]; Labor / Helper [16 h]; Applicator [16 h]; Ceiling Installer [16 h] | 2,898 | 2,898 | H | DIV-9 |  | Div-9.3 |  |  |  |  |  |
| PG-H-CON-B-AR-WF-50 |  | Toliet accessories Installation Works | 9d | 2026-08-27 A | 2026-09-16 A | PG-H-CON-B-AR-WF-40, PG-H-EN-AR-SD-AP-70, PG-H-PR-SL-AR-DL-110, PG-H-CON-B-AR-WF-40 SS | 100% |  | 2026-08-31 | 2026-09-09 |  |  | COST [39308]; Labor / Helper [8 h]; Plumber [16 h] | 39,307.98 | 39,307.98 | H | DIV-15 |  |  |  |  |  | Div15.3 |  |
| PG-H-CON-B-AR-WF-60 |  | Install Doors | 4d | 2026-08-27 A | 2026-10-12 | PG-H-EN-AR-SD-AP-30, PG-H-EN-AR-SD-AP-80, PG-H-EN-AR-SD-AP-40, PG-H-PR-LL-MT-DL-10_R, PG-H-CON-B-AR-WF-40, PG-H-PR-LL-MT-DL-10_R SS, PG-H-CON-B-AR-WF-40 SS | 65% | 1.4d | 2026-10-12 | 2026-10-15 | 34.9d | 34.95d | COST [5361.6]; Labor / Helper [16 h]; Carpenter [16 h] | 5,361.6 | 3,485.04 | H | DIV-9 |  | Div-9.2 |  |  |  |  |  |
|  | 3 | **ROOF FINISHES** |  | 2026-08-20 | 2026-11-11 |  |  |  |  |  |  |  |  |  |  |  |  |  |  |  |  |  |  |  |
| PG-H-CON-B-AR-RF-10 |  | Waterproofing on Floor | 4d | 2026-08-20 A | 2026-10-12 | PG-H-CON-B-AR-WF-30, PG-H-EN-AR-SD-AP-20, PG-H-PR-SL-CO-DL-30, PG-H-PR-SL-AR-DL-120, PG-H-CON-B-AR-WF-10, PG-H-CON-B-AR-GF-40, PG-H-CON-B-AR-WF-30 SS, PG-H-CON-B-AR-WF-10 SS, PG-H-CON-B-AR-GF-40 SS | 60% | 1.6d | 2026-10-28 | 2026-11-01 | 25d | 0d | COST [4158]; Labor / Helper [16 h]; Applicator [16 h] | 4,158 | 2,494.8 | H | DIV-7 |  |  |  |  | Div-07 |  |  |
| PG-H-CON-B-AR-RF-20 |  | Epoxy Flooring and Finishes | 2d | 2026-08-27 A | 2026-10-12 | PG-H-CON-B-AR-RF-10, PG-H-PR-SL-AR-DL-30, PG-H-CON-B-AR-RF-10 SS | 75% | 0.5d | 2026-09-20 | 2026-09-22 | 25d | 23.4d | COST [10158]; Labor / Helper [16 h]; Applicator [40 h] | 10,158 | 7,618.5 | H | DIV-7 |  |  |  |  | Div-07 |  |  |
| PG-H-CON-B-AR-RF-30 |  | Steel ladder and Steel roof scupper Installation | 2d | 2026-11-09 | 2026-11-11 | PG-H-PR-SL-MT-DL-10, PG-H-PR-SL-MT-DL-20, PG-H-PR-SL-MT-DL-30, PG-H-CON-B-AR-GF-80 FF, PG-H-CON-B-AR-RF-20 |  |  |  |  | 1.6d | 0d | COST [9577.8]; Labor / Helper [16 h]; Mechanical Technician [32 h] | 9,577.8 |  | H | DIV-5 |  |  |  |  |  |  | Div-5 |
|  | MEP | **MEP WORK** |  | 2026-07-22 | 2026-11-12 |  |  |  |  |  |  |  |  |  |  |  |  |  |  |  |  |  |  |  |
|  | MEC | **MECANICAL WORKS** |  | 2026-07-22 | 2026-11-12 |  |  |  |  |  |  |  |  |  |  |  |  |  |  |  |  |  |  |  |
|  | FF | **FIRE FIGHTING SYSTEM** |  | 2026-11-11 | 2026-11-12 |  |  |  |  |  |  |  |  |  |  |  |  |  |  |  |  |  |  |  |
| PG-H-CON-B-GF-FF-10 |  | Fire Extinguisher Installation | 1d | 2026-11-11 | 2026-11-12 | PG-H-PR-SL-FF-DL-10_R, PG-H-CON-B-AR-RF-30 |  |  |  |  | 1.6d | 7.85d | COST [136.26]; Labor / Helper [16 h]; Mechanical Technician [16 h] | 136.26 |  | H | DIV-15 |  |  |  |  |  | Div15.1 |  |

| ID | WBS | Activity | Duration | Start | Finish | Predecessors | Complete | Remaining | Planned start | Planned finish | Total float | Free float | Resources | Cost | Actual cost | H,Q,T-Location | BOQ DIVISION | DIVISION 15-MECHANICAL WORKS | DIVISION 16 ELECTRICAL WORKS |
| --- | --- | --- | --- | --- | --- | --- | --- | --- | --- | --- | --- | --- | --- | --- | --- | --- | --- | --- | --- |
|  | DS | **SEWER AND DRAINAGE SYSTEM** |  | 2026-07-22 | 2026-10-07 |  |  |  |  |  |  |  |  |  |  |  |  |  |  |
| PG-H-CON-B-GF-DR-20 |  | Sewer and Drainge System Pipes and fittings Installation | 2d | 2026-07-22 A | 2026-08-05 A | PG-H-EN-ME-SD-AP-60, PG-H-EN-ME-SD-AP-70, PG-H-PR-SL-PB-DL-20, PG-H-PR-SL-PB-DL-30, PG-H-CON-B-GF-WS-20 FF, PG-H-CON-B-GF-DR-10 SS | 100% |  | 2026-08-30 | 2026-08-31 |  |  | COST [4838.58]; Plumber [32 h]; Fitter [16 h] | 4,838.58 | 4,838.58 | H | DIV-15 | Div15.3 |  |
| PG-H-CON-B-GF-DR-10 |  | Sewer and Drainge System Main Lines Installation | 2d | 2026-07-30 A | 2026-10-03 | PG-H-CON-B-GF-WS-10, PG-H-EN-ME-SD-AP-50, PG-H-PR-SL-PB-DL-20 | 85% | 0.3d | 2026-08-12 | 2026-08-13 | 18.6d | 0d | COST [3225.72]; Plumber [32 h]; Fitter [16 h] | 3,225.72 | 2,741.86 | H | DIV-15 | Div15.3 |  |
| PG-H-CON-B-GF-DR-30 |  | Sanitaryware Installation (Final Fix) | 2d | 2026-10-05 | 2026-10-07 | PG-H-CON-B-GF-DR-20, PG-H-CON-B-GF-WS-30, PG-H-EN-ME-SD-AP-70 |  |  |  |  | 18.6d | 0d | COST [3225.72]; Plumber [32 h]; Fitter [16 h] | 3,225.72 |  | H | DIV-15 | Div15.3 |  |
|  | HV | **HVAC SYSTEM** |  | 2026-08-13 | 2026-10-04 |  |  |  |  |  |  |  |  |  |  |  |  |  |  |
| PG-H-CON-B-GF-AC-10 |  | Duct Work and Exhaust Fan Installation | 3d | 2026-08-13 A | 2026-08-20 A | PG-H-CON-B-AR-GF-10, PG-H-PR-SL-AC-DL-20, PG-H-PR-SL-AC-DL-40 | 100% |  | 2026-08-23 | 2026-08-25 |  |  | COST [4442.4]; Labor / Helper [16 h]; HVAC Technician [32 h] | 4,442.4 | 4,442.4 | H | DIV-15 | Div15.4 |  |
| PG-H-CON-B-GF-AC-20 |  | Split AC, Grills & Diffuser Installation | 3d | 2026-09-26 A | 2026-10-04 | PG-H-CON-B-GF-AC-10, PG-H-CON-B-AR-GF-20, PG-H-PR-SL-AC-DL-10, PG-H-PR-SL-AC-DL-30 | 50% | 1.5d | 2026-09-26 | 2026-09-28 | 18.6d | 0d | COST [7684.8]; Labor / Helper [16 h]; HVAC Technician [32 h] | 7,684.8 | 3,842.4 | H | DIV-15 | Div15.4 |  |
|  | WS | **WATER SUPPLY SYSTEM** |  | 2026-07-30 | 2026-10-05 |  |  |  |  |  |  |  |  |  |  |  |  |  |  |
| PG-H-CON-B-GF-WS-10 |  | Water Supply Main Lines Installation | 2d | 2026-07-30 A | 2026-07-31 A | PG-H-EN-ME-SD-AP-10, PG-H-PR-SL-PB-DL-10, PG-H-PR-SL-AC-DL-20 | 100% |  | 2026-08-10 | 2026-08-11 |  |  | COST [5702.4]; Plumber [32 h]; Fitter [16 h] | 5,702.4 | 5,702.4 | H | DIV-15 | Div15.3 |  |
| PG-H-CON-B-GF-WS-20 |  | Water Supply Pipes Installation (Cold and Hot Water) | 2d | 2026-07-30 A | 2026-08-06 A | PG-H-CON-B-GF-WS-10, PG-H-EN-ME-SD-AP-10, PG-H-PR-SL-PB-DL-10, PG-H-CON-B-AR-GF-20 | 100% |  | 2026-09-03 | 2026-09-05 |  |  | COST [13857.6]; Plumber [32 h]; Fitter [16 h] | 13,857.6 | 13,857.6 | H | DIV-15 | Div15.2 |  |
| PG-H-CON-B-GF-WS-30 |  | Water Supply Accesories and Booster pump Installation | 3d | 2026-08-27 A | 2026-10-05 | PG-H-CON-B-GF-WS-20, PG-H-CON-B-AR-WF-10, PG-H-EN-ME-SD-AP-20, PG-H-EN-ME-SD-AP-30, PG-H-PR-LL-PB-DL-10_R, PG-H-CON-B-GF-AC-10, PG-H-CON-B-GF-AC-20, PG-H-CON-B-AR-WF-10 SS, PG-H-PR-LL-PB-DL-10_R SS, PG-H-CON-B-GF-AC-20 FF | 75% | 0.75d | 2026-10-12 | 2026-10-14 | 18.6d | 0d | COST [36366]; Labor / Helper [16 h]; Plumber [8 h]; Electrician [8 h] | 36,366 | 27,274.5 | H | DIV-15 | Div15.2 |  |
|  | ELC | **ELECTRICAL WORKS** |  | 2026-08-12 | 2026-10-08 |  |  |  |  |  |  |  |  |  |  |  |  |  |  |
| PG-H-CON-B-GF-EL-10 |  | Pipes & Conduits Installation | 2d | 2026-08-12 A | 2026-08-14 A | PG-H-CON-B-GF-DR-10 SS, PG-H-PR-SL-EL-DL-10 | 100% |  | 2026-09-07 | 2026-09-08 |  |  | COST [1983.6]; Labor / Helper [16 h]; Electrician [32 h] | 1,983.6 | 1,983.6 | H | DIV-16 |  | Div16.1 |
| PG-H-CON-B-GF-EL-20 |  | Electrical Light Fixtures Installation | 2d | 2026-08-20 A | 2026-10-07 | PG-H-CON-B-GF-DR-30, PG-H-PR-LL-EL-DL-40_R, PG-H-CON-B-GF-DR-30 FF, PG-H-PR-LL-EL-DL-40_R SS | 85% | 0.3d | 2026-10-12 | 2026-10-13 | 18.6d | 0d | COST [1983.6]; Labor / Helper [16 h]; Electrician [16 h]; ELV Technician [16 h] | 1,983.6 | 1,686.06 | H | DIV-16 |  | Div16.3 |
| PG-H-CON-B-GF-EL-30 |  | Fire Alarm Devices Installation | 3d | 2026-08-20 A | 2026-10-07 | PG-H-CON-B-GF-EL-20, PG-H-CON-B-GF-EL-20 SS | 85% | 0.45d | 2026-10-14 | 2026-10-17 | 18.6d | 0d | COST [1983.6]; Labor / Helper [16 h]; Mechanical Technician [16 h] | 1,983.6 | 1,686.06 | H | DIV-16 |  | Div16.8 |
| PG-H-CON-B-GF-EL-40 |  | Telecom & CCTV Devices Installation | 3d | 2026-08-20 A | 2026-10-08 | PG-H-CON-B-GF-EL-30, PG-H-CON-B-GF-EL-30 SS | 85% | 0.45d | 2026-10-18 | 2026-10-20 | 18.6d | 0d | COST [4959]; Labor / Helper [16 h]; Electrician [8 h]; ELV Technician [16 h] | 4,959 | 4,215.15 | H | DIV-16 |  | Div16.4 |
| PG-H-CON-B-GF-EL-50 |  | Electrical & ELV Wiring Works | 3d | 2026-08-20 A | 2026-10-08 | PG-H-CON-B-GF-EL-40, PG-H-CON-B-GF-EL-40 SS | 85% | 0.45d | 2026-10-21 | 2026-10-24 | 18.6d | 0.1d | COST [7337.52]; Labor / Helper [8 h]; Electrician [32 h] | 7,337.52 | 6,236.89 | H | DIV-16 |  | Div16.1 |
|  | TE & CO | **PROJECT CLOSOUT** |  | 2026-05-25 | 2027-01-09 |  |  |  |  |  |  |  |  |  |  |  |  |  |  |
| PG-H-PCL-10 |  | Testing, Commessioning for All Systems(Completed) | 22.8d | 2026-05-25 A | 2026-06-24 A | PG-H-CON-EX-LS-SS-20 SS | 100% |  |  |  |  |  | COST [20444]; Site Engineer [3.2 h]; Electrician [1.6 h]; HVAC Technician [1.6 h]; ELV Technician [1.6 h]; Mechanical Technician [1.6 h]; Safety Officer [1.6 h] | 20,443.96 | 20,443.96 | H | Closing |  |  |
| PG-H-PCL-10_R |  | Testing, Commessioning for All Systems(Remaining) | 9.9d | 2026-08-06 A | 2026-12-07 | PG-H-CON-B-GF-EL-50 FF, PG-H-CON-B-GF-WS-30 FF, PG-H-CON-B-GF-AC-20 FF, PG-H-CON-B-GF-DR-30 FF, PG-H-CON-B-GF-FF-10 FF, PG-H-PCL-10, PG-H-CON-EX-LS-SS-20_R FF | 30% | 6.93d | 2026-11-28 | 2026-12-08 | -19.7d | 0d | COST [183996]; Site Engineer [28.8 h]; Electrician [14.4 h]; HVAC Technician [14.4 h]; ELV Technician [14.4 h]; Mechanical Technician [14.4 h]; Safety Officer [14.4 h] | 183,995.6 | 55,214.17 | H | Closing |  |  |
| PG-H-PCL-20 |  | As-Built Drawings | 18d | 2026-12-07 | 2026-12-28 | PG-H-PCL-10_R |  |  |  |  | -15.7d | 4d | COST [68146.5] | 68,146.52 |  | H | Closing |  |  |
| PG-H-PCL-30 |  | Snag list Submission | 8d | 2026-12-07 | 2026-12-16 | PG-H-PCL-10_R |  |  |  |  | -19.7d | 0d | COST [136293]; Site Engineer [32 h]; Mason [16 h]; Labor / Helper [32 h]; Applicator [16 h]; Painter [16 h]; Safety Officer [16 h]; Concrete Mason [8 h] | 136,293.04 |  | H | Closing |  |  |
| PG-H-PCL-40 |  | Snag list Closeout | 14d | 2026-12-16 | 2027-01-02 | PG-H-PCL-30 |  |  |  |  | -19.7d | 0d | COST [136293]; Site Engineer [32 h]; Mason [16 h]; Labor / Helper [32 h]; Applicator [16 h]; Painter [16 h]; Safety Officer [16 h]; Concrete Mason [8 h] | 136,293.04 |  | H | Closing |  |  |
| PG-H-PCL-50 |  | Issuing Approvals | 3d | 2027-01-02 | 2027-01-05 | PG-H-PCL-40, PG-H-PCL-20 |  |  |  |  | -19.7d | 0d | COST [68146.5] | 68,146.52 |  | H | Closing |  |  |
| PG-H-PCL-60 |  | Handing Over | 3d | 2027-01-05 | 2027-01-09 | PG-H-PCL-50 |  |  |  |  | -19.7d | 21.7d | COST [68146.5] | 68,146.52 |  | H | Closing |  |  |

| ID | WBS | Activity | Duration | Start | Finish | Predecessors | Complete | Planned start | Planned finish | H,Q,T-Location |
| --- | --- | --- | --- | --- | --- | --- | --- | --- | --- | --- |
|  | TABUK | **TABUK** |  | 2026-02-17 | 2027-02-03 |  |  |  |  |  |
|  | MOB | **MOBILIZATION** |  | 2026-02-17 | 2026-04-14 |  |  |  |  |  |
|  | CAM | **TEMPORARY CAMP** |  | 2026-02-17 | 2026-04-13 |  |  |  |  |  |
| PG-T-MOB-CAM-10 |  | Temporary Underground Utilities works | 43.25d | 2026-02-17 A | 2026-04-13 A | PG-GN-MS-10 SS | 100% | 2026-02-17 | 2026-04-14 | T |
| PG-T-MOB-CAM-20 |  | Temporary Porta-Cabins | 36.25d | 2026-02-26 A | 2026-04-13 A | PG-T-MOB-CAM-10 | 100% | 2026-02-26 | 2026-04-14 | T |
| PG-T-MOB-CAM-30 |  | Temporary Toilets | 36.25d | 2026-02-26 A | 2026-04-13 A | PG-T-MOB-CAM-10 | 100% | 2026-02-26 | 2026-04-14 | T |
| PG-T-MOB-CAM-40 |  | Temporary Mosque | 28.25d | 2026-03-08 A | 2026-04-13 A | PG-T-MOB-CAM-20, PG-T-MOB-CAM-30 | 100% | 2026-03-08 | 2026-04-14 | T |
|  | OF | **SITE OFFICES** |  | 2026-02-17 | 2026-04-14 |  |  |  |  |  |
| PG-T-MOB-SO-10 |  | Temporary Underground Utilities works | 44.25d | 2026-02-17 A | 2026-04-14 A | PG-GN-MS-10 SS | 100% | 2026-02-17 | 2026-04-15 | T |
| PG-T-MOB-SO-20 |  | Temporary Porta-Cabins | 38.25d | 2026-02-25 A | 2026-04-14 A | PG-T-MOB-SO-10 | 100% | 2026-02-25 | 2026-04-15 | T |
| PG-T-MOB-SO-30 |  | Temporary Toilets | 38.25d | 2026-02-25 A | 2026-04-14 A | PG-T-MOB-SO-10 | 100% | 2026-02-25 | 2026-04-15 | T |
| PG-T-MOB-SO-40 |  | Temporary Mosque | 32.25d | 2026-03-04 A | 2026-04-14 A | PG-T-MOB-SO-20, PG-T-MOB-SO-30 | 100% | 2026-03-04 | 2026-04-15 | T |
| PG-T-MOB-SO-50 |  | Car Parking Area | 25.25d | 2026-03-12 A | 2026-04-14 A | PG-T-MOB-SO-40, PG-T-GEN-20, PG-T-GEN-30, PG-T-GEN-40 | 100% | 2026-03-12 | 2026-04-15 | T |
|  | GE.REQ | **GENERAL REQUIEREMENTS** |  | 2026-02-17 | 2026-04-14 |  |  |  |  |  |
| PG-T-GEN-20 |  | HSSE Submission Plan | 35.25d | 2026-02-17 A | 2026-04-04 A | PG-GN-MS-10 SS | 100% | 2026-02-17 | 2026-04-05 | T |
| PG-T-GEN-30 |  | Surveying report Submission Plan | 44.25d | 2026-02-17 A | 2026-04-14 A | PG-GN-MS-10 SS | 100% | 2026-02-17 | 2026-04-15 | T |
| PG-T-GEN-40 |  | Baseline Submission | 6.25d | 2026-02-28 A | 2026-03-05 A | PG-GN-MS-10 SS | 100% | 2026-02-28 | 2026-03-07 | T |
| PG-T-GEN-10 |  | QA/QC Submission Plan | 16.25d | 2026-03-12 A | 2026-04-04 A | PG-T-GEN-30, PG-GN-MS-10 SS | 100% | 2026-03-12 | 2026-04-05 | T |
|  | ENG | **ENGINEERING** |  | 2026-02-17 | 2026-09-17 |  |  |  |  |  |
|  | 1 | **SHOP DRAWINGS SUBMITTALS** |  | 2026-02-17 | 2026-09-10 |  |  |  |  |  |
|  | 1 | **STRUCTURAL DRAWINGS** |  | 2026-02-17 | 2026-07-03 |  |  |  |  |  |
|  | 1 | **PROJECT FENCE** |  | 2026-02-17 | 2026-05-06 |  |  |  |  |  |
| PG-T-EN-ST-SD-SB-10 |  | Excavation Drawings | 63.25d | 2026-02-17 A | 2026-05-06 A | PG-GN-MS-10 SS | 100% | 2026-02-17 | 2026-05-07 | T |
| PG-T-EN-ST-SD-SB-20 |  | Foundation Drawings | 61.25d | 2026-02-19 A | 2026-05-06 A | PG-T-EN-ST-SD-SB-10, PG-T-EN-ST-SD-SB-10 SS | 100% | 2026-02-19 | 2026-05-07 | T |

| ID | WBS | Activity | Duration | Start | Finish | Predecessors | Complete | Planned start | Planned finish | H,Q,T-Location | Air Dome |
| --- | --- | --- | --- | --- | --- | --- | --- | --- | --- | --- | --- |
|  | 2 | **PADEL PLAYGROUND FENCE** |  | 2026-02-17 | 2026-05-06 |  |  |  |  |  |  |
| PG-T-EN-ST-SD-SB-30 |  | Excavation Drawings | 63.25d | 2026-02-17 A | 2026-05-06 A | PG-T-EN-ST-SD-SB-10 SS | 100% | 2026-02-17 | 2026-05-07 | T |  |
| PG-T-EN-ST-SD-SB-40 |  | Foundation Drawings | 61.25d | 2026-02-19 A | 2026-05-06 A | PG-T-EN-ST-SD-SB-30, PG-T-EN-ST-SD-SB-30 SS | 100% | 2026-02-19 | 2026-05-07 | T |  |
|  | 3 | **AIR DOME** |  | 2026-07-01 | 2026-07-03 |  |  |  |  |  |  |
| PG-T-EN-ST-SD-SB-50 |  | Excavation Drawings | 10d | 2026-07-01 A | 2026-07-03 A | PG-T-EN-ST-SD-SB-30 SS | 100% | 2026-07-12 | 2026-07-22 | T | A.D |
| PG-T-EN-ST-SD-SB-60 |  | Foundation Drawings | 10d | 2026-07-01 A | 2026-07-03 A | PG-T-EN-ST-SD-SB-50, PG-T-EN-ST-SD-SB-50 SS | 100% | 2026-07-23 | 2026-08-03 | T | A.D |
|  | 4 | **TOILET BUILDING** |  | 2026-02-19 | 2026-04-13 |  |  |  |  |  |  |
| PG-T-EN-ST-SD-SB-70 |  | Excavation Drawings | 41.25d | 2026-02-19 A | 2026-04-13 A | PG-T-EN-ST-SD-SB-10, PG-T-EN-ST-SD-SB-10 SS | 100% | 2026-02-19 | 2026-04-14 | T |  |
| PG-T-EN-ST-SD-SB-80 |  | Foundation Drawings | 39.25d | 2026-02-23 A | 2026-04-13 A | PG-T-EN-ST-SD-SB-70 | 100% | 2026-02-23 | 2026-04-14 | T |  |
|  | 5 | **WATER STORAGE TANK** |  | 2026-02-23 | 2026-04-13 |  |  |  |  |  |  |
| PG-T-EN-ST-SD-SB-90 |  | Excavation Drawings | 39.25d | 2026-02-23 A | 2026-04-13 A | PG-T-EN-ST-SD-SB-70 | 100% | 2026-02-23 | 2026-04-14 | T |  |
| PG-T-EN-ST-SD-SB-100 |  | Foundation Drawings | 37.25d | 2026-02-25 A | 2026-04-13 A | PG-T-EN-ST-SD-SB-90 | 100% | 2026-02-25 | 2026-04-14 | T |  |
|  | 6 | **SEPTIC TANK** |  | 2026-02-25 | 2026-05-06 |  |  |  |  |  |  |
| PG-T-EN-ST-SD-SB-110 |  | Reinforcement Detail Drawings | 57.25d | 2026-02-25 A | 2026-05-06 A | PG-T-EN-ST-SD-SB-90 | 100% | 2026-02-25 | 2026-05-07 | T |  |
| PG-T-EN-ST-SD-SB-120 |  | Concrete Detail Drawings | 54.25d | 2026-03-01 A | 2026-05-06 A | PG-T-EN-ST-SD-SB-110, PG-T-EN-ST-SD-SB-110 SS | 100% | 2026-03-01 | 2026-05-07 | T |  |
|  | 2 | **ARCHITECTURAL DRAWINGS** |  | 2026-02-23 | 2026-09-10 |  |  |  |  |  |  |
|  | 1 | **TOILET BUILDING** |  | 2026-02-23 | 2026-04-14 |  |  |  |  |  |  |
| PG-T-EN-AR-SD-SB-10 |  | Ground Floor Plan | 40.25d | 2026-02-23 A | 2026-04-14 A | PG-T-EN-ST-SD-SB-70 | 100% | 2026-02-23 | 2026-04-15 | T |  |
| PG-T-EN-AR-SD-SB-20 |  | Roof Floor Plan | 35.25d | 2026-02-28 A | 2026-04-13 A | PG-T-EN-AR-SD-SB-10 | 100% | 2026-02-28 | 2026-04-14 | T |  |
| PG-T-EN-AR-SD-SB-50 |  | Floor Finish Layout | 35.62d | 2026-02-28 A | 2026-04-14 A | PG-T-EN-AR-SD-SB-10 | 100% |  |  | T |  |
| PG-T-EN-AR-SD-SB-60 |  | Reflected Ceiling Layout | 36.25d | 2026-02-28 A | 2026-04-14 A | PG-T-EN-AR-SD-SB-10 | 100% | 2026-02-28 | 2026-04-15 | T |  |
| PG-T-EN-AR-SD-SB-70 |  | Enlarged Toilets Layout | 36.25d | 2026-02-28 A | 2026-04-14 A | PG-T-EN-AR-SD-SB-10 | 100% | 2026-02-28 | 2026-04-15 | T |  |
| PG-T-EN-AR-SD-SB-100 |  | Cladding Details | 32.25d | 2026-03-03 A | 2026-04-13 A | PG-T-EN-AR-SD-SB-50 | 100% | 2026-03-03 | 2026-04-14 | T |  |
| PG-T-EN-AR-SD-SB-30 |  | Elevations | 33.25d | 2026-03-03 A | 2026-04-14 A | PG-T-EN-AR-SD-SB-20 | 100% | 2026-03-03 | 2026-04-15 | T |  |
| PG-T-EN-AR-SD-SB-80 |  | Doors & Windows Schedule | 33.25d | 2026-03-03 A | 2026-04-14 A | PG-T-EN-AR-SD-SB-50 | 100% | 2026-03-03 | 2026-04-15 | T |  |
| PG-T-EN-AR-SD-SB-90 |  | Aluminum Work | 33.25d | 2026-03-03 A | 2026-04-14 A | PG-T-EN-AR-SD-SB-50 | 100% | 2026-03-03 | 2026-04-15 | T |  |
| PG-T-EN-AR-SD-SB-40 |  | Sections | 31.25d | 2026-03-05 A | 2026-04-14 A | PG-T-EN-AR-SD-SB-30 | 100% | 2026-03-05 | 2026-04-15 | T |  |

| ID | WBS | Activity | Duration | Start | Finish | Predecessors | Complete | Planned start | Planned finish | H,Q,T-Location | Air Dome |
| --- | --- | --- | --- | --- | --- | --- | --- | --- | --- | --- | --- |
|  | 2 | **AIR DOME** |  | 2026-08-05 | 2026-09-10 |  |  |  |  |  |  |
| PG-T-EN-AR-SD-SB-110 |  | Membrane & Insulation Details | 15d | 2026-08-05 A | 2026-09-10 A | PG-T-EN-ST-SD-SB-60 | 100% | 2026-08-09 | 2026-08-25 | T | A.D |
| PG-T-EN-AR-SD-SB-120 |  | Steel Cable System | 15d | 2026-08-05 A | 2026-09-10 A | PG-T-EN-AR-SD-SB-110 SS | 100% | 2026-08-09 | 2026-08-25 | T | A.D |
| PG-T-EN-AR-SD-SB-130 |  | Doors & Access Sytem Drawings | 15d | 2026-08-05 A | 2026-09-10 A | PG-T-EN-AR-SD-SB-120 SS | 100% | 2026-08-09 | 2026-08-25 | T | A.D |
|  | 3 | **LANDSCAPE DRAWINGS** |  | 2026-02-23 | 2026-04-14 |  |  |  |  |  |  |
| PG-T-EN-LS-SD-SB-10 |  | Hardscape Layout Plan | 40.25d | 2026-02-23 A | 2026-04-14 A | PG-T-EN-ST-SD-SB-20, PG-T-EN-ST-SD-SB-20 SS | 100% | 2026-02-23 | 2026-04-15 | T |  |
| PG-T-EN-LS-SD-SB-100 |  | Padel Playground Layout | 40.25d | 2026-02-23 A | 2026-04-14 A | PG-T-EN-ST-SD-SB-20, PG-T-EN-ST-SD-SB-20 SS | 100% | 2026-02-23 | 2026-04-15 | T |  |
| PG-T-EN-LS-SD-SB-110 |  | Basketball Playground Layout | 40.25d | 2026-02-23 A | 2026-04-14 A | PG-T-EN-ST-SD-SB-20, PG-T-EN-ST-SD-SB-20 SS | 100% | 2026-02-23 | 2026-04-15 | T |  |
| PG-T-EN-LS-SD-SB-120 |  | Playground Details | 40.25d | 2026-02-23 A | 2026-04-14 A | PG-T-EN-ST-SD-SB-20, PG-T-EN-ST-SD-SB-20 SS | 100% | 2026-02-23 | 2026-04-15 | T |  |
| PG-T-EN-LS-SD-SB-130 |  | Padel Fence Elevation & Details | 40.25d | 2026-02-23 A | 2026-04-14 A | PG-T-EN-ST-SD-SB-20, PG-T-EN-ST-SD-SB-20 SS | 100% | 2026-02-23 | 2026-04-15 | T |  |
| PG-T-EN-LS-SD-SB-20 |  | Interlock Tile Details | 40.25d | 2026-02-23 A | 2026-04-14 A | PG-T-EN-ST-SD-SB-20, PG-T-EN-ST-SD-SB-20 SS | 100% | 2026-02-23 | 2026-04-15 | T |  |
| PG-T-EN-LS-SD-SB-30 |  | Stamped Concrete Pattern & Section | 40.25d | 2026-02-23 A | 2026-04-14 A | PG-T-EN-ST-SD-SB-20, PG-T-EN-ST-SD-SB-20 SS | 100% | 2026-02-23 | 2026-04-15 | T |  |
| PG-T-EN-LS-SD-SB-40 |  | Tartan Flooring Layout & Details | 40.25d | 2026-02-23 A | 2026-04-14 A | PG-T-EN-ST-SD-SB-20, PG-T-EN-ST-SD-SB-20 SS | 100% | 2026-02-23 | 2026-04-15 | T |  |
| PG-T-EN-LS-SD-SB-50 |  | Bike Path Layout & Details | 40.25d | 2026-02-23 A | 2026-04-14 A | PG-T-EN-ST-SD-SB-20, PG-T-EN-ST-SD-SB-20 SS | 100% | 2026-02-23 | 2026-04-15 | T |  |
| PG-T-EN-LS-SD-SB-60 |  | Walking Path layout & Details | 40.25d | 2026-02-23 A | 2026-04-14 A | PG-T-EN-ST-SD-SB-20, PG-T-EN-ST-SD-SB-20 SS | 100% | 2026-02-23 | 2026-04-15 | T |  |
| PG-T-EN-LS-SD-SB-70 |  | Tree Planting Plan & Details | 40.25d | 2026-02-23 A | 2026-04-14 A | PG-T-EN-ST-SD-SB-20, PG-T-EN-ST-SD-SB-20 SS | 100% | 2026-02-23 | 2026-04-15 | T |  |
| PG-T-EN-LS-SD-SB-80 |  | Traffic Sign Location & Details | 40.25d | 2026-02-23 A | 2026-04-14 A | PG-T-EN-ST-SD-SB-20, PG-T-EN-ST-SD-SB-20 SS | 100% | 2026-02-23 | 2026-04-15 | T |  |
| PG-T-EN-LS-SD-SB-90 |  | Football Playground Layout | 40.25d | 2026-02-23 A | 2026-04-14 A | PG-T-EN-ST-SD-SB-20, PG-T-EN-ST-SD-SB-20 SS | 100% | 2026-02-23 | 2026-04-15 | T |  |
|  | 4 | **MECHANICAL DRAWINGS** |  | 2026-02-28 | 2026-07-13 |  |  |  |  |  |  |
|  | 1 | **WATER SUPPLY SYSTEM** |  | 2026-02-28 | 2026-04-09 |  |  |  |  |  |  |
| PG-T-EN-ME-SD-SB-20 |  | Pump Room Layout | 32.25d | 2026-02-28 A | 2026-04-09 A | PG-T-EN-LS-SD-SB-10 | 100% | 2026-02-28 | 2026-04-11 | T |  |
| PG-T-EN-ME-SD-SB-10 |  | Cold & Hot Water Piping Layout | 28.25d | 2026-03-04 A | 2026-04-09 A | PG-T-EN-ME-SD-SB-20 | 100% | 2026-03-04 | 2026-04-11 | T |  |
| PG-T-EN-ME-SD-SB-30 |  | Booster Pump Details | 28.25d | 2026-03-04 A | 2026-04-09 A | PG-T-EN-ME-SD-SB-20 | 100% | 2026-03-04 | 2026-04-11 | T |  |
| PG-T-EN-ME-SD-SB-40 |  | GRP Water Tank Details | 24.25d | 2026-03-09 A | 2026-04-09 A | PG-T-EN-ME-SD-SB-10, PG-T-EN-ME-SD-SB-20 | 100% | 2026-03-09 | 2026-04-11 | T |  |

| ID | WBS | Activity | Duration | Start | Finish | Predecessors | Complete | Planned start | Planned finish | H,Q,T-Location | Air Dome |
| --- | --- | --- | --- | --- | --- | --- | --- | --- | --- | --- | --- |
|  | 2 | **SEWER AND DRAINAGE SYSTEM** |  | 2026-03-04 | 2026-04-09 |  |  |  |  |  |  |
| PG-T-EN-ME-SD-SB-50 |  | Drainage Layout | 28.25d | 2026-03-04 A | 2026-04-09 A | PG-T-EN-ME-SD-SB-20 | 100% | 2026-03-04 | 2026-04-11 | T |  |
| PG-T-EN-ME-SD-SB-60 |  | Floor Drains & Cleanouts Details | 24.25d | 2026-03-09 A | 2026-04-09 A | PG-T-EN-ME-SD-SB-50 | 100% | 2026-03-09 | 2026-04-11 | T |  |
| PG-T-EN-ME-SD-SB-70 |  | Inspection Chamber Details | 21.25d | 2026-03-12 A | 2026-04-09 A | PG-T-EN-ME-SD-SB-60 | 100% | 2026-03-12 | 2026-04-11 | T |  |
|  | 3 | **IRRIGATION SYSTEM** |  | 2026-03-09 | 2026-05-06 |  |  |  |  |  |  |
| PG-T-EN-ME-SD-SB-80 |  | HDPE Pipe Routing | 47.25d | 2026-03-09 A | 2026-05-06 A | PG-T-EN-ME-SD-SB-50 | 100% | 2026-03-09 | 2026-05-07 | T |  |
| PG-T-EN-ME-SD-SB-90 |  | Irrigation Network Layout | 44.25d | 2026-03-12 A | 2026-05-06 A | PG-T-EN-ME-SD-SB-80 | 100% | 2026-03-12 | 2026-05-07 | T |  |
|  | 4 | **AIR DOME** |  | 2026-07-02 | 2026-07-13 |  |  |  |  |  |  |
| PG-T-EN-ME-SD-SB-100 |  | Air Package and HVAC System Drawings | 15d | 2026-07-02 A | 2026-07-13 A | PG-T-EN-ME-SD-SB-20 | 100% | 2026-08-02 | 2026-08-18 | T | A.D |
|  | 5 | **ELECTRICAL DRAWINGS** |  | 2026-05-10 | 2026-07-12 |  |  |  |  |  |  |
|  | 1 | **POWER AND LIGHTING SYSTEM** |  | 2026-05-10 | 2026-05-20 |  |  |  |  |  |  |
| PG-T-EN-EL-SD-SB-10 |  | Main Distribution Board (MDB) Layout | 10.25d | 2026-05-10 A | 2026-05-20 A | PG-T-EN-ME-SD-SB-20 | 100% | 2026-05-10 | 2026-05-21 | T |  |
| PG-T-EN-EL-SD-SB-20 |  | Pump Room Power Panel | 10.25d | 2026-05-10 A | 2026-05-20 A | PG-T-EN-EL-SD-SB-10, PG-T-EN-EL-SD-SB-10 SS | 100% | 2026-05-10 | 2026-05-21 | T |  |
| PG-T-EN-EL-SD-SB-30 |  | Street Lighting Power Panel | 10.25d | 2026-05-10 A | 2026-05-20 A | PG-T-EN-EL-SD-SB-10, PG-T-EN-EL-SD-SB-10 SS | 100% | 2026-05-10 | 2026-05-21 | T |  |
| PG-T-EN-EL-SD-SB-40 |  | Site Lighting Pole Layout | 10.25d | 2026-05-10 A | 2026-05-20 A | PG-T-EN-EL-SD-SB-30, PG-T-EN-EL-SD-SB-30 SS | 100% | 2026-05-10 | 2026-05-21 | T |  |
|  | 2 | **ELV SYSTEM** |  | 2026-05-10 | 2026-05-20 |  |  |  |  |  |  |
| PG-T-EN-EL-SD-SB-50 |  | Telecom & Data Layout | 10.25d | 2026-05-10 A | 2026-05-20 A | PG-T-EN-ME-SD-SB-20 | 100% | 2026-05-10 | 2026-05-21 | T |  |
| PG-T-EN-EL-SD-SB-60 |  | CCTV Camera Layout | 10.25d | 2026-05-10 A | 2026-05-20 A | PG-T-EN-EL-SD-SB-50, PG-T-EN-EL-SD-SB-50 SS | 100% | 2026-05-10 | 2026-05-21 | T |  |
| PG-T-EN-EL-SD-SB-70 |  | Access Control Layout | 10.25d | 2026-05-10 A | 2026-05-20 A | PG-T-EN-EL-SD-SB-60, PG-T-EN-EL-SD-SB-60 SS | 100% | 2026-05-10 | 2026-05-21 | T |  |
| PG-T-EN-EL-SD-SB-80 |  | AV System Layout | 10.25d | 2026-05-10 A | 2026-05-20 A | PG-T-EN-EL-SD-SB-50, PG-T-EN-EL-SD-SB-50 SS | 100% | 2026-05-10 | 2026-05-21 | T |  |
|  | 3 | **FIRE ALARM SYSTEM** |  | 2026-05-10 | 2026-05-20 |  |  |  |  |  |  |
| PG-T-EN-EL-SD-SB-100 |  | Detector & Manual Call Point Details | 10.25d | 2026-05-10 A | 2026-05-20 A | PG-T-EN-EL-SD-SB-90, PG-T-EN-EL-SD-SB-90 SS | 100% | 2026-05-10 | 2026-05-21 | T |  |
| PG-T-EN-EL-SD-SB-110 |  | Control Panel Wiring Diagram | 10.25d | 2026-05-10 A | 2026-05-20 A | PG-T-EN-EL-SD-SB-100, PG-T-EN-EL-SD-SB-100 SS | 100% | 2026-05-10 | 2026-05-21 | T |  |
| PG-T-EN-EL-SD-SB-90 |  | Fire Alarm Layout | 10.25d | 2026-05-10 A | 2026-05-20 A | PG-T-EN-ME-SD-SB-20 | 100% | 2026-05-10 | 2026-05-21 | T |  |

| ID | WBS | Activity | Duration | Start | Finish | Predecessors | Complete | Planned start | Planned finish | H,Q,T-Location | Air Dome |
| --- | --- | --- | --- | --- | --- | --- | --- | --- | --- | --- | --- |
|  | 4 | **AIR DOME** |  | 2026-07-08 | 2026-07-12 |  |  |  |  |  |  |
| PG-T-EN-EL-SD-SB-120 |  | Power & Lighting System Drawings | 15d | 2026-07-08 A | 2026-07-12 A | PG-T-EN-EL-SD-SB-90, PG-T-EN-ME-SD-SB-100 | 100% | 2026-08-19 | 2026-09-05 | T | A.D |
| PG-T-EN-EL-SD-SB-130 |  | Generators Details | 15d | 2026-07-08 A | 2026-07-12 A | PG-T-EN-ME-SD-SB-100 SS | 100% | 2026-08-02 | 2026-08-18 | T | A.D |
| PG-T-EN-EL-SD-SB-140 |  | Smart Dome System Drawings | 15d | 2026-07-08 A | 2026-07-12 A | PG-T-EN-ME-SD-SB-100 | 100% | 2026-08-19 | 2026-09-05 | T | A.D |
|  | 2 | **SHOP DRAWINGS APPROVALS** |  | 2026-02-19 | 2026-09-02 |  |  |  |  |  |  |
|  | 1 | **STRUCTURAL DRAWINGS** |  | 2026-02-19 | 2026-07-11 |  |  |  |  |  |  |
|  | 1 | **PROJECT FENCE** |  | 2026-02-19 | 2026-05-06 |  |  |  |  |  |  |
| PG-T-EN-ST-SD-AP-10 |  | Excavation Drawings | 61.25d | 2026-02-19 A | 2026-05-06 A | PG-T-EN-ST-SD-SB-10 | 100% | 2026-02-19 | 2026-05-07 | T |  |
| PG-T-EN-ST-SD-AP-20 |  | Foundation Drawings | 58.25d | 2026-02-24 A | 2026-05-06 A | PG-T-EN-ST-SD-SB-20, PG-T-EN-ST-SD-AP-10 | 100% | 2026-02-24 | 2026-05-07 | T |  |
|  | 2 | **PADEL PLAYGROUND FENCE** |  | 2026-02-19 | 2026-05-06 |  |  |  |  |  |  |
| PG-T-EN-ST-SD-AP-30 |  | Excavation Drawings | 61.25d | 2026-02-19 A | 2026-05-06 A | PG-T-EN-ST-SD-SB-30 | 100% | 2026-02-19 | 2026-05-07 | T |  |
| PG-T-EN-ST-SD-AP-40 |  | Foundation Drawings | 58.25d | 2026-02-24 A | 2026-05-06 A | PG-T-EN-ST-SD-SB-40, PG-T-EN-ST-SD-AP-30 | 100% | 2026-02-24 | 2026-05-07 | T |  |
|  | 3 | **AIR DOME** |  | 2026-07-05 | 2026-07-11 |  |  |  |  |  |  |
| PG-T-EN-ST-SD-AP-60 |  | Foundation Drawings | 5d | 2026-07-05 A | 2026-07-06 A | PG-T-EN-ST-SD-SB-60, PG-T-EN-ST-SD-AP-50 SS | 100% | 2026-08-04 | 2026-08-09 | T | A.D |
| PG-T-EN-ST-SD-AP-50 |  | Excavation Drawings | 5d | 2026-07-08 A | 2026-07-11 A | PG-T-EN-ST-SD-SB-50 | 100% | 2026-07-23 | 2026-07-28 | T | A.D |
|  | 4 | **TOILET BUILDING** |  | 2026-02-23 | 2026-04-16 |  |  |  |  |  |  |
| PG-T-EN-ST-SD-AP-70 |  | Excavation Drawings | 42.25d | 2026-02-23 A | 2026-04-16 A | PG-T-EN-ST-SD-SB-70 | 100% | 2026-02-23 | 2026-04-18 | T |  |
| PG-T-EN-ST-SD-AP-80 |  | Foundation Drawings | 39.25d | 2026-02-26 A | 2026-04-16 A | PG-T-EN-ST-SD-SB-80, PG-T-EN-ST-SD-AP-70 | 100% | 2026-02-26 | 2026-04-18 | T |  |
|  | 5 | **WATER STORAGE TANK** |  | 2026-02-25 | 2026-04-16 |  |  |  |  |  |  |
| PG-T-EN-ST-SD-AP-90 |  | Excavation Drawings | 40.25d | 2026-02-25 A | 2026-04-16 A | PG-T-EN-ST-SD-SB-90 | 100% | 2026-02-25 | 2026-04-18 | T |  |
| PG-T-EN-ST-SD-AP-100 |  | Foundation Drawings | 37.25d | 2026-03-01 A | 2026-04-16 A | PG-T-EN-ST-SD-SB-100, PG-T-EN-ST-SD-AP-90 | 100% | 2026-03-01 | 2026-04-18 | T |  |
|  | 6 | **SEPTIC TANK** |  | 2026-03-01 | 2026-05-06 |  |  |  |  |  |  |
| PG-T-EN-ST-SD-AP-110 |  | Reinforcement Detail Drawings | 54.25d | 2026-03-01 A | 2026-05-06 A | PG-T-EN-ST-SD-SB-110 | 100% | 2026-03-01 | 2026-05-07 | T |  |
| PG-T-EN-ST-SD-AP-120 |  | Concrete Detail Drawings | 51.25d | 2026-03-04 A | 2026-05-06 A | PG-T-EN-ST-SD-SB-120, PG-T-EN-ST-SD-AP-110 | 100% | 2026-03-04 | 2026-05-07 | T |  |

| ID | WBS | Activity | Duration | Start | Finish | Predecessors | Complete | Planned start | Planned finish | H,Q,T-Location | Air Dome |
| --- | --- | --- | --- | --- | --- | --- | --- | --- | --- | --- | --- |
|  | 2 | **ARCHITECTURAL DRAWINGS** |  | 2026-02-28 | 2026-09-02 |  |  |  |  |  |  |
|  | 1 | **TOILET BUILDING** |  | 2026-02-28 | 2026-04-16 |  |  |  |  |  |  |
| PG-T-EN-AR-SD-AP-10 |  | Ground Floor Plan | 38.25d | 2026-02-28 A | 2026-04-16 A | PG-T-EN-AR-SD-SB-10 | 100% | 2026-02-28 | 2026-04-18 | T |  |
| PG-T-EN-AR-SD-AP-20 |  | Roof Floor Plan | 35.25d | 2026-03-03 A | 2026-04-16 A | PG-T-EN-AR-SD-SB-20 | 100% | 2026-03-03 | 2026-04-18 | T |  |
| PG-T-EN-AR-SD-AP-50 |  | Floor Finish Layout | 33.25d | 2026-03-05 A | 2026-04-16 A | PG-T-EN-AR-SD-SB-50, PG-T-EN-AR-SD-AP-10 | 100% | 2026-03-05 | 2026-04-18 | T |  |
| PG-T-EN-AR-SD-AP-60 |  | Reflected Ceiling Layout | 33.25d | 2026-03-05 A | 2026-04-16 A | PG-T-EN-AR-SD-SB-60, PG-T-EN-AR-SD-AP-10 | 100% | 2026-03-05 | 2026-04-18 | T |  |
| PG-T-EN-AR-SD-AP-70 |  | Enlarged Toilets Layout | 33.25d | 2026-03-05 A | 2026-04-16 A | PG-T-EN-AR-SD-SB-70, PG-T-EN-AR-SD-AP-10 | 100% | 2026-03-05 | 2026-04-18 | T |  |
| PG-T-EN-AR-SD-AP-30 |  | Elevations | 32.25d | 2026-03-07 A | 2026-04-16 A | PG-T-EN-AR-SD-SB-30, PG-T-EN-AR-SD-AP-20 | 100% | 2026-03-07 | 2026-04-18 | T |  |
| PG-T-EN-AR-SD-AP-80 |  | Doors & Windows Schedule | 32.25d | 2026-03-07 A | 2026-04-16 A | PG-T-EN-AR-SD-SB-80 | 100% | 2026-03-07 | 2026-04-18 | T |  |
| PG-T-EN-AR-SD-AP-100 |  | Cladding Details | 31.25d | 2026-03-08 A | 2026-04-16 A | PG-T-EN-AR-SD-SB-100 | 100% | 2026-03-08 | 2026-04-18 | T |  |
| PG-T-EN-AR-SD-AP-90 |  | Aluminum Work | 31.25d | 2026-03-08 A | 2026-04-16 A | PG-T-EN-AR-SD-SB-90 | 100% | 2026-03-08 | 2026-04-18 | T |  |
| PG-T-EN-AR-SD-AP-40 |  | Sections | 29.25d | 2026-03-10 A | 2026-04-16 A | PG-T-EN-AR-SD-SB-40, PG-T-EN-AR-SD-AP-30 | 100% | 2026-03-10 | 2026-04-18 | T |  |
|  | 2 | **AIR DOME** |  | 2026-08-06 | 2026-09-02 |  |  |  |  |  |  |
| PG-T-EN-AR-SD-AP-110 |  | Membrane & Insulation Details | 7d | 2026-08-06 A | 2026-09-02 A | PG-T-EN-AR-SD-SB-110 SS | 100% | 2026-08-26 | 2026-09-02 | T | A.D |
| PG-T-EN-AR-SD-AP-120 |  | Steel Cable System | 7d | 2026-08-06 A | 2026-09-02 A | PG-T-EN-AR-SD-SB-120 SS | 100% | 2026-08-26 | 2026-09-02 | T | A.D |
| PG-T-EN-AR-SD-AP-130 |  | Doors & Access Sytem Drawings | 7d | 2026-08-06 A | 2026-09-02 A | PG-T-EN-AR-SD-SB-130 SS | 100% | 2026-08-26 | 2026-09-02 | T | A.D |
|  | 3 | **LANDSCAPE DRAWINGS** |  | 2026-02-26 | 2026-04-16 |  |  |  |  |  |  |
| PG-T-EN-LS-SD-AP-130 |  | Padel Fence Elevation & Details | 39.25d | 2026-02-26 A | 2026-04-16 A | PG-T-EN-LS-SD-SB-130 | 100% | 2026-02-26 | 2026-04-18 | T |  |
| PG-T-EN-LS-SD-AP-50 |  | Bike Path Layout & Details | 39.25d | 2026-02-26 A | 2026-04-16 A | PG-T-EN-LS-SD-SB-50 | 100% | 2026-02-26 | 2026-04-18 | T |  |
| PG-T-EN-LS-SD-AP-60 |  | Walking Path layout & Details | 39.25d | 2026-02-26 A | 2026-04-16 A | PG-T-EN-LS-SD-SB-60 | 100% | 2026-02-26 | 2026-04-18 | T |  |
| PG-T-EN-LS-SD-AP-80 |  | Traffic Sign Location & Details | 39.25d | 2026-02-26 A | 2026-04-16 A | PG-T-EN-LS-SD-SB-80 | 100% | 2026-02-26 | 2026-04-18 | T |  |
| PG-T-EN-LS-SD-AP-10 |  | Hardscape Layout Plan | 38.25d | 2026-02-28 A | 2026-04-16 A | PG-T-EN-LS-SD-SB-10 | 100% | 2026-02-28 | 2026-04-18 | T |  |
| PG-T-EN-LS-SD-AP-100 |  | Padel Playground Layout | 38.25d | 2026-02-28 A | 2026-04-16 A | PG-T-EN-LS-SD-SB-100 | 100% | 2026-02-28 | 2026-04-18 | T |  |
| PG-T-EN-LS-SD-AP-110 |  | Basketball Playground Layout | 38.25d | 2026-02-28 A | 2026-04-16 A | PG-T-EN-LS-SD-SB-110 | 100% | 2026-02-28 | 2026-04-18 | T |  |
| PG-T-EN-LS-SD-AP-120 |  | Playground Details | 38.25d | 2026-02-28 A | 2026-04-16 A | PG-T-EN-LS-SD-SB-120 | 100% | 2026-02-28 | 2026-04-18 | T |  |
| PG-T-EN-LS-SD-AP-40 |  | Tartan Flooring Layout & Details | 38.25d | 2026-02-28 A | 2026-04-16 A | PG-T-EN-LS-SD-SB-40 | 100% | 2026-02-28 | 2026-04-18 | T |  |
| PG-T-EN-LS-SD-AP-70 |  | Tree Planting Plan & Details | 38.25d | 2026-02-28 A | 2026-04-16 A | PG-T-EN-LS-SD-SB-70 | 100% | 2026-02-28 | 2026-04-18 | T |  |
| PG-T-EN-LS-SD-AP-90 |  | Football Playground Layout | 38.25d | 2026-02-28 A | 2026-04-16 A | PG-T-EN-LS-SD-SB-90 | 100% | 2026-02-28 | 2026-04-18 | T |  |
| PG-T-EN-LS-SD-AP-20 |  | Interlock Tile Details | 30.25d | 2026-03-09 A | 2026-04-16 A | PG-T-EN-LS-SD-SB-20, PG-T-EN-LS-SD-AP-10 | 100% | 2026-03-09 | 2026-04-18 | T |  |
| PG-T-EN-LS-SD-AP-30 |  | Stamped Concrete Pattern & Section | 24.25d | 2026-03-16 A | 2026-04-16 A | PG-T-EN-LS-SD-SB-30, PG-T-EN-LS-SD-AP-20 | 100% | 2026-03-16 | 2026-04-18 | T |  |

| ID | WBS | Activity | Duration | Start | Finish | Predecessors | Complete | Planned start | Planned finish | H,Q,T-Location | Air Dome |
| --- | --- | --- | --- | --- | --- | --- | --- | --- | --- | --- | --- |
|  | 4 | **MECHANICAL DRAWINGS** |  | 2026-03-09 | 2026-07-18 |  |  |  |  |  |  |
|  | 1 | **WATER SUPPLY SYSTEM** |  | 2026-03-09 | 2026-04-13 |  |  |  |  |  |  |
| PG-T-EN-ME-SD-AP-10 |  | Cold & Hot Water Piping Layout | 27.25d | 2026-03-09 A | 2026-04-13 A | PG-T-EN-ME-SD-SB-10 | 100% | 2026-03-09 | 2026-04-14 | T |  |
| PG-T-EN-ME-SD-AP-30 |  | Booster Pump Details | 26.25d | 2026-03-10 A | 2026-04-13 A | PG-T-EN-ME-SD-SB-30 | 100% | 2026-03-10 | 2026-04-14 | T |  |
| PG-T-EN-ME-SD-AP-40 |  | GRP Water Tank Details | 23.25d | 2026-03-14 A | 2026-04-13 A | PG-T-EN-ME-SD-SB-40 | 100% | 2026-03-14 | 2026-04-14 | T |  |
| PG-T-EN-ME-SD-AP-20 |  | Pump Room Layout | 21.25d | 2026-03-16 A | 2026-04-13 A | PG-T-EN-ME-SD-SB-20, PG-T-EN-ME-SD-AP-10 | 100% | 2026-03-16 | 2026-04-14 | T |  |
|  | 2 | **SEWER AND DRAINAGE SYSTEM** |  | 2026-03-09 | 2026-04-13 |  |  |  |  |  |  |
| PG-T-EN-ME-SD-AP-50 |  | Drainage Layout | 27.25d | 2026-03-09 A | 2026-04-13 A | PG-T-EN-ME-SD-SB-50 | 100% | 2026-03-09 | 2026-04-14 | T |  |
| PG-T-EN-ME-SD-AP-60 |  | Floor Drains & Cleanouts Details | 21.25d | 2026-03-16 A | 2026-04-13 A | PG-T-EN-ME-SD-SB-60, PG-T-EN-ME-SD-AP-50 | 100% | 2026-03-16 | 2026-04-14 | T |  |
| PG-T-EN-ME-SD-AP-70 |  | Inspection Chamber Details | 21.25d | 2026-03-16 A | 2026-04-13 A | PG-T-EN-ME-SD-SB-70 | 100% | 2026-03-16 | 2026-04-14 | T |  |
|  | 3 | **IRRIGATION SYSTEM** |  | 2026-03-12 | 2026-05-06 |  |  |  |  |  |  |
| PG-T-EN-ME-SD-AP-80 |  | HDPE Pipe Routing | 44.25d | 2026-03-12 A | 2026-05-06 A | PG-T-EN-ME-SD-SB-80 | 100% | 2026-03-12 | 2026-05-07 | T |  |
| PG-T-EN-ME-SD-AP-90 |  | Irrigation Network Layout | 40.25d | 2026-03-17 A | 2026-05-06 A | PG-T-EN-ME-SD-SB-90 | 100% | 2026-03-17 | 2026-05-07 | T |  |
|  | 4 | **AIR DOME** |  | 2026-07-13 | 2026-07-18 |  |  |  |  |  |  |
| PG-T-EN-ME-SD-AP-100 |  | Air Package and HVAC System Drawings | 10d | 2026-07-13 A | 2026-07-18 A | PG-T-EN-ME-SD-SB-100 | 100% | 2026-08-19 | 2026-08-30 | T | A.D |
|  | 5 | **ELECTRICAL DRAWINGS** |  | 2026-05-11 | 2026-07-19 |  |  |  |  |  |  |
|  | 1 | **POWER AND LIGHTING SYSTEM** |  | 2026-05-11 | 2026-06-16 |  |  |  |  |  |  |
| PG-T-EN-EL-SD-AP-10 |  | Main Distribution Board (MDB) Layout | 28.25d | 2026-05-11 A | 2026-06-16 A | PG-T-EN-EL-SD-SB-10, PG-T-EN-EL-SD-SB-10 SS | 100% | 2026-05-11 | 2026-06-17 | T |  |
| PG-T-EN-EL-SD-AP-20 |  | Pump Room Power Panel | 28.25d | 2026-05-11 A | 2026-06-16 A | PG-T-EN-EL-SD-SB-20, PG-T-EN-EL-SD-SB-20 SS | 100% | 2026-05-11 | 2026-06-17 | T |  |
| PG-T-EN-EL-SD-AP-30 |  | Street Lighting Power Panel | 28.25d | 2026-05-11 A | 2026-06-16 A | PG-T-EN-EL-SD-SB-30, PG-T-EN-EL-SD-SB-30 SS | 100% | 2026-05-11 | 2026-06-17 | T |  |
| PG-T-EN-EL-SD-AP-40 |  | Site Lighting Pole Layout | 28.25d | 2026-05-11 A | 2026-06-16 A | PG-T-EN-EL-SD-SB-40, PG-T-EN-EL-SD-SB-40 SS | 100% | 2026-05-11 | 2026-06-17 | T |  |
|  | 2 | **ELV SYSTEM** |  | 2026-05-11 | 2026-06-16 |  |  |  |  |  |  |
| PG-T-EN-EL-SD-AP-50 |  | Telecom & Data Layout | 28.25d | 2026-05-11 A | 2026-06-16 A | PG-T-EN-EL-SD-SB-50, PG-T-EN-EL-SD-SB-50 SS | 100% | 2026-05-11 | 2026-06-17 | T |  |
| PG-T-EN-EL-SD-AP-60 |  | CCTV Camera Layout | 28.25d | 2026-05-11 A | 2026-06-16 A | PG-T-EN-EL-SD-SB-60, PG-T-EN-EL-SD-SB-60 SS | 100% | 2026-05-11 | 2026-06-17 | T |  |
| PG-T-EN-EL-SD-AP-70 |  | Access Control Layout | 28.25d | 2026-05-11 A | 2026-06-16 A | PG-T-EN-EL-SD-SB-70, PG-T-EN-EL-SD-SB-70 SS | 100% | 2026-05-11 | 2026-06-17 | T |  |
| PG-T-EN-EL-SD-AP-80 |  | AV System Layout | 28.25d | 2026-05-11 A | 2026-06-16 A | PG-T-EN-EL-SD-SB-80, PG-T-EN-EL-SD-SB-80 SS | 100% | 2026-05-11 | 2026-06-17 | T |  |

| ID | WBS | Activity | Duration | Start | Finish | Predecessors | Complete | Planned start | Planned finish | H,Q,T-Location | Air Dome |
| --- | --- | --- | --- | --- | --- | --- | --- | --- | --- | --- | --- |
|  | 3 | **FIRE ALARM SYSTEM** |  | 2026-05-11 | 2026-06-16 |  |  |  |  |  |  |
| PG-T-EN-EL-SD-AP-100 |  | Detector & Manual Call Point Details | 28.25d | 2026-05-11 A | 2026-06-16 A | PG-T-EN-EL-SD-SB-100, PG-T-EN-EL-SD-SB-100 SS | 100% | 2026-05-11 | 2026-06-17 | T |  |
| PG-T-EN-EL-SD-AP-110 |  | Control Panel Wiring Diagram | 28.25d | 2026-05-11 A | 2026-06-16 A | PG-T-EN-EL-SD-SB-110, PG-T-EN-EL-SD-SB-110 SS | 100% | 2026-05-11 | 2026-06-17 | T |  |
| PG-T-EN-EL-SD-AP-90 |  | Fire Alarm Layout | 28.25d | 2026-05-11 A | 2026-06-16 A | PG-T-EN-EL-SD-SB-90, PG-T-EN-EL-SD-SB-90 SS | 100% | 2026-05-11 | 2026-06-17 | T |  |
|  | 4 | **AIR DOME** |  | 2026-07-13 | 2026-07-19 |  |  |  |  |  |  |
| PG-T-EN-EL-SD-AP-120 |  | Power & Lighting System Drawings | 8d | 2026-07-13 A | 2026-07-19 A | PG-T-EN-EL-SD-SB-120 | 100% | 2026-09-06 | 2026-09-14 | T | A.D |
| PG-T-EN-EL-SD-AP-130 |  | Generators Details | 8d | 2026-07-13 A | 2026-07-19 A | PG-T-EN-EL-SD-SB-130 | 100% | 2026-08-19 | 2026-08-27 | T | A.D |
| PG-T-EN-EL-SD-AP-140 |  | Smart Dome System Drawings | 8d | 2026-07-13 A | 2026-07-19 A | PG-T-EN-EL-SD-SB-140 | 100% | 2026-09-06 | 2026-09-14 | T | A.D |
|  | 3 | **MATERIAL SUBMITTALS** |  | 2026-02-17 | 2026-09-15 |  |  |  |  |  |  |
|  | 1 | **LONG LEAD ITEMS** |  | 2026-02-17 | 2026-09-15 |  |  |  |  |  |  |
|  | 2 | **EXTERNAL / LANDSCAPE WORK** |  | 2026-02-25 | 2026-05-06 |  |  |  |  |  |  |
| PG-T-PR-LL-LS-MS-20 |  | Benches, Seats (Rectangular & Circular) | 57.25d | 2026-02-25 A | 2026-05-06 A | PG-T-PR-SL-LS-MS-30 | 100% | 2026-02-25 | 2026-05-07 | T |  |
| PG-T-PR-LL-LS-MS-10 |  | Bike and Walk Path Materials | 50.25d | 2026-03-05 A | 2026-05-06 A | PG-T-PR-SL-LS-MS-10, PG-T-EN-LS-SD-AP-50, PG-T-EN-LS-SD-AP-60 | 100% | 2026-03-05 | 2026-05-07 | T |  |
| PG-T-PR-LL-LS-MS-30 |  | Fence, gates and accessories | 50.25d | 2026-03-05 A | 2026-05-06 A | PG-T-PR-SL-LS-MS-30, PG-T-EN-LS-SD-AP-130 | 100% | 2026-03-05 | 2026-05-07 | T |  |
|  | 3 | **SPORTS & RECREATIONAL FACILITIES WORK** |  | 2026-02-17 | 2026-09-02 |  |  |  |  |  |  |
| PG-T-PR-LL-SP-MS-50 |  | Air Dome Materials(Completed) | 101.25d | 2026-02-17 A | 2026-06-24 A | PG-GN-MS-10 SS | 100% | 2026-02-17 | 2026-06-25 | T |  |
| PG-T-PR-LL-SP-MS-10 |  | Football Playground Materials (Flooring, goal post, nets, paints, etc) | 49.25d | 2026-03-07 A | 2026-05-06 A | PG-T-EN-LS-SD-AP-90, PG-T-EN-LS-SD-AP-120 | 100% | 2026-03-07 | 2026-05-07 | T |  |
| PG-T-PR-LL-SP-MS-20 |  | Basketball Playground Materials (Flooring, basketball poll, nets, paints, etc) | 49.25d | 2026-03-07 A | 2026-05-06 A | PG-T-EN-LS-SD-AP-120, PG-T-EN-LS-SD-AP-110 | 100% | 2026-03-07 | 2026-05-07 | T |  |
| PG-T-PR-LL-SP-MS-30 |  | Padel Playgound Materials (Flooring, fence, tempered glass, etc) | 49.25d | 2026-03-07 A | 2026-05-06 A | PG-T-EN-LS-SD-AP-120, PG-T-EN-LS-SD-AP-100 | 100% | 2026-03-07 | 2026-05-07 | T |  |
| PG-T-PR-LL-SP-MS-40 |  | Tartan Floor | 49.25d | 2026-03-07 A | 2026-05-06 A | PG-T-EN-LS-SD-AP-40 | 100% | 2026-03-07 | 2026-05-07 | T |  |
| PG-T-PR-LL-SP-MS-50_R |  | Air Dome Materials(Remaining) | 9d | 2026-07-07 A | 2026-09-02 A | PG-GN-MS-10 SS, PG-T-PR-LL-SP-MS-50 | 100% | 2026-07-12 | 2026-07-21 | T | A.D |
|  | 4 | **CONCRETE WORK** |  | 2026-03-07 | 2026-04-27 |  |  |  |  |  |  |
| PG-T-PR-LL-CO-MS-10 |  | Autoclaved Aerated Panel | 41.25d | 2026-03-07 A | 2026-04-27 A | PG-T-EN-AR-SD-AP-10, PG-T-EN-AR-SD-AP-20 | 100% | 2026-03-07 | 2026-04-28 | T |  |
|  | 5 | **METAL WORK** |  | 2026-03-11 | 2026-05-06 |  |  |  |  |  |  |
| PG-T-PR-LL-MT-MS-10 |  | Metal Doors | 45.25d | 2026-03-11 A | 2026-05-06 A | PG-T-EN-AR-SD-AP-80 | 100% | 2026-03-11 | 2026-05-07 | T |  |
| PG-T-PR-LL-MT-MS-20 |  | Curtain Wall | 45.25d | 2026-03-11 A | 2026-05-06 A | PG-T-PR-LL-CO-MS-10 | 100% | 2026-03-11 | 2026-05-07 | T |  |

| ID | WBS | Activity | Duration | Start | Finish | Predecessors | Complete | Planned start | Planned finish | H,Q,T-Location |
| --- | --- | --- | --- | --- | --- | --- | --- | --- | --- | --- |
|  | 7 | **PLUMBING WORK** |  | 2026-03-10 | 2026-05-06 |  |  |  |  |  |
| PG-T-PR-LL-PB-MS-10 |  | Booster Pump | 46.25d | 2026-03-10 A | 2026-05-06 A | PG-T-EN-ME-SD-AP-30 SS | 100% | 2026-03-10 | 2026-05-07 | T |
| PG-T-PR-LL-PB-MS-20 |  | GRP Sectional Panel Water Tanks (4x3x3m) | 42.25d | 2026-03-15 A | 2026-05-06 A | PG-T-PR-LL-PB-MS-10 | 100% | 2026-03-15 | 2026-05-07 | T |
|  | 8 | **IRRIGATION WORK** |  | 2026-03-05 | 2026-05-06 |  |  |  |  |  |
| PG-T-PR-LL-IR-MS-10 |  | HDPE Pipes | 50.25d | 2026-03-05 A | 2026-05-06 A | PG-T-PR-LL-IR-MS-20 SS | 100% | 2026-03-05 | 2026-05-07 | T |
| PG-T-PR-LL-IR-MS-20 |  | Irrigation Control System | 50.25d | 2026-03-05 A | 2026-05-06 A | PG-T-PR-LL-EL-MS-50 SS | 100% | 2026-03-05 | 2026-05-07 | T |
|  | 9 | **ELECTRICAL WORK** |  | 2026-05-11 | 2026-09-15 |  |  |  |  |  |
| PG-T-PR-LL-EL-MS-10 |  | Main Distribution Board(Completed) | 35.25d | 2026-05-11 A | 2026-06-24 A | PG-T-EN-EL-SD-AP-10 SS | 100% | 2026-05-11 | 2026-06-25 | T |
| PG-T-PR-LL-EL-MS-20 |  | Power Panels (Pump, Street Light)(Completed) | 35.25d | 2026-05-11 A | 2026-06-24 A | PG-T-PR-LL-EL-MS-10 SS | 100% | 2026-05-11 | 2026-06-25 | T |
| PG-T-PR-LL-EL-MS-30 |  | Site Lighting Poles(Completed) | 35.25d | 2026-05-11 A | 2026-06-24 A | PG-T-EN-EL-SD-AP-30 SS | 100% | 2026-05-11 | 2026-06-25 | T |
| PG-T-PR-LL-EL-MS-40 |  | Lighting Fixtures(Completed) | 35.25d | 2026-05-11 A | 2026-06-24 A | PG-T-PR-LL-EL-MS-10 SS | 100% | 2026-05-11 | 2026-06-25 | T |
| PG-T-PR-LL-EL-MS-50 |  | Grounding System Materials (Earth pit rod, LPS, etc)(Completed) | 35.25d | 2026-05-11 A | 2026-06-24 A | PG-T-PR-LL-SP-MS-50 SS | 100% | 2026-05-11 | 2026-06-25 | T |
| PG-T-PR-LL-EL-MS-60 |  | Telecommunications & Data System Materials (Telephone outlet, CCTV, etc)(Completed) | 35.25d | 2026-05-11 A | 2026-06-24 A | PG-T-EN-EL-SD-AP-50, PG-T-EN-EL-SD-AP-60 SS, PG-T-EN-EL-SD-AP-50 SS | 100% | 2026-05-11 | 2026-06-25 | T |
| PG-T-PR-LL-EL-MS-70 |  | Security and Access Control System Materials(Completed) | 35.25d | 2026-05-11 A | 2026-06-24 A | PG-T-EN-EL-SD-AP-80 SS | 100% | 2026-05-11 | 2026-06-25 | T |
| PG-T-PR-LL-EL-MS-80 |  | Fire Alarm System Materials(Completed) | 35.25d | 2026-05-11 A | 2026-06-24 A | PG-T-EN-EL-SD-AP-90, PG-T-EN-EL-SD-AP-110 SS, PG-T-EN-EL-SD-AP-90 SS | 100% | 2026-05-11 | 2026-06-25 | T |
| PG-T-PR-LL-EL-MS-10_R |  | Main Distribution Board(Remaining) | 10d | 2026-07-16 A | 2026-08-05 A | PG-T-EN-EL-SD-AP-10 SS, PG-T-PR-LL-EL-MS-10 | 100% | 2026-07-19 | 2026-07-29 | T |
| PG-T-PR-LL-EL-MS-20_R |  | Power Panels (Pump, Street Light)(Remaining) | 10d | 2026-07-16 A | 2026-08-05 A | PG-T-PR-LL-EL-MS-10_R SS, PG-T-PR-LL-EL-MS-20 | 100% | 2026-07-19 | 2026-07-29 | T |
| PG-T-PR-LL-EL-MS-30_R |  | Site Lighting Poles(Remaining) | 10d | 2026-07-16 A | 2026-08-05 A | PG-T-EN-EL-SD-AP-30 SS, PG-T-PR-LL-EL-MS-30 | 100% | 2026-07-19 | 2026-07-29 | T |
| PG-T-PR-LL-EL-MS-40_R |  | Lighting Fixtures(Remaining) | 10d | 2026-07-16 A | 2026-07-22 A | PG-T-PR-LL-EL-MS-10_R SS, PG-T-PR-LL-EL-MS-40 | 100% | 2026-07-19 | 2026-07-29 | T |
| PG-T-PR-LL-EL-MS-50_R |  | Grounding System Materials (Earth pit rod, LPS, etc)(Remaining) | 5d | 2026-07-16 A | 2026-07-20 A | PG-T-PR-LL-EL-MS-50, PG-T-PR-LL-SP-MS-50_R SS | 100% | 2026-08-03 | 2026-08-09 | T |
| PG-T-PR-LL-EL-MS-60_R |  | Telecommunications & Data System Materials (Telephone outlet, CCTV, etc)(Remaining) | 10d | 2026-07-16 A | 2026-09-15 A | PG-T-EN-EL-SD-AP-50, PG-T-EN-EL-SD-AP-60 SS, PG-T-EN-EL-SD-AP-50 SS, PG-T-PR-LL-EL-MS-60 | 100% | 2026-07-19 | 2026-07-29 | T |
| PG-T-PR-LL-EL-MS-70_R |  | Security and Access Control System Materials(Remaining) | 10d | 2026-07-16 A | 2026-09-15 A | PG-T-EN-EL-SD-AP-80 SS, PG-T-PR-LL-EL-MS-70 | 100% | 2026-07-19 | 2026-07-29 | T |
| PG-T-PR-LL-EL-MS-80_R |  | Fire Alarm System Materials(Remaining) | 10d | 2026-08-27 A | 2026-09-15 A | PG-T-EN-EL-SD-AP-90, PG-T-EN-EL-SD-AP-110 SS, PG-T-EN-EL-SD-AP-90 SS, PG-T-PR-LL-EL-MS-80 | 100% | 2026-08-29 | 2026-09-08 | T |
|  | 2 | **SHORT LEAD ITEMS** |  | 2026-02-17 | 2026-03-26 |  |  |  |  |  |
|  | 2 | **EXTERNAL / LANDSCAPE WORK** |  | 2026-02-17 | 2026-03-16 |  |  |  |  |  |
| PG-T-PR-SL-LS-MS-10 |  | Backfilling Materials | 23.25d | 2026-02-17 A | 2026-03-16 A | PG-GN-MS-10 SS | 100% | 2026-02-17 | 2026-03-17 | T |
| PG-T-PR-SL-LS-MS-30 |  | Compacted Natural Ground Soil | 20.25d | 2026-02-21 A | 2026-03-16 A | PG-T-PR-SL-LS-MS-10 | 100% | 2026-02-21 | 2026-03-17 | T |
| PG-T-PR-SL-LS-MS-60 |  | Traffic Signages | 9.25d | 2026-03-07 A | 2026-03-16 A | PG-T-EN-LS-SD-AP-80 | 100% | 2026-03-07 | 2026-03-17 | T |
| PG-T-PR-SL-LS-MS-40 |  | Curb Stone | 7.25d | 2026-03-09 A | 2026-03-16 A | PG-T-PR-SL-LS-MS-10, PG-T-EN-LS-SD-AP-10 | 100% | 2026-03-09 | 2026-03-17 | T |
| PG-T-PR-SL-LS-MS-20 |  | Interlock tiles | 4.25d | 2026-03-12 A | 2026-03-16 A | PG-T-PR-SL-LS-MS-10, PG-T-EN-LS-SD-AP-20 | 100% | 2026-03-12 | 2026-03-17 | T |
| PG-T-PR-SL-LS-MS-50 |  | Thermoplastic pavement road marking | 4.25d | 2026-03-12 A | 2026-03-16 A | PG-T-PR-SL-LS-MS-40 | 100% | 2026-03-12 | 2026-03-17 | T |
| PG-T-PR-SL-LS-MS-70 |  | Trees | 4.25d | 2026-03-12 A | 2026-03-16 A | PG-T-PR-SL-LS-MS-60, PG-T-EN-LS-SD-AP-70 | 100% | 2026-03-12 | 2026-03-17 | T |
| PG-T-PR-SL-LS-MS-80 |  | Lawn | 4.25d | 2026-03-12 A | 2026-03-16 A | PG-T-PR-SL-LS-MS-60, PG-T-EN-LS-SD-AP-70 | 100% | 2026-03-12 | 2026-03-17 | T |

| ID | WBS | Activity | Duration | Start | Finish | Predecessors | Complete | Planned start | Planned finish | H,Q,T-Location |
| --- | --- | --- | --- | --- | --- | --- | --- | --- | --- | --- |
|  | 3 | **CONCRETE WORK** |  | 2026-02-17 | 2026-03-26 |  |  |  |  |  |
| PG-T-PR-SL-CO-MS-10 |  | Steel Rebar | 17.25d | 2026-02-17 A | 2026-03-09 A | PG-GN-MS-10 SS | 100% | 2026-02-17 | 2026-03-10 | T |
| PG-T-PR-SL-CO-MS-20 |  | Concrete | 13.25d | 2026-02-23 A | 2026-03-09 A | PG-T-PR-SL-CO-MS-10 | 100% | 2026-02-23 | 2026-03-10 | T |
| PG-T-PR-SL-CO-MS-40 |  | CMU Block | 19.25d | 2026-03-01 A | 2026-03-26 A | PG-T-PR-SL-CO-MS-20 | 100% | 2026-03-01 | 2026-03-28 | T |
| PG-T-PR-SL-CO-MS-50 |  | Concrete Repair & Protection Materials | 19.25d | 2026-03-01 A | 2026-03-26 A | PG-T-PR-SL-CO-MS-20 | 100% | 2026-03-01 | 2026-03-28 | T |
| PG-T-PR-SL-CO-MS-30 |  | Screed | 10.25d | 2026-03-11 A | 2026-03-26 A | PG-T-PR-SL-CO-MS-20, PG-T-EN-AR-SD-AP-50 | 100% | 2026-03-11 | 2026-03-28 | T |
|  | 4 | **ARCHITECTURAL & FINISHES WORK** |  | 2026-03-10 | 2026-03-14 |  |  |  |  |  |
| PG-T-PR-SL-AR-MS-10 |  | Ceramic tiles | 4.25d | 2026-03-10 A | 2026-03-14 A | PG-T-EN-AR-SD-AP-50 | 100% | 2026-03-10 | 2026-03-15 | T |
| PG-T-PR-SL-AR-MS-100 |  | Specialities Materials (Toilet accessories, lockers, logo, etc) | 4.25d | 2026-03-10 A | 2026-03-14 A | PG-T-EN-AR-SD-AP-70 | 100% | 2026-03-10 | 2026-03-15 | T |
| PG-T-PR-SL-AR-MS-110 |  | Waterproofing System Materials | 4.25d | 2026-03-10 A | 2026-03-14 A | PG-T-EN-AR-SD-AP-50 | 100% | 2026-03-10 | 2026-03-15 | T |
| PG-T-PR-SL-AR-MS-20 |  | Anti-slip Granite tiles | 4.25d | 2026-03-10 A | 2026-03-14 A | PG-T-PR-SL-AR-MS-10, PG-T-EN-AR-SD-AP-50 | 100% | 2026-03-10 | 2026-03-15 | T |
| PG-T-PR-SL-AR-MS-30 |  | Epoxy Paint | 4.25d | 2026-03-10 A | 2026-03-14 A | PG-T-EN-AR-SD-AP-50 | 100% | 2026-03-10 | 2026-03-15 | T |
| PG-T-PR-SL-AR-MS-40 |  | Cement Plaster | 4.25d | 2026-03-10 A | 2026-03-14 A | PG-T-EN-AR-SD-AP-50 | 100% | 2026-03-10 | 2026-03-15 | T |
| PG-T-PR-SL-AR-MS-50 |  | Acrylic Paint | 4.25d | 2026-03-10 A | 2026-03-14 A | PG-T-PR-SL-AR-MS-40, PG-T-EN-AR-SD-AP-10, PG-T-EN-AR-SD-AP-30 | 100% | 2026-03-10 | 2026-03-15 | T |
| PG-T-PR-SL-AR-MS-60 |  | Stone Cladding | 4.25d | 2026-03-10 A | 2026-03-14 A | PG-T-EN-AR-SD-AP-100 | 100% | 2026-03-10 | 2026-03-15 | T |
| PG-T-PR-SL-AR-MS-70 |  | Phenolic Partition | 4.25d | 2026-03-10 A | 2026-03-14 A | PG-T-EN-AR-SD-AP-10 | 100% | 2026-03-10 | 2026-03-15 | T |
| PG-T-PR-SL-AR-MS-80 |  | Glass Partition | 4.25d | 2026-03-10 A | 2026-03-14 A | PG-T-EN-AR-SD-AP-10 | 100% | 2026-03-10 | 2026-03-15 | T |
| PG-T-PR-SL-AR-MS-90 |  | Gypsum Boards | 4.25d | 2026-03-10 A | 2026-03-14 A | PG-T-EN-AR-SD-AP-60 | 100% | 2026-03-10 | 2026-03-15 | T |
|  | 5 | **METAL WORK** |  | 2026-03-07 | 2026-03-16 |  |  |  |  |  |
| PG-T-PR-SL-MT-MS-20 |  | Galvanized Steel Roof Scupper | 9.25d | 2026-03-07 A | 2026-03-16 A | PG-T-EN-AR-SD-AP-20 | 100% | 2026-03-07 | 2026-03-17 | T |
| PG-T-PR-SL-MT-MS-30 |  | Galvanized Steel Cover with frame | 9.25d | 2026-03-07 A | 2026-03-16 A | PG-T-EN-AR-SD-AP-20 | 100% | 2026-03-07 | 2026-03-17 | T |
| PG-T-PR-SL-MT-MS-10 |  | Galvanized Steel Ladder | 4.25d | 2026-03-12 A | 2026-03-16 A | PG-T-EN-AR-SD-AP-20, PG-T-EN-AR-SD-AP-30 | 100% | 2026-03-12 | 2026-03-17 | T |
|  | 6 | **HVAC WORK** |  | 2026-02-23 | 2026-03-16 |  |  |  |  |  |
| PG-T-PR-SL-AC-MS-10 |  | Split Air Conditioning Unit | 19.25d | 2026-02-23 A | 2026-03-16 A | PG-T-PR-SL-CO-MS-10 | 100% | 2026-02-23 | 2026-03-17 | T |
| PG-T-PR-SL-AC-MS-20 |  | Air Duct | 15.25d | 2026-02-28 A | 2026-03-16 A | PG-T-PR-SL-AC-MS-10 | 100% | 2026-02-28 | 2026-03-17 | T |
| PG-T-PR-SL-AC-MS-30 |  | Diffusers and Grills | 11.25d | 2026-03-04 A | 2026-03-16 A | PG-T-PR-SL-AC-MS-20 | 100% | 2026-03-04 | 2026-03-17 | T |
| PG-T-PR-SL-AC-MS-40 |  | Exhaust fans | 11.25d | 2026-03-04 A | 2026-03-16 A | PG-T-PR-SL-AC-MS-20 | 100% | 2026-03-04 | 2026-03-17 | T |

| ID | WBS | Activity | Duration | Start | Finish | Predecessors | Complete | Planned start | Planned finish | Resources | Cost | Actual cost | H,Q,T-Location | BOQ DIVISION | DIVISION-02-SITE WORKS | Air Dome |
| --- | --- | --- | --- | --- | --- | --- | --- | --- | --- | --- | --- | --- | --- | --- | --- | --- |
|  | 7 | **PLUMBING WORK** |  | 2026-03-12 | 2026-03-16 |  |  |  |  |  |  |  |  |  |  |  |
| PG-T-PR-SL-PB-MS-10 |  | PPR Pipes & Valves | 4.25d | 2026-03-12 A | 2026-03-16 A | PG-T-EN-ME-SD-AP-10 | 100% | 2026-03-12 | 2026-03-17 |  |  |  | T |  |  |  |
| PG-T-PR-SL-PB-MS-20 |  | UPCV Pipes | 4.25d | 2026-03-12 A | 2026-03-16 A | PG-T-EN-ME-SD-AP-10, PG-T-EN-ME-SD-AP-50 | 100% | 2026-03-12 | 2026-03-17 |  |  |  | T |  |  |  |
| PG-T-PR-SL-PB-MS-30 |  | Sanitary Drainage Fixtures | 4.25d | 2026-03-12 A | 2026-03-16 A | PG-T-PR-SL-PB-MS-20, PG-T-EN-ME-SD-AP-60, PG-T-EN-ME-SD-AP-70 | 100% | 2026-03-12 | 2026-03-17 |  |  |  | T |  |  |  |
|  | 8 | **IRRIGATION WORK** |  | 2026-03-12 | 2026-03-16 |  |  |  |  |  |  |  |  |  |  |  |
| PG-T-PR-SL-IR-MS-10 |  | Gate Valve including valve box | 4.25d | 2026-03-12 A | 2026-03-16 A | PG-T-EN-ME-SD-AP-80, PG-T-EN-ME-SD-AP-90, PG-T-EN-ME-SD-SB-50 | 100% | 2026-03-12 | 2026-03-17 |  |  |  | T |  |  |  |
| PG-T-PR-SL-IR-MS-20 |  | Bulbblers and Spreyers | 4.25d | 2026-03-12 A | 2026-03-16 A | PG-T-EN-ME-SD-AP-90, PG-T-EN-ME-SD-SB-50 | 100% | 2026-03-12 | 2026-03-17 |  |  |  | T |  |  |  |
|  | 9 | **ELECTRICAL WORK** |  | 2026-03-12 | 2026-03-16 |  |  |  |  |  |  |  |  |  |  |  |
| PG-T-PR-SL-EL-MS-10 |  | Wiring Devices Materials | 4.25d | 2026-03-12 A | 2026-03-16 A | PG-T-PR-SL-PB-MS-30 | 100% | 2026-03-12 | 2026-03-17 |  |  |  | T |  |  |  |
|  | 10 | **FIRE FIGHTING WORK** |  | 2026-03-12 | 2026-03-16 |  |  |  |  |  |  |  |  |  |  |  |
| PG-T-PR-SL-FF-MS-10 |  | Fire Extinguishers | 4.25d | 2026-03-12 A | 2026-03-16 A | PG-T-PR-SL-PB-MS-30 | 100% | 2026-03-12 | 2026-03-17 |  |  |  | T |  |  |  |
|  | 4 | **MATERIAL APPROVALS** |  | 2026-02-21 | 2026-09-17 |  |  |  |  |  |  |  |  |  |  |  |
|  | 1 | **LONG LEAD ITEMS** |  | 2026-02-25 | 2026-09-17 |  |  |  |  |  |  |  |  |  |  |  |
|  | 1 | **EXTERNAL / LANDSCAPE WORK** |  | 2026-02-25 | 2026-05-05 |  |  |  |  |  |  |  |  |  |  |  |
| PG-T-PR-LL-LS-MA-20 |  | Benches, Seats (Rectangular & Circular) | 56d | 2026-02-25 A | 2026-05-05 A | PG-T-PR-LL-LS-MS-20 SS | 100% |  |  | COST [3869.07] | 3,869.07 | 3,869.07 | T | DIV-2 | Div-2.3 |  |
| PG-T-PR-LL-LS-MA-30 |  | Fence, gates and accessories | 43d | 2026-03-12 A | 2026-05-05 A | PG-T-PR-LL-LS-MS-30 | 100% |  |  | COST [2529.21] | 2,529.21 | 2,529.21 | T | DIV-2 | Div-2.3 |  |
| PG-T-PR-LL-LS-MA-10 |  | Bike and Walk Path Materials | 41d | 2026-03-15 A | 2026-05-05 A | PG-T-PR-LL-LS-MS-10 | 100% |  |  | COST [9027] | 9,027 | 9,027 | T | DIV-2 | Div-2.3 |  |
|  | 3 | **SPORTS & RECREATIONAL FACILITIES WORK** |  | 2026-03-02 | 2026-09-03 |  |  |  |  |  |  |  |  |  |  |  |
| PG-T-PR-LL-SP-MA-50 |  | Air Dome Materials(Completed) | 91d | 2026-03-02 A | 2026-06-24 A | PG-T-PR-LL-SP-MS-50 SS | 100% |  |  | COST [62622.1] | 62,622.07 | 62,622.07 | T | DIV-2 | AD | A.D |
| PG-T-PR-LL-SP-MA-40 |  | Tartan Floor | 43d | 2026-03-12 A | 2026-05-05 A | PG-T-PR-LL-SP-MS-40 | 100% |  |  | COST [8775] | 8,775 | 8,775 | T | DIV-2 | Div-2.3 |  |
| PG-T-PR-LL-SP-MA-10 |  | Football Playground Materials (Flooring, goal post, nets, paints, etc) | 42d | 2026-03-14 A | 2026-05-05 A | PG-T-PR-LL-SP-MS-10 | 100% |  |  | COST [13051.5] | 13,051.5 | 13,051.5 | T | DIV-2 | Div-2.3 |  |
| PG-T-PR-LL-SP-MA-20 |  | Basketball Playground Materials (Flooring, basketball poll, nets, paints, etc) | 42d | 2026-03-14 A | 2026-05-05 A | PG-T-PR-LL-SP-MS-20 | 100% |  |  | COST [2256] | 2,256 | 2,256 | T | DIV-2 | Div-2.3 |  |
| PG-T-PR-LL-SP-MA-30 |  | Padel Playgound Materials (Flooring, fence, tempered glass, etc) | 42d | 2026-03-14 A | 2026-05-05 A | PG-T-PR-LL-SP-MS-30 | 100% |  |  | COST [5950.8] | 5,950.8 | 5,950.8 | T | DIV-2 | Div-2.3 |  |
| PG-T-PR-LL-SP-MA-50_R |  | Air Dome Materials(Remaining) | 5d | 2026-07-09 A | 2026-09-03 A | PG-T-PR-LL-SP-MA-50, PG-T-PR-LL-SP-MS-50_R SS | 100% | 2026-07-22 | 2026-07-27 | COST [146118] | 146,118.17 | 146,118.17 | T | DIV-2 | AD | A.D |

| ID | WBS | Activity | Duration | Start | Finish | Predecessors | Complete | Planned start | Planned finish | Resources | Cost | Actual cost | H,Q,T-Location | BOQ DIVISION | DIVISION-3 CONCRETE | DIVISION 8- DOORS & WINDOWS | DIVISION 15-MECHANICAL WORKS | DIVISION 16 ELECTRICAL WORKS |
| --- | --- | --- | --- | --- | --- | --- | --- | --- | --- | --- | --- | --- | --- | --- | --- | --- | --- | --- |
|  | 4 | **CONCRETE WORK** |  | 2026-03-11 | 2026-04-28 |  |  |  |  |  |  |  |  |  |  |  |  |  |
| PG-T-PR-LL-CO-MA-10 |  | Autoclaved Aerated Panel | 38d | 2026-03-11 A | 2026-04-28 A | PG-T-PR-LL-CO-MS-10 | 100% |  |  | COST [1417.5] | 1,417.5 | 1,417.5 | T | DIV-3 | Div-3 |  |  |  |
|  | 5 | **METAL WORK** |  | 2026-03-15 | 2026-05-06 |  |  |  |  |  |  |  |  |  |  |  |  |  |
| PG-T-PR-LL-MT-MA-10 |  | Metal Doors | 42d | 2026-03-15 A | 2026-05-06 A | PG-T-PR-LL-MT-MS-10 | 100% |  |  | COST [127.53] | 127.53 | 127.53 | T | DIV-8 |  | Div-8.1 |  |  |
| PG-T-PR-LL-MT-MA-20 |  | Curtain Wall | 42d | 2026-03-15 A | 2026-05-06 A | PG-T-PR-LL-MT-MS-20 | 100% |  |  | COST [761.7] | 761.7 | 761.7 | T | DIV-8 |  | Div-8.2 |  |  |
|  | 7 | **PLUMBING WORK** |  | 2026-03-15 | 2026-05-06 |  |  |  |  |  |  |  |  |  |  |  |  |  |
| PG-T-PR-LL-PB-MA-10 |  | Booster Pump | 42d | 2026-03-15 A | 2026-05-06 A | PG-T-PR-LL-PB-MS-10 | 100% |  |  | COST [1818.3] | 1,818.3 | 1,818.3 | T | DIV-15 |  |  | Div15.2 |  |
| PG-T-PR-LL-PB-MA-20 |  | GRP Sectional Panel Water Tanks (4x3x3m) | 38d | 2026-03-24 A | 2026-05-06 A | PG-T-PR-LL-PB-MS-20 | 100% |  |  | COST [1735.65] | 1,735.65 | 1,735.65 | T | DIV-15 |  |  | Div15.2 |  |
|  | 8 | **IRRIGATION WORK** |  | 2026-03-11 | 2026-05-06 |  |  |  |  |  |  |  |  |  |  |  |  |  |
| PG-T-PR-LL-IR-MA-10 |  | HDPE Pipes | 45d | 2026-03-11 A | 2026-05-06 A | PG-T-PR-LL-IR-MS-10 | 100% |  |  | COST [2256.9] | 2,256.9 | 2,256.9 | T | DIV-15 |  |  | Div15.5 |  |
| PG-T-PR-LL-IR-MA-20 |  | Irrigation Control System | 45d | 2026-03-11 A | 2026-05-06 A | PG-T-PR-LL-IR-MS-20 | 100% |  |  | COST [4545.75] | 4,545.75 | 4,545.75 | T | DIV-15 |  |  | Div15.5 |  |
|  | 9 | **ELECTRICAL WORK** |  | 2026-05-12 | 2026-09-17 |  |  |  |  |  |  |  |  |  |  |  |  |  |
| PG-T-PR-LL-EL-MA-10 |  | Main Distribution Board(Completed) | 34d | 2026-05-12 A | 2026-06-24 A | PG-T-PR-LL-EL-MS-10 SS | 100% |  |  | COST [297.54] | 297.54 | 297.54 | T | DIV-16 |  |  |  | Div16.1 |
| PG-T-PR-LL-EL-MA-20 |  | Power Panels (Pump, Street Light)(Completed) | 34d | 2026-05-12 A | 2026-06-24 A | PG-T-PR-LL-EL-MS-20 SS | 100% |  |  | COST [238.03] | 238.03 | 238.03 | T | DIV-16 |  |  |  | Div16.2 |
| PG-T-PR-LL-EL-MA-30 |  | Site Lighting Poles(Completed) | 34d | 2026-05-12 A | 2026-06-24 A | PG-T-PR-LL-EL-MS-30 SS | 100% |  |  | COST [6962.11] | 6,962.11 | 6,962.11 | T | DIV-16 |  |  |  | Div16.2 |
| PG-T-PR-LL-EL-MA-40 |  | Lighting Fixtures(Completed) | 34d | 2026-05-12 A | 2026-06-24 A | PG-T-PR-LL-EL-MS-40 SS | 100% |  |  | COST [769.7] | 769.7 | 769.7 | T | DIV-16 |  |  |  | Div16.3 |
| PG-T-PR-LL-EL-MA-50 |  | Grounding System Materials (Earth pit rod, LPS, etc)(Completed) | 34d | 2026-05-12 A | 2026-06-24 A | PG-T-PR-LL-EL-MS-50 SS | 100% |  |  | COST [602.51] | 602.51 | 602.51 | T | DIV-16 |  |  |  | Div16.6 |
| PG-T-PR-LL-EL-MA-60 |  | Telecommunications & Data System Materials (Telephone outlet, CCTV, etc)(Completed) | 34d | 2026-05-12 A | 2026-06-24 A | PG-T-PR-LL-EL-MS-60 SS | 100% |  |  | COST [587.63] | 587.63 | 587.63 | T | DIV-16 |  |  |  | Div16.4 |
| PG-T-PR-LL-EL-MA-70 |  | Security and Access Control System Materials(Completed) | 34d | 2026-05-12 A | 2026-06-24 A | PG-T-PR-LL-EL-MS-70 SS | 100% |  |  | COST [743.94] | 743.94 | 743.94 | T | DIV-16 |  |  |  | Div16.5 |
| PG-T-PR-LL-EL-MA-80 |  | Fire Alarm System Materials(Completed) | 34d | 2026-05-12 A | 2026-06-24 A | PG-T-PR-LL-EL-MS-80 SS | 100% |  |  | COST [477.23] | 477.23 | 477.23 | T | DIV-16 |  |  |  | Div16.8 |
| PG-T-PR-LL-EL-MA-10_R |  | Main Distribution Board(Remaining) | 7d | 2026-07-17 A | 2026-08-06 A | PG-T-PR-LL-EL-MS-10_R SS, PG-T-PR-LL-EL-MA-10 | 100% | 2026-07-19 | 2026-07-26 | COST [198.36] | 198.36 | 198.36 | T | DIV-16 |  |  |  | Div16.1 |
| PG-T-PR-LL-EL-MA-20_R |  | Power Panels (Pump, Street Light)(Remaining) | 7d | 2026-07-17 A | 2026-08-06 A | PG-T-PR-LL-EL-MS-20_R SS, PG-T-PR-LL-EL-MA-20 | 100% | 2026-07-19 | 2026-07-26 | COST [158.69] | 158.69 | 158.69 | T | DIV-16 |  |  |  | Div16.2 |
| PG-T-PR-LL-EL-MA-30_R |  | Site Lighting Poles(Remaining) | 7d | 2026-07-17 A | 2026-08-06 A | PG-T-PR-LL-EL-MS-30_R SS, PG-T-PR-LL-EL-MA-30 | 100% | 2026-07-19 | 2026-07-26 | COST [4641.41] | 4,641.41 | 4,641.41 | T | DIV-16 |  |  |  | Div16.2 |
| PG-T-PR-LL-EL-MA-40_R |  | Lighting Fixtures(Remaining) | 7d | 2026-07-17 A | 2026-07-23 A | PG-T-PR-LL-EL-MS-40_R SS, PG-T-PR-LL-EL-MA-40 | 100% | 2026-07-19 | 2026-07-26 | COST [513.13] | 513.13 | 513.13 | T | DIV-16 |  |  |  | Div16.3 |
| PG-T-PR-LL-EL-MA-60_R |  | Telecommunications & Data System Materials (Telephone outlet, CCTV, etc)(Remaining) | 7d | 2026-07-17 A | 2026-09-17 A | PG-T-PR-LL-EL-MS-60_R SS, PG-T-PR-LL-EL-MA-60 | 100% | 2026-07-19 | 2026-07-26 | COST [391.75] | 391.75 | 391.75 | T | DIV-16 |  |  |  | Div16.4 |
| PG-T-PR-LL-EL-MA-70_R |  | Security and Access Control System Materials(Remaining) | 7d | 2026-07-17 A | 2026-09-17 A | PG-T-PR-LL-EL-MS-70_R SS, PG-T-PR-LL-EL-MA-70 | 100% | 2026-07-19 | 2026-07-26 | COST [495.96] | 495.96 | 495.96 | T | DIV-16 |  |  |  | Div16.5 |
| PG-T-PR-LL-EL-MA-50_R |  | Grounding System Materials (Earth pit rod, LPS, etc)(Remaining) | 2d | 2026-07-22 A | 2026-07-28 A | PG-T-PR-LL-EL-MS-50_R, PG-T-PR-LL-EL-MA-50 | 100% | 2026-08-09 | 2026-08-11 | COST [401.68] | 401.68 | 401.68 | T | DIV-16 |  |  |  | Div16.6 |
| PG-T-PR-LL-EL-MA-80_R |  | Fire Alarm System Materials(Remaining) | 7d | 2026-08-27 A | 2026-09-17 A | PG-T-PR-LL-EL-MS-80_R SS, PG-T-PR-LL-EL-MA-80 | 100% | 2026-08-29 | 2026-09-05 | COST [318.16] | 318.16 | 318.16 | T | DIV-16 |  |  |  | Div16.8 |

| ID | WBS | Activity | Duration | Start | Finish | Predecessors | Complete | Resources | Cost | Actual cost | H,Q,T-Location | BOQ DIVISION | DIVISION-02-SITE WORKS | DIVISION-3 CONCRETE | DIVISION-4 MASONRY | DIVISION 15-MECHANICAL WORKS | DIVISION 07-THERMAL & MOISTURE PROTECTIO | DIVISION 9-FINISHES | DIVISION 10-SPECIALTIES |
| --- | --- | --- | --- | --- | --- | --- | --- | --- | --- | --- | --- | --- | --- | --- | --- | --- | --- | --- | --- |
|  | 2 | **SHORT LEAD ITEMS** |  | 2026-02-21 | 2026-03-26 |  |  |  |  |  |  |  |  |  |  |  |  |  |  |
|  | 1 | **EXTERNAL / LANDSCAPE WORK** |  | 2026-02-21 | 2026-03-26 |  |  |  |  |  |  |  |  |  |  |  |  |  |  |
| PG-T-PR-SL-LS-MA-10 |  | Backfilling Materials | 25d | 2026-02-21 A | 2026-03-26 A | PG-T-PR-SL-LS-MS-10 | 100% | COST [10125] | 10,125 | 10,125 | T | DIV-2 | Div-2.1 |  |  |  |  |  |  |
| PG-T-PR-SL-LS-MA-30 |  | Compacted Natural Ground Soil | 22d | 2026-02-25 A | 2026-03-26 A | PG-T-PR-SL-LS-MS-30 | 100% | COST [1287] | 1,287 | 1,287 | T | DIV-2 | Div-2.3 |  |  |  |  |  |  |
| PG-T-PR-SL-LS-MA-60 |  | Traffic Signages | 11d | 2026-03-10 A | 2026-03-26 A | PG-T-PR-SL-LS-MS-60 | 100% | COST [198.36] | 198.36 | 198.36 | T | DIV-2 | Div-2.3 |  |  |  |  |  |  |
| PG-T-PR-SL-LS-MA-70 |  | Trees | 8d | 2026-03-14 A | 2026-03-26 A | PG-T-PR-SL-LS-MS-70 | 100% | COST [2306.1] | 2,306.1 | 2,306.1 | T | DIV-2 | Div-2.3 |  |  |  |  |  |  |
| PG-T-PR-SL-LS-MA-80 |  | Lawn | 8d | 2026-03-14 A | 2026-03-26 A | PG-T-PR-SL-LS-MS-80 | 100% | COST [3045] | 3,045 | 3,045 | T | DIV-2 | Div-2.3 |  |  |  |  |  |  |
| PG-T-PR-SL-LS-MA-50 |  | Thermoplastic pavement road marking | 6d | 2026-03-16 A | 2026-03-26 A | PG-T-PR-SL-LS-MS-50 | 100% | COST [525.63] | 525.63 | 525.63 | T | DIV-2 | Div-2.3 |  |  |  |  |  |  |
| PG-T-PR-SL-LS-MA-20 |  | Interlock tiles | 2d | 2026-03-25 A | 2026-03-26 A | PG-T-PR-SL-LS-MS-20 | 100% | COST [10715.4] | 10,715.4 | 10,715.4 | T | DIV-2 | Div-2.2 |  |  |  |  |  |  |
| PG-T-PR-SL-LS-MA-40 |  | Curb Stone | 2d | 2026-03-25 A | 2026-03-26 A | PG-T-PR-SL-LS-MS-40 | 100% | COST [10339.8] | 10,339.8 | 10,339.8 | T | DIV-2 | Div-2.3 |  |  |  |  |  |  |
|  | 3 | **CONCRETE WORK** |  | 2026-02-23 | 2026-03-26 |  |  |  |  |  |  |  |  |  |  |  |  |  |  |
| PG-T-PR-SL-CO-MA-10 |  | Steel Rebar | 14d | 2026-02-23 A | 2026-03-10 A | PG-T-PR-SL-CO-MS-10 | 100% | COST [476.82] | 476.82 | 476.82 | T | DIV-3 |  | Div-3 |  |  |  |  |  |
| PG-T-PR-SL-CO-MA-20 |  | Concrete | 9d | 2026-03-01 A | 2026-03-10 A | PG-T-PR-SL-CO-MS-20 | 100% | COST [518.85] | 518.85 | 518.85 | T | DIV-3 |  | Div-3 |  |  |  |  |  |
| PG-T-PR-SL-CO-MA-40 |  | CMU Block | 15d | 2026-03-05 A | 2026-03-26 A | PG-T-PR-SL-CO-MS-40 | 100% | COST [124.2] | 124.2 | 124.2 | T | DIV-4 |  |  | Div-4 |  |  |  |  |
| PG-T-PR-SL-CO-MA-50 |  | Concrete Repair & Protection Materials | 15d | 2026-03-05 A | 2026-03-26 A | PG-T-PR-SL-CO-MS-50 | 100% | COST [372] | 372 | 372 | T | DIV-15 |  |  |  | Div15.2 |  |  |  |
| PG-T-PR-SL-CO-MA-30 |  | Screed | 1d | 2026-03-26 A | 2026-03-26 A | PG-T-PR-SL-CO-MS-30 | 100% | COST [117.6] | 117.6 | 117.6 | T | DIV-7 |  |  |  |  | Div-07 |  |  |
|  | 4 | **ARCHITECTURAL & FINISHES WORK** |  | 2026-03-15 | 2026-03-16 |  |  |  |  |  |  |  |  |  |  |  |  |  |  |
| PG-T-PR-SL-AR-MA-10 |  | Ceramic tiles | 2d | 2026-03-15 A | 2026-03-16 A | PG-T-PR-SL-AR-MS-10 | 100% | COST [571.95] | 571.95 | 571.95 | T | DIV-9 |  |  |  |  |  | Div-9.1 |  |
| PG-T-PR-SL-AR-MA-100 |  | Specialities Materials (Toilet accessories, lockers, logo, etc) | 2d | 2026-03-15 A | 2026-03-16 A | PG-T-PR-SL-AR-MS-100 | 100% | COST [2262.87] | 2,262.87 | 2,262.87 | T | DIV-10 |  |  |  |  |  |  | Div-10 |
| PG-T-PR-SL-AR-MA-110 |  | Waterproofing System Materials | 2d | 2026-03-15 A | 2026-03-16 A | PG-T-PR-SL-AR-MS-110 | 100% | COST [544.2] | 544.2 | 544.2 | T | DIV-7 |  |  |  |  | Div-07 |  |  |
| PG-T-PR-SL-AR-MA-20 |  | Anti-slip Granite tiles | 2d | 2026-03-15 A | 2026-03-16 A | PG-T-PR-SL-AR-MS-20 | 100% | COST [535.5] | 535.5 | 535.5 | T | DIV-9 |  |  |  |  |  | Div-9.1 |  |
| PG-T-PR-SL-AR-MA-30 |  | Epoxy Paint | 2d | 2026-03-15 A | 2026-03-16 A | PG-T-PR-SL-AR-MS-30 | 100% | COST [111.18] | 111.18 | 111.18 | T | DIV-7 |  |  |  |  | Div-07 |  |  |
| PG-T-PR-SL-AR-MA-40 |  | Cement Plaster | 2d | 2026-03-15 A | 2026-03-16 A | PG-T-PR-SL-AR-MS-40 | 100% | COST [221.37] | 221.37 | 221.37 | T | DIV-9 |  |  |  |  |  | Div-9.2 |  |
| PG-T-PR-SL-AR-MA-50 |  | Acrylic Paint | 2d | 2026-03-15 A | 2026-03-16 A | PG-T-PR-SL-AR-MS-50 | 100% | COST [147.9] | 147.9 | 147.9 | T | DIV-9 |  |  |  |  |  | Div-9.2 |  |
| PG-T-PR-SL-AR-MA-60 |  | Stone Cladding | 2d | 2026-03-15 A | 2026-03-16 A | PG-T-PR-SL-AR-MS-60 | 100% | COST [1852.2] | 1,852.2 | 1,852.2 | T | DIV-9 |  |  |  |  |  | Div-9.2 |  |
| PG-T-PR-SL-AR-MA-70 |  | Phenolic Partition | 2d | 2026-03-15 A | 2026-03-16 A | PG-T-PR-SL-AR-MS-70 | 100% | COST [1340.4] | 1,340.4 | 1,340.4 | T | DIV-9 |  |  |  |  |  | Div-9.2 |  |
| PG-T-PR-SL-AR-MA-80 |  | Glass Partition | 2d | 2026-03-15 A | 2026-03-16 A | PG-T-PR-SL-AR-MS-80 | 100% | COST [155.4] | 155.4 | 155.4 | T | DIV-9 |  |  |  |  |  | Div-9.2 |  |
| PG-T-PR-SL-AR-MA-90 |  | Gypsum Boards | 2d | 2026-03-15 A | 2026-03-16 A | PG-T-PR-SL-AR-MS-90 | 100% | COST [188.58] | 188.58 | 188.58 | T | DIV-9 |  |  |  |  |  | Div-9.3 |  |

| ID | WBS | Activity | Duration | Start | Finish | Predecessors | Complete | Planned start | Planned finish | Resources | Cost | Actual cost | H,Q,T-Location | BOQ DIVISION | DIVISION-5-METALS | DIVISION 15-MECHANICAL WORKS | DIVISION 16 ELECTRICAL WORKS |
| --- | --- | --- | --- | --- | --- | --- | --- | --- | --- | --- | --- | --- | --- | --- | --- | --- | --- |
|  | 5 | **METAL WORK** |  | 2026-03-11 | 2026-03-26 |  |  |  |  |  |  |  |  |  |  |  |  |
| PG-T-PR-SL-MT-MA-20 |  | Galvanized Steel Roof Scupper | 10d | 2026-03-11 A | 2026-03-26 A | PG-T-PR-SL-MT-MS-20 | 100% |  |  | COST [31.32] | 31.32 | 31.32 | T | DIV-5 | Div-5 |  |  |
| PG-T-PR-SL-MT-MA-30 |  | Galvanized Steel Cover with frame | 10d | 2026-03-11 A | 2026-03-26 A | PG-T-PR-SL-MT-MS-30 | 100% |  |  | COST [85.71] | 85.71 | 85.71 | T | DIV-5 | Div-5 |  |  |
| PG-T-PR-SL-MT-MA-10 |  | Galvanized Steel Ladder | 7d | 2026-03-15 A | 2026-03-26 A | PG-T-PR-SL-MT-MS-10 | 100% |  |  | COST [361.86] | 361.86 | 361.86 | T | DIV-5 | Div-5 |  |  |
|  | 6 | **HVAC WORK** |  | 2026-02-28 | 2026-03-26 |  |  |  |  |  |  |  |  |  |  |  |  |
| PG-T-PR-SL-AC-MA-10 |  | Split Air Conditioning Unit | 20d | 2026-02-28 A | 2026-03-26 A | PG-T-PR-SL-AC-MS-10 | 100% |  |  | COST [309.93] | 309.93 | 309.93 | T | DIV-15 |  | Div15.4 |  |
| PG-T-PR-SL-AC-MA-20 |  | Air Duct | 16d | 2026-03-04 A | 2026-03-26 A | PG-T-PR-SL-AC-MS-20 | 100% |  |  | COST [156] | 156 | 156 | T | DIV-15 |  | Div15.4 |  |
| PG-T-PR-SL-AC-MA-30 |  | Diffusers and Grills | 2d | 2026-03-25 A | 2026-03-26 A | PG-T-PR-SL-AC-MS-30 | 100% |  |  | COST [74.31] | 74.31 | 74.31 | T | DIV-15 |  | Div15.4 |  |
| PG-T-PR-SL-AC-MA-40 |  | Exhaust fans | 2d | 2026-03-25 A | 2026-03-26 A | PG-T-PR-SL-AC-MS-40 | 100% |  |  | COST [66.12] | 66.12 | 66.12 | T | DIV-15 |  | Div15.4 |  |
|  | 7 | **PLUMBING WORK** |  | 2026-03-25 | 2026-03-26 |  |  |  |  |  |  |  |  |  |  |  |  |
| PG-T-PR-SL-PB-MA-10 |  | PPR Pipes & Valves | 2d | 2026-03-25 A | 2026-03-26 A | PG-T-PR-SL-PB-MS-10 | 100% |  |  | COST [265.2] | 265.2 | 265.2 | T | DIV-15 |  | Div15.2 |  |
| PG-T-PR-SL-PB-MA-20 |  | UPCV Pipes | 2d | 2026-03-25 A | 2026-03-26 A | PG-T-PR-SL-PB-MS-20 | 100% |  |  | COST [335.19] | 335.19 | 335.19 | T | DIV-15 |  | Div15.3 |  |
| PG-T-PR-SL-PB-MA-30 |  | Sanitary Drainage Fixtures | 2d | 2026-03-25 A | 2026-03-26 A | PG-T-PR-SL-PB-MS-30 | 100% |  |  | COST [2546.64] | 2,546.64 | 2,546.64 | T | DIV-15 |  | Div15.3 |  |
|  | 8 | **IRRIGATION WORK** |  | 2026-03-25 | 2026-03-26 |  |  |  |  |  |  |  |  |  |  |  |  |
| PG-T-PR-SL-IR-MA-10 |  | Gate Valve including valve box | 2d | 2026-03-25 A | 2026-03-26 A | PG-T-PR-SL-IR-MS-10 | 100% |  |  | COST [413.28] | 413.28 | 413.28 | T | DIV-15 |  | Div15.5 |  |
| PG-T-PR-SL-IR-MA-20 |  | Bulbblers and Spreyers | 2d | 2026-03-25 A | 2026-03-26 A | PG-T-PR-SL-IR-MS-20 | 100% |  |  | COST [2914.95] | 2,914.95 | 2,914.95 | T | DIV-15 |  | Div15.5 |  |
|  | 9 | **ELECTRICAL WORK** |  | 2026-03-25 | 2026-03-26 |  |  |  |  |  |  |  |  |  |  |  |  |
| PG-T-PR-SL-EL-MA-10 |  | Wiring Devices Materials | 2d | 2026-03-25 A | 2026-03-26 A | PG-T-PR-SL-EL-MS-10 | 100% |  |  | COST [407.52] | 407.52 | 407.52 | T | DIV-16 |  |  | Div16.9 |
|  | 10 | **FIRE FIGHTING WORK** |  | 2026-03-25 | 2026-03-26 |  |  |  |  |  |  |  |  |  |  |  |  |
| PG-T-PR-SL-FF-MA-10 |  | Fire Extinguishers | 2d | 2026-03-25 A | 2026-03-26 A | PG-T-PR-SL-FF-MS-10 | 100% |  |  | COST [22.71] | 22.71 | 22.71 | T | DIV-15 |  | Div15.1 |  |
|  | PR | **PROCUREMENT** |  | 2026-02-26 | 2026-10-21 |  |  |  |  |  |  |  |  |  |  |  |  |
|  | 1 | **LONG LEAD ITEMS** |  | 2026-03-07 | 2026-10-21 |  |  |  |  |  |  |  |  |  |  |  |  |
|  | 2 | **PURCHASE ORDER** |  | 2026-03-07 | 2026-09-10 |  |  |  |  |  |  |  |  |  |  |  |  |
|  | 1 | **EXTERNAL / LANDSCAPE WORK** |  | 2026-03-07 | 2026-05-06 |  |  |  |  |  |  |  |  |  |  |  |  |
| PG-T-PR-LL-LS-PO-20 |  | Benches, Seats (Rectangular & Circular) | 49.25d | 2026-03-07 A | 2026-05-06 A | PG-T-PR-LL-LS-MA-20 | 100% | 2026-03-07 | 2026-05-07 |  |  |  | T |  |  |  |  |
| PG-T-PR-LL-LS-PO-30 |  | Fence, gates and accessories | 36.25d | 2026-03-26 A | 2026-05-06 A | PG-T-PR-LL-LS-MA-30 | 100% | 2026-03-26 | 2026-05-07 |  |  |  | T |  |  |  |  |
| PG-T-PR-LL-LS-PO-10 |  | Bike and Walk Path Materials | 34.25d | 2026-03-29 A | 2026-05-06 A | PG-T-PR-LL-LS-MA-10 | 100% | 2026-03-29 | 2026-05-07 |  |  |  | T |  |  |  |  |

| ID | WBS | Activity | Duration | Start | Finish | Predecessors | Complete | Planned start | Planned finish | H,Q,T-Location | Air Dome |
| --- | --- | --- | --- | --- | --- | --- | --- | --- | --- | --- | --- |
|  | 2 | **SPORTS & RECREATIONAL FACILITIES WORK** |  | 2026-03-26 | 2026-09-10 |  |  |  |  |  |  |
| PG-T-PR-LL-SP-PO-40 |  | Tartan Floor | 36.25d | 2026-03-26 A | 2026-05-06 A | PG-T-PR-LL-SP-MA-40 | 100% | 2026-03-26 | 2026-05-07 | T |  |
| PG-T-PR-LL-SP-PO-10 |  | Football Playground Materials (Flooring, goal post, nets, paints, etc) | 35.25d | 2026-03-28 A | 2026-05-06 A | PG-T-PR-LL-SP-MA-10 | 100% | 2026-03-28 | 2026-05-07 | T |  |
| PG-T-PR-LL-SP-PO-20 |  | Basketball Playground Materials (Flooring, basketball poll, nets, paints, etc) | 35.25d | 2026-03-28 A | 2026-05-06 A | PG-T-PR-LL-SP-MA-20 | 100% | 2026-03-28 | 2026-05-07 | T |  |
| PG-T-PR-LL-SP-PO-30 |  | Padel Playgound Materials (Flooring, fence, tempered glass, etc) | 35.25d | 2026-03-28 A | 2026-05-06 A | PG-T-PR-LL-SP-MA-30 | 100% | 2026-03-28 | 2026-05-07 | T |  |
| PG-T-PR-LL-SP-PO-50 |  | Air Dome Materials | 5d | 2026-08-06 A | 2026-09-10 A | PG-T-PR-LL-SP-MA-50_R SS | 100% | 2026-08-10 | 2026-08-16 | T | A.D |
|  | 3 | **CONCRETE WORK** |  | 2026-03-18 | 2026-05-06 |  |  |  |  |  |  |
| PG-T-PR-LL-CO-PO-10 |  | Autoclaved Aerated Panel | 39.25d | 2026-03-18 A | 2026-05-06 A | PG-T-PR-LL-CO-MA-10 | 100% | 2026-03-18 | 2026-05-07 | T |  |
|  | 5 | **METAL WORK** |  | 2026-03-24 | 2026-05-06 |  |  |  |  |  |  |
| PG-T-PR-LL-MT-PO-10 |  | Metal Doors | 38.25d | 2026-03-24 A | 2026-05-06 A | PG-T-PR-LL-MT-MA-10 | 100% | 2026-03-24 | 2026-05-07 | T |  |
| PG-T-PR-LL-MT-PO-20 |  | Curtain Wall | 38.25d | 2026-03-24 A | 2026-05-06 A | PG-T-PR-LL-MT-MA-20 | 100% | 2026-03-24 | 2026-05-07 | T |  |
|  | 7 | **PLUMBING WORK** |  | 2026-03-28 | 2026-05-06 |  |  |  |  |  |  |
| PG-T-PR-LL-PB-PO-10 |  | Booster Pump | 35.25d | 2026-03-28 A | 2026-05-06 A | PG-T-PR-LL-PB-MA-10 | 100% | 2026-03-28 | 2026-05-07 | T |  |
| PG-T-PR-LL-PB-PO-20 |  | GRP Sectional Panel Water Tanks (4x3x3m) | 33.25d | 2026-03-30 A | 2026-05-06 A | PG-T-PR-LL-PB-MA-20 | 100% | 2026-03-30 | 2026-05-07 | T |  |
|  | 8 | **IRRIGATION WORK** |  | 2026-03-17 | 2026-05-06 |  |  |  |  |  |  |
| PG-T-PR-LL-IR-PO-20 |  | Irrigation Control System | 40.25d | 2026-03-17 A | 2026-05-06 A | PG-T-PR-LL-IR-MA-20 | 100% | 2026-03-17 | 2026-05-07 | T |  |
| PG-T-PR-LL-IR-PO-10 |  | HDPE Pipes | 39.25d | 2026-03-18 A | 2026-05-06 A | PG-T-PR-LL-IR-MA-10 | 100% | 2026-03-18 | 2026-05-07 | T |  |
|  | 9 | **ELECTRICAL WORK** |  | 2026-05-11 | 2026-09-10 |  |  |  |  |  |  |
| PG-T-PR-LL-EL-PO-10 |  | Main Distribution Board(Completed) | 35.25d | 2026-05-11 A | 2026-06-24 A | PG-T-PR-LL-EL-MA-10 SS | 100% | 2026-05-11 | 2026-06-25 | T |  |
| PG-T-PR-LL-EL-PO-20 |  | Power Panels (Pump, Street Light)(Completed) | 35.25d | 2026-05-11 A | 2026-06-24 A | PG-T-PR-LL-EL-MA-20 SS | 100% | 2026-05-11 | 2026-06-25 | T |  |
| PG-T-PR-LL-EL-PO-30 |  | Site Lighting Poles(Completed) | 35.25d | 2026-05-11 A | 2026-06-24 A | PG-T-PR-LL-EL-MA-30 SS | 100% | 2026-05-11 | 2026-06-25 | T |  |
| PG-T-PR-LL-EL-PO-40 |  | Lighting Fixtures(Completed) | 35.25d | 2026-05-11 A | 2026-06-24 A | PG-T-PR-LL-EL-MA-40 SS | 100% | 2026-05-11 | 2026-06-25 | T |  |
| PG-T-PR-LL-EL-PO-50 |  | Grounding System Materials (Earth pit rod, LPS, etc)(Completed) | 35.25d | 2026-05-11 A | 2026-06-24 A | PG-T-PR-LL-EL-MA-50 SS | 100% | 2026-05-11 | 2026-06-25 | T |  |
| PG-T-PR-LL-EL-PO-60 |  | Telecommunications & Data System Materials (Telephone outlet, CCTV, etc)(Completed) | 35.25d | 2026-05-11 A | 2026-06-24 A | PG-T-PR-LL-EL-MA-60 SS | 100% | 2026-05-11 | 2026-06-25 | T |  |
| PG-T-PR-LL-EL-PO-70 |  | Security and Access Control System Materials(Completed) | 35.25d | 2026-05-11 A | 2026-06-24 A | PG-T-PR-LL-EL-MA-70 SS | 100% | 2026-05-11 | 2026-06-25 | T |  |
| PG-T-PR-LL-EL-PO-80 |  | Fire Alarm System Materials(Completed) | 35.25d | 2026-05-11 A | 2026-06-24 A | PG-T-PR-LL-EL-MA-80 SS | 100% | 2026-05-11 | 2026-06-25 | T |  |
| PG-T-PR-LL-EL-PO-40_R |  | Lighting Fixtures(Remaining) | 8d | 2026-07-23 A | 2026-09-10 A | PG-T-PR-LL-EL-MA-40_R, PG-T-PR-LL-EL-PO-40 | 100% | 2026-08-02 | 2026-08-11 | T |  |
| PG-T-PR-LL-EL-PO-10_R |  | Main Distribution Board(Remaining) | 8d | 2026-07-26 A | 2026-09-10 A | PG-T-PR-LL-EL-PO-10, PG-T-PR-LL-EL-MA-10_R SS | 100% | 2026-08-09 | 2026-08-18 | T |  |
| PG-T-PR-LL-EL-PO-20_R |  | Power Panels (Pump, Street Light)(Remaining) | 8d | 2026-07-26 A | 2026-09-10 A | PG-T-PR-LL-EL-PO-20, PG-T-PR-LL-EL-MA-20_R SS | 100% | 2026-08-09 | 2026-08-18 | T |  |
| PG-T-PR-LL-EL-PO-30_R |  | Site Lighting Poles(Remaining) | 8d | 2026-07-26 A | 2026-09-10 A | PG-T-PR-LL-EL-PO-30, PG-T-PR-LL-EL-MA-30_R SS | 100% | 2026-08-09 | 2026-08-18 | T |  |
| PG-T-PR-LL-EL-PO-50_R |  | Grounding System Materials (Earth pit rod, LPS, etc)(Remaining) | 3d | 2026-07-26 A | 2026-09-10 A | PG-T-PR-LL-EL-MA-50_R, PG-T-PR-LL-EL-PO-50 | 100% | 2026-08-11 | 2026-08-15 | T |  |
| PG-T-PR-LL-EL-PO-60_R |  | Telecommunications & Data System Materials (Telephone outlet, CCTV, etc)(Remaining) | 8d | 2026-08-27 A | 2026-09-10 A | PG-T-PR-LL-EL-MA-60_R, PG-T-PR-LL-EL-PO-60, PG-T-PR-LL-EL-MA-60_R SS | 100% | 2026-08-30 | 2026-09-08 | T |  |
| PG-T-PR-LL-EL-PO-70_R |  | Security and Access Control System Materials(Remaining) | 8d | 2026-08-27 A | 2026-09-10 A | PG-T-PR-LL-EL-MA-70_R, PG-T-PR-LL-EL-PO-70, PG-T-PR-LL-EL-MA-70_R SS | 100% | 2026-08-30 | 2026-09-08 | T |  |
| PG-T-PR-LL-EL-PO-80_R |  | Fire Alarm System Materials(Remaining) | 8d | 2026-08-27 A | 2026-09-10 A | PG-T-PR-LL-EL-MA-80_R, PG-T-PR-LL-EL-PO-80, PG-T-PR-LL-EL-MA-80_R SS | 100% | 2026-09-06 | 2026-09-14 | T |  |

| ID | WBS | Activity | Duration | Start | Finish | Predecessors | Complete | Remaining | Planned start | Planned finish | Total float | Free float | H,Q,T-Location | Air Dome |
| --- | --- | --- | --- | --- | --- | --- | --- | --- | --- | --- | --- | --- | --- | --- |
|  | 3 | **MANUFACTURE / FABRICATION** |  | 2026-04-29 | 2026-10-14 |  |  |  |  |  |  |  |  |  |
|  | 1 | **EXTERNAL / LANDSCAPE WORK** |  | 2026-05-06 | 2026-09-10 |  |  |  |  |  |  |  |  |  |
| PG-T-PR-LL-LS-MF-10 |  | Bike and Walk Path Materials(Completed) | 39.25d | 2026-05-06 A | 2026-06-24 A | PG-T-PR-LL-LS-PO-10 | 100% |  | 2026-05-06 | 2026-06-25 |  |  | T |  |
| PG-T-PR-LL-LS-MF-20 |  | Benches, Seats (Rectangular & Circular)(Completed) | 39.25d | 2026-05-06 A | 2026-06-24 A | PG-T-PR-LL-LS-PO-20 | 100% |  | 2026-05-06 | 2026-06-25 |  |  | T |  |
| PG-T-PR-LL-LS-MF-30 |  | Fence, gates and accessories(Completed) | 39.25d | 2026-05-06 A | 2026-06-24 A | PG-T-PR-LL-LS-PO-30 | 100% |  | 2026-05-06 | 2026-06-25 |  |  | T |  |
| PG-T-PR-LL-LS-MF-30_R |  | Fence, gates and accessories(Remaining) | 6d | 2026-07-22 A | 2026-09-10 A | PG-T-PR-LL-LS-PO-30, PG-T-PR-LL-LS-MF-30 | 100% |  | 2026-07-26 | 2026-08-01 |  |  | T |  |
| PG-T-PR-LL-LS-MF-10_R |  | Bike and Walk Path Materials(Remaining) | 25d | 2026-08-05 A | 2026-09-05 A | PG-T-PR-LL-LS-PO-10, PG-T-PR-LL-LS-MF-10 | 100% |  | 2026-08-09 | 2026-09-06 |  |  | T |  |
| PG-T-PR-LL-LS-MF-20_R |  | Benches, Seats (Rectangular & Circular)(Remaining) | 25d | 2026-08-05 A | 2026-09-07 A | PG-T-PR-LL-LS-PO-20, PG-T-PR-LL-LS-MF-20 | 100% |  | 2026-08-09 | 2026-09-06 |  |  | T |  |
|  | 2 | **SPORTS & RECREATIONAL FACILITIES WORK** |  | 2026-05-06 | 2026-10-14 |  |  |  |  |  |  |  |  |  |
| PG-T-PR-LL-SP-MF-10 |  | Football Playground Materials (Flooring, goal post, nets, paints, etc)(Completed) | 39.25d | 2026-05-06 A | 2026-06-24 A | PG-T-PR-LL-SP-PO-10 | 100% |  | 2026-05-06 | 2026-06-25 |  |  | T |  |
| PG-T-PR-LL-SP-MF-20 |  | Basketball Playground Materials (Flooring, basketball poll, nets, paints, etc)(Completed) | 39.25d | 2026-05-06 A | 2026-06-24 A | PG-T-PR-LL-SP-PO-20 | 100% |  | 2026-05-06 | 2026-06-25 |  |  | T |  |
| PG-T-PR-LL-SP-MF-30 |  | Padel Playgound Materials (Flooring, fence, tempered glass, etc)(Completed) | 39.25d | 2026-05-06 A | 2026-06-24 A | PG-T-PR-LL-SP-PO-30 | 100% |  | 2026-05-06 | 2026-06-25 |  |  | T |  |
| PG-T-PR-LL-SP-MF-40 |  | Tartan Floor(Completed) | 39.25d | 2026-05-06 A | 2026-06-24 A | PG-T-PR-LL-SP-PO-40 | 100% |  | 2026-05-06 | 2026-06-25 |  |  | T |  |
| PG-T-PR-LL-SP-MF-10_R |  | Football Playground Materials (Flooring, goal post, nets, paints, etc)(Remaining) | 25d | 2026-08-05 A | 2026-09-02 A | PG-T-PR-LL-SP-PO-10, PG-T-PR-LL-SP-MF-10 | 100% |  | 2026-08-09 | 2026-09-06 |  |  | T |  |
| PG-T-PR-LL-SP-MF-20_R |  | Basketball Playground Materials (Flooring, basketball poll, nets, paints, etc)(Remaining) | 25d | 2026-08-05 A | 2026-09-04 A | PG-T-PR-LL-SP-PO-20, PG-T-PR-LL-SP-MF-20 | 100% |  | 2026-08-09 | 2026-09-06 |  |  | T |  |
| PG-T-PR-LL-SP-MF-30_R |  | Padel Playgound Materials (Flooring, fence, tempered glass, etc)(Remaining) | 25d | 2026-08-05 A | 2026-09-05 A | PG-T-PR-LL-SP-PO-30, PG-T-PR-LL-SP-MF-30 | 100% |  | 2026-08-09 | 2026-09-06 |  |  | T |  |
| PG-T-PR-LL-SP-MF-40_R |  | Tartan Floor(Remaining) | 25d | 2026-08-05 A | 2026-09-19 A | PG-T-PR-LL-SP-PO-40, PG-T-PR-LL-SP-MF-40 | 100% |  | 2026-08-09 | 2026-09-06 |  |  | T |  |
| PG-T-PR-LL-SP-MF-50 |  | Air Dome Materials | 26d | 2026-08-27 A | 2026-10-14 | PG-T-PR-LL-SP-PO-50, PG-T-PR-LL-SP-PO-50 SS | 60% | 10.4d | 2026-09-01 | 2026-10-03 | -41.4d | 0d | T | A.D |
|  | 3 | **CONCRETE WORK** |  | 2026-04-29 | 2026-07-02 |  |  |  |  |  |  |  |  |  |
| PG-T-PR-LL-CO-MF-10 |  | Autoclaved Aerated Panel(Completed) | 45.25d | 2026-04-29 A | 2026-06-24 A | PG-T-PR-LL-CO-PO-10, PG-T-PR-LL-CO-PO-10 SS | 100% |  | 2026-04-29 | 2026-06-25 |  |  | T |  |
| PG-T-PR-LL-CO-MF-10_R |  | Autoclaved Aerated Panel(Remaining) | 5d | 2026-07-01 A | 2026-07-02 A | PG-T-PR-LL-CO-PO-10, PG-T-PR-LL-CO-PO-10 SS, PG-T-PR-LL-CO-MF-10 | 100% |  | 2026-07-12 | 2026-07-16 |  |  | T |  |
|  | 5 | **METAL WORK** |  | 2026-05-06 | 2026-09-27 |  |  |  |  |  |  |  |  |  |
| PG-T-PR-LL-MT-MF-10 |  | Metal Doors(Completed) | 39.25d | 2026-05-06 A | 2026-06-24 A | PG-T-PR-LL-MT-PO-10 | 100% |  | 2026-05-06 | 2026-06-25 |  |  | T |  |
| PG-T-PR-LL-MT-MF-20 |  | Curtain Wall(Completed) | 39.25d | 2026-05-06 A | 2026-06-24 A | PG-T-PR-LL-MT-PO-20 | 100% |  | 2026-05-06 | 2026-06-25 |  |  | T |  |
| PG-T-PR-LL-MT-MF-10_R |  | Metal Doors(Remaining) | 25d | 2026-08-27 A | 2026-09-17 A | PG-T-PR-LL-MT-PO-10, PG-T-PR-LL-MT-MF-10 | 100% |  | 2026-08-29 | 2026-09-27 |  |  | T |  |
| PG-T-PR-LL-MT-MF-20_R |  | Curtain Wall(Remaining) | 25d | 2026-08-27 A | 2026-09-27 A | PG-T-PR-LL-MT-PO-20, PG-T-PR-LL-MT-MF-20 | 100% |  | 2026-08-29 | 2026-09-27 |  |  | T |  |

| ID | WBS | Activity | Duration | Start | Finish | Predecessors | Complete | Planned start | Planned finish | H,Q,T-Location |
| --- | --- | --- | --- | --- | --- | --- | --- | --- | --- | --- |
|  | 7 | **PLUMBING WORK** |  | 2026-05-06 | 2026-09-14 |  |  |  |  |  |
| PG-T-PR-LL-PB-MF-10 |  | Booster Pump(Completed) | 39.25d | 2026-05-06 A | 2026-06-24 A | PG-T-PR-LL-PB-PO-10 | 100% | 2026-05-06 | 2026-06-25 | T |
| PG-T-PR-LL-PB-MF-20 |  | GRP Sectional Panel Water Tanks (4x3x3m)(Completed) | 39.25d | 2026-05-06 A | 2026-06-24 A | PG-T-PR-LL-PB-PO-20 | 100% | 2026-05-06 | 2026-06-25 | T |
| PG-T-PR-LL-PB-MF-10_R |  | Booster Pump(Remaining) | 25d | 2026-06-25 A | 2026-07-02 A | PG-T-PR-LL-PB-PO-10, PG-T-PR-LL-PB-MF-10 | 100% | 2026-07-12 | 2026-08-09 | T |
| PG-T-PR-LL-PB-MF-20_R |  | GRP Sectional Panel Water Tanks (4x3x3m)(Remaining) | 25d | 2026-08-05 A | 2026-09-14 A | PG-T-PR-LL-PB-PO-20, PG-T-PR-LL-PB-MF-20 | 100% | 2026-08-09 | 2026-09-06 | T |
|  | 8 | **IRRIGATION WORK** |  | 2026-05-06 | 2026-09-21 |  |  |  |  |  |
| PG-T-PR-LL-IR-MF-10 |  | HDPE Pipes(Completed) | 39.25d | 2026-05-06 A | 2026-06-24 A | PG-T-PR-LL-IR-PO-10 | 100% | 2026-05-06 | 2026-06-25 | T |
| PG-T-PR-LL-IR-MF-20 |  | Irrigation Control System(Completed) | 39.25d | 2026-05-06 A | 2026-06-24 A | PG-T-PR-LL-IR-PO-20 | 100% | 2026-05-06 | 2026-06-25 | T |
| PG-T-PR-LL-IR-MF-10_R |  | HDPE Pipes(Remaining) | 5.1d | 2026-08-14 A | 2026-08-27 A | PG-T-PR-LL-IR-PO-10, PG-T-PR-LL-IR-MF-10 | 100% | 2026-08-16 | 2026-08-22 | T |
| PG-T-PR-LL-IR-MF-20_R |  | Irrigation Control System(Remaining) | 5.1d | 2026-08-27 A | 2026-09-21 A | PG-T-PR-LL-IR-PO-20, PG-T-PR-LL-IR-MF-20 | 100% | 2026-08-29 | 2026-09-03 | T |
|  | 9 | **ELECTRICAL WORK** |  | 2026-05-12 | 2026-09-30 |  |  |  |  |  |
| PG-T-PR-LL-EL-MF-10 |  | Main Distribution Board(Completed) | 34.25d | 2026-05-12 A | 2026-06-24 A | PG-T-PR-LL-EL-PO-10 SS | 100% | 2026-05-12 | 2026-06-25 | T |
| PG-T-PR-LL-EL-MF-20 |  | Power Panels (Pump, Street Light)(Completed) | 34.25d | 2026-05-12 A | 2026-06-24 A | PG-T-PR-LL-EL-PO-20 SS | 100% | 2026-05-12 | 2026-06-25 | T |
| PG-T-PR-LL-EL-MF-30 |  | Site Lighting Poles(Completed) | 34.25d | 2026-05-12 A | 2026-06-24 A | PG-T-PR-LL-EL-PO-30 SS | 100% | 2026-05-12 | 2026-06-25 | T |
| PG-T-PR-LL-EL-MF-40 |  | Lighting Fixtures(Completed) | 34.25d | 2026-05-12 A | 2026-06-24 A | PG-T-PR-LL-EL-PO-40 SS | 100% | 2026-05-12 | 2026-06-25 | T |
| PG-T-PR-LL-EL-MF-50 |  | Grounding System Materials (Earth pit rod, LPS, etc)(Completed) | 34.25d | 2026-05-12 A | 2026-06-24 A | PG-T-PR-LL-EL-PO-50 SS | 100% | 2026-05-12 | 2026-06-25 | T |
| PG-T-PR-LL-EL-MF-60 |  | Telecommunications & Data System Materials (Telephone outlet, CCTV, etc)(Completed) | 34.25d | 2026-05-12 A | 2026-06-24 A | PG-T-PR-LL-EL-PO-60 SS | 100% | 2026-05-12 | 2026-06-25 | T |
| PG-T-PR-LL-EL-MF-70 |  | Security and Access Control System Materials(Completed) | 34.25d | 2026-05-12 A | 2026-06-24 A | PG-T-PR-LL-EL-PO-70 SS | 100% | 2026-05-12 | 2026-06-25 | T |
| PG-T-PR-LL-EL-MF-80 |  | Fire Alarm System Materials(Completed) | 34.25d | 2026-05-12 A | 2026-06-24 A | PG-T-PR-LL-EL-PO-80 SS | 100% | 2026-05-12 | 2026-06-25 | T |
| PG-T-PR-LL-EL-MF-40_R |  | Lighting Fixtures(Remaining) | 25d | 2026-07-23 A | 2026-09-30 A | PG-T-PR-LL-EL-MF-40, PG-T-PR-LL-EL-PO-40_R SS | 100% | 2026-08-11 | 2026-09-09 | T |
| PG-T-PR-LL-EL-MF-10_R |  | Main Distribution Board(Remaining) | 25d | 2026-08-06 A | 2026-09-28 A | PG-T-PR-LL-EL-MF-10, PG-T-PR-LL-EL-PO-10_R SS | 100% | 2026-08-17 | 2026-09-15 | T |
| PG-T-PR-LL-EL-MF-20_R |  | Power Panels (Pump, Street Light)(Remaining) | 25d | 2026-08-06 A | 2026-09-26 A | PG-T-PR-LL-EL-MF-20, PG-T-PR-LL-EL-PO-20_R SS | 100% | 2026-08-17 | 2026-09-15 | T |
| PG-T-PR-LL-EL-MF-30_R |  | Site Lighting Poles(Remaining) | 25d | 2026-08-06 A | 2026-09-29 A | PG-T-PR-LL-EL-MF-30, PG-T-PR-LL-EL-PO-30_R SS | 100% | 2026-08-17 | 2026-09-15 | T |
| PG-T-PR-LL-EL-MF-50_R |  | Grounding System Materials (Earth pit rod, LPS, etc)(Remaining) | 6d | 2026-08-27 A | 2026-09-27 A | PG-T-PR-LL-EL-PO-50_R, PG-T-PR-LL-EL-MF-50, PG-T-PR-LL-EL-PO-50_R SS | 100% | 2026-08-31 | 2026-09-07 | T |
| PG-T-PR-LL-EL-MF-60_R |  | Telecommunications & Data System Materials (Telephone outlet, CCTV, etc)(Remaining) | 25d | 2026-08-27 A | 2026-09-29 A | PG-T-PR-LL-EL-PO-60_R, PG-T-PR-LL-EL-MF-60, PG-T-PR-LL-EL-PO-60_R SS | 100% | 2026-09-08 | 2026-10-08 | T |
| PG-T-PR-LL-EL-MF-70_R |  | Security and Access Control System Materials(Remaining) | 25d | 2026-08-27 A | 2026-09-30 A | PG-T-PR-LL-EL-PO-70_R, PG-T-PR-LL-EL-MF-70, PG-T-PR-LL-EL-PO-70_R SS | 100% | 2026-09-08 | 2026-10-08 | T |
| PG-T-PR-LL-EL-MF-80_R |  | Fire Alarm System Materials(Remaining) | 25d | 2026-08-27 A | 2026-09-30 A | PG-T-PR-LL-EL-PO-80_R, PG-T-PR-LL-EL-MF-80, PG-T-PR-LL-EL-PO-80_R SS | 100% | 2026-09-15 | 2026-10-14 | T |

| ID | WBS | Activity | Duration | Start | Finish | Predecessors | Complete | Remaining | Planned start | Planned finish | Total float | Free float | Resources | Cost | Actual cost | H,Q,T-Location | BOQ DIVISION | DIVISION-02-SITE WORKS | Air Dome | DIVISION-3 CONCRETE | DIVISION 8- DOORS & WINDOWS |
| --- | --- | --- | --- | --- | --- | --- | --- | --- | --- | --- | --- | --- | --- | --- | --- | --- | --- | --- | --- | --- | --- |
|  | 4 | **DELIVERY TO SITE** |  | 2026-05-06 | 2026-10-21 |  |  |  |  |  |  |  |  |  |  |  |  |  |  |  |  |
|  | 1 | **EXTERNAL / LANDSCAPE WORK** |  | 2026-05-06 | 2026-10-04 |  |  |  |  |  |  |  |  |  |  |  |  |  |  |  |  |
| PG-T-PR-LL-LS-DL-10 |  | Bike and Walk Path Materials(Completed) | 39d | 2026-05-06 A | 2026-06-24 A | PG-T-PR-LL-LS-MF-10 SS | 100% |  |  |  |  |  | COST [56870.1] | 56,870.1 | 56,870.1 | T | DIV-2 | Div-2.3 |  |  |  |
| PG-T-PR-LL-LS-DL-20 |  | Benches, Seats (Rectangular & Circular)(Completed) | 39d | 2026-05-06 A | 2026-06-24 A | PG-T-PR-LL-LS-MF-20 SS | 100% |  |  |  |  |  | COST [20893] | 20,892.98 | 20,892.98 | T | DIV-2 | Div-2.3 |  |  |  |
| PG-T-PR-LL-LS-DL-30 |  | Fence, gates and accessories(Completed) | 39d | 2026-05-06 A | 2026-06-24 A | PG-T-PR-LL-LS-MF-30 SS | 100% |  |  |  |  |  | COST [11381.4] | 11,381.44 | 11,381.44 | T | DIV-2 | Div-2.3 |  |  |  |
| PG-T-PR-LL-LS-DL-30_R |  | Fence, gates and accessories(Remaining) | 5d | 2026-07-23 A | 2026-09-19 A | PG-T-PR-LL-LS-DL-30, PG-T-PR-LL-LS-MF-30_R SS | 100% |  | 2026-08-02 | 2026-08-06 |  |  | COST [11381.4] | 11,381.44 | 11,381.44 | T | DIV-2 | Div-2.3 |  |  |  |
| PG-T-PR-LL-LS-DL-10_R |  | Bike and Walk Path Materials(Remaining) | 12d | 2026-08-06 A | 2026-09-28 A | PG-T-PR-LL-LS-DL-10, PG-T-PR-LL-LS-MF-10_R SS | 100% |  | 2026-09-07 | 2026-09-20 |  |  | COST [24372.9] | 24,372.9 | 24,372.9 | T | DIV-2 | Div-2.3 |  |  |  |
| PG-T-PR-LL-LS-DL-20_R |  | Benches, Seats (Rectangular & Circular)(Remaining) | 12d | 2026-08-14 A | 2026-10-04 | PG-T-PR-LL-LS-DL-20, PG-T-PR-LL-LS-MF-20_R SS | 90% | 1.2d | 2026-09-05 | 2026-09-19 | 41d | 6.35d | COST [13928.6] | 13,928.65 | 12,535.79 | T | DIV-2 | Div-2.3 |  |  |  |
|  | 2 | **SPORTS & RECREATIONAL FACILITIES WORK** |  | 2026-05-06 | 2026-10-21 |  |  |  |  |  |  |  |  |  |  |  |  |  |  |  |  |
| PG-T-PR-LL-SP-DL-10 |  | Football Playground Materials (Flooring, goal post, nets, paints, etc)(Completed) | 39d | 2026-05-06 A | 2026-06-24 A | PG-T-PR-LL-SP-MF-10 SS | 100% |  |  |  |  |  | COST [58731.8] | 58,731.75 | 58,731.75 | T | DIV-2 | Div-2.3 |  |  |  |
| PG-T-PR-LL-SP-DL-20 |  | Basketball Playground Materials (Flooring, basketball poll, nets, paints, etc)(Completed) | 39d | 2026-05-06 A | 2026-06-24 A | PG-T-PR-LL-SP-MF-20 SS | 100% |  |  |  |  |  | COST [10152] | 10,152 | 10,152 | T | DIV-2 | Div-2.3 |  |  |  |
| PG-T-PR-LL-SP-DL-30 |  | Padel Playgound Materials (Fence, tempered glass, etc)(Completed) | 39d | 2026-05-06 A | 2026-06-24 A | PG-T-PR-LL-SP-MF-30 SS | 100% |  |  |  |  |  | COST [26778.6] | 26,778.6 | 26,778.6 | T | DIV-2 | Div-2.3 |  |  |  |
| PG-T-PR-LL-SP-DL-40 |  | Tartan Floor(Completed) | 39d | 2026-05-06 A | 2026-06-24 A | PG-T-PR-LL-SP-MF-40 SS | 100% |  |  |  |  |  | COST [39487.5] | 39,487.5 | 39,487.5 | T | DIV-2 | Div-2.3 |  |  |  |
| PG-T-PR-LL-SP-DL-40_R |  | Tartan Floor(Remaining) | 12d | 2026-08-06 A | 2026-10-04 | PG-T-PR-LL-SP-DL-40, PG-T-PR-LL-SP-MF-40_R SS | 90% | 1.2d | 2026-09-07 | 2026-09-20 | 38.4d | 0d | COST [39487.5] | 39,487.5 | 35,538.75 | T | DIV-2 | Div-2.3 |  |  |  |
| PG-T-PR-LL-SP-DL-10_R |  | Football Playground Materials (Flooring, goal post, nets, paints, etc)(Remaining) | 12d | 2026-08-14 A | 2026-10-04 | PG-T-PR-LL-SP-DL-10, PG-T-PR-LL-SP-MF-10_R SS | 90% | 1.2d | 2026-09-08 | 2026-09-21 | 47.65d | 3.8d | COST [58731.8] | 58,731.75 | 52,858.57 | T | DIV-2 | Div-2.3 |  |  |  |
| PG-T-PR-LL-SP-DL-20_R |  | Basketball Playground Materials (Flooring, basketball poll, nets, paints, etc)(Remaining) | 12d | 2026-08-14 A | 2026-10-04 | PG-T-PR-LL-SP-DL-20, PG-T-PR-LL-SP-MF-20_R SS | 90% | 1.2d | 2026-09-08 | 2026-09-21 | 40.8d | 2.4d | COST [10152] | 10,152 | 9,136.8 | T | DIV-2 | Div-2.3 |  |  |  |
| PG-T-PR-LL-SP-DL-30_R |  | Padel Playgound Materials (Fence, tempered glass, etc)(Remaining) | 12d | 2026-08-14 A | 2026-10-04 | PG-T-PR-LL-SP-DL-30, PG-T-PR-LL-SP-MF-30_R SS | 90% | 1.2d | 2026-09-08 | 2026-09-21 | 20.15d | 0d | COST [26778.6] | 26,778.6 | 24,100.74 | T | DIV-2 | Div-2.3 |  |  |  |
| PG-T-PR-LL-SP-DL-50 |  | Air Dome Materials | 10d | 2026-08-20 A | 2026-10-21 | PG-T-PR-LL-SP-MF-50, PG-T-PR-LL-SP-MF-50 SS, PG-T-PR-LL-SP-MF-50 FF, PG-T-EN-AR-SD-AP-130, PG-T-EN-ME-SD-AP-100, PG-T-EN-EL-SD-AP-140, PG-T-EN-EL-SD-AP-120, PG-T-EN-EL-SD-AP-130, PG-T-EN-AR-SD-AP-130 SS | 50% | 6d | 2026-09-27 | 2026-10-08 | -41.4d | 0d | COST [1878662] | 1,878,662.16 | 751,464.86 | T | DIV-2 | AD | A.D |  |  |
|  | 3 | **CONCRETE WORK** |  | 2026-05-06 | 2026-07-05 |  |  |  |  |  |  |  |  |  |  |  |  |  |  |  |  |
| PG-T-PR-LL-CO-DL-10 |  | Autoclaved Aerated Panel(Completed) | 39d | 2026-05-06 A | 2026-06-24 A | PG-T-PR-LL-CO-MF-10 SS | 100% |  |  |  |  |  | COST [8930.25] | 8,930.25 | 8,930.25 | T | DIV-3 |  |  | Div-3 |  |
| PG-T-PR-LL-CO-DL-10_R |  | Autoclaved Aerated Panel(Remaining) | 5d | 2026-07-04 A | 2026-07-05 A | PG-T-PR-LL-CO-MF-10_R, PG-T-PR-LL-CO-DL-10 | 100% |  | 2026-07-18 | 2026-07-22 |  |  | COST [3827.25] | 3,827.25 | 3,827.25 | T | DIV-3 |  |  | Div-3 |  |
|  | 5 | **METAL WORK** |  | 2026-05-06 | 2026-10-08 |  |  |  |  |  |  |  |  |  |  |  |  |  |  |  |  |
| PG-T-PR-LL-MT-DL-10 |  | Metal Doors(Completed) | 39d | 2026-05-06 A | 2026-06-24 A | PG-T-PR-LL-MT-MF-10 SS | 100% |  |  |  |  |  | COST [573.88] | 573.88 | 573.88 | T | DIV-8 |  |  |  | Div-8.1 |
| PG-T-PR-LL-MT-DL-20 |  | Curtain Wall(Completed) | 39d | 2026-05-06 A | 2026-06-24 A | PG-T-PR-LL-MT-MF-20 SS | 100% |  |  |  |  |  | COST [3427.65] | 3,427.65 | 3,427.65 | T | DIV-8 |  |  |  | Div-8.2 |
| PG-T-PR-LL-MT-DL-10_R |  | Metal Doors(Remaining) | 12d | 2026-08-27 A | 2026-10-04 | PG-T-PR-LL-MT-MF-10_R, PG-T-PR-LL-MT-DL-10, PG-T-PR-LL-MT-MF-10_R SS | 90% | 1.2d | 2026-09-28 | 2026-10-11 | 37.8d | 4.9d | COST [573.88] | 573.88 | 516.5 | T | DIV-8 |  |  |  | Div-8.1 |
| PG-T-PR-LL-MT-DL-20_R |  | Curtain Wall(Remaining) | 12d | 2026-08-27 A | 2026-10-08 | PG-T-PR-LL-MT-MF-20_R, PG-T-PR-LL-MT-DL-20, PG-T-PR-LL-MT-MF-20_R SS | 55% | 5.4d | 2026-09-28 | 2026-10-11 | 34.6d | 0.7d | COST [3427.65] | 3,427.65 | 1,885.21 | T | DIV-8 |  |  |  | Div-8.2 |

| ID | WBS | Activity | Duration | Start | Finish | Predecessors | Complete | Remaining | Planned start | Planned finish | Total float | Free float | Resources | Cost | Actual cost | H,Q,T-Location | BOQ DIVISION | DIVISION 15-MECHANICAL WORKS | DIVISION 16 ELECTRICAL WORKS |
| --- | --- | --- | --- | --- | --- | --- | --- | --- | --- | --- | --- | --- | --- | --- | --- | --- | --- | --- | --- |
|  | 7 | **PLUMBING WORK** |  | 2026-05-06 | 2026-10-04 |  |  |  |  |  |  |  |  |  |  |  |  |  |  |
| PG-T-PR-LL-PB-DL-10 |  | Booster Pump(Completed) | 39d | 2026-05-06 A | 2026-06-24 A | PG-T-PR-LL-PB-MF-10 SS | 100% |  |  |  |  |  | COST [9818.82] | 9,818.82 | 9,818.82 | T | DIV-15 | Div15.2 |  |
| PG-T-PR-LL-PB-DL-20 |  | GRP Sectional Panel Water Tanks (4x3x3m)(Completed) | 39d | 2026-05-06 A | 2026-06-24 A | PG-T-PR-LL-PB-MF-20 SS | 100% |  |  |  |  |  | COST [9372.51] | 9,372.51 | 9,372.51 | T | DIV-15 | Div15.2 |  |
| PG-T-PR-LL-PB-DL-20_R |  | GRP Sectional Panel Water Tanks (4x3x3m)(Remaining) | 12d | 2026-08-14 A | 2026-10-04 | PG-T-PR-LL-PB-DL-20, PG-T-PR-LL-PB-MF-20_R SS | 90% | 1.2d | 2026-08-30 | 2026-09-13 | 22.5d | 25.2d | COST [6248.34] | 6,248.34 | 5,623.51 | T | DIV-15 | Div15.2 |  |
| PG-T-PR-LL-PB-DL-10_R |  | Booster Pump(Remaining) | 12d | 2026-08-27 A | 2026-09-26 A | PG-T-PR-LL-PB-MF-10_R, PG-T-PR-LL-PB-DL-10 | 100% |  | 2026-08-29 | 2026-09-10 |  |  | COST [6545.88] | 6,545.88 | 6,545.88 | T | DIV-15 | Div15.2 |  |
|  | 8 | **IRRIGATION WORK** |  | 2026-05-06 | 2026-10-03 |  |  |  |  |  |  |  |  |  |  |  |  |  |  |
| PG-T-PR-LL-IR-DL-10 |  | HDPE Pipes(Completed) | 39d | 2026-05-06 A | 2026-06-24 A | PG-T-PR-LL-IR-MF-10 SS | 100% |  |  |  |  |  | COST [12187.3] | 12,187.26 | 12,187.26 | T | DIV-15 | Div15.5 |  |
| PG-T-PR-LL-IR-DL-20 |  | Irrigation Control System(Completed) | 39d | 2026-05-06 A | 2026-06-24 A | PG-T-PR-LL-IR-MF-20 SS | 100% |  |  |  |  |  | COST [24547] | 24,547.05 | 24,547.05 | T | DIV-15 | Div15.5 |  |
| PG-T-PR-LL-IR-DL-10_R |  | HDPE Pipes(Remaining) | 4d | 2026-08-07 A | 2026-09-22 A | PG-T-PR-LL-IR-DL-10, PG-T-PR-LL-IR-MF-10_R SS | 100% |  | 2026-08-22 | 2026-08-26 |  |  | COST [8124.84] | 8,124.84 | 8,124.84 | T | DIV-15 | Div15.5 |  |
| PG-T-PR-LL-IR-DL-20_R |  | Irrigation Control System(Remaining) | 4d | 2026-08-20 A | 2026-10-03 | PG-T-PR-LL-IR-MF-20_R, PG-T-PR-LL-IR-DL-20, PG-T-PR-LL-IR-MF-20_R FF | 90% | 0.4d | 2026-08-29 | 2026-09-02 | -24.05d | 8.6d | COST [16364.7] | 16,364.7 | 14,728.23 | T | DIV-15 | Div15.5 |  |
|  | 9 | **ELECTRICAL WORK** |  | 2026-05-13 | 2026-10-05 |  |  |  |  |  |  |  |  |  |  |  |  |  |  |
| PG-T-PR-LL-EL-DL-10 |  | Main Distribution Board(Completed) | 33d | 2026-05-13 A | 2026-06-24 A | PG-T-PR-LL-EL-MF-10 SS | 100% |  |  |  |  |  | COST [2677.86] | 2,677.86 | 2,677.86 | T | DIV-16 |  | Div16.1 |
| PG-T-PR-LL-EL-DL-20 |  | Power Panels (Pump, Street Light)(Completed) | 33d | 2026-05-13 A | 2026-06-24 A | PG-T-PR-LL-EL-MF-20 SS | 100% |  |  |  |  |  | COST [2142.29] | 2,142.29 | 2,142.29 | T | DIV-16 |  | Div16.1 |
| PG-T-PR-LL-EL-DL-30 |  | Site Lighting Poles(Completed) | 33d | 2026-05-13 A | 2026-06-24 A | PG-T-PR-LL-EL-MF-30 SS | 100% |  |  |  |  |  | COST [62659] | 62,659.01 | 62,659.01 | T | DIV-16 |  | Div16.2 |
| PG-T-PR-LL-EL-DL-40 |  | Lighting Fixtures(Completed) | 33d | 2026-05-13 A | 2026-06-24 A | PG-T-PR-LL-EL-MF-40 SS | 100% |  |  |  |  |  | COST [6927.28] | 6,927.28 | 6,927.28 | T | DIV-16 |  | Div16.3 |
| PG-T-PR-LL-EL-DL-50 |  | Grounding System Materials (Earth pit rod, LPS, etc)(Completed) | 33d | 2026-05-13 A | 2026-06-24 A | PG-T-PR-LL-EL-MF-50 SS | 100% |  |  |  |  |  | COST [5422.63] | 5,422.63 | 5,422.63 | T | DIV-16 |  | Div16.6 |
| PG-T-PR-LL-EL-DL-60 |  | Telecommunications & Data System Materials (Telephone outlet, CCTV, etc)(Completed) | 33d | 2026-05-13 A | 2026-06-24 A | PG-T-PR-LL-EL-MF-60 SS | 100% |  |  |  |  |  | COST [5288.65] | 5,288.65 | 5,288.65 | T | DIV-16 |  | Div16.4 |
| PG-T-PR-LL-EL-DL-70 |  | Security and Access Control System Materials(Completed) | 33d | 2026-05-13 A | 2026-06-24 A | PG-T-PR-LL-EL-MF-70 SS | 100% |  |  |  |  |  | COST [6695.46] | 6,695.46 | 6,695.46 | T | DIV-16 |  | Div16.5 |
| PG-T-PR-LL-EL-DL-80 |  | Fire Alarm System Materials(Completed) | 33d | 2026-05-13 A | 2026-06-24 A | PG-T-PR-LL-EL-MF-80 SS | 100% |  |  |  |  |  | COST [4295.11] | 4,295.11 | 4,295.11 | T | DIV-16 |  | Div16.8 |
| PG-T-PR-LL-EL-DL-10_R |  | Main Distribution Board(Remaining) | 12d | 2026-08-14 A | 2026-10-04 | PG-T-PR-LL-EL-DL-10, PG-T-PR-LL-EL-MF-10_R SS | 85% | 1.8d | 2026-09-14 | 2026-09-29 | -13.6d | 19.05d | COST [1785.24] | 1,785.24 | 1,517.45 | T | DIV-16 |  | Div16.1 |
| PG-T-PR-LL-EL-DL-20_R |  | Power Panels (Pump, Street Light)(Remaining) | 12d | 2026-08-14 A | 2026-10-04 | PG-T-PR-LL-EL-DL-20, PG-T-PR-LL-EL-MF-20_R SS | 85% | 1.8d | 2026-09-14 | 2026-09-29 | -9.1d | 23.55d | COST [1428.19] | 1,428.19 | 1,213.96 | T | DIV-16 |  | Div16.1 |
| PG-T-PR-LL-EL-DL-30_R |  | Site Lighting Poles(Remaining) | 12d | 2026-08-14 A | 2026-10-04 | PG-T-PR-LL-EL-DL-30, PG-T-PR-LL-EL-MF-30_R SS | 85% | 1.8d | 2026-09-14 | 2026-09-29 | -2.8d | 29.85d | COST [41772.7] | 41,772.67 | 35,506.77 | T | DIV-16 |  | Div16.2 |
| PG-T-PR-LL-EL-DL-40_R |  | Lighting Fixtures(Remaining) | 12d | 2026-08-14 A | 2026-10-04 | PG-T-PR-LL-EL-DL-40, PG-T-PR-LL-EL-MF-40_R SS | 85% | 1.8d | 2026-09-08 | 2026-09-21 | 4.8d | 4.3d | COST [4618.19] | 4,618.19 | 3,925.46 | T | DIV-16 |  | Div16.3 |
| PG-T-PR-LL-EL-DL-50_R |  | Grounding System Materials (Earth pit rod, LPS, etc)(Remaining) | 4d | 2026-08-14 A | 2026-10-03 | PG-T-PR-LL-EL-DL-50, PG-T-PR-LL-EL-MF-50_R FF | 85% | 0.6d | 2026-08-25 | 2026-08-30 | -13.6d | 19.05d | COST [3615.08] | 3,615.08 | 3,072.82 | T | DIV-16 |  | Div16.6 |
| PG-T-PR-LL-EL-DL-60_R |  | Telecommunications & Data System Materials (Telephone outlet, CCTV, etc)(Remaining) | 12d | 2026-08-27 A | 2026-10-05 | PG-T-PR-LL-EL-MF-60_R, PG-T-PR-LL-EL-DL-60, PG-T-PR-LL-EL-MF-60_R SS | 80% | 2.4d | 2026-10-08 | 2026-10-22 | 10.2d | 42.85d | COST [3525.77] | 3,525.77 | 2,820.61 | T | DIV-16 |  | Div16.4 |
| PG-T-PR-LL-EL-DL-70_R |  | Security and Access Control System Materials(Remaining) | 12d | 2026-08-27 A | 2026-10-05 | PG-T-PR-LL-EL-MF-70_R, PG-T-PR-LL-EL-DL-70, PG-T-PR-LL-EL-MF-70_R SS | 80% | 2.4d | 2026-10-08 | 2026-10-22 | 27.75d | 54.05d | COST [4463.64] | 4,463.64 | 3,570.91 | T | DIV-16 |  | Div16.5 |
| PG-T-PR-LL-EL-DL-80_R |  | Fire Alarm System Materials(Remaining) | 12d | 2026-08-27 A | 2026-10-05 | PG-T-PR-LL-EL-MF-80_R, PG-T-PR-LL-EL-DL-80, PG-T-PR-LL-EL-MF-80_R SS | 80% | 2.4d | 2026-10-15 | 2026-10-28 | 12.6d | 45.25d | COST [2863.4] | 2,863.4 | 2,290.72 | T | DIV-16 |  | Div16.8 |

| ID | WBS | Activity | Duration | Start | Finish | Predecessors | Complete | Planned start | Planned finish | H,Q,T-Location |
| --- | --- | --- | --- | --- | --- | --- | --- | --- | --- | --- |
|  | 2 | **SHORT LEAD ITEMS** |  | 2026-02-26 | 2026-10-08 |  |  |  |  |  |
|  | 1 | **MATERIAL SUBMITTALS** |  |  |  |  |  |  |  |  |
|  | 2 | **PURCHASE ORDER** |  | 2026-02-26 | 2026-08-27 |  |  |  |  |  |
|  | 1 | **EXTERNAL / LANDSCAPE WORK** |  | 2026-02-26 | 2026-08-27 |  |  |  |  |  |
| PG-T-PR-SL-LS-PO-10 |  | Backfilling Materials | 44.25d | 2026-02-26 A | 2026-04-22 A | PG-T-PR-SL-LS-MA-10 | 100% | 2026-02-26 | 2026-04-23 | T |
| PG-T-PR-SL-LS-PO-30 |  | Compacted Natural Ground Soil | 42.25d | 2026-03-01 A | 2026-04-22 A | PG-T-PR-SL-LS-MA-30 | 100% | 2026-03-01 | 2026-04-23 | T |
| PG-T-PR-SL-LS-PO-20 |  | Interlock tiles | 28.25d | 2026-03-29 A | 2026-04-29 A | PG-T-PR-SL-LS-MA-20 | 100% | 2026-03-29 | 2026-04-30 | T |
| PG-T-PR-SL-LS-PO-40 |  | Curb Stone | 23.25d | 2026-04-04 A | 2026-04-29 A | PG-T-PR-SL-LS-MA-40 | 100% | 2026-04-04 | 2026-04-30 | T |
| PG-T-PR-SL-LS-PO-50 |  | Thermoplastic pavement road marking(Completed) | 35.25d | 2026-05-11 A | 2026-06-24 A | PG-T-PR-SL-LS-MA-50 | 100% | 2026-05-11 | 2026-06-25 | T |
| PG-T-PR-SL-LS-PO-60 |  | Traffic Signages(Completed) | 35.25d | 2026-05-11 A | 2026-06-24 A | PG-T-PR-SL-LS-MA-60 | 100% | 2026-05-11 | 2026-06-25 | T |
| PG-T-PR-SL-LS-PO-70 |  | Trees(Completed) | 35.25d | 2026-05-11 A | 2026-06-24 A | PG-T-PR-SL-LS-MA-70 | 100% | 2026-05-11 | 2026-06-25 | T |
| PG-T-PR-SL-LS-PO-80 |  | Lawn(Completed) | 35.25d | 2026-05-11 A | 2026-06-24 A | PG-T-PR-SL-LS-MA-80 | 100% | 2026-05-11 | 2026-06-25 | T |
| PG-T-PR-SL-LS-PO-50_R |  | Thermoplastic pavement road marking(Remaining) | 7d | 2026-08-20 A | 2026-08-27 A | PG-T-PR-SL-LS-MA-50, PG-T-PR-SL-LS-PO-50 | 100% | 2026-08-29 | 2026-09-05 | T |
| PG-T-PR-SL-LS-PO-60_R |  | Traffic Signages(Remaining) | 7d | 2026-08-20 A | 2026-08-27 A | PG-T-PR-SL-LS-MA-60, PG-T-PR-SL-LS-PO-60, PG-T-PR-SL-LS-PO-50_R | 100% | 2026-09-06 | 2026-09-13 | T |
| PG-T-PR-SL-LS-PO-70_R |  | Trees(Remaining) | 7d | 2026-08-20 A | 2026-08-27 A | PG-T-PR-SL-LS-MA-70, PG-T-PR-SL-LS-PO-70 | 100% | 2026-08-29 | 2026-09-05 | T |
| PG-T-PR-SL-LS-PO-80_R |  | Lawn(Remaining) | 7d | 2026-08-20 A | 2026-08-27 A | PG-T-PR-SL-LS-MA-80, PG-T-PR-SL-LS-PO-80 | 100% | 2026-08-29 | 2026-09-05 | T |
|  | 3 | **CONCRETE WORK** |  | 2026-03-02 | 2026-04-22 |  |  |  |  |  |
| PG-T-PR-SL-CO-PO-10 |  | Steel Rebar | 41.25d | 2026-03-02 A | 2026-04-22 A | PG-T-PR-SL-CO-MA-10 | 100% | 2026-03-02 | 2026-04-23 | T |
| PG-T-PR-SL-CO-PO-20 |  | Concrete | 36.25d | 2026-03-08 A | 2026-04-22 A | PG-T-PR-SL-CO-MA-20 | 100% | 2026-03-08 | 2026-04-23 | T |
| PG-T-PR-SL-CO-PO-40 |  | CMU Block | 33.25d | 2026-03-11 A | 2026-04-22 A | PG-T-PR-SL-CO-MA-40 | 100% | 2026-03-11 | 2026-04-23 | T |
| PG-T-PR-SL-CO-PO-50 |  | Concrete Repair & Protection Materials | 32.25d | 2026-03-12 A | 2026-04-22 A | PG-T-PR-SL-CO-MA-50 | 100% | 2026-03-12 | 2026-04-23 | T |
| PG-T-PR-SL-CO-PO-30 |  | Screed | 23.25d | 2026-03-28 A | 2026-04-22 A | PG-T-PR-SL-CO-MA-30 | 100% | 2026-03-28 | 2026-04-23 | T |
|  | 4 | **ARCHITECTURAL & FINISHES WORK** |  | 2026-05-05 | 2026-05-12 |  |  |  |  |  |
| PG-T-PR-SL-AR-PO-10 |  | Ceramic tiles | 7.25d | 2026-05-05 A | 2026-05-12 A | PG-T-PR-SL-AR-MA-10 | 100% | 2026-05-05 | 2026-05-13 | T |
| PG-T-PR-SL-AR-PO-100 |  | Specialities Materials (Toilet accessories, lockers, logo, etc) | 7.25d | 2026-05-05 A | 2026-05-12 A | PG-T-PR-SL-AR-MA-100 | 100% | 2026-05-05 | 2026-05-13 | T |
| PG-T-PR-SL-AR-PO-110 |  | Waterproofing System Materials | 7.25d | 2026-05-05 A | 2026-05-12 A | PG-T-PR-SL-AR-MA-110 | 100% | 2026-05-05 | 2026-05-13 | T |
| PG-T-PR-SL-AR-PO-20 |  | Anti-slip Granite tiles | 7.25d | 2026-05-05 A | 2026-05-12 A | PG-T-PR-SL-AR-MA-20 | 100% | 2026-05-05 | 2026-05-13 | T |
| PG-T-PR-SL-AR-PO-30 |  | Epoxy Paint | 7.25d | 2026-05-05 A | 2026-05-12 A | PG-T-PR-SL-AR-MA-30 | 100% | 2026-05-05 | 2026-05-13 | T |
| PG-T-PR-SL-AR-PO-40 |  | Cement Plaster | 7.25d | 2026-05-05 A | 2026-05-12 A | PG-T-PR-SL-AR-MA-40 | 100% | 2026-05-05 | 2026-05-13 | T |
| PG-T-PR-SL-AR-PO-50 |  | Acrylic Paint | 7.25d | 2026-05-05 A | 2026-05-12 A | PG-T-PR-SL-AR-MA-50 | 100% | 2026-05-05 | 2026-05-13 | T |
| PG-T-PR-SL-AR-PO-60 |  | Stone Cladding | 7.25d | 2026-05-05 A | 2026-05-12 A | PG-T-PR-SL-AR-MA-60 | 100% | 2026-05-05 | 2026-05-13 | T |
| PG-T-PR-SL-AR-PO-70 |  | Phenolic Partition | 7.25d | 2026-05-05 A | 2026-05-12 A | PG-T-PR-SL-AR-MA-70 | 100% | 2026-05-05 | 2026-05-13 | T |
| PG-T-PR-SL-AR-PO-80 |  | Glass Partition | 7.25d | 2026-05-05 A | 2026-05-12 A | PG-T-PR-SL-AR-MA-80 | 100% | 2026-05-05 | 2026-05-13 | T |
| PG-T-PR-SL-AR-PO-90 |  | Gypsum Boards | 7.25d | 2026-05-05 A | 2026-05-12 A | PG-T-PR-SL-AR-MA-90 | 100% | 2026-05-05 | 2026-05-13 | T |

| ID | WBS | Activity | Duration | Start | Finish | Predecessors | Complete | Remaining | Planned start | Planned finish | Total float | Free float | Resources | Cost | Actual cost | H,Q,T-Location | BOQ DIVISION | DIVISION-02-SITE WORKS |
| --- | --- | --- | --- | --- | --- | --- | --- | --- | --- | --- | --- | --- | --- | --- | --- | --- | --- | --- |
|  | 5 | **METAL WORK** |  | 2026-05-05 | 2026-05-12 |  |  |  |  |  |  |  |  |  |  |  |  |  |
| PG-T-PR-SL-MT-PO-10 |  | Galvanized Steel Ladder | 7.25d | 2026-05-05 A | 2026-05-12 A | PG-T-PR-SL-MT-MA-10 | 100% |  | 2026-05-05 | 2026-05-13 |  |  |  |  |  | T |  |  |
| PG-T-PR-SL-MT-PO-20 |  | Galvanized Steel Roof Scupper | 7.25d | 2026-05-05 A | 2026-05-12 A | PG-T-PR-SL-MT-MA-20, PG-T-PR-SL-MT-PO-10 | 100% |  | 2026-05-05 | 2026-05-13 |  |  |  |  |  | T |  |  |
| PG-T-PR-SL-MT-PO-30 |  | Galvanized Steel Cover with frame | 7.25d | 2026-05-05 A | 2026-05-12 A | PG-T-PR-SL-MT-MA-30, PG-T-PR-SL-MT-PO-20 | 100% |  | 2026-05-05 | 2026-05-13 |  |  |  |  |  | T |  |  |
|  | 6 | **HVAC WORK** |  | 2026-05-05 | 2026-05-12 |  |  |  |  |  |  |  |  |  |  |  |  |  |
| PG-T-PR-SL-AC-PO-10 |  | Split Air Conditioning Unit | 7.25d | 2026-05-05 A | 2026-05-12 A | PG-T-PR-SL-AC-MA-10 | 100% |  | 2026-05-05 | 2026-05-13 |  |  |  |  |  | T |  |  |
| PG-T-PR-SL-AC-PO-20 |  | Air Duct | 7.25d | 2026-05-05 A | 2026-05-12 A | PG-T-PR-SL-AC-MA-20 | 100% |  | 2026-05-05 | 2026-05-13 |  |  |  |  |  | T |  |  |
| PG-T-PR-SL-AC-PO-30 |  | Diffusers and Grills | 7.25d | 2026-05-05 A | 2026-05-12 A | PG-T-PR-SL-AC-MA-30, PG-T-PR-SL-AC-PO-20 | 100% |  | 2026-05-05 | 2026-05-13 |  |  |  |  |  | T |  |  |
| PG-T-PR-SL-AC-PO-40 |  | Exhaust fans | 7.25d | 2026-05-05 A | 2026-05-12 A | PG-T-PR-SL-AC-MA-40, PG-T-PR-SL-AC-PO-10 | 100% |  | 2026-05-05 | 2026-05-13 |  |  |  |  |  | T |  |  |
|  | 7 | **PLUMBING WORK** |  | 2026-05-05 | 2026-05-12 |  |  |  |  |  |  |  |  |  |  |  |  |  |
| PG-T-PR-SL-PB-PO-10 |  | PPR Pipes & Valves | 7.25d | 2026-05-05 A | 2026-05-12 A | PG-T-PR-SL-PB-MA-10 | 100% |  | 2026-05-05 | 2026-05-13 |  |  |  |  |  | T |  |  |
| PG-T-PR-SL-PB-PO-20 |  | UPCV Pipes | 7.25d | 2026-05-05 A | 2026-05-12 A | PG-T-PR-SL-PB-MA-20 | 100% |  | 2026-05-05 | 2026-05-13 |  |  |  |  |  | T |  |  |
| PG-T-PR-SL-PB-PO-30 |  | Sanitary Drainage Fixtures | 7.25d | 2026-05-05 A | 2026-05-12 A | PG-T-PR-SL-PB-MA-30 | 100% |  | 2026-05-05 | 2026-05-13 |  |  |  |  |  | T |  |  |
|  | 8 | **IRRIGATION WORK** |  | 2026-05-05 | 2026-05-12 |  |  |  |  |  |  |  |  |  |  |  |  |  |
| PG-T-PR-SL-IR-PO-10 |  | Gate Valve including valve box | 7.25d | 2026-05-05 A | 2026-05-12 A | PG-T-PR-SL-IR-MA-10, PG-T-EN-ME-SD-AP-80, PG-T-EN-ME-SD-AP-90 | 100% |  | 2026-05-05 | 2026-05-13 |  |  |  |  |  | T |  |  |
| PG-T-PR-SL-IR-PO-20 |  | Bulbblers and Spreyers | 7.25d | 2026-05-05 A | 2026-05-12 A | PG-T-PR-SL-IR-MA-20, PG-T-EN-ME-SD-AP-90 | 100% |  | 2026-05-05 | 2026-05-13 |  |  |  |  |  | T |  |  |
|  | 9 | **ELECTRICAL WORK** |  | 2026-05-11 | 2026-08-27 |  |  |  |  |  |  |  |  |  |  |  |  |  |
| PG-T-PR-SL-EL-PO-10 |  | Wiring Devices Materials(Completed) | 35.25d | 2026-05-11 A | 2026-06-24 A | PG-T-PR-SL-EL-MA-10 | 100% |  | 2026-05-11 | 2026-06-25 |  |  |  |  |  | T |  |  |
| PG-T-PR-SL-EL-PO-10_R |  | Wiring Devices Materials(Remaining) | 7d | 2026-08-20 A | 2026-08-27 A | PG-T-PR-SL-EL-MA-10, PG-T-PR-SL-EL-PO-10 | 100% |  | 2026-08-29 | 2026-09-05 |  |  |  |  |  | T |  |  |
|  | 10 | **FIRE FIGHTING WORK** |  | 2026-05-11 | 2026-08-27 |  |  |  |  |  |  |  |  |  |  |  |  |  |
| PG-T-PR-SL-FF-PO-10 |  | Fire Extinguishers(Completed) | 35.25d | 2026-05-11 A | 2026-06-24 A | PG-T-PR-SL-FF-MA-10 | 100% |  | 2026-05-11 | 2026-06-25 |  |  |  |  |  | T |  |  |
| PG-T-PR-SL-FF-PO-10_R |  | Fire Extinguishers(Remaining) | 4d | 2026-08-20 A | 2026-08-27 A | PG-T-PR-SL-FF-MA-10, PG-T-PR-SL-FF-PO-10 | 100% |  | 2026-08-29 | 2026-09-01 |  |  |  |  |  | T |  |  |
|  | 3 | **DELIVERY TO SITE** |  | 2026-03-01 | 2026-10-08 |  |  |  |  |  |  |  |  |  |  |  |  |  |
|  | 1 | **EXTERNAL / LANDSCAPE WORK** |  | 2026-03-01 | 2026-10-03 |  |  |  |  |  |  |  |  |  |  |  |  |  |
| PG-T-PR-SL-LS-DL-10 |  | Backfilling Materials | 43d | 2026-03-01 A | 2026-04-24 A | PG-T-PR-SL-LS-PO-10 | 100% |  | 2026-03-01 | 2026-04-23 |  |  | COST [91125] | 91,125 | 91,125 | T | DIV-2 | Div-2.1 |
| PG-T-PR-SL-LS-DL-30 |  | Compacted Natural Ground Soil | 41d | 2026-03-03 A | 2026-04-24 A | PG-T-PR-SL-LS-PO-30 | 100% |  | 2026-03-03 | 2026-04-23 |  |  | COST [11583] | 11,583 | 11,583 | T | DIV-2 | Div-2.3 |
| PG-T-PR-SL-LS-DL-20 |  | Interlock tiles | 13d | 2026-04-29 A | 2026-05-13 A | PG-T-PR-SL-LS-PO-20, PG-T-PR-SL-LS-DL-10 | 100% |  |  |  |  |  | COST [96438.6] | 96,438.6 | 96,438.6 | T | DIV-2 | Div-2.2 |
| PG-T-PR-SL-LS-DL-40 |  | Curb Stone | 13d | 2026-04-29 A | 2026-05-13 A | PG-T-PR-SL-LS-PO-40, PG-T-PR-SL-LS-DL-10 | 100% |  |  |  |  |  | COST [93058.2] | 93,058.2 | 93,058.2 | T | DIV-2 | Div-2.3 |
| PG-T-PR-SL-LS-DL-50 |  | Thermoplastic pavement road marking | 1d | 2026-05-13 A | 2026-05-13 A | PG-T-PR-SL-LS-DL-40, PG-T-PR-SL-LS-PO-50 SS | 100% |  |  |  |  |  | COST [4730.67] | 4,730.67 | 4,730.67 | T | DIV-2 | Div-2.3 |
| PG-T-PR-SL-LS-DL-60 |  | Traffic Signages(Completed) | 33d | 2026-05-13 A | 2026-06-24 A | PG-T-PR-SL-LS-DL-50, PG-T-PR-SL-LS-PO-60 SS | 100% |  |  |  |  |  | COST [1071.14] | 1,071.14 | 1,071.14 | T | DIV-2 | Div-2.3 |
| PG-T-PR-SL-LS-DL-70 |  | Trees(Completed) | 33d | 2026-05-13 A | 2026-06-24 A | PG-T-PR-SL-LS-PO-70 SS, PG-T-PR-SL-LS-DL-60 SS | 100% |  |  |  |  |  | COST [12452.9] | 12,452.94 | 12,452.94 | T | DIV-2 | Div-2.3 |
| PG-T-PR-SL-LS-DL-80 |  | Lawn(Completed) | 33d | 2026-05-13 A | 2026-06-24 A | PG-T-PR-SL-LS-PO-80 SS, PG-T-PR-SL-LS-DL-70 SS | 100% |  |  |  |  |  | COST [16443] | 16,443 | 16,443 | T | DIV-2 | Div-2.3 |
| PG-T-PR-SL-LS-DL-60_R |  | Traffic Signages(Remaining) | 10d | 2026-08-27 A | 2026-10-03 | PG-T-PR-SL-LS-DL-50, PG-T-PR-SL-LS-PO-60_R, PG-T-PR-SL-LS-DL-60 | 90% | 1d | 2026-09-14 | 2026-09-26 | 29.2d | 0d | COST [714.1] | 714.1 | 642.69 | T | DIV-2 | Div-2.3 |
| PG-T-PR-SL-LS-DL-70_R |  | Trees(Remaining) | 10d | 2026-08-27 A | 2026-10-03 | PG-T-PR-SL-LS-PO-70_R, PG-T-PR-SL-LS-DL-60_R SS, PG-T-PR-SL-LS-DL-70 | 90% | 1d | 2026-09-14 | 2026-09-26 | 29.2d | 0d | COST [8301.96] | 8,301.96 | 7,471.76 | T | DIV-2 | Div-2.3 |
| PG-T-PR-SL-LS-DL-80_R |  | Lawn(Remaining) | 10d | 2026-08-27 A | 2026-10-03 | PG-T-PR-SL-LS-PO-80_R, PG-T-PR-SL-LS-DL-70_R SS, PG-T-PR-SL-LS-DL-80 | 90% | 1d | 2026-09-14 | 2026-09-26 | 48.5d | 51.2d | COST [10962] | 10,962 | 9,865.8 | T | DIV-2 | Div-2.3 |

| ID | WBS | Activity | Duration | Start | Finish | Predecessors | Complete | Remaining | Planned start | Planned finish | Total float | Free float | Resources | Cost | Actual cost | H,Q,T-Location | BOQ DIVISION | DIVISION-3 CONCRETE | DIVISION 07-THERMAL & MOISTURE PROTECTIO | DIVISION-4 MASONRY | DIVISION 15-MECHANICAL WORKS | DIVISION 9-FINISHES | DIVISION 10-SPECIALTIES | DIVISION-5-METALS |
| --- | --- | --- | --- | --- | --- | --- | --- | --- | --- | --- | --- | --- | --- | --- | --- | --- | --- | --- | --- | --- | --- | --- | --- | --- |
|  | 3 | **CONCRETE WORK** |  | 2026-03-10 | 2026-05-13 |  |  |  |  |  |  |  |  |  |  |  |  |  |  |  |  |  |  |  |
| PG-T-PR-SL-CO-DL-20 |  | Concrete | 35d | 2026-03-10 A | 2026-04-24 A | PG-T-PR-SL-CO-PO-20, PG-T-PR-SL-CO-DL-10, PG-T-PR-SL-CO-DL-10 SS | 100% |  | 2026-03-10 | 2026-04-23 |  |  | COST [4669.65] | 4,669.65 | 4,669.65 | T | DIV-3 | Div-3 |  |  |  |  |  |  |
| PG-T-PR-SL-CO-DL-10 |  | Steel Rebar | 18d | 2026-04-23 A | 2026-05-13 A | PG-T-PR-SL-CO-PO-10 | 100% |  |  |  |  |  | COST [4291.38] | 4,291.38 | 4,291.38 | T | DIV-3 | Div-3 |  |  |  |  |  |  |
| PG-T-PR-SL-CO-DL-30 |  | Screed | 18d | 2026-04-23 A | 2026-05-13 A | PG-T-PR-SL-CO-PO-30, PG-T-PR-SL-CO-DL-20 | 100% |  |  |  |  |  | COST [1058.4] | 1,058.4 | 1,058.4 | T | DIV-7 |  | Div-07 |  |  |  |  |  |
| PG-T-PR-SL-CO-DL-40 |  | CMU Block | 18d | 2026-04-23 A | 2026-05-13 A | PG-T-PR-SL-CO-PO-40, PG-T-PR-SL-CO-DL-30, PG-T-PR-SL-CO-DL-30 SS | 100% |  |  |  |  |  | COST [1117.8] | 1,117.8 | 1,117.8 | T | DIV-4 |  |  | Div-4 |  |  |  |  |
| PG-T-PR-SL-CO-DL-50 |  | Concrete Repair & Protection Materials | 18d | 2026-04-23 A | 2026-05-13 A | PG-T-PR-SL-CO-PO-50, PG-T-PR-SL-CO-DL-40, PG-T-PR-SL-CO-DL-40 SS | 100% |  |  |  |  |  | COST [3348] | 3,348 | 3,348 | T | DIV-15 |  |  |  | Div15.2 |  |  |  |
|  | 4 | **ARCHITECTURAL & FINISHES WORK** |  | 2026-05-06 | 2026-05-13 |  |  |  |  |  |  |  |  |  |  |  |  |  |  |  |  |  |  |  |
| PG-T-PR-SL-AR-DL-10 |  | Ceramic tiles | 7d | 2026-05-06 A | 2026-05-13 A | PG-T-PR-SL-AR-PO-10 | 100% |  |  |  |  |  | COST [5147.55] | 5,147.55 | 5,147.55 | T | DIV-9 |  |  |  |  | Div-9.1 |  |  |
| PG-T-PR-SL-AR-DL-100 |  | Specialities Materials (Toilet accessories, lockers, logo, etc) | 7d | 2026-05-06 A | 2026-05-13 A | PG-T-PR-SL-AR-PO-100 | 100% |  |  |  |  |  | COST [20365.8] | 20,365.83 | 20,365.83 | T | DIV-10 |  |  |  |  |  | Div-10 |  |
| PG-T-PR-SL-AR-DL-110 |  | Waterproofing System Materials | 7d | 2026-05-06 A | 2026-05-13 A | PG-T-PR-SL-AR-PO-110 | 100% |  |  |  |  |  | COST [4897.8] | 4,897.8 | 4,897.8 | T | DIV-7 |  | Div-07 |  |  |  |  |  |
| PG-T-PR-SL-AR-DL-20 |  | Anti-slip Granite tiles | 7d | 2026-05-06 A | 2026-05-13 A | PG-T-PR-SL-AR-PO-20, PG-T-PR-SL-AR-DL-10 | 100% |  |  |  |  |  | COST [4819.5] | 4,819.5 | 4,819.5 | T | DIV-9 |  |  |  |  | Div-9.1 |  |  |
| PG-T-PR-SL-AR-DL-30 |  | Epoxy Paint | 7d | 2026-05-06 A | 2026-05-13 A | PG-T-PR-SL-AR-PO-30, PG-T-PR-SL-AR-DL-20 | 100% |  |  |  |  |  | COST [1000.62] | 1,000.62 | 1,000.62 | T | DIV-7 |  | Div-07 |  |  |  |  |  |
| PG-T-PR-SL-AR-DL-40 |  | Cement Plaster | 7d | 2026-05-06 A | 2026-05-13 A | PG-T-PR-SL-AR-PO-40 | 100% |  |  |  |  |  | COST [1992.33] | 1,992.33 | 1,992.33 | T | DIV-9 |  |  |  |  | Div-9.2 |  |  |
| PG-T-PR-SL-AR-DL-50 |  | Acrylic Paint | 7d | 2026-05-06 A | 2026-05-13 A | PG-T-PR-SL-AR-PO-50, PG-T-PR-SL-AR-DL-40 | 100% |  |  |  |  |  | COST [1331.1] | 1,331.1 | 1,331.1 | T | DIV-9 |  |  |  |  | Div-9.2 |  |  |
| PG-T-PR-SL-AR-DL-60 |  | Stone Cladding | 7d | 2026-05-06 A | 2026-05-13 A | PG-T-PR-SL-AR-PO-60, PG-T-PR-SL-AR-DL-50 | 100% |  |  |  |  |  | COST [16669.8] | 16,669.8 | 16,669.8 | T | DIV-9 |  |  |  |  | Div-9.2 |  |  |
| PG-T-PR-SL-AR-DL-70 |  | Phenolic Partition | 7d | 2026-05-06 A | 2026-05-13 A | PG-T-PR-SL-AR-PO-70 | 100% |  |  |  |  |  | COST [12063.6] | 12,063.6 | 12,063.6 | T | DIV-9 |  |  |  |  | Div-9.2 |  |  |
| PG-T-PR-SL-AR-DL-80 |  | Glass Partition | 7d | 2026-05-06 A | 2026-05-13 A | PG-T-PR-SL-AR-PO-80 | 100% |  |  |  |  |  | COST [1398.6] | 1,398.6 | 1,398.6 | T | DIV-9 |  |  |  |  | Div-9.2 |  |  |
| PG-T-PR-SL-AR-DL-90 |  | Gypsum Boards | 7d | 2026-05-06 A | 2026-05-13 A | PG-T-PR-SL-AR-PO-90 | 100% |  |  |  |  |  | COST [1697.22] | 1,697.22 | 1,697.22 | T | DIV-9 |  |  |  |  | Div-9.3 |  |  |
|  | 5 | **METAL WORK** |  | 2026-05-06 | 2026-10-08 |  |  |  |  |  |  |  |  |  |  |  |  |  |  |  |  |  |  |  |
| PG-T-PR-SL-MT-DL-10 |  | Galvanized Steel Ladder(Completed) | 39d | 2026-05-06 A | 2026-06-24 A | PG-T-PR-SL-MT-PO-10 | 100% |  |  |  |  |  | COST [1954.04] | 1,954.04 | 1,954.04 | T | DIV-5 |  |  |  |  |  |  | Div-5 |
| PG-T-PR-SL-MT-DL-20 |  | Galvanized Steel Roof Scupper(Completed) | 39d | 2026-05-06 A | 2026-06-24 A | PG-T-PR-SL-MT-PO-20, PG-T-PR-SL-MT-DL-10 SS | 100% |  |  |  |  |  | COST [169.13] | 169.13 | 169.13 | T | DIV-5 |  |  |  |  |  |  | Div-5 |
| PG-T-PR-SL-MT-DL-30 |  | Galvanized Steel Cover with frame(Completed) | 39d | 2026-05-06 A | 2026-06-24 A | PG-T-PR-SL-MT-PO-30, PG-T-PR-SL-MT-DL-20 SS | 100% |  |  |  |  |  | COST [462.83] | 462.83 | 462.83 | T | DIV-5 |  |  |  |  |  |  | Div-5 |
| PG-T-PR-SL-MT-DL-10_R |  | Galvanized Steel Ladder(Remaining) | 12d | 2026-09-23 A | 2026-10-08 | PG-T-PR-SL-MT-PO-10, PG-T-PR-SL-MT-DL-10 | 50% | 6d | 2026-10-03 | 2026-10-15 | 32.05d | 0d | COST [1302.7] | 1,302.7 | 651.35 | T | DIV-5 |  |  |  |  |  |  | Div-5 |
| PG-T-PR-SL-MT-DL-20_R |  | Galvanized Steel Roof Scupper(Remaining) | 12d | 2026-09-24 A | 2026-10-08 | PG-T-PR-SL-MT-PO-20, PG-T-PR-SL-MT-DL-10_R SS, PG-T-PR-SL-MT-DL-20 | 50% | 6d | 2026-10-03 | 2026-10-15 | 32.05d | 0d | COST [112.75] | 112.75 | 56.38 | T | DIV-5 |  |  |  |  |  |  | Div-5 |
| PG-T-PR-SL-MT-DL-30_R |  | Galvanized Steel Cover with frame(Remaining) | 12d | 2026-09-24 A | 2026-10-08 | PG-T-PR-SL-MT-PO-30, PG-T-PR-SL-MT-DL-20_R SS, PG-T-PR-SL-MT-DL-30 | 50% | 6d | 2026-10-03 | 2026-10-15 | 32.05d | 0.1d | COST [308.56] | 308.56 | 154.28 | T | DIV-5 |  |  |  |  |  |  | Div-5 |

| ID | WBS | Activity | Duration | Start | Finish | Predecessors | Complete | Remaining | Planned start | Planned finish | Total float | Free float | Resources | Cost | Actual cost | H,Q,T-Location | BOQ DIVISION | DIVISION 15-MECHANICAL WORKS | DIVISION 16 ELECTRICAL WORKS | DIVISION-02-SITE WORKS |
| --- | --- | --- | --- | --- | --- | --- | --- | --- | --- | --- | --- | --- | --- | --- | --- | --- | --- | --- | --- | --- |
|  | 6 | **HVAC WORK** |  | 2026-05-06 | 2026-05-13 |  |  |  |  |  |  |  |  |  |  |  |  |  |  |  |
| PG-T-PR-SL-AC-DL-10 |  | Split Air Conditioning Unit | 7d | 2026-05-06 A | 2026-05-13 A | PG-T-PR-SL-AC-PO-10 | 100% |  |  |  |  |  | COST [2789.37] | 2,789.37 | 2,789.37 | T | DIV-15 | Div15.4 |  |  |
| PG-T-PR-SL-AC-DL-20 |  | Air Duct | 7d | 2026-05-06 A | 2026-05-13 A | PG-T-PR-SL-AC-PO-20 | 100% |  |  |  |  |  | COST [1404] | 1,404 | 1,404 | T | DIV-15 | Div15.4 |  |  |
| PG-T-PR-SL-AC-DL-30 |  | Diffusers and Grills | 7d | 2026-05-06 A | 2026-05-13 A | PG-T-PR-SL-AC-PO-30, PG-T-PR-SL-AC-DL-20 | 100% |  |  |  |  |  | COST [668.79] | 668.79 | 668.79 | T | DIV-15 | Div15.4 |  |  |
| PG-T-PR-SL-AC-DL-40 |  | Exhaust fans | 7d | 2026-05-06 A | 2026-05-13 A | PG-T-PR-SL-AC-PO-40, PG-T-PR-SL-AC-DL-20 | 100% |  |  |  |  |  | COST [595.08] | 595.08 | 595.08 | T | DIV-15 | Div15.4 |  |  |
|  | 7 | **PLUMBING WORK** |  | 2026-05-06 | 2026-05-13 |  |  |  |  |  |  |  |  |  |  |  |  |  |  |  |
| PG-T-PR-SL-PB-DL-10 |  | PPR Pipes & Valves | 7d | 2026-05-06 A | 2026-05-13 A | PG-T-PR-SL-PB-PO-10 | 100% |  |  |  |  |  | COST [2386.8] | 2,386.8 | 2,386.8 | T | DIV-15 | Div15.2 |  |  |
| PG-T-PR-SL-PB-DL-20 |  | UPCV Pipes | 7d | 2026-05-06 A | 2026-05-13 A | PG-T-PR-SL-PB-PO-20 | 100% |  |  |  |  |  | COST [3016.71] | 3,016.71 | 3,016.71 | T | DIV-15 | Div15.3 |  |  |
| PG-T-PR-SL-PB-DL-30 |  | Sanitary Drainage Fixtures | 7d | 2026-05-06 A | 2026-05-13 A | PG-T-PR-SL-PB-PO-30, PG-T-PR-SL-PB-DL-20 | 100% |  |  |  |  |  | COST [22919.8] | 22,919.76 | 22,919.76 | T | DIV-15 | Div15.3 |  |  |
|  | 8 | **IRRIGATION WORK** |  | 2026-05-06 | 2026-10-03 |  |  |  |  |  |  |  |  |  |  |  |  |  |  |  |
| PG-T-PR-SL-IR-DL-10 |  | Gate Valve including valve box(Completed) | 39d | 2026-05-06 A | 2026-06-24 A | PG-T-PR-SL-IR-PO-10 | 100% |  |  |  |  |  | COST [1859.76] | 1,859.76 | 1,859.76 | T | DIV-15 | Div15.5 |  |  |
| PG-T-PR-SL-IR-DL-20 |  | Bulbblers and Spreyers(Completed) | 39d | 2026-05-06 A | 2026-06-24 A | PG-T-PR-SL-IR-PO-20 | 100% |  |  |  |  |  | COST [13117.3] | 13,117.27 | 13,117.27 | T | DIV-15 | Div15.5 |  |  |
| PG-T-PR-SL-IR-DL-10_R |  | Gate Valve including valve box(Remaining) | 8.5d | 2026-08-07 A | 2026-10-03 | PG-T-PR-SL-IR-PO-10, PG-T-PR-SL-IR-DL-10 | 90% | 0.85d | 2026-08-16 | 2026-08-25 | -24.5d | 8.15d | COST [1859.76] | 1,859.76 | 1,673.78 | T | DIV-15 | Div15.5 |  |  |
| PG-T-PR-SL-IR-DL-20_R |  | Bulbblers and Spreyers(Remaining) | 8.5d | 2026-08-20 A | 2026-10-03 | PG-T-PR-SL-IR-PO-20, PG-T-PR-SL-IR-DL-20 | 90% | 0.85d | 2026-08-22 | 2026-08-31 | -23.6d | 9.05d | COST [13117.3] | 13,117.27 | 11,805.55 | T | DIV-15 | Div15.5 |  |  |
|  | 9 | **ELECTRICAL WORK** |  | 2026-05-13 | 2026-10-06 |  |  |  |  |  |  |  |  |  |  |  |  |  |  |  |
| PG-T-PR-SL-EL-DL-10 |  | Wiring Devices Materials(Completed) | 33d | 2026-05-13 A | 2026-06-24 A | PG-T-PR-SL-EL-PO-10 SS | 100% |  |  |  |  |  | COST [1467.07] | 1,467.07 | 1,467.07 | T | DIV-16 |  | Div16.9 |  |
| PG-T-PR-SL-EL-DL-10_R |  | Wiring Devices Materials(Remaining) | 12d | 2026-09-19 A | 2026-10-06 | PG-T-PR-SL-EL-PO-10_R, PG-T-PR-SL-EL-DL-10 | 70% | 3.6d | 2026-09-19 | 2026-10-03 | -1d | 0d | COST [2200.61] | 2,200.61 | 1,540.43 | T | DIV-16 |  | Div16.9 |  |
|  | 10 | **FIRE FIGHTING WORK** |  | 2026-05-13 | 2026-10-07 |  |  |  |  |  |  |  |  |  |  |  |  |  |  |  |
| PG-T-PR-SL-FF-DL-10 |  | Fire Extinguishers(Completed) | 33d | 2026-05-13 A | 2026-06-24 A | PG-T-PR-SL-FF-PO-10 SS | 100% |  |  |  |  |  | COST [81.76] | 81.76 | 81.76 | T | DIV-15 | Div15.1 |  |  |
| PG-T-PR-SL-FF-DL-10_R |  | Fire Extinguishers(Remaining) | 9d | 2026-09-27 A | 2026-10-07 | PG-T-PR-SL-FF-PO-10_R, PG-T-PR-SL-FF-DL-10 | 50% | 4.5d | 2026-10-03 | 2026-10-12 | -22.5d | 3.55d | COST [122.63] | 122.63 | 61.32 | T | DIV-15 | Div15.1 |  |  |
|  | CO | **CONSTRUCTION STAGE** |  | 2026-03-24 | 2027-01-24 |  |  |  |  |  |  |  |  |  |  |  |  |  |  |  |
|  | EX.SIT | **PLAYGROUND AND LANDSCAPING WORKS** |  | 2026-03-24 | 2027-01-24 |  |  |  |  |  |  |  |  |  |  |  |  |  |  |  |
|  | CF | **CUT AND FILL** |  | 2026-03-24 | 2026-05-06 |  |  |  |  |  |  |  |  |  |  |  |  |  |  |  |
| PG-T-CON-EX-CF-10 |  | Existing Soil Excavation Works | 22d | 2026-03-24 A | 2026-04-18 A | PG-T-EN-ST-SD-AP-10, PG-T-EN-ST-SD-AP-30, PG-T-MOB-SO-20, PG-T-GEN-10, PG-GN-MS-10 | 100% |  |  |  |  |  | COST [64800]; Dump Truck [64 h]; Excavator [40 h]; Site Engineer [4 h]; Labor / Helper [48 h]; Surveyor [8 h]; Excavator Operator [40 h]; Dump Truck Driver [64 h]; Safety Officer [8 h] | 64,800 | 64,800 | T | DIV-2 |  |  | Div-2.1 |
| PG-T-CON-EX-CF-20 |  | Soil Replacement Works | 18d | 2026-04-07 A | 2026-04-27 A | PG-T-CON-EX-CF-10, PG-T-PR-SL-LS-DL-30 | 100% |  |  |  |  |  | COST [25740]; Roller [16 h]; Loader [8 h]; Water tanker [8 h]; Motor Grader [8 h]; Site Engineer [4 h]; Labor / Helper [48 h]; Water tanker driver [8 h]; Surveyor [8 h]; Loader Operator [8 h]; Roller Operator [16 h]; Motor Grader Operator [8 h] | 25,740 | 25,740 | T | DIV-2 |  |  | Div-2.3 |
| PG-T-CON-EX-CF-30 |  | Levelling & Backfilling Works | 17d | 2026-04-18 A | 2026-05-06 A | PG-T-CON-EX-CF-20, PG-T-PR-SL-LS-DL-10, PG-T-MOB-CAM-40 | 100% |  |  |  |  |  | COST [137700]; Roller [16 h]; Loader [8 h]; Water tanker [8 h]; Motor Grader [8 h]; Site Engineer [8 h]; Labor / Helper [48 h]; Water tanker driver [8 h]; Surveyor [8 h]; Loader Operator [8 h]; Roller Operator [16 h]; Motor Grader Operator [8 h] | 137,700 | 137,700 | T | DIV-2 |  |  | Div-2.1 |

| ID | WBS | Activity | Duration | Start | Finish | Predecessors | Complete | Remaining | Planned start | Planned finish | Total float | Free float | Resources | Cost | Actual cost | H,Q,T-Location | BOQ DIVISION | DIVISION-02-SITE WORKS |
| --- | --- | --- | --- | --- | --- | --- | --- | --- | --- | --- | --- | --- | --- | --- | --- | --- | --- | --- |
|  | 1 | **PLAYGROUND WORKS** |  | 2026-04-23 | 2026-11-23 |  |  |  |  |  |  |  |  |  |  |  |  |  |
|  | FP | **FOOTBALL PLAYGROUND WORKS** |  | 2026-04-23 | 2026-10-27 |  |  |  |  |  |  |  |  |  |  |  |  |  |
| PG-T-CON-EX-FB-10 |  | Subgrade Preparation and Compaction | 12d | 2026-04-23 A | 2026-05-06 A | PG-T-EN-LS-SD-AP-90, PG-T-CON-EX-CF-10, PG-T-CON-EX-CF-20, PG-T-CON-EX-CF-30, PG-T-EN-ST-SD-AP-10, PG-T-EN-ST-SD-AP-30 | 100% |  |  |  |  |  | COST [23667]; Roller [16 h]; Loader [8 h]; Motor Grader [8 h]; Site Engineer [8 h]; Labor / Helper [48 h]; Surveyor [8 h]; Loader Operator [8 h]; Roller Operator [16 h]; Motor Grader Operator [8 h] | 23,667 | 23,667 | T | DIV-2 | Div-2.3 |
| PG-T-CON-EX-FB-20 |  | Sub-Base Laying and Compaction | 8d | 2026-04-28 A | 2026-05-06 A | PG-T-CON-EX-FB-10 | 100% |  |  |  |  |  | COST [23667]; Roller [16 h]; Loader [8 h]; Motor Grader [8 h]; Site Engineer [8 h]; Labor / Helper [48 h]; Surveyor [8 h]; Loader Operator [8 h]; Roller Operator [16 h]; Motor Grader Operator [8 h] | 23,667 | 23,667 | T | DIV-2 | Div-2.3 |
| PG-T-CON-EX-FB-30 |  | Base Course Laying and Compaction | 33d | 2026-05-06 A | 2026-06-17 A | PG-T-CON-EX-FB-20 | 100% |  |  |  |  |  | COST [23667]; Roller [16 h]; Loader [8 h]; Motor Grader [8 h]; Site Engineer [8 h]; Labor / Helper [48 h]; Surveyor [8 h]; Loader Operator [8 h]; Roller Operator [16 h]; Motor Grader Operator [8 h] | 23,667 | 23,667 | T | DIV-2 | Div-2.3 |
| PG-T-CON-EX-FB-70 |  | Topsoil Placement(Completed) | 33d | 2026-05-13 A | 2026-06-24 A | PG-T-CON-EX-FB-20 | 100% |  |  |  |  |  | COST [9466.8]; Roller [6.4 h]; Loader [3.2 h]; Water tanker [3.2 h]; Motor Grader [3.2 h]; Site Engineer [1.6 h]; Labor / Helper [12.8 h]; Water tanker driver [3.2 h]; Surveyor [3.2 h]; Loader Operator [3.2 h]; Roller Operator [6.4 h]; Motor Grader Operator [3.2 h] | 9,466.8 | 9,466.8 | T | DIV-2 | Div-2.3 |
| PG-T-CON-EX-FB-80 |  | Fine Grading & Leveling | 15d | 2026-07-07 A | 2026-07-12 A | PG-T-CON-EX-FB-30 | 100% |  | 2026-07-14 | 2026-07-30 |  |  | COST [23667]; Roller [16 h]; Loader [8 h]; Motor Grader [8 h]; Site Engineer [4 h]; Labor / Helper [32 h]; Surveyor [8 h]; Loader Operator [8 h]; Roller Operator [16 h]; Motor Grader Operator [8 h] | 23,667 | 23,667 | T | DIV-2 | Div-2.3 |
| PG-T-CON-EX-FB-70_R |  | Topsoil Placement(Remaining) | 15d | 2026-07-09 A | 2026-07-12 A | PG-T-CON-EX-FB-70, PG-T-CON-EX-FB-80 | 100% |  | 2026-07-14 | 2026-07-30 |  |  | COST [14200.2]; Roller [9.6 h]; Loader [4.8 h]; Water tanker [4.8 h]; Motor Grader [4.8 h]; Site Engineer [2.4 h]; Labor / Helper [19.2 h]; Water tanker driver [4.8 h]; Surveyor [4.8 h]; Loader Operator [4.8 h]; Roller Operator [9.6 h]; Motor Grader Operator [4.8 h] | 14,200.2 | 14,200.2 | T | DIV-2 | Div-2.3 |
| PG-T-CON-EX-FB-50 |  | Goal Post Foundation | 17d | 2026-07-23 A | 2026-08-14 A | PG-T-CON-EX-FB-70_R | 100% |  | 2026-07-26 | 2026-08-13 |  |  | COST [35500.5]; Roller [8 h]; Excavator [8 h]; Site Engineer [4 h]; Labor / Helper [48 h]; Excavator Operator [8 h]; Carpenter [16 h]; Steel Fixer [16 h]; Roller Operator [8 h] | 35,500.5 | 35,500.5 | T | DIV-2 | Div-2.3 |
| PG-T-CON-EX-FB-40 |  | Tartan flooring | 15d | 2026-08-14 A | 2026-08-14 A | PG-T-CON-EX-FB-30, PG-T-EN-LS-SD-AP-40, PG-T-PR-LL-SP-DL-40_R SS, PG-T-PR-LL-SP-DL-10_R SS, PG-T-CON-EX-FB-90 FF, PG-T-CON-EX-FB-90 SS | 100% |  | 2026-09-22 | 2026-10-10 |  |  | COST [70200]; Paving Machine [16 h]; Applicator [48 h]; Paving Machine Operator [16 h] | 70,200 | 70,200 | T | DIV-2 | Div-2.3 |
| PG-T-CON-EX-FB-90 |  | Turfing / Seeding Works | 12d | 2026-08-14 A | 2026-10-06 | PG-T-CON-EX-FB-120, PG-T-CON-EX-FB-120 FF | 90% | 1.2d | 2026-09-06 | 2026-09-20 | 43.85d | 0d | COST [23667]; Labor / Helper [16 h]; Turf Installer [32 h] | 23,667 | 21,300.3 | T | DIV-2 | Div-2.3 |
| PG-T-CON-EX-FB-120 |  | Installation of Lighting System | 13d | 2026-08-20 A | 2026-10-05 | PG-T-CON-EX-FB-50 | 80% | 2.6d | 2026-08-23 | 2026-09-06 | 43.85d | 0d | COST [24360]; Electrician [32 h] | 24,360 | 19,488 | T | DIV-2 | Div-2.3 |
| PG-T-CON-EX-FB-60 |  | Goal Post Installation & Alignment | 15d | 2026-08-20 A | 2026-10-11 | PG-T-CON-EX-FB-40 | 75% | 3.75d | 2026-08-31 | 2026-09-16 | 43.85d | 0d | COST [35500.5]; Crane [8 h]; Labor / Helper [32 h]; Crane Operator [8 h]; Mechanical Technician [16 h] | 35,500.5 | 26,625.38 | T | DIV-2 | Div-2.3 |
| PG-T-CON-EX-FB-110 |  | Install Playground Benches | 12d | 2026-08-27 A | 2026-10-15 | PG-T-PR-LL-LS-DL-20_R, PG-T-CON-EX-FB-60, PG-T-PR-LL-LS-DL-20_R SS, PG-T-CON-EX-FB-60 SS | 70% | 3.6d | 2026-09-12 | 2026-09-26 | 43.85d | 0d | COST [2060.16]; Mason [16 h]; Labor / Helper [16 h] | 2,060.16 | 1,442.11 | T | DIV-2 | Div-2.3 |
| PG-T-CON-EX-FB-100 |  | Markings and Signages | 10d | 2026-10-15 | 2026-10-27 | PG-T-CON-EX-FB-110 |  |  |  |  | 43.85d | 37.55d | COST [23667]; Spray Machine [48 h]; Site Engineer [4 h]; Labor / Helper [32 h]; Painter [48 h] | 23,667 |  | T | DIV-2 | Div-2.3 |
|  | BP | **BASKETBALL PLAYGROUND WORKS** |  | 2026-05-06 | 2026-11-02 |  |  |  |  |  |  |  |  |  |  |  |  |  |
| PG-T-CON-EX-BB-10 |  | Subgrade Preparation and Compaction | 1d | 2026-05-06 A | 2026-05-06 A | PG-T-CON-EX-FB-10, PG-T-EN-LS-SD-AP-110, PG-T-EN-LS-SD-AP-120, PG-T-CON-EX-FB-30 SS | 100% |  |  |  |  |  | COST [15472.1]; Roller [16 h]; Loader [8 h]; Motor Grader [8 h]; Site Engineer [8 h]; Labor / Helper [48 h]; Surveyor [8 h]; Loader Operator [8 h]; Roller Operator [16 h]; Motor Grader Operator [8 h] | 15,472.08 | 15,472.08 | T | DIV-2 | Div-2.3 |
| PG-T-CON-EX-BB-20 |  | Sub-Base Laying and Compaction | 1d | 2026-05-06 A | 2026-05-06 A | PG-T-CON-EX-BB-10, PG-T-CON-EX-FB-20 | 100% |  |  |  |  |  | COST [15472.1]; Roller [16 h]; Loader [8 h]; Motor Grader [8 h]; Site Engineer [8 h]; Labor / Helper [48 h]; Surveyor [8 h]; Loader Operator [8 h]; Roller Operator [16 h]; Motor Grader Operator [8 h] | 15,472.08 | 15,472.08 | T | DIV-2 | Div-2.3 |
| PG-T-CON-EX-BB-30 |  | Base Course Laying and Compaction | 33d | 2026-05-06 A | 2026-06-17 A | PG-T-CON-EX-BB-20 | 100% |  |  |  |  |  | COST [15472.1]; Roller [16 h]; Loader [8 h]; Motor Grader [8 h]; Site Engineer [8 h]; Labor / Helper [48 h]; Surveyor [8 h]; Loader Operator [8 h]; Roller Operator [16 h]; Motor Grader Operator [8 h] | 15,472.08 | 15,472.08 | T | DIV-2 | Div-2.3 |
| PG-T-CON-EX-BB-70 |  | Floor Surface Curing(Completed) | 7d | 2026-06-17 A | 2026-06-24 A | PG-T-CON-EX-BB-30 | 100% |  |  |  |  |  | COST [7736.04]; Water tanker [4 h]; Labor / Helper [8 h]; Water tanker driver [4 h] | 7,736.04 | 7,736.04 | T | DIV-2 | Div-2.3 |
| PG-T-CON-EX-BB-70_R |  | Floor Surface Curing(Remaining) | 15d | 2026-07-09 A | 2026-07-12 A | PG-T-CON-EX-BB-70, PG-T-CON-EX-BB-30 | 100% |  | 2026-08-10 | 2026-08-26 |  |  | COST [7736.04]; Water tanker [4 h]; Labor / Helper [8 h]; Water tanker driver [4 h] | 7,736.04 | 7,736.04 | T | DIV-2 | Div-2.3 |
| PG-T-CON-EX-BB-40 |  | Tartan flooring | 17d | 2026-07-12 A | 2026-08-14 A | PG-T-CON-EX-BB-30, PG-T-EN-LS-SD-AP-40, PG-T-CON-EX-BB-70_R, PG-T-PR-LL-SP-DL-40_R FF, PG-T-PR-LL-SP-DL-40_R SS | 100% |  | 2026-08-26 | 2026-09-14 |  |  | COST [52650]; Paving Machine [8 h]; Applicator [32 h]; Paving Machine Operator [8 h] | 52,650 | 52,650 | T | DIV-2 | Div-2.3 |
| PG-T-CON-EX-BB-50 |  | Basketball Pole Foundation | 25d | 2026-08-06 A | 2026-08-14 A | PG-T-CON-EX-BB-30 | 100% |  | 2026-08-09 | 2026-09-06 |  |  | COST [15472.1]; Roller [8 h]; Excavator [8 h]; Site Engineer [4 h]; Labor / Helper [48 h]; Excavator Operator [8 h]; Carpenter [16 h]; Steel Fixer [16 h]; Roller Operator [8 h] | 15,472.08 | 15,472.08 | T | DIV-2 | Div-2.3 |
| PG-T-CON-EX-BB-60 |  | Basketball Pole Installation & Alignment | 18d | 2026-08-20 A | 2026-10-11 | PG-T-PR-LL-SP-DL-20_R, PG-T-CON-EX-BB-80, PG-T-PR-LL-SP-DL-20_R SS, PG-T-CON-EX-BB-80 SS | 80% | 3.6d | 2026-09-05 | 2026-09-27 | 38.4d | 0d | COST [15472.1]; Crane [8 h]; Labor / Helper [32 h]; Crane Operator [8 h]; Mechanical Technician [16 h] | 15,472.08 | 12,377.66 | T | DIV-2 | Div-2.3 |
| PG-T-CON-EX-BB-80 |  | Court Line Marking | 16d | 2026-08-20 A | 2026-10-06 | PG-T-CON-EX-BB-40, PG-T-CON-EX-BB-50 | 85% | 2.4d | 2026-08-31 | 2026-09-19 | 38.4d | 0d | COST [13091.8]; Spray Machine [16 h]; Site Engineer [4 h]; Labor / Helper [8 h]; Painter [16 h] | 13,091.76 | 11,128 | T | DIV-2 | Div-2.3 |
| PG-T-CON-EX-BB-100 |  | Install Playground Benches | 16d | 2026-08-27 A | 2026-11-02 | PG-T-PR-LL-LS-DL-20_R, PG-T-CON-EX-BB-90, PG-T-PR-LL-LS-DL-20_R SS, PG-T-CON-EX-BB-90 FF | 85% | 2.4d | 2026-10-05 | 2026-10-24 | 38.4d | 32.1d | COST [1545.12]; Mason [16 h]; Labor / Helper [16 h] | 1,545.12 | 1,313.35 | T | DIV-2 | Div-2.3 |
| PG-T-CON-EX-BB-90 |  | Backboard & Hoop Installation | 17d | 2026-10-11 | 2026-10-31 | PG-T-CON-EX-BB-60 |  |  |  |  | 38.4d | 0d | COST [13091.8]; Crane [8 h]; Labor / Helper [16 h]; Crane Operator [8 h]; Mechanical Technician [16 h] | 13,091.76 |  | T | DIV-2 | Div-2.3 |

| ID | WBS | Activity | Duration | Start | Finish | Predecessors | Complete | Remaining | Planned start | Planned finish | Total float | Free float | Resources | Cost | Actual cost | H,Q,T-Location | BOQ DIVISION | DIVISION-02-SITE WORKS | DIVISION 15-MECHANICAL WORKS |
| --- | --- | --- | --- | --- | --- | --- | --- | --- | --- | --- | --- | --- | --- | --- | --- | --- | --- | --- | --- |
|  | PP | **PADEL PLAYGROUND WORKS** |  | 2026-05-06 | 2026-11-23 |  |  |  |  |  |  |  |  |  |  |  |  |  |  |
| PG-T-CON-EX-PD-10 |  | Excavation For Fence Footing(Completed) | 39d | 2026-05-06 A | 2026-06-24 A | PG-T-CON-EX-CF-30, PG-T-EN-ST-SD-AP-30, PG-T-EN-LS-SD-AP-120, PG-T-CON-EX-BB-20 | 100% |  |  |  |  |  | COST [16243.2]; Dump Truck [14.4 h]; Excavator [7.2 h]; Site Engineer [3.6 h]; Labor / Helper [14.4 h]; Surveyor [7.2 h]; Excavator Operator [7.2 h]; Dump Truck Driver [14.4 h]; Safety Officer [7.2 h] | 16,243.2 | 16,243.2 | T | DIV-2 | Div-2.3 |  |
| PG-T-CON-EX-PD-20 |  | RC Foundations For Fence(Completed) | 13d | 2026-06-10 A | 2026-06-24 A | PG-T-EN-ST-SD-AP-40, PG-T-CON-EX-PD-10 SS | 100% |  |  |  |  |  | COST [1767.48]; Concrete Mason [8 h]; Carpenter [8 h]; Steel Fixer [8 h] | 1,767.48 | 1,767.48 | T | DIV-2 | Div-2.3 |  |
| PG-T-CON-EX-PD-30 |  | Tartan Flooring Layers(Completed) | 7d | 2026-06-17 A | 2026-06-24 A | PG-T-EN-LS-SD-AP-40, PG-T-CON-EX-PD-20 SS, PG-T-PR-LL-SP-DL-40 SS | 100% |  |  |  |  |  | COST [26325]; Paving Machine [4 h]; Applicator [16 h]; Paving Machine Operator [4 h] | 26,325 | 26,325 | T | DIV-2 | Div-2.3 |  |
| PG-T-CON-EX-PD-10_R |  | Excavation For Fence Footing(Remaining) | 8d | 2026-08-06 A | 2026-08-14 A | PG-T-CON-EX-CF-30, PG-T-EN-ST-SD-AP-30, PG-T-EN-LS-SD-AP-120, PG-T-CON-EX-BB-20, PG-T-CON-EX-PD-10 | 100% |  | 2026-08-09 | 2026-08-17 |  |  | COST [1804.8]; Dump Truck [1.6 h]; Excavator [0.8 h]; Site Engineer [0.4 h]; Labor / Helper [1.6 h]; Surveyor [0.8 h]; Excavator Operator [0.8 h]; Dump Truck Driver [1.6 h]; Safety Officer [0.8 h] | 1,804.8 | 1,804.8 | T | DIV-2 | Div-2.3 |  |
| PG-T-CON-EX-PD-20_R |  | RC Foundations For Fence(Remaining) | 20d | 2026-08-14 A | 2026-08-27 A | PG-T-EN-ST-SD-AP-40, PG-T-CON-EX-PD-10_R, PG-T-CON-EX-PD-20 | 100% |  | 2026-08-20 | 2026-09-12 |  |  | COST [1767.48]; Concrete Mason [8 h]; Carpenter [8 h]; Steel Fixer [8 h] | 1,767.48 | 1,767.48 | T | DIV-2 | Div-2.3 |  |
| PG-T-CON-EX-PD-30_R |  | Tartan Flooring Layers(Remaining) | 17d | 2026-08-20 A | 2026-11-02 | PG-T-EN-LS-SD-AP-40, PG-T-PR-LL-SP-DL-40_R SS, PG-T-CON-EX-PD-30, PG-T-CON-EX-PD-50, PG-T-CON-EX-PD-50 FF | 90% | 1.7d | 2026-10-22 | 2026-11-10 | 20.15d | 0d | COST [26325]; Paving Machine [4 h]; Applicator [16 h]; Paving Machine Operator [4 h] | 26,325 | 23,692.5 | T | DIV-2 | Div-2.3 |  |
| PG-T-CON-EX-PD-40 |  | Steel Structure & Fence Supports Installation | 20d | 2026-08-20 A | 2026-10-07 | PG-T-EN-LS-SD-AP-130, PG-T-EN-LS-SD-AP-100, PG-T-PR-LL-LS-DL-30_R, PG-T-PR-LL-SP-DL-30_R, PG-T-PR-LL-SP-DL-30_R FF, PG-T-CON-EX-PD-20_R, PG-T-PR-LL-LS-DL-30_R SS, PG-T-PR-LL-SP-DL-30_R SS, PG-T-CON-EX-PD-20_R SS | 85% | 3d | 2026-09-08 | 2026-10-01 | 20.15d | 0d | COST [3534.96]; Crane [8 h]; Labor / Helper [16 h]; Crane Operator [8 h]; Mechanical Technician [32 h] | 3,534.96 | 3,004.72 | T | DIV-2 | Div-2.3 |  |
| PG-T-CON-EX-PD-60 |  | Chain Link Fence & Gates Installation | 18d | 2026-08-20 A | 2026-10-10 | PG-T-EN-LS-SD-AP-130, PG-T-CON-EX-PD-40, PG-T-CON-EX-PD-40 SS | 85% | 2.7d | 2026-09-09 | 2026-09-30 | 20.15d | 0d | COST [5302.44]; Crane [8 h]; Labor / Helper [32 h]; Crane Operator [8 h]; Mechanical Technician [32 h] | 5,302.44 | 4,507.07 | T | DIV-2 | Div-2.3 |  |
| PG-T-CON-EX-PD-80 |  | Install Playground Benches | 15d | 2026-08-27 A | 2026-11-23 | PG-T-PR-LL-LS-DL-20_R, PG-T-CON-EX-PD-70, PG-T-PR-LL-LS-DL-20_R SS, PG-T-CON-EX-PD-70 FF | 85% | 2.25d | 2026-10-22 | 2026-11-09 | 20.15d | 13.85d | COST [1545.12]; Mason [16 h]; Labor / Helper [16 h] | 1,545.12 | 1,313.35 | T | DIV-2 | Div-2.3 |  |
| PG-T-CON-EX-PD-50 |  | Tempered Glass Installation | 18d | 2026-10-10 | 2026-10-31 | PG-T-EN-LS-SD-AP-130, PG-T-CON-EX-PD-60 |  |  |  |  | 20.15d | 0d | COST [5302.44]; Site Engineer [4 h]; Labor / Helper [32 h]; Glass Installer [48 h] | 5,302.44 |  | T | DIV-2 | Div-2.3 |  |
| PG-T-CON-EX-PD-70 |  | Court Accessories Installation | 16d | 2026-11-02 | 2026-11-21 | PG-T-CON-EX-PD-30_R |  |  |  |  | 20.15d | 0d | COST [27072]; Mason [16 h]; Labor / Helper [16 h] | 27,072 |  | T | DIV-2 | Div-2.3 |  |
|  | GN.SI | **GENERAL SITE WORKS** |  | 2026-04-16 | 2027-01-24 |  |  |  |  |  |  |  |  |  |  |  |  |  |  |
|  | 1 | **FENCE WORKS** |  | 2026-04-16 | 2026-10-14 |  |  |  |  |  |  |  |  |  |  |  |  |  |  |
| PG-T-CON-EX-GN-FN-10 |  | Excavation for fence foundation | 3d | 2026-04-16 A | 2026-04-19 A | PG-T-CON-EX-CF-30, PG-T-EN-ST-SD-AP-10, PG-T-CON-EX-CF-30 SS, PG-GN-MS-10 | 100% |  |  |  |  |  | COST [6581.88]; Dump Truck [32 h]; Excavator [8 h]; Site Engineer [4 h]; Labor / Helper [32 h]; Surveyor [8 h]; Excavator Operator [8 h]; Dump Truck Driver [32 h]; Safety Officer [8 h] | 6,581.88 | 6,581.88 | T | DIV-2 | Div-2.3 |  |
| PG-T-CON-EX-GN-FN-20 |  | Concrete Foundations for Fence | 12d | 2026-08-13 A | 2026-08-20 A | PG-T-CON-EX-GN-FN-10, PG-T-EN-ST-SD-AP-20, PG-T-PR-SL-CO-DL-10, PG-T-PR-SL-CO-DL-20, PG-T-PR-SL-CO-DL-10 SS, PG-GN-MS-10, PG-T-CON-EX-FB-80 | 100% |  | 2026-08-23 | 2026-09-05 |  |  | COST [6581.88]; Site Engineer [4 h]; Concrete Mason [32 h]; Carpenter [16 h]; Steel Fixer [16 h] | 6,581.88 | 6,581.88 | T | DIV-2 | Div-2.3 |  |
| PG-T-CON-EX-GN-FN-30 |  | Installation of Galvanized Steel Posts & Framing | 7d | 2026-08-20 A | 2026-10-04 | PG-T-CON-EX-GN-FN-20, PG-T-PR-LL-LS-DL-30_R, PG-T-PR-LL-LS-DL-30_R FF, PG-T-PR-LL-LS-DL-30_R SS | 85% | 1.05d | 2026-08-23 | 2026-08-30 | 5.05d | 0d | COST [6581.88]; Crane [8 h]; Labor / Helper [32 h]; Crane Operator [8 h]; Mechanical Technician [16 h] | 6,581.88 | 5,594.6 | T | DIV-2 | Div-2.3 |  |
| PG-T-CON-EX-GN-FN-40 |  | Fixing of Chain Link Mesh, Tensioning & Bracing | 6d | 2026-09-20 A | 2026-10-07 | PG-T-CON-EX-GN-FN-30, PG-T-EN-ST-SD-AP-20 | 40% | 3.6d | 2026-09-20 | 2026-09-28 | 5.05d | 0d | COST [6581.88]; Labor / Helper [32 h]; Mechanical Technician [16 h] | 6,581.88 | 2,632.75 | T | DIV-2 | Div-2.3 |  |
| PG-T-CON-EX-GN-FN-50 |  | Installation of Gates | 6d | 2026-10-07 | 2026-10-14 | PG-T-CON-EX-GN-FN-40 |  |  |  |  | 5.05d | 7.75d | COST [6581.88]; Crane [8 h]; Labor / Helper [32 h]; Crane Operator [8 h]; Mechanical Technician [32 h] | 6,581.88 |  | T | DIV-2 | Div-2.3 |  |
|  | 5 | **MECHANICAL WORK** |  | 2026-05-12 | 2026-10-25 |  |  |  |  |  |  |  |  |  |  |  |  |  |  |
|  | 2 | **STORM WATER AND UTILITY WORK** |  | 2026-05-12 | 2026-10-19 |  |  |  |  |  |  |  |  |  |  |  |  |  |  |
| PG-T-CON-EX-GN-M-10 |  | Excavation | 2d | 2026-05-12 A | 2026-05-13 A | PG-T-CON-EX-GN-FN-10, PG-T-CON-EX-GN-FN-10 FF, PG-T-EN-ST-SD-AP-10 | 100% |  |  |  |  |  | COST [3096]; Dump Truck [32 h]; Excavator [8 h]; Site Engineer [4 h]; Labor / Helper [32 h]; Surveyor [8 h]; Excavator Operator [8 h]; Dump Truck Driver [32 h]; Safety Officer [8 h] | 3,096 | 3,096 | T | DIV-15 |  | Div15.3 |
| PG-T-CON-EX-GN-M-20 |  | Bedding preparation & level control(Completed) | 13d | 2026-06-10 A | 2026-06-24 A | PG-T-CON-EX-GN-M-10 | 100% |  |  |  |  |  | COST [1548]; Labor / Helper [12 h]; Plumber [6 h]; Concrete Mason [6 h] | 1,548 | 1,548 | T | DIV-15 |  | Div15.3 |
| PG-T-CON-EX-GN-M-20_R |  | Bedding preparation & level control(Remaining) | 5d | 2026-07-12 A | 2026-08-27 A | PG-T-CON-EX-GN-M-10, PG-T-CON-EX-GN-M-20 | 100% |  | 2026-07-14 | 2026-07-19 |  |  | COST [516]; Labor / Helper [4 h]; Plumber [2 h]; Concrete Mason [2 h] | 516 | 516 | T | DIV-15 |  | Div15.3 |
| PG-T-CON-EX-GN-M-30 |  | Manhole Installation | 5d | 2026-08-20 A | 2026-10-03 | PG-T-CON-EX-GN-M-20_R, PG-T-CON-EX-GN-M-20_R SS | 80% | 1d | 2026-08-22 | 2026-08-27 | -32.65d | 0d | COST [5160]; Crane [8 h]; Labor / Helper [16 h]; Crane Operator [8 h]; Mechanical Technician [16 h]; Surveyor [8 h] | 5,160 | 4,128 | T | DIV-15 |  | Div15.3 |
| PG-T-CON-EX-GN-M-40 |  | 150 mm uPVC pipe laying & jointing | 4d | 2026-09-20 A | 2026-10-05 | PG-T-CON-EX-GN-M-30 | 50% | 2d | 2026-09-20 | 2026-09-26 | -32.65d | 0d | COST [10740]; Labor / Helper [16 h]; Plumber [16 h] | 10,740 | 5,370 | T | DIV-15 |  | Div15.3 |
| PG-T-CON-EX-GN-M-50 |  | Concrete Encasement | 3d | 2026-10-06 | 2026-10-08 | PG-T-CON-EX-GN-M-40, PG-T-PR-SL-CO-DL-10, PG-T-PR-SL-CO-DL-20 |  |  |  |  | -32.65d | 0d | COST [2064]; Labor / Helper [8 h]; Concrete Mason [16 h] | 2,064 |  | T | DIV-15 |  | Div15.3 |
| PG-T-CON-EX-GN-M-60 |  | Backfilling & Compaction | 3d | 2026-10-10 | 2026-10-12 | PG-T-CON-EX-GN-M-50, PG-T-PR-SL-LS-DL-10 |  |  |  |  | -32.65d | 0d | COST [2064]; Roller [16 h]; Loader [8 h]; Site Engineer [4 h]; Mason [16 h]; Surveyor [4 h]; Loader Operator [8 h]; Roller Operator [16 h] | 2,064 |  | T | DIV-15 |  | Div15.3 |
| PG-T-CON-EX-GN-M-70 |  | Surface Reinstatement & Civil Works | 4d | 2026-10-14 | 2026-10-19 | PG-T-CON-EX-GN-M-60, PG-T-PR-SL-CO-DL-50, PG-T-CON-EX-GN-M-100 |  |  |  |  | -32.65d | 0d | COST [2064]; Labor / Helper [8 h]; Concrete Mason [16 h] | 2,064 |  | T | DIV-15 |  | Div15.3 |

| ID | WBS | Activity | Duration | Start | Finish | Predecessors | Complete | Remaining | Planned start | Planned finish | Total float | Free float | Resources | Cost | Actual cost | H,Q,T-Location | BOQ DIVISION | DIVISION 15-MECHANICAL WORKS | DIVISION 16 ELECTRICAL WORKS |
| --- | --- | --- | --- | --- | --- | --- | --- | --- | --- | --- | --- | --- | --- | --- | --- | --- | --- | --- | --- |
|  | IR.SY | **IRRIGATION SYSTEM WORKS** |  | 2026-06-02 | 2026-10-14 |  |  |  |  |  |  |  |  |  |  |  |  |  |  |
| PG-T-CON-EX-GN-M-80 |  | Installation of HDPE Irrigation Pipe Network with Gate Valve and Box(Completed) | 20d | 2026-06-02 A | 2026-06-24 A | PG-T-EN-ME-SD-AP-80, PG-T-EN-ME-SD-AP-90, PG-T-CON-EX-GN-M-20 SS, PG-T-PR-LL-IR-DL-10 SS, PG-T-PR-SL-IR-DL-10 SS | 100% |  |  |  |  |  | COST [18691.3]; Labor / Helper [11.2 h]; Plumber [16.8 h] | 18,691.26 | 18,691.26 | T | DIV-15 | Div15.5 |  |
| PG-T-CON-EX-GN-M-80_R |  | Installation of HDPE Irrigation Pipe Network with Gate Valve and Box(Remaining) | 3.9d | 2026-07-12 A | 2026-10-12 | PG-T-CON-EX-GN-M-60 FF, PG-T-EN-ME-SD-AP-80, PG-T-EN-ME-SD-AP-90, PG-T-CON-EX-GN-M-20_R SS, PG-T-CON-EX-GN-M-80, PG-T-PR-LL-IR-DL-10_R FF, PG-T-PR-SL-IR-DL-10_R FF | 90% | 0.39d | 2026-08-02 | 2026-08-05 | -32.65d | 0d | COST [34712.3]; Labor / Helper [20.8 h]; Plumber [31.2 h] | 34,712.34 | 31,244.81 | T | DIV-15 | Div15.5 |  |
| PG-T-CON-EX-GN-M-100 |  | Installation of Bubblers and Sprinklers | 5d | 2026-08-20 A | 2026-10-14 | PG-T-CON-EX-GN-M-90, PG-T-PR-SL-IR-DL-20_R, PG-T-CON-EX-GN-M-90 SS, PG-T-PR-SL-IR-DL-20_R SS | 85% | 0.75d | 2026-09-15 | 2026-09-21 | -32.65d | 0d | COST [58299]; Labor / Helper [16 h]; Mechanical Technician [16 h] | 58,299 | 49,554.15 | T | DIV-15 | Div15.5 |  |
| PG-T-CON-EX-GN-M-90 |  | Installation of Irrigation Control System | 6d | 2026-08-20 A | 2026-10-13 | PG-T-CON-EX-GN-M-80_R, PG-T-PR-LL-IR-DL-20_R, PG-T-CON-EX-GN-M-80_R SS, PG-T-PR-LL-IR-DL-20_R SS | 85% | 0.9d | 2026-09-08 | 2026-09-15 | -32.65d | 0d | COST [90915]; Labor / Helper [16 h]; Electrician [8 h]; ELV Technician [8 h] | 90,915 | 77,277.75 | T | DIV-15 | Div15.5 |  |
|  | 1 | **FIRE PROTECTION SYSTEM** |  | 2026-10-19 | 2026-10-25 |  |  |  |  |  |  |  |  |  |  |  |  |  |  |
| PG-T-CON-EX-GN-M-110 |  | Fire Extinguisher Installation | 5d | 2026-10-19 | 2026-10-25 | PG-T-CON-EX-GN-M-70, PG-T-PR-SL-FF-DL-10_R |  |  |  |  | -32.65d | 0d | COST [317.94]; Labor / Helper [16 h]; Mechanical Technician [16 h] | 317.94 |  | T | DIV-15 | Div15.1 |  |
|  | 2 | **ELECTRICAL WORK** |  | 2026-06-08 | 2027-01-03 |  |  |  |  |  |  |  |  |  |  |  |  |  |  |
|  | 1 | **POWER, LIGHTING & GROUNDING** |  | 2026-06-08 | 2026-11-24 |  |  |  |  |  |  |  |  |  |  |  |  |  |  |
| PG-T-CON-EX-GN-E-10 |  | Excavation | 3d | 2026-06-08 A | 2026-06-10 A | PG-T-PR-SL-CO-DL-50 | 100% |  |  |  |  |  | COST [69621.1]; Dump Truck [32 h]; Excavator [8 h]; Site Engineer [4 h]; Labor / Helper [32 h]; Surveyor [8 h]; Excavator Operator [8 h]; Dump Truck Driver [32 h]; Safety Officer [8 h] | 69,621.12 | 69,621.12 | T | DIV-16 |  | Div16.2 |
| PG-T-CON-EX-GN-E-20 |  | Foundation Work for Site Lighting Poles(Completed) | 13d | 2026-06-10 A | 2026-06-24 A | PG-T-CON-EX-GN-E-10, PG-T-PR-SL-CO-DL-10, PG-T-PR-SL-CO-DL-20 | 100% |  |  |  |  |  | COST [37131.3]; Site Engineer [1.6 h]; Concrete Mason [12.8 h]; Carpenter [6.4 h]; Steel Fixer [6.4 h] | 37,131.26 | 37,131.26 | T | DIV-16 |  | Div16.2 |
| PG-T-CON-EX-GN-E-20_R |  | Foundation Work for Site Lighting Poles(Remaining) | 21d | 2026-08-20 A | 2026-10-07 | PG-T-CON-EX-GN-E-10, PG-T-PR-SL-CO-DL-10, PG-T-PR-SL-CO-DL-20, PG-T-CON-EX-GN-E-20 | 80% | 4.2d | 2026-08-23 | 2026-09-15 | -17.2d | 15.45d | COST [55696.9]; Site Engineer [2.4 h]; Concrete Mason [19.2 h]; Carpenter [9.6 h]; Steel Fixer [9.6 h] | 55,696.9 | 44,557.52 | T | DIV-16 |  | Div16.2 |
| PG-T-CON-EX-GN-E-30 |  | Lightning Protection System (LPS) | 8d | 2026-08-20 A | 2026-10-26 | PG-T-CON-EX-GN-E-20_R, PG-T-PR-LL-EL-DL-50_R, PG-T-CON-EX-GN-M-110, PG-T-CON-EX-GN-M-70, PG-T-CON-EX-GN-E-20_R SS, PG-T-PR-LL-EL-DL-50_R SS, PG-T-CON-EX-GN-M-110 FF, PG-T-CON-EX-GN-M-70 FF | 85% | 1.2d | 2026-10-04 | 2026-10-13 | -32.65d | 0d | COST [8265]; Labor / Helper [8 h]; Electrician [24 h] | 8,265 | 7,025.25 | T | DIV-16 |  | Div16.7 |
| PG-T-CON-EX-GN-E-40 |  | KWH Meter and MDB Installation | 5d | 2026-09-17 A | 2026-11-01 | PG-T-CON-EX-GN-E-30, PG-T-EN-EL-SD-AP-10, PG-T-PR-LL-EL-DL-10_R | 10% | 4.5d | 2026-10-17 | 2026-10-22 | -32.65d | 0d | COST [4586.7]; Labor / Helper [16 h]; Electrician [16 h] | 4,586.7 | 458.67 | T | DIV-16 |  | Div16.6 |
| PG-T-CON-EX-GN-E-50 |  | Power Panels and Distribution Boards | 7d | 2026-09-17 A | 2026-11-08 | PG-T-CON-EX-GN-E-40, PG-T-EN-EL-SD-AP-20, PG-T-PR-LL-EL-DL-20_R | 10% | 6.3d | 2026-10-22 | 2026-10-31 | -32.65d | 0d | COST [17397.9]; Labor / Helper [8 h]; Electrician [32 h] | 17,397.9 | 1,739.79 | T | DIV-16 |  | Div16.6 |
| PG-T-CON-EX-GN-E-60 |  | Site Lighting Poles Installation | 6d | 2026-09-17 A | 2026-11-12 | PG-T-CON-EX-GN-E-50, PG-T-EN-EL-SD-AP-30, PG-T-EN-EL-SD-AP-40, PG-T-PR-LL-EL-DL-30_R | 40% | 3.6d | 2026-10-31 | 2026-11-07 | -32.65d | 0d | COST [69621.1]; Crane [8 h]; Labor / Helper [16 h]; Electrician [16 h]; Crane Operator [8 h] | 69,621.12 | 27,848.45 | T | DIV-16 |  | Div16.2 |
| PG-T-CON-EX-GN-E-70 |  | Wiring Works | 4d | 2026-11-12 | 2026-11-17 | PG-T-CON-EX-GN-E-60, PG-T-PR-SL-EL-DL-10_R |  |  |  |  | -32.65d | 0d | COST [4224]; Electrician [32 h] | 4,224 |  | T | DIV-16 |  | Div16.9 |
| PG-T-CON-EX-GN-E-80 |  | Lighting Fixtures with outlets Installation | 6d | 2026-11-17 | 2026-11-24 | PG-T-CON-EX-GN-E-70, PG-T-PR-LL-EL-DL-40_R |  |  |  |  | -32.65d | 0d | COST [22245.5]; Labor / Helper [8 h]; Electrician [32 h] | 22,245.48 |  | T | DIV-16 |  | Div16.3 |
|  | 2 | **ELV SYSTEMS (TELECOM, DATA, AV & CCTV)** |  | 2026-09-22 | 2026-12-17 |  |  |  |  |  |  |  |  |  |  |  |  |  |  |
| PG-T-CON-EX-GN-E-100 |  | Fiber Optic Pull Box Installation | 3d | 2026-09-22 A | 2026-11-30 | PG-T-CON-EX-GN-E-90, PG-T-EN-EL-SD-AP-50, PG-T-PR-LL-EL-DL-60_R | 20% | 2.4d | 2026-11-22 | 2026-11-25 | -26.3d | 0d | COST [619.8]; Labor / Helper [16 h]; Electrician [8 h]; ELV Technician [8 h] | 619.8 | 123.96 | T | DIV-16 |  | Div16.5 |
| PG-T-CON-EX-GN-E-110 |  | Telephone and Data Outlet Installation | 4d | 2026-09-22 A | 2026-12-03 | PG-T-CON-EX-GN-E-100, PG-T-EN-EL-SD-AP-50, PG-T-PR-LL-EL-DL-60_R | 20% | 3.2d | 2026-11-25 | 2026-11-30 | -26.3d | 0d | COST [3718.8]; Labor / Helper [16 h]; Electrician [8 h]; ELV Technician [16 h] | 3,718.8 | 743.76 | T | DIV-16 |  | Div16.4 |
| PG-T-CON-EX-GN-E-120 |  | Telecom Equipment and AV HDMI Installation | 4d | 2026-09-22 A | 2026-12-07 | PG-T-CON-EX-GN-E-110, PG-T-EN-EL-SD-AP-80, PG-T-PR-LL-EL-DL-60_R | 20% | 3.2d | 2026-11-30 | 2026-12-05 | -26.3d | 0d | COST [15249.1]; Labor / Helper [16 h]; Electrician [8 h]; ELV Technician [16 h] | 15,249.12 | 3,049.82 | T | DIV-16 |  | Div16.4 |
| PG-T-CON-EX-GN-E-130 |  | CCTV Rack / Cabinet Installation | 4d | 2026-09-22 A | 2026-12-10 | PG-T-CON-EX-GN-E-120, PG-T-EN-EL-SD-AP-60, PG-T-PR-LL-EL-DL-70_R | 20% | 3.2d | 2026-12-05 | 2026-12-09 | -26.3d | 0d | COST [1446.48]; Labor / Helper [16 h]; Electrician [8 h]; ELV Technician [16 h] | 1,446.48 | 289.3 | T | DIV-16 |  | Div16.5 |
| PG-T-CON-EX-GN-E-140 |  | NVR and CCTV Monitor Installation | 4d | 2026-09-22 A | 2026-12-14 | PG-T-CON-EX-GN-E-130, PG-T-EN-EL-SD-AP-70, PG-T-PR-LL-EL-DL-70_R | 20% | 3.2d | 2026-12-09 | 2026-12-14 | -26.3d | 0d | COST [6612]; Labor / Helper [16 h]; Electrician [8 h]; ELV Technician [16 h] | 6,612 | 1,322.4 | T | DIV-16 |  | Div16.5 |
| PG-T-CON-EX-GN-E-150 |  | IP Camera Installation | 3d | 2026-09-22 A | 2026-12-17 | PG-T-CON-EX-GN-E-140, PG-T-PR-LL-EL-DL-70_R | 20% | 2.4d | 2026-12-14 | 2026-12-17 | -26.3d | 0d | COST [14880]; Labor / Helper [16 h]; Electrician [8 h]; ELV Technician [16 h] | 14,880 | 2,976 | T | DIV-16 |  | Div16.5 |
| PG-T-CON-EX-GN-E-90 |  | ELV Containment & Cabling Works | 3d | 2026-09-22 A | 2026-11-26 | PG-T-CON-EX-GN-E-80, PG-T-PR-LL-EL-DL-60_R | 20% | 2.4d | 2026-11-18 | 2026-11-22 | -32.65d | 0d | COST [619.8]; Labor / Helper [16 h]; Electrician [8 h]; ELV Technician [16 h] | 619.8 | 123.96 | T | DIV-16 |  | Div16.5 |

| ID | WBS | Activity | Duration | Start | Finish | Predecessors | Complete | Remaining | Planned start | Planned finish | Total float | Free float | Resources | Cost | Actual cost | H,Q,T-Location | BOQ DIVISION | DIVISION 16 ELECTRICAL WORKS | DIVISION-02-SITE WORKS | DIVISION 15-MECHANICAL WORKS |
| --- | --- | --- | --- | --- | --- | --- | --- | --- | --- | --- | --- | --- | --- | --- | --- | --- | --- | --- | --- | --- |
|  | 3 | **FIRE ALARM SYSTEM** |  | 2026-11-26 | 2027-01-03 |  |  |  |  |  |  |  |  |  |  |  |  |  |  |  |
| PG-T-CON-EX-GN-E-160 |  | Fire Alarm Containment & Cabling | 8d | 2026-11-26 | 2026-12-06 | PG-T-EN-EL-SD-AP-110, PG-T-EN-EL-SD-AP-90, PG-T-PR-LL-EL-DL-80_R, PG-T-CON-EX-GN-E-90 |  |  |  |  | -32.65d | 0d | COST [1983.6]; Labor / Helper [8 h]; Electrician [16 h]; ELV Technician [8 h] | 1,983.6 |  | T | DIV-16 | Div16.8 |  |  |
| PG-T-CON-EX-GN-E-170 |  | Fire Alarm Control Panel (FACP) Installation | 8d | 2026-12-06 | 2026-12-15 | PG-T-CON-EX-GN-E-160, PG-T-EN-EL-SD-AP-110 |  |  |  |  | -32.65d | 0d | COST [2644.8]; Labor / Helper [8 h]; Electrician [16 h] | 2,644.8 |  | T | DIV-16 | Div16.8 |  |  |
| PG-T-CON-EX-GN-E-180 |  | Initiating Devices (Detectors & Manual Pull Station) | 8d | 2026-12-15 | 2026-12-24 | PG-T-CON-EX-GN-E-170, PG-T-EN-EL-SD-AP-100 |  |  |  |  | -32.65d | 0d | COST [8097.6]; Labor / Helper [16 h]; Electrician [8 h]; ELV Technician [16 h] | 8,097.6 |  | T | DIV-16 | Div16.8 |  |  |
| PG-T-CON-EX-GN-E-190 |  | Notification Appliances (Strobe with Sounder) | 8d | 2026-12-24 | 2027-01-03 | PG-T-CON-EX-GN-E-180 |  |  |  |  | -32.65d | 0d | COST [1198.2]; Labor / Helper [16 h]; Electrician [8 h]; ELV Technician [16 h] | 1,198.2 |  | T | DIV-16 | Div16.8 |  |  |
|  | 3 | **PARKING WORK** |  | 2026-06-17 | 2027-01-03 |  |  |  |  |  |  |  |  |  |  |  |  |  |  |  |
| PG-T-CON-EX-GN-PR-20 |  | Interlock tiles(Completed) | 7d | 2026-06-17 A | 2026-06-24 A | PG-T-EN-LS-SD-AP-20, PG-T-PR-SL-LS-DL-20 | 100% |  |  |  |  |  | COST [5788.8]; Labor / Helper [7.2 h]; Tile Fixer [14.4 h] | 5,788.8 | 5,788.8 | T | DIV-2 |  | Div-2.2 |  |
| PG-T-CON-EX-GN-PR-20_R |  | Interlock tiles(Remaining) | 7d | 2026-07-12 A | 2026-08-27 A | PG-T-CON-EX-GN-PR-10 FF, PG-T-CON-B-AR-RF-30 FF, PG-T-CON-B-AR-WF-60 FF, PG-T-CON-B-AR-GF-80 FF, PG-T-EN-LS-SD-AP-20, PG-T-PR-SL-LS-DL-20, PG-T-CON-EX-GN-PR-20, PG-T-CON-EX-GN-PR-10 SS, PG-T-CON-B-AR-GF-80 SS, PG-T-PR-SL-AR-DL-30, PG-T-EN-AR-SD-AP-30 | 100% |  | 2026-11-15 | 2026-11-22 |  |  | COST [7075.2]; Labor / Helper [8.8 h]; Tile Fixer [17.6 h] | 7,075.2 | 7,075.2 | T | DIV-2 |  | Div-2.2 |  |
| PG-T-CON-EX-GN-PR-10 |  | Installlation of Parking Accessories | 7d | 2026-08-20 A | 2026-12-19 | PG-T-CON-EX-GN-E-150, PG-T-CON-EX-GN-E-150 FF | 85% | 1.05d | 2026-12-14 | 2026-12-22 | -26.3d | 0d | COST [12864]; Mason [16 h]; Labor / Helper [16 h] | 12,864 | 10,934.4 | T | DIV-2 |  | Div-2.2 |  |
| PG-T-CON-EX-GN-PR-30 |  | Marking & Signages | 7d | 2026-12-26 | 2027-01-03 | PG-T-CON-EX-GN-PR-20_R, PG-T-EN-LS-SD-AP-80, PG-T-PR-SL-LS-DL-50, PG-T-PR-SL-LS-DL-60_R, PG-T-CON-EX-GN-E-190 FF, PG-T-CON-B-AR-RF-30, PG-T-CON-B-AR-WF-60 |  |  |  |  | -32.65d | 0d | COST [14479.8]; Spray Machine [48 h]; Site Engineer [4 h]; Labor / Helper [32 h]; Painter [48 h] | 14,479.8 |  | T | DIV-2 |  | Div-2.2 |  |
|  | 4 | **SERVICE CONNECTION** |  | 2026-06-10 | 2027-01-24 |  |  |  |  |  |  |  |  |  |  |  |  |  |  |  |
| PG-T-CON-EX-GN-SC-10 |  | Excavation & Trench Preparation(Completed) | 13d | 2026-06-10 A | 2026-06-24 A | PG-T-CON-EX-GN-PR-20 | 100% |  |  |  |  |  | COST [669.6]; Dump Truck [9.6 h]; Excavator [2.4 h]; Site Engineer [1.2 h]; Labor / Helper [9.6 h]; Surveyor [2.4 h]; Excavator Operator [2.4 h]; Dump Truck Driver [9.6 h]; Safety Officer [2.4 h] | 669.6 | 669.6 | T | DIV-15 |  |  | Div15.2 |
| PG-T-CON-EX-GN-SC-10_R |  | Excavation & Trench Preparation(Remaining) | 7d | 2026-07-12 A | 2026-07-23 A | PG-T-CON-EX-GN-SC-10, PG-T-EN-LS-SD-AP-80 | 100% |  | 2026-11-23 | 2026-11-30 |  |  | COST [1562.4]; Dump Truck [22.4 h]; Excavator [5.6 h]; Site Engineer [2.8 h]; Labor / Helper [22.4 h]; Surveyor [5.6 h]; Excavator Operator [5.6 h]; Dump Truck Driver [22.4 h]; Safety Officer [5.6 h] | 1,562.4 | 1,562.4 | T | DIV-15 |  |  | Div15.2 |
| PG-T-CON-EX-GN-SC-20 |  | HDPE Pipe Laying & Valve Installation | 10d | 2026-08-14 A | 2027-01-03 | PG-T-CON-EX-GN-SC-10_R, PG-T-CON-EX-GN-PR-30 FF | 85% | 1.5d | 2026-12-23 | 2027-01-04 | -32.65d | 0d | COST [2232]; Labor / Helper [16 h]; Plumber [32 h] | 2,232 | 1,897.2 | T | DIV-15 |  |  | Div15.2 |
| PG-T-CON-EX-GN-SC-30 |  | Connection to City Network | 10d | 2027-01-03 | 2027-01-14 | PG-T-CON-EX-GN-SC-20 |  |  |  |  | -32.65d | 0d | COST [1488]; Labor / Helper [16 h]; Plumber [32 h] | 1,488 |  | T | DIV-15 |  |  | Div15.2 |
| PG-T-CON-EX-GN-SC-40 |  | Backfilling | 8d | 2027-01-14 | 2027-01-24 | PG-T-PR-SL-LS-DL-10, PG-T-CON-EX-GN-SC-30 |  |  |  |  | -32.65d | 0d | COST [1488]; Roller [16 h]; Loader [8 h]; Site Engineer [4 h]; Mason [16 h]; Surveyor [4 h]; Loader Operator [8 h]; Roller Operator [16 h] | 1,488 |  | T | DIV-15 |  |  | Div15.2 |
|  | LS | **LANDSCAPING WORKS** |  | 2026-05-30 | 2026-12-02 |  |  |  |  |  |  |  |  |  |  |  |  |  |  |  |
|  | HSP | **HARDSCAPE WORK** |  | 2026-05-30 | 2026-12-02 |  |  |  |  |  |  |  |  |  |  |  |  |  |  |  |
| PG-T-CON-EX-LS-HS-10 |  | Curbstone Installation(Completed) | 22d | 2026-05-30 A | 2026-06-24 A | PG-T-EN-LS-SD-AP-10, PG-T-PR-SL-LS-DL-40 | 100% |  | 2026-05-31 | 2026-06-24 |  |  | COST [124078]; Mason [9.6 h]; Labor / Helper [9.6 h] | 124,077.6 | 124,077.6 | T | DIV-2 |  | Div-2.3 |  |
| PG-T-CON-EX-LS-HS-20 |  | Interlock Tiles Grey Scale with Black Marble Chips(Completed) | 22d | 2026-05-30 A | 2026-06-24 A | PG-T-CON-EX-LS-HS-10 SS | 100% |  | 2026-05-31 | 2026-06-24 |  |  | COST [40656]; Labor / Helper [6.4 h]; Tile Fixer [12.8 h] | 40,656 | 40,656 | T | DIV-2 |  | Div-2.3 |  |
| PG-T-CON-EX-LS-HS-40 |  | Bike Path and Walking Path Construction(Completed) | 22d | 2026-05-30 A | 2026-06-24 A | PG-T-EN-LS-SD-AP-50, PG-T-EN-LS-SD-AP-60, PG-T-CON-EX-LS-HS-30 SS, PG-T-PR-LL-LS-DL-10 SS | 100% |  | 2026-05-31 | 2026-06-24 |  |  | COST [99297]; Labor / Helper [8.8 h]; Applicator [8.8 h]; Concrete Mason [8.8 h] | 99,297 | 99,297 | T | DIV-2 |  | Div-2.3 |  |
| PG-T-CON-EX-LS-HS-50 |  | Install Recycled Precast Concrete Seats(Completed) | 22d | 2026-05-30 A | 2026-06-24 A | PG-T-CON-EX-LS-HS-40 SS, PG-T-PR-LL-LS-DL-20 SS | 100% |  | 2026-05-31 | 2026-06-24 |  |  | COST [6681.9]; Mason [1.6 h]; Labor / Helper [1.6 h] | 6,681.9 | 6,681.9 | T | DIV-2 |  | Div-2.3 |  |
| PG-T-CON-EX-LS-HS-30 |  | Stamped Concrete Floor(Completed) | 13d | 2026-06-10 A | 2026-06-24 A | PG-T-EN-LS-SD-AP-30, PG-T-CON-EX-LS-HS-20 SS | 100% |  |  |  |  |  | COST [43470]; Labor / Helper [8 h]; Concrete Mason [8 h] | 43,470 | 43,470 | T | DIV-2 |  | Div-2.3 |  |
| PG-T-CON-EX-LS-HS-10_R |  | Curbstone Installation(Remaining) | 8d | 2026-07-12 A | 2026-08-27 A | PG-T-CON-EX-GN-FN-50 FF, PG-T-CON-EX-TW-IR-40 FF, PG-T-CON-EX-TW-ST-70 FF, PG-T-EN-LS-SD-AP-10, PG-T-PR-SL-LS-DL-40, PG-T-CON-EX-LS-HS-10, PG-T-EN-ST-SD-AP-20, PG-T-EN-ME-SD-AP-40, PG-T-CON-EX-TW-ST-30_R | 100% |  | 2026-09-20 | 2026-09-29 |  |  | COST [82718.4]; Mason [6.4 h]; Labor / Helper [6.4 h] | 82,718.4 | 82,718.4 | T | DIV-2 |  | Div-2.3 |  |
| PG-T-CON-EX-LS-HS-40_R |  | Bike Path and Walking Path Construction(Remaining) | 8d | 2026-07-23 A | 2026-08-27 A | PG-T-CON-EX-LS-SS-10 FF, PG-T-EN-LS-SD-AP-50, PG-T-EN-LS-SD-AP-60, PG-T-CON-EX-LS-HS-40, PG-T-CON-EX-LS-HS-30_R FF, PG-T-PR-LL-LS-DL-10_R FF, PG-T-CON-EX-LS-HS-30_R SS, PG-T-PR-LL-LS-DL-10_R SS, PG-T-EN-LS-SD-AP-70 | 100% |  | 2026-10-25 | 2026-11-02 |  |  | COST [81243]; Labor / Helper [7.2 h]; Applicator [7.2 h]; Concrete Mason [7.2 h] | 81,243 | 81,243 | T | DIV-2 |  | Div-2.3 |  |
| PG-T-CON-EX-LS-HS-30_R |  | Stamped Concrete Floor(Remaining) | 10d | 2026-07-30 A | 2026-11-09 | PG-T-EN-LS-SD-AP-30, PG-T-CON-EX-LS-HS-30, PG-T-CON-EX-LS-HS-20_R FF | 90% | 1d | 2026-10-20 | 2026-10-31 | 8.1d | 10.8d | COST [43470]; Labor / Helper [8 h]; Concrete Mason [8 h] | 43,470 | 39,123 | T | DIV-2 |  | Div-2.3 |  |
| PG-T-CON-EX-LS-HS-50_R |  | Install Recycled Precast Concrete Seats(Remaining) | 10d | 2026-07-30 A | 2026-11-23 | PG-T-PR-LL-LS-DL-20_R SS, PG-T-CON-EX-LS-HS-50, PG-T-CON-EX-LS-HS-40_R SS | 90% | 1d | 2026-11-03 | 2026-11-14 | -2.7d | 0d | COST [60137.1]; Mason [14.4 h]; Labor / Helper [14.4 h] | 60,137.1 | 54,123.39 | T | DIV-2 |  | Div-2.3 |  |
| PG-T-CON-EX-LS-HS-20_R |  | Interlock Tiles Grey Scale with Black Marble Chips(Remaining) | 10d | 2026-08-27 A | 2026-11-09 | PG-T-CON-EX-LS-HS-10_R, PG-T-CON-EX-LS-HS-20 | 85% | 1.5d | 2026-10-17 | 2026-10-27 | -2.7d | 0d | COST [60984]; Labor / Helper [9.6 h]; Tile Fixer [19.2 h] | 60,984 | 51,836.4 | T | DIV-2 |  | Div-2.3 |  |
| PG-T-CON-EX-LS-HS-60 |  | Install Recycled Precast Concrete Trash Bins | 10d | 2026-09-23 A | 2026-12-02 | PG-T-CON-EX-LS-HS-50_R, PG-T-CON-EX-LS-SS-10 | 25% | 7.5d | 2026-11-18 | 2026-11-30 | -2.7d | 0d | COST [5412]; Mason [16 h]; Labor / Helper [16 h] | 5,412 | 1,353 | T | DIV-2 |  | Div-2.3 |  |

| ID | WBS | Activity | Duration | Start | Finish | Predecessors | Complete | Remaining | Planned start | Planned finish | Total float | Free float | Resources | Cost | Actual cost | H,Q,T-Location | BOQ DIVISION | DIVISION-02-SITE WORKS | DIVISION-3 CONCRETE | DIVISION 15-MECHANICAL WORKS | Air Dome |
| --- | --- | --- | --- | --- | --- | --- | --- | --- | --- | --- | --- | --- | --- | --- | --- | --- | --- | --- | --- | --- | --- |
|  | SSP | **SOFTSCAPE WORK** |  | 2026-06-10 | 2026-12-02 |  |  |  |  |  |  |  |  |  |  |  |  |  |  |  |  |
| PG-T-CON-EX-LS-SS-20 |  | Lawn Area Preparation & Planting / Turfing(Completed) | 13d | 2026-06-10 A | 2026-06-24 A | PG-T-EN-LS-SD-AP-70, PG-T-PR-SL-LS-DL-80 SS | 100% |  |  |  |  |  | COST [24360]; Site Engineer [1.6 h]; Labor / Helper [12.8 h]; Gardener [19.2 h] | 24,360 | 24,360 | T | DIV-2 | Div-2.3 |  |  |  |
| PG-T-CON-EX-LS-SS-20_R |  | Lawn Area Preparation & Planting / Turfing(Remaining) | 6d | 2026-07-12 A | 2026-12-02 | PG-T-CON-EX-LS-SS-10 FF, PG-T-CON-EX-LS-HS-60 FF, PG-T-EN-LS-SD-AP-70, PG-T-CON-EX-LS-SS-20, PG-T-PR-SL-LS-DL-80_R FF | 85% | 0.9d | 2026-11-18 | 2026-11-24 | -2.7d | 38.7d | COST [36540]; Site Engineer [2.4 h]; Labor / Helper [19.2 h]; Gardener [28.8 h] | 36,540 | 31,059 | T | DIV-2 | Div-2.3 |  |  |  |
| PG-T-CON-EX-LS-SS-10 |  | Planting Trees | 12d | 2026-09-22 A | 2026-11-22 | PG-T-EN-LS-SD-AP-70, PG-T-PR-SL-LS-DL-70_R, PG-T-CON-EX-LS-HS-20_R, PG-T-CON-EX-GN-FN-50, PG-T-CON-EX-TW-IR-40, PG-T-CON-EX-TW-ST-70, PG-T-CON-EX-TW-ST-60 | 10% | 10.8d | 2026-11-02 | 2026-11-15 | -2.7d | 0d | COST [46122]; Site Engineer [4 h]; Labor / Helper [32 h]; Gardener [48 h] | 46,122 | 4,612.2 | T | DIV-2 | Div-2.3 |  |  |  |
|  | W.T | **TANK WORKS** |  | 2026-05-13 | 2026-11-08 |  |  |  |  |  |  |  |  |  |  |  |  |  |  |  |  |
|  | 1 | **SEPTIC TANK** |  | 2026-05-13 | 2026-11-02 |  |  |  |  |  |  |  |  |  |  |  |  |  |  |  |  |
| PG-T-CON-EX-TW-ST-10 |  | Excavation | 21d | 2026-05-13 A | 2026-06-10 A | PG-T-CON-EX-CF-30 | 100% |  |  |  |  |  | COST [252.18]; Dump Truck [32 h]; Excavator [8 h]; Site Engineer [4 h]; Labor / Helper [32 h]; Surveyor [8 h]; Excavator Operator [8 h]; Dump Truck Driver [32 h]; Safety Officer [8 h] | 252.18 | 252.18 | T | DIV-3 |  | Div-3 |  |  |
| PG-T-CON-EX-TW-ST-20 |  | PCC / Lean Concrete laying | 27d | 2026-05-20 A | 2026-06-24 A | PG-T-CON-EX-TW-ST-10, PG-T-CON-EX-TW-ST-10 SS | 100% |  |  |  |  |  | COST [168.12]; Site Engineer [4 h]; Labor / Helper [8 h]; Surveyor [8 h]; Safety Officer [4 h]; Concrete Mason [16 h] | 168.12 | 168.12 | T | DIV-3 |  | Div-3 |  |  |
| PG-T-CON-EX-TW-ST-30 |  | RCC Foundation(Completed) | 1d | 2026-06-24 A | 2026-06-24 A | PG-T-CON-EX-TW-ST-20, PG-T-EN-ST-SD-AP-110, PG-T-EN-ST-SD-AP-120, PG-T-CON-EX-TW-ST-20 SS | 100% |  |  |  |  |  | COST [894.35]; Labor / Helper [5.6 h]; Concrete Mason [11.2 h]; Carpenter [11.2 h]; Steel Fixer [11.2 h] | 894.35 | 894.35 | T | DIV-3 |  | Div-3 |  |  |
| PG-T-CON-EX-TW-ST-30_R |  | RCC Foundation(Remaining) | 10d | 2026-07-12 A | 2026-08-27 A | PG-T-CON-EX-TW-ST-20, PG-T-EN-ST-SD-AP-110, PG-T-EN-ST-SD-AP-120, PG-T-CON-EX-TW-ST-20 SS, PG-T-CON-EX-TW-ST-30 | 100% |  | 2026-07-14 | 2026-07-25 |  |  | COST [383.29]; Labor / Helper [2.4 h]; Concrete Mason [4.8 h]; Carpenter [4.8 h]; Steel Fixer [4.8 h] | 383.29 | 383.29 | T | DIV-3 |  | Div-3 |  |  |
| PG-T-CON-EX-TW-ST-40 |  | RCC Wall | 9d | 2026-08-14 A | 2026-10-08 | PG-T-CON-EX-TW-ST-30_R SS | 40% | 5.4d | 2026-08-16 | 2026-08-26 | -2.7d | 0d | COST [2757.6]; Labor / Helper [8 h]; Concrete Mason [16 h]; Carpenter [16 h]; Steel Fixer [16 h] | 2,757.6 | 1,103.04 | T | DIV-3 |  | Div-3 |  |  |
| PG-T-CON-EX-TW-ST-70 |  | Backfilling | 7d | 2026-08-20 A | 2026-08-24 A | PG-T-CON-EX-TW-ST-60, PG-T-CON-EX-TW-ST-30_R | 100% |  | 2026-09-27 | 2026-10-05 |  |  | COST [168.12]; Roller [8 h]; Loader [8 h]; Site Engineer [4 h]; Mason [16 h]; Surveyor [4 h]; Loader Operator [8 h]; Roller Operator [8 h] | 168.12 | 168.12 | T | DIV-3 |  | Div-3 |  |  |
| PG-T-CON-EX-TW-ST-50 |  | RCC Slab | 13d | 2026-10-08 | 2026-10-24 | PG-T-CON-EX-TW-ST-40, PG-T-CON-EX-TW-ST-40 SS |  |  |  |  | -2.7d | 0d | COST [2599.38]; Labor / Helper [8 h]; Concrete Mason [16 h]; Carpenter [16 h]; Steel Fixer [16 h] | 2,599.38 |  | T | DIV-3 |  | Div-3 |  |  |
| PG-T-CON-EX-TW-ST-60 |  | Finishing Work | 8d | 2026-10-24 | 2026-11-02 | PG-T-CON-EX-TW-ST-50, PG-T-CON-EX-GN-FN-50 |  |  |  |  | -2.7d | 0d | COST [252.18]; Labor / Helper [8 h]; Applicator [16 h] | 252.18 |  | T | DIV-3 |  | Div-3 |  |  |
|  | 2 | **WATER STORAGE TANK** |  | 2026-05-13 | 2026-11-08 |  |  |  |  |  |  |  |  |  |  |  |  |  |  |  |  |
| PG-T-CON-EX-TW-IR-10 |  | Excavation(Completed) | 33d | 2026-05-13 A | 2026-06-24 A | PG-T-EN-ST-SD-AP-90 | 100% |  |  |  |  |  | COST [766.58]; Dump Truck [28.8 h]; Excavator [7.2 h]; Site Engineer [3.6 h]; Labor / Helper [28.8 h]; Surveyor [7.2 h]; Excavator Operator [7.2 h]; Dump Truck Driver [28.8 h]; Safety Officer [7.2 h] | 766.58 | 766.58 | T | DIV-3 |  | Div-3 |  |  |
| PG-T-CON-EX-TW-IR-20 |  | RCC Foundation(Completed) | 13d | 2026-06-10 A | 2026-06-24 A | PG-T-EN-ST-SD-AP-100, PG-T-CON-EX-TW-IR-10 SS | 100% |  |  |  |  |  | COST [1654.56]; Labor / Helper [6.4 h]; Concrete Mason [9.6 h]; Carpenter [6.4 h]; Steel Fixer [6.4 h] | 1,654.56 | 1,654.56 | T | DIV-3 |  | Div-3 |  |  |
| PG-T-CON-EX-TW-IR-10_R |  | Excavation(Remaining) | 6d | 2026-07-08 A | 2026-07-09 A | PG-T-EN-ST-SD-AP-90, PG-T-CON-EX-TW-IR-10, PG-T-CON-EX-TW-ST-20 | 100% |  | 2026-09-14 | 2026-09-20 |  |  | COST [85.18]; Dump Truck [3.2 h]; Excavator [0.8 h]; Site Engineer [0.4 h]; Labor / Helper [3.2 h]; Surveyor [0.8 h]; Excavator Operator [0.8 h]; Dump Truck Driver [3.2 h]; Safety Officer [0.8 h] | 85.18 | 85.18 | T | DIV-3 |  | Div-3 |  |  |
| PG-T-CON-EX-TW-IR-20_R |  | RCC Foundation(Remaining) | 8d | 2026-07-16 A | 2026-08-27 A | PG-T-EN-ST-SD-AP-100, PG-T-CON-EX-TW-IR-10_R, PG-T-CON-EX-TW-IR-20, PG-T-CON-EX-TW-ST-70 FF, PG-T-CON-EX-TW-ST-30_R | 100% |  | 2026-09-10 | 2026-09-19 |  |  | COST [2481.84]; Labor / Helper [9.6 h]; Concrete Mason [14.4 h]; Carpenter [9.6 h]; Steel Fixer [9.6 h] | 2,481.84 | 2,481.84 | T | DIV-3 |  | Div-3 |  |  |
| PG-T-CON-EX-TW-IR-30 |  | Backfilling | 6d | 2026-08-14 A | 2026-08-25 A | PG-T-CON-EX-TW-IR-20_R SS | 100% |  | 2026-10-10 | 2026-10-15 |  |  | COST [1114.02]; Roller [16 h]; Loader [8 h]; Site Engineer [4 h]; Mason [16 h]; Surveyor [4 h]; Loader Operator [8 h]; Roller Operator [16 h] | 1,114.02 | 1,114.02 | T | DIV-3 |  | Div-3 |  |  |
| PG-T-CON-EX-TW-IR-40 |  | GRP Water Tank Installation | 5d | 2026-11-02 | 2026-11-08 | PG-T-CON-EX-TW-IR-30, PG-T-EN-ME-SD-AP-40, PG-T-PR-LL-PB-DL-20_R, PG-T-CON-EX-TW-ST-70 |  |  |  |  | -2.7d | 0d | COST [34713]; Crane [4 h]; Mason [32 h]; Labor / Helper [16 h]; Crane Operator [4 h] | 34,713 |  | T | DIV-15 |  |  | Div15.2 |  |
|  | AD | **AIR DOME CONSTRUCTION** |  | 2026-05-13 | 2027-01-21 |  |  |  |  |  |  |  |  |  |  |  |  |  |  |  |  |
|  | 1 | **CIVIL WORK** |  | 2026-05-13 | 2026-11-03 |  |  |  |  |  |  |  |  |  |  |  |  |  |  |  |  |
| PG-T-CON-EX-AD-CL-10 |  | Excavation For Footing(Completed) | 33d | 2026-05-13 A | 2026-06-24 A | PG-T-CON-EX-FB-10 | 100% |  |  |  |  |  | COST [25048.8]; Dump Truck [3.2 h]; Excavator [1.6 h]; Site Engineer [0.4 h]; Labor / Helper [3.2 h]; Surveyor [0.8 h]; Excavator Operator [1.6 h]; Dump Truck Driver [3.2 h]; Safety Officer [0.8 h] | 25,048.83 | 25,048.83 | T | DIV-2 | AD |  |  | A.D |
| PG-T-CON-EX-AD-CL-10_R |  | Excavation For Footing(Remaining) | 7d | 2026-07-08 A | 2026-07-10 A | PG-T-CON-EX-FB-10, PG-T-CON-EX-AD-CL-10, PG-T-EN-ST-SD-AP-50 SS | 100% |  | 2026-07-21 | 2026-07-28 |  |  | COST [225439]; Dump Truck [28.8 h]; Excavator [14.4 h]; Site Engineer [3.6 h]; Labor / Helper [28.8 h]; Surveyor [7.2 h]; Excavator Operator [14.4 h]; Dump Truck Driver [28.8 h]; Safety Officer [7.2 h] | 225,439.46 | 225,439.46 | T | DIV-2 | AD |  |  | A.D |
| PG-T-CON-EX-AD-CL-20 |  | Anti-Termite Treatment | 1d | 2026-07-10 A | 2026-07-10 A | PG-T-CON-EX-AD-CL-10_R | 100% |  | 2026-07-20 | 2026-07-20 |  |  | COST [83496.1]; Mason [16 h]; Labor / Helper [16 h] | 83,496.1 | 83,496.1 | T | DIV-2 | AD |  |  | A.D |
| PG-T-CON-EX-AD-CL-30 |  | PCC / Blinding Concrete | 3d | 2026-07-22 A | 2026-07-23 A | PG-T-CON-EX-AD-CL-20, PG-T-EN-ST-SD-AP-60 | 100% |  | 2026-07-26 | 2026-07-28 |  |  | COST [125244]; Site Engineer [4 h]; Labor / Helper [16 h]; Surveyor [8 h]; Safety Officer [4 h]; Concrete Mason [32 h] | 125,244.14 | 125,244.14 | T | DIV-2 | AD |  |  | A.D |
| PG-T-CON-EX-AD-CL-40 |  | RCC Foundation Works | 9d | 2026-07-23 A | 2026-08-13 A | PG-T-CON-EX-AD-CL-30, PG-T-EN-ST-SD-AP-60, PG-T-PR-SL-CO-DL-10, PG-T-PR-SL-CO-DL-20 | 100% |  | 2026-07-27 | 2026-08-06 |  |  | COST [250488]; Labor / Helper [24 h]; Concrete Mason [32 h]; Carpenter [16 h]; Steel Fixer [16 h] | 250,488.29 | 250,488.29 | T | DIV-2 | AD |  |  | A.D |
| PG-T-CON-EX-AD-CL-50 |  | Backfilling with Compaction | 8d | 2026-08-07 A | 2026-08-14 A | PG-T-PR-SL-LS-DL-10, PG-T-CON-EX-AD-CL-40 SS | 100% |  | 2026-08-10 | 2026-08-19 |  |  | COST [250488]; Roller [16 h]; Loader [8 h]; Site Engineer [4 h]; Mason [16 h]; Surveyor [4 h]; Loader Operator [8 h]; Roller Operator [16 h] | 250,488.29 | 250,488.29 | T | DIV-2 | AD |  |  | A.D |
| PG-T-CON-EX-AD-CL-60 |  | Installation of Anchorage System | 8d | 2026-08-27 A | 2026-09-23 A | PG-T-CON-EX-AD-CL-50, PG-T-PR-LL-SP-DL-50 SS | 100% |  | 2026-09-21 | 2026-10-01 |  |  | COST [250488]; Site Engineer [4 h]; Labor / Helper [32 h]; Mechanical Technician [24 h] | 250,488.29 | 250,488.29 | T | DIV-2 | AD |  |  | A.D |
| PG-T-CON-EX-AD-CL-70 |  | Installation of Steel Cable Structural System | 9d | 2026-10-14 | 2026-10-25 | PG-T-CON-EX-AD-CL-60, PG-T-EN-AR-SD-AP-120 |  |  |  |  | -41.4d | 0d | COST [250488]; Crane [8 h]; Site Engineer [4 h]; Labor / Helper [32 h]; Crane Operator [8 h]; Mechanical Technician [32 h] | 250,488.29 |  | T | DIV-2 | AD |  |  | A.D |
| PG-T-CON-EX-AD-CL-80 |  | Installation of Membrane System | 8d | 2026-10-25 | 2026-11-03 | PG-T-CON-EX-AD-CL-70, PG-T-EN-AR-SD-AP-110 |  |  |  |  | -41.4d | 0d | COST [250488]; Site Engineer [4 h]; Labor / Helper [32 h]; Mechanical Technician [32 h] | 250,488.29 |  | T | DIV-2 | AD |  |  | A.D |

| ID | WBS | Activity | Duration | Start | Finish | Predecessors | Complete | Planned start | Planned finish | Total float | Free float | Resources | Cost | Actual cost | H,Q,T-Location | BOQ DIVISION | DIVISION-02-SITE WORKS | Air Dome | DIVISION 10-SPECIALTIES | DIVISION-3 CONCRETE | DIVISION 07-THERMAL & MOISTURE PROTECTIO |
| --- | --- | --- | --- | --- | --- | --- | --- | --- | --- | --- | --- | --- | --- | --- | --- | --- | --- | --- | --- | --- | --- |
|  | 2 | **ARCHITECTURAL WORK** |  | 2026-12-23 | 2027-01-21 |  |  |  |  |  |  |  |  |  |  |  |  |  |  |  |  |
| PG-T-CON-EX-AD-AR-10 |  | Installation of Thermal Insulation System | 7d | 2026-12-23 | 2026-12-31 | PG-T-CON-EX-AD-CL-80, PG-T-PR-LL-SP-DL-50, PG-T-EN-AR-SD-AP-110, PG-T-CON-EX-AD-EL-50, PG-T-CON-EX-AD-EL-20, PG-T-CON-EX-AD-CL-80 FF |  |  |  | -41.4d | 0d | COST [250488]; Site Engineer [4 h]; Labor / Helper [24 h]; Applicator [32 h] | 250,488.29 |  | T | DIV-2 | AD | A.D |  |  |  |
| PG-T-CON-EX-AD-AR-40 |  | Final Fixing of Accessories & Finishes | 7d | 2026-12-31 | 2027-01-09 | PG-T-CON-EX-AD-CL-80, PG-T-CON-EX-AD-AR-10 |  |  |  | -41.4d | 0d | COST [208740]; Labor / Helper [16 h]; Applicator [40 h] | 208,740.24 |  | T | DIV-2 | AD | A.D |  |  |  |
| PG-T-CON-EX-AD-AR-20 |  | Installation of Doors & Access Systems | 6d | 2027-01-09 | 2027-01-16 | PG-T-CON-EX-AD-AR-10, PG-T-EN-AR-SD-AP-130, PG-T-CON-EX-AD-AR-40 |  |  |  | -41.4d | 0d | COST [250488]; Labor / Helper [24 h]; Electrician [32 h] | 250,488.29 |  | T | DIV-2 | AD | A.D |  |  |  |
| PG-T-CON-EX-AD-AR-30 |  | Installation of Logo | 5d | 2027-01-16 | 2027-01-21 | PG-T-CON-EX-AD-AR-20, PG-T-CON-EX-AD-AR-40 |  |  |  | -41.4d | 0d | COST [3236.4]; Mason [24 h]; Labor / Helper [16 h] | 3,236.4 |  | T | DIV-10 |  |  | Div-10 |  |  |
|  | 3 | **MECHANICAL WORK** |  | 2026-11-03 | 2026-11-30 |  |  |  |  |  |  |  |  |  |  |  |  |  |  |  |  |
| PG-T-CON-EX-AD-ME-10 |  | Installation of Main Air Package Units | 5d | 2026-11-03 | 2026-11-09 | PG-T-PR-LL-SP-DL-50, PG-T-EN-ME-SD-AP-100, PG-T-CON-EX-AD-CL-80, PG-T-PR-LL-SP-DL-50 SS, PG-T-CON-EX-AD-CL-80 FF |  |  |  | -41.4d | 0d | COST [250488]; Labor / Helper [16 h]; Electrician [8 h]; HVAC Technician [32 h] | 250,488.29 |  | T | DIV-2 | AD | A.D |  |  |  |
| PG-T-CON-EX-AD-ME-20 |  | Installation of Backup Air Package Unit | 5d | 2026-11-09 | 2026-11-15 | PG-T-CON-EX-AD-ME-10, PG-T-EN-ME-SD-AP-100 |  |  |  | -41.4d | 0d | COST [208740]; Labor / Helper [16 h]; Electrician [8 h]; HVAC Technician [32 h] | 208,740.24 |  | T | DIV-2 | AD | A.D |  |  |  |
| PG-T-CON-EX-AD-ME-30 |  | Installation of Complete HVAC System | 6d | 2026-11-23 | 2026-11-30 | PG-T-CON-EX-AD-ME-20, PG-T-CON-EX-AD-EL-10, PG-T-EN-ME-SD-AP-100 |  |  |  | -40.4d | 1d | COST [208740]; Labor / Helper [16 h]; HVAC Technician [32 h] | 208,740.24 |  | T | DIV-2 | AD | A.D |  |  |  |
|  | 4 | **ELECTRICAL WORK** |  | 2026-11-15 | 2026-12-23 |  |  |  |  |  |  |  |  |  |  |  |  |  |  |  |  |
| PG-T-CON-EX-AD-EL-10 |  | Installation of Electrical Boxes & MDBs | 7d | 2026-11-15 | 2026-11-23 | PG-T-PR-LL-SP-DL-50, PG-T-EN-EL-SD-AP-120, PG-T-CON-EX-AD-ME-20 |  |  |  | -41.4d | 0d | COST [208740]; Labor / Helper [8 h]; Electrician [32 h] | 208,740.24 |  | T | DIV-2 | AD | A.D |  |  |  |
| PG-T-CON-EX-AD-EL-20 |  | Installation of Lighting System | 7d | 2026-11-23 | 2026-12-01 | PG-T-CON-EX-AD-EL-10, PG-T-EN-EL-SD-AP-120 |  |  |  | -41.4d | 0d | COST [208740]; Electrician [32 h] | 208,740.24 |  | T | DIV-2 | AD | A.D |  |  |  |
| PG-T-CON-EX-AD-EL-30 |  | Electrical Connections to Main Power Source (Excluding kWh Meter) | 5d | 2026-12-01 | 2026-12-07 | PG-T-CON-EX-AD-EL-20, PG-T-CON-EX-AD-ME-30 |  |  |  | -41.4d | 0d | COST [208740]; Labor / Helper [8 h]; Electrician [32 h] | 208,740.24 |  | T | DIV-2 | AD | A.D |  |  |  |
| PG-T-CON-EX-AD-EL-40 |  | Installation of Backup Generator | 6d | 2026-12-07 | 2026-12-14 | PG-T-CON-EX-AD-EL-30, PG-T-EN-EL-SD-AP-130 |  |  |  | -41.4d | 0d | COST [208740]; Labor / Helper [24 h]; Electrician [24 h] | 208,740.24 |  | T | DIV-2 | AD | A.D |  |  |  |
| PG-T-CON-EX-AD-EL-50 |  | Installation of Smart Dome System | 8d | 2026-12-14 | 2026-12-23 | PG-T-CON-EX-AD-EL-40, PG-T-EN-EL-SD-AP-140 |  |  |  | -41.4d | 0d | COST [250488]; Labor / Helper [24 h]; Electrician [8 h]; ELV Technician [16 h] | 250,488.29 |  | T | DIV-2 | AD | A.D |  |  |  |
|  | B | **TOILET BUILDING WORKS** |  | 2026-05-12 | 2026-10-13 |  |  |  |  |  |  |  |  |  |  |  |  |  |  |  |  |
|  | CVL | **CIVIL WORK** |  | 2026-05-12 | 2026-10-12 |  |  |  |  |  |  |  |  |  |  |  |  |  |  |  |  |
|  | ST | **STRUCTURAL WORK** |  | 2026-05-12 | 2026-08-12 |  |  |  |  |  |  |  |  |  |  |  |  |  |  |  |  |
| PG-T-CON-B-STR-10 |  | Excavation up to bottom of footing | 2d | 2026-05-12 A | 2026-05-13 A | PG-T-EN-ST-SD-AP-70, PG-Q-MOB-CAM-40 | 100% |  |  |  |  | COST [1900.8]; Dump Truck [32 h]; Excavator [8 h]; Site Engineer [4 h]; Labor / Helper [32 h]; Surveyor [8 h]; Excavator Operator [8 h]; Dump Truck Driver [32 h]; Safety Officer [8 h] | 1,900.8 | 1,900.8 | T | DIV-3 |  |  |  | Div-3 |  |
| PG-T-CON-B-STR-20 |  | Anti-termite treatment and Polyethene Sheet | 2d | 2026-05-12 A | 2026-05-13 A | PG-T-CON-B-STR-10 | 100% |  |  |  |  | COST [3294]; Mason [16 h]; Labor / Helper [16 h] | 3,294 | 3,294 | T | DIV-7 |  |  |  |  | Div-07 |
| PG-T-CON-B-STR-30 |  | Backfilling with selected fill material (under footing) | 1d | 2026-05-13 A | 2026-05-13 A | PG-T-CON-B-STR-20, PG-T-PR-SL-LS-DL-10 | 100% |  |  |  |  | COST [1900.8]; Roller [8 h]; Loader [8 h]; Site Engineer [4 h]; Mason [16 h]; Surveyor [4 h]; Loader Operator [8 h]; Roller Operator [8 h] | 1,900.8 | 1,900.8 | T | DIV-3 |  |  |  | Div-3 |  |
| PG-T-CON-B-STR-40 |  | Raft Foundation Work | 27d | 2026-05-13 A | 2026-06-17 A | PG-T-CON-B-STR-30, PG-T-EN-ST-SD-AP-80, PG-T-PR-SL-CO-DL-10, PG-T-PR-SL-CO-DL-20 | 100% |  |  |  |  | COST [2534.4]; Labor / Helper [32 h]; Carpenter [16 h]; Steel Fixer [16 h] | 2,534.4 | 2,534.4 | T | DIV-3 |  |  |  | Div-3 |  |
| PG-T-CON-B-STR-50 |  | Autoclaved aerated panel (walls) | 9d | 2026-07-07 A | 2026-07-09 A | PG-T-CON-B-STR-40, PG-T-PR-LL-CO-DL-10_R | 100% | 2026-07-12 | 2026-07-21 |  |  | COST [11340]; Mason [32 h]; Labor / Helper [16 h] | 11,340 | 11,340 | T | DIV-3 |  |  |  | Div-3 |  |
| PG-T-CON-B-STR-60 |  | Autoclaved aerated panel (ceiling) | 9d | 2026-07-09 A | 2026-07-31 A | PG-T-CON-B-STR-50, PG-T-PR-LL-CO-DL-10_R | 100% | 2026-07-12 | 2026-07-21 |  |  | COST [8505]; Mason [32 h]; Labor / Helper [16 h] | 8,505 | 8,505 | T | DIV-3 |  |  |  | Div-3 |  |
| PG-T-CON-B-STR-70 |  | Autoclaved aerated panel (parapet) | 4d | 2026-07-11 A | 2026-08-12 A | PG-T-PR-LL-CO-DL-10_R, PG-T-CON-B-STR-60 SS | 100% | 2026-07-20 | 2026-07-25 |  |  | COST [8505]; Mason [32 h]; Labor / Helper [16 h] | 8,505 | 8,505 | T | DIV-3 |  |  |  | Div-3 |  |

| ID | WBS | Activity | Duration | Start | Finish | Predecessors | Complete | Remaining | Planned start | Planned finish | Total float | Free float | Resources | Cost | Actual cost | H,Q,T-Location | BOQ DIVISION | DIVISION-4 MASONRY | DIVISION 9-FINISHES | DIVISION 8- DOORS & WINDOWS | DIVISION 10-SPECIALTIES | DIVISION 07-THERMAL & MOISTURE PROTECTIO | DIVISION 15-MECHANICAL WORKS | DIVISION-5-METALS |
| --- | --- | --- | --- | --- | --- | --- | --- | --- | --- | --- | --- | --- | --- | --- | --- | --- | --- | --- | --- | --- | --- | --- | --- | --- |
|  | AR | **ARCHITECTURAL WORK** |  | 2026-08-01 | 2026-10-12 |  |  |  |  |  |  |  |  |  |  |  |  |  |  |  |  |  |  |  |
|  | 1 | **GENERAL FINISHES** |  | 2026-08-01 | 2026-09-07 |  |  |  |  |  |  |  |  |  |  |  |  |  |  |  |  |  |  |  |
| PG-T-CON-B-AR-GF-10 |  | Block Works | 6d | 2026-08-01 A | 2026-08-06 A | PG-T-EN-AR-SD-AP-10, PG-T-EN-AR-SD-AP-40, PG-T-PR-SL-CO-DL-40, PG-T-CON-B-STR-70 SS | 100% |  | 2026-08-02 | 2026-08-09 |  |  | COST [2484]; Mason [32 h]; Labor / Helper [16 h] | 2,484 | 2,484 | T | DIV-4 | Div-4 |  |  |  |  |  |  |
| PG-T-CON-B-AR-GF-20 |  | Plaster | 7d | 2026-08-06 A | 2026-08-07 A | PG-T-CON-B-AR-GF-10, PG-T-CON-B-GF-EL-10, PG-T-PR-SL-AR-DL-40, PG-T-PR-SL-EL-DL-10 | 100% |  | 2026-08-31 | 2026-09-07 |  |  | COST [4427.4]; Mason [32 h]; Labor / Helper [16 h] | 4,427.4 | 4,427.4 | T | DIV-9 |  | Div-9.2 |  |  |  |  |  |
| PG-T-CON-B-AR-GF-30 |  | False Ceiling Installation & Finishing | 8d | 2026-08-20 A | 2026-09-07 A | PG-T-CON-B-AR-GF-20, PG-T-CON-B-GF-DR-20_R, PG-T-EN-AR-SD-AP-60, PG-T-PR-SL-AR-DL-90, PG-T-PR-SL-EL-DL-10_R, PG-T-PR-SL-EL-DL-10_R FF | 100% |  | 2026-09-14 | 2026-09-22 |  |  | COST [873.6]; Labor / Helper [16 h]; Applicator [16 h]; Ceiling Installer [16 h] | 873.6 | 873.6 | T | DIV-9 |  | Div-9.3 |  |  |  |  |  |
| PG-T-CON-B-AR-GF-40 |  | Wall Paint | 10d | 2026-08-20 A | 2026-09-07 A | PG-T-CON-B-AR-GF-30, PG-T-PR-SL-AR-DL-50, PG-T-CON-B-GF-EL-20, PG-T-CON-B-AR-GF-30 SS, PG-T-CON-B-GF-EL-20 SS | 100% |  | 2026-09-30 | 2026-10-12 |  |  | COST [2958]; Spray Machine [32 h]; Labor / Helper [16 h]; Painter [32 h] | 2,958 | 2,958 | T | DIV-9 |  | Div-9.3 |  |  |  |  |  |
| PG-T-CON-B-AR-GF-50 |  | Epoxy Flooring | 7d | 2026-08-20 A | 2026-09-07 A | PG-T-CON-B-AR-GF-40, PG-T-EN-AR-SD-AP-50, PG-T-PR-SL-AR-DL-30, PG-T-CON-B-AR-GF-40 SS | 100% |  | 2026-10-12 | 2026-10-20 |  |  | COST [273.6]; Labor / Helper [16 h]; Applicator [40 h] | 273.6 | 273.6 | T | DIV-9 |  | Div-9.1 |  |  |  |  |  |
| PG-T-CON-B-AR-GF-80 |  | Facade Finishing Work | 9d | 2026-08-20 A | 2026-09-07 A | PG-T-EN-AR-SD-AP-90, PG-T-EN-AR-SD-AP-100, PG-T-PR-LL-MT-DL-20_R, PG-T-PR-SL-AR-DL-60, PG-T-CON-B-AR-GF-50, PG-T-PR-LL-MT-DL-20_R FF, PG-T-CON-B-AR-GF-50 SS | 100% |  | 2026-10-20 | 2026-10-31 |  |  | COST [52278]; Labor / Helper [16 h]; Facade Technician [32 h] | 52,278 | 52,278 | T | DIV-9 |  | Div-9.2 |  |  |  |  |  |
| PG-T-CON-B-AR-GF-60 |  | Install Doors & Windows | 4d | 2026-08-27 A | 2026-09-07 A | PG-T-CON-B-AR-GF-50, PG-T-EN-AR-SD-AP-30, PG-T-EN-AR-SD-AP-80, PG-T-EN-AR-SD-AP-40, PG-T-PR-LL-MT-DL-10_R, PG-T-CON-B-AR-GF-50 SS, PG-T-PR-LL-MT-DL-10_R SS | 100% |  | 2026-10-12 | 2026-10-15 |  |  | COST [13273.8]; Labor / Helper [16 h]; Carpenter [16 h] | 13,273.8 | 13,273.8 | T | DIV-8 |  |  | Div-8.1 |  |  |  |  |
| PG-T-CON-B-AR-GF-70 |  | Lockers and Furniture Installation | 2d | 2026-08-27 A | 2026-09-07 A | PG-T-CON-B-AR-GF-60, PG-T-CON-B-AR-GF-80, PG-T-CON-B-AR-GF-60 SS, PG-T-CON-B-AR-GF-80 SS | 100% |  | 2026-10-17 | 2026-10-18 |  |  | COST [7551.6]; Labor / Helper [16 h]; Carpenter [32 h] | 7,551.6 | 7,551.6 | T | DIV-10 |  |  |  | Div-10 |  |  |  |
|  | 2 | **WET AREA FINISHES** |  | 2026-08-06 | 2026-10-11 |  |  |  |  |  |  |  |  |  |  |  |  |  |  |  |  |  |  |  |
| PG-T-CON-B-AR-WF-20 |  | Wall Tiles and Partition Work | 3d | 2026-08-06 A | 2026-08-14 A | PG-T-EN-AR-SD-AP-70, PG-T-EN-AR-SD-AP-30, PG-T-PR-SL-AR-DL-10, PG-T-PR-SL-AR-DL-70, PG-T-PR-SL-AR-DL-80, PG-T-CON-B-GF-WS-20, PG-T-CON-B-AR-WF-10 FF, PG-T-CON-B-AR-GF-40 FF, PG-T-EN-AR-SD-AP-60, PG-T-PR-SL-AR-DL-50 | 100% |  | 2026-10-11 | 2026-10-13 |  |  | COST [21283.2]; Mason [16 h]; Labor / Helper [16 h]; Tile Fixer [16 h] | 21,283.2 | 21,283.2 | T | DIV-9 |  | Div-9.2 |  |  |  |  |  |
| PG-T-CON-B-AR-WF-30 |  | Waterproofing on Floor | 2d | 2026-08-14 A | 2026-09-10 A | PG-T-EN-AR-SD-AP-50, PG-T-PR-SL-CO-DL-30, PG-T-PR-SL-AR-DL-110, PG-T-CON-B-AR-WF-20 SS | 100% |  | 2026-10-18 | 2026-10-20 |  |  | COST [5784]; Labor / Helper [16 h]; Applicator [16 h] | 5,784 | 5,784 | T | DIV-7 |  |  |  |  | Div-07 |  |  |
| PG-T-CON-B-AR-WF-40 |  | Floor Tiles Works | 3d | 2026-08-14 A | 2026-09-10 A | PG-T-CON-B-AR-WF-30, PG-T-PR-SL-AR-DL-20, PG-T-CON-B-AR-WF-30 SS | 100% |  | 2026-10-13 | 2026-10-17 |  |  | COST [6489]; Labor / Helper [16 h]; Tile Fixer [16 h] | 6,489 | 6,489 | T | DIV-9 |  | Div-9.1 |  |  |  |  |  |
| PG-T-CON-B-AR-WF-10 |  | False Ceiling Installation & Finishing | 4d | 2026-08-20 A | 2026-09-10 A | PG-T-CON-B-AR-GF-30 SS, PG-T-EN-AR-SD-AP-60, PG-T-PR-SL-AR-DL-90 | 100% |  | 2026-09-06 | 2026-09-10 |  |  | COST [2898]; Labor / Helper [16 h]; Applicator [16 h]; Ceiling Installer [16 h] | 2,898 | 2,898 | T | DIV-9 |  | Div-9.3 |  |  |  |  |  |
| PG-T-CON-B-AR-WF-50 |  | Toliet accessories Installation Works | 3d | 2026-08-20 A | 2026-09-10 A | PG-T-CON-B-AR-WF-40, PG-T-EN-AR-SD-AP-70, PG-T-PR-SL-AR-DL-100, PG-T-CON-B-AR-WF-10, PG-T-CON-B-AR-GF-40, PG-T-CON-B-AR-WF-40 SS, PG-T-CON-B-AR-WF-10 SS, PG-T-CON-B-AR-GF-40 SS | 100% |  | 2026-10-12 | 2026-10-15 |  |  | COST [39308]; Labor / Helper [8 h]; Plumber [16 h] | 39,307.98 | 39,307.98 | T | DIV-15 |  |  |  |  |  | Div15.3 |  |
| PG-T-CON-B-AR-WF-60 |  | Install Doors | 2d | 2026-09-23 A | 2026-10-11 | PG-T-EN-AR-SD-AP-30, PG-T-EN-AR-SD-AP-80, PG-T-EN-AR-SD-AP-40, PG-T-PR-LL-MT-DL-10_R, PG-T-CON-B-AR-WF-40 | 50% | 1d | 2026-10-13 | 2026-10-15 | 32.9d | 36.15d | COST [5361.6]; Labor / Helper [16 h]; Carpenter [16 h] | 5,361.6 | 2,680.8 | T | DIV-9 |  | Div-9.2 |  |  |  |  |  |
|  | 3 | **ROOF FINISHES** |  | 2026-08-14 | 2026-10-12 |  |  |  |  |  |  |  |  |  |  |  |  |  |  |  |  |  |  |  |
| PG-T-CON-B-AR-RF-10 |  | Waterproofing on Floor | 7d | 2026-08-14 A | 2026-09-12 A | PG-T-CON-B-AR-WF-30, PG-T-EN-AR-SD-AP-20, PG-T-PR-SL-CO-DL-30, PG-T-PR-SL-AR-DL-110, PG-T-CON-B-AR-WF-30 SS | 100% |  | 2026-10-13 | 2026-10-21 |  |  | COST [4158]; Labor / Helper [16 h]; Applicator [16 h] | 4,158 | 4,158 | T | DIV-7 |  |  |  |  | Div-07 |  |  |
| PG-T-CON-B-AR-RF-20 |  | Epoxy Flooring and Finishes | 7d | 2026-08-20 A | 2026-09-12 A | PG-T-CON-B-AR-RF-10, PG-T-PR-SL-AR-DL-30, PG-T-CON-B-AR-RF-10 SS | 100% |  | 2026-08-27 | 2026-09-05 |  |  | COST [10158]; Labor / Helper [16 h]; Applicator [40 h] | 10,158 | 10,158 | T | DIV-7 |  |  |  |  | Div-07 |  |  |
| PG-T-CON-B-AR-RF-30 |  | Steel ladder and Steel roof scupper Installation | 3d | 2026-09-19 A | 2026-10-12 | PG-T-CON-B-AR-RF-20, PG-T-PR-SL-MT-DL-10_R, PG-T-PR-SL-MT-DL-20_R, PG-T-PR-SL-MT-DL-30_R, PG-T-CON-B-AR-GF-70 FF | 35% | 1.95d | 2026-10-10 | 2026-10-13 | 31.95d | 0d | COST [9577.8]; Labor / Helper [16 h]; Mechanical Technician [32 h] | 9,577.8 | 3,352.23 | T | DIV-5 |  |  |  |  |  |  | Div-5 |
|  | MEP | **MEP WORK** |  | 2026-06-16 | 2026-10-13 |  |  |  |  |  |  |  |  |  |  |  |  |  |  |  |  |  |  |  |
|  | MEC | **MECANICAL WORKS** |  | 2026-06-16 | 2026-10-13 |  |  |  |  |  |  |  |  |  |  |  |  |  |  |  |  |  |  |  |
|  | FF | **FIRE FIGHTING SYSTEM** |  | 2026-09-23 | 2026-10-13 |  |  |  |  |  |  |  |  |  |  |  |  |  |  |  |  |  |  |  |
| PG-T-CON-B-GF-FF-10 |  | Fire Extinguisher Installation | 2d | 2026-09-23 A | 2026-10-13 | PG-T-PR-SL-FF-DL-10_R, PG-T-CON-B-AR-RF-30 | 30% | 1.4d | 2026-10-13 | 2026-10-15 | 33.75d | 33.8d | COST [136.26]; Labor / Helper [16 h]; Mechanical Technician [16 h] | 136.26 | 40.88 | T | DIV-15 |  |  |  |  |  | Div15.1 |  |

| ID | WBS | Activity | Duration | Start | Finish | Predecessors | Complete | Remaining | Planned start | Planned finish | Total float | Free float | Resources | Cost | Actual cost | H,Q,T-Location | BOQ DIVISION | DIVISION 15-MECHANICAL WORKS | DIVISION 16 ELECTRICAL WORKS | DIVISION-02-SITE WORKS | Air Dome |
| --- | --- | --- | --- | --- | --- | --- | --- | --- | --- | --- | --- | --- | --- | --- | --- | --- | --- | --- | --- | --- | --- |
|  | DS | **SEWER AND DRAINAGE SYSTEM** |  | 2026-06-16 | 2026-10-10 |  |  |  |  |  |  |  |  |  |  |  |  |  |  |  |  |
| PG-T-CON-B-GF-DR-10 |  | Sewer and Drainge System Main Lines Installation(Completed) | 8d | 2026-06-16 A | 2026-06-24 A | PG-T-EN-ME-SD-AP-50, PG-T-PR-SL-PB-DL-20 | 100% |  |  |  |  |  | COST [967.72]; Plumber [9.6 h]; Fitter [4.8 h] | 967.72 | 967.72 | T | DIV-15 | Div15.3 |  |  |  |
| PG-T-CON-B-GF-DR-20 |  | Sewer and Drainge System Pipes and fittings Installation(Completed) | 8d | 2026-06-16 A | 2026-06-24 A | PG-T-EN-ME-SD-AP-60, PG-T-EN-ME-SD-AP-70, PG-T-PR-SL-PB-DL-20, PG-T-PR-SL-PB-DL-30, PG-T-CON-B-GF-DR-10 SS | 100% |  |  |  |  |  | COST [1451.57]; Plumber [9.6 h]; Fitter [4.8 h] | 1,451.57 | 1,451.57 | T | DIV-15 | Div15.3 |  |  |  |
| PG-T-CON-B-GF-DR-10_R |  | Sewer and Drainge System Main Lines Installation(Remaining) | 1.4d | 2026-07-23 A | 2026-09-10 A | PG-T-CON-B-GF-WS-10 FF, PG-T-EN-ME-SD-AP-50, PG-T-PR-SL-PB-DL-20, PG-T-CON-B-GF-DR-10 | 100% |  | 2026-08-08 | 2026-08-09 |  |  | COST [2258]; Plumber [22.4 h]; Fitter [11.2 h] | 2,258 | 2,258 | T | DIV-15 | Div15.3 |  |  |  |
| PG-T-CON-B-GF-DR-20_R |  | Sewer and Drainge System Pipes and fittings Installation(Remaining) | 1.4d | 2026-07-23 A | 2026-07-31 A | PG-T-CON-B-GF-WS-20 FF, PG-T-EN-ME-SD-AP-60, PG-T-EN-ME-SD-AP-70, PG-T-PR-SL-PB-DL-20, PG-T-PR-SL-PB-DL-30, PG-T-CON-B-GF-DR-10_R SS, PG-T-CON-B-GF-DR-20 | 100% |  | 2026-08-10 | 2026-08-11 |  |  | COST [3387.01]; Plumber [22.4 h]; Fitter [11.2 h] | 3,387.01 | 3,387.01 | T | DIV-15 | Div15.3 |  |  |  |
| PG-T-CON-B-GF-DR-30 |  | Sanitaryware Installation (Final Fix) | 2d | 2026-09-23 A | 2026-10-10 | PG-T-CON-B-GF-DR-20_R, PG-T-CON-B-GF-WS-30, PG-T-EN-ME-SD-AP-70 | 50% | 1d | 2026-09-30 | 2026-10-01 | 31.95d | 0d | COST [3225.72]; Plumber [32 h]; Fitter [16 h] | 3,225.72 | 1,612.86 | T | DIV-15 | Div15.3 |  |  |  |
|  | HV | **HVAC SYSTEM** |  | 2026-08-13 | 2026-10-11 |  |  |  |  |  |  |  |  |  |  |  |  |  |  |  |  |
| PG-T-CON-B-GF-AC-10 |  | Duct Work and Exhaust Fan Installation | 3d | 2026-08-13 A | 2026-08-20 A | PG-T-CON-B-AR-GF-10, PG-T-PR-SL-AC-DL-20, PG-T-PR-SL-AC-DL-40 | 100% |  | 2026-08-23 | 2026-08-25 |  |  | COST [4442.4]; Labor / Helper [16 h]; HVAC Technician [32 h] | 4,442.4 | 4,442.4 | T | DIV-15 | Div15.4 |  |  |  |
| PG-T-CON-B-GF-AC-20 |  | Split AC, Grills & Diffuser Installation | 2d | 2026-09-20 A | 2026-10-11 | PG-T-CON-B-GF-AC-10, PG-T-CON-B-AR-GF-20, PG-T-PR-SL-AC-DL-10, PG-T-PR-SL-AC-DL-30, PG-T-CON-B-AR-WF-40 | 35% | 1.3d | 2026-10-10 | 2026-10-11 | 35.8d | 35.85d | COST [7684.8]; Labor / Helper [16 h]; HVAC Technician [32 h] | 7,684.8 | 2,689.68 | T | DIV-15 | Div15.4 |  |  |  |
|  | WS | **WATER SUPPLY SYSTEM** |  | 2026-07-22 | 2026-10-08 |  |  |  |  |  |  |  |  |  |  |  |  |  |  |  |  |
| PG-T-CON-B-GF-WS-10 |  | Water Supply Main Lines Installation | 2d | 2026-07-22 A | 2026-09-10 A | PG-T-EN-ME-SD-AP-10, PG-T-PR-SL-PB-DL-10, PG-T-CON-B-GF-AC-10 FF | 100% |  | 2026-08-06 | 2026-08-09 |  |  | COST [5702.4]; Plumber [32 h]; Fitter [16 h] | 5,702.4 | 5,702.4 | T | DIV-15 | Div15.2 |  |  |  |
| PG-T-CON-B-GF-WS-20 |  | Water Supply Pipes Installation (Cold and Hot Water) | 2d | 2026-07-23 A | 2026-07-30 A | PG-T-EN-ME-SD-AP-10, PG-T-PR-SL-PB-DL-10, PG-T-CON-B-GF-WS-10 SS | 100% |  | 2026-08-09 | 2026-08-11 |  |  | COST [13857.6]; Plumber [32 h]; Fitter [16 h] | 13,857.6 | 13,857.6 | T | DIV-15 | Div15.2 |  |  |  |
| PG-T-CON-B-GF-WS-30 |  | Water Supply Accesories and Booster pump Installation | 3d | 2026-09-23 A | 2026-10-08 | PG-T-CON-B-GF-WS-20, PG-T-CON-B-AR-WF-10, PG-T-EN-ME-SD-AP-20, PG-T-EN-ME-SD-AP-30, PG-T-PR-LL-PB-DL-10_R | 50% | 1.5d | 2026-09-27 | 2026-09-29 | 31.95d | 0d | COST [36366]; Labor / Helper [16 h]; Plumber [8 h]; Electrician [8 h] | 36,366 | 18,183 | T | DIV-15 | Div15.2 |  |  |  |
|  | ELC | **ELECTRICAL WORKS** |  | 2026-07-22 | 2026-09-16 |  |  |  |  |  |  |  |  |  |  |  |  |  |  |  |  |
| PG-T-CON-B-GF-EL-10 |  | Pipes & Conduits Installation | 3d | 2026-07-22 A | 2026-07-23 A | PG-T-CON-B-GF-DR-10_R SS, PG-T-PR-SL-EL-DL-10 | 100% |  | 2026-08-17 | 2026-08-19 |  |  | COST [1983.6]; Labor / Helper [16 h]; Electrician [32 h] | 1,983.6 | 1,983.6 | T | DIV-16 |  | Div16.1 |  |  |
| PG-T-CON-B-GF-EL-20 |  | Electrical & ELV Wiring Works | 3d | 2026-08-20 A | 2026-09-16 A | PG-T-CON-B-GF-EL-40, PG-T-CON-B-GF-EL-40 SS | 100% |  | 2026-09-27 | 2026-09-30 |  |  | COST [1983.6]; Labor / Helper [16 h]; Electrician [16 h]; ELV Technician [16 h] | 1,983.6 | 1,983.6 | T | DIV-16 |  | Div16.1 |  |  |
| PG-T-CON-B-GF-EL-30 |  | Fire Alarm Devices Installation | 3d | 2026-08-20 A | 2026-09-16 A | PG-T-CON-B-GF-EL-50, PG-T-CON-B-GF-EL-50 SS | 100% |  | 2026-09-19 | 2026-09-22 |  |  | COST [1983.6]; Labor / Helper [16 h]; Mechanical Technician [16 h] | 1,983.6 | 1,983.6 | T | DIV-16 |  | Div16.8 |  |  |
| PG-T-CON-B-GF-EL-40 |  | Telecom & CCTV Devices Installation | 3d | 2026-08-20 A | 2026-09-16 A | PG-T-CON-B-GF-EL-30, PG-T-CON-B-GF-EL-30 SS | 100% |  | 2026-09-22 | 2026-09-27 |  |  | COST [4959]; Labor / Helper [16 h]; Electrician [8 h]; ELV Technician [16 h] | 4,959 | 4,959 | T | DIV-16 |  | Div16.4 |  |  |
| PG-T-CON-B-GF-EL-50 |  | Electrical Light Fixtures Installation | 2d | 2026-08-20 A | 2026-09-16 A | PG-T-CON-B-GF-DR-30, PG-T-PR-LL-EL-DL-40_R, PG-T-CON-B-GF-DR-30 FF, PG-T-PR-LL-EL-DL-40_R SS | 100% |  | 2026-09-16 | 2026-09-19 |  |  | COST [7337.52]; Labor / Helper [8 h]; Electrician [32 h] | 7,337.52 | 7,337.52 | T | DIV-16 |  | Div16.3 |  |  |
|  | TE & CO | **PROJECT CLOSOUT** |  | 2026-05-25 | 2027-02-03 |  |  |  |  |  |  |  |  |  |  |  |  |  |  |  |  |
| PG-T-PCL-10 |  | Testing, Commessioning for All Systems(Completed) | 23d | 2026-05-25 A | 2026-06-24 A | PG-T-CON-EX-LS-SS-20 SS | 100% |  |  |  |  |  | COST [34073.4]; Site Engineer [3.2 h]; Electrician [1.6 h]; HVAC Technician [1.6 h]; ELV Technician [1.6 h]; Mechanical Technician [1.6 h]; Safety Officer [1.6 h] | 34,073.4 | 34,073.4 | T | Closing |  |  |  |  |
| PG-T-PCL-10_R |  | Testing, Commessioning for All Systems(Remaining) | 10.8d | 2026-08-06 A | 2027-01-21 | PG-T-CON-B-GF-EL-20 FF, PG-T-CON-B-GF-WS-30 FF, PG-T-CON-B-GF-AC-20 FF, PG-T-CON-B-GF-DR-30 FF, PG-T-CON-B-GF-FF-10 FF, PG-T-CON-EX-AD-AR-30 FF, PG-T-CON-EX-AD-EL-50 FF, PG-T-CON-EX-AD-ME-30 FF, PG-T-CON-EX-LS-SS-20_R SS, PG-T-PCL-10 | 50% | 5.4d | 2026-08-06 | 2026-08-18 | -41.4d | 0d | COST [306661]; Site Engineer [28.8 h]; Electrician [14.4 h]; HVAC Technician [14.4 h]; ELV Technician [14.4 h]; Mechanical Technician [14.4 h]; Safety Officer [14.4 h] | 306,660.63 | 153,330.31 | T | Closing |  |  |  |  |
| PG-T-PCL-20 |  | As-Built Drawings | 15d | 2026-09-23 A | 2027-01-28 | PG-T-PCL-10_R SS | 20% | 12d | 2026-12-31 | 2027-01-18 | -39d | 2.4d | COST [113578] | 113,578.01 | 22,715.6 | T | Closing |  |  |  |  |
| PG-T-PCL-30 |  | Snag list Submission | 2d | 2027-01-21 | 2027-01-24 | PG-T-PCL-10_R, PG-T-CON-EX-AD-AR-30 |  |  |  |  | -41.4d | 0d | COST [227156]; Site Engineer [32 h]; Mason [16 h]; Labor / Helper [32 h]; Applicator [16 h]; Painter [16 h]; Safety Officer [16 h]; Concrete Mason [8 h] | 227,156.02 |  | T | Closing |  |  | AD | A.D |
| PG-T-PCL-40 |  | Snag list Closeout | 7d | 2027-01-24 | 2027-02-01 | PG-T-PCL-30, PG-T-PCL-20 FF |  |  |  |  | -41.4d | 0d | COST [227156]; Site Engineer [32 h]; Mason [16 h]; Labor / Helper [32 h]; Applicator [16 h]; Painter [16 h]; Safety Officer [16 h]; Concrete Mason [8 h] | 227,156.02 |  | T | Closing |  |  | AD | A.D |
| PG-T-PCL-50 |  | Issuing Approvals | 1d | 2027-02-01 | 2027-02-02 | PG-T-PCL-40, PG-T-PCL-20 |  |  |  |  | -41.4d | 0d | COST [113578] | 113,578.01 |  | T | Closing |  |  | AD | A.D |
| PG-T-PCL-60 |  | Handing Over | 1d | 2027-02-02 | 2027-02-03 | PG-T-PCL-50 |  |  |  |  | -41.4d | 0d | COST [113578] | 113,578.01 |  | T | Closing |  |  |  |  |

## Activity codes

| Code | Value | Meaning |
| --- | --- | --- |
| Air Dome | A.D | Aire Dome |
| BOQ DIVISION | Closing | Project Closeout |
| BOQ DIVISION | DIV-10 | DIVISION10-SPECIALTIES |
| BOQ DIVISION | DIV-15 | DIVISION15-MECHANICAL WORKS |
| BOQ DIVISION | DIV-16 | DIVISION16-ELECTRICAL WORKS |
| BOQ DIVISION | DIV-2 | DIVISION2-SITE WORK |
| BOQ DIVISION | DIV-3 | DIVISION3-CONCRETE |
| BOQ DIVISION | DIV-4 | DIVISION4-MASONRY |
| BOQ DIVISION | DIV-5 | DIVISION5-METALS |
| BOQ DIVISION | DIV-7 | DIVISION7-THERMAL MOISTURE PROTECTION |
| BOQ DIVISION | DIV-8 | DIVISION8-DOOR & WINDOWS |
| BOQ DIVISION | DIV-9 | DIVISION9-FINISHES |
| DIVISION 07-THERMAL & MOISTURE PROTECTIO | Div-07 | Thermal &Moisture Protection |
| DIVISION 10-SPECIALTIES | Div-10 | Specialties |
| DIVISION 15-MECHANICAL WORKS | Div15.1 | Fire Protection System |
| DIVISION 15-MECHANICAL WORKS | Div15.2 | water supply system |
| DIVISION 15-MECHANICAL WORKS | Div15.3 | Sewer & Drainage system |
| DIVISION 15-MECHANICAL WORKS | Div15.4 | HVAC |
| DIVISION 15-MECHANICAL WORKS | Div15.5 | Irrigation System |
| DIVISION 16 ELECTRICAL WORKS | Div16.1 | Lighting and panel Boards |
| DIVISION 16 ELECTRICAL WORKS | Div16.2 | Site Lighting Poles |
| DIVISION 16 ELECTRICAL WORKS | Div16.3 | Lighting Fixtures |
| DIVISION 16 ELECTRICAL WORKS | Div16.4 | Telecommunication & Data System |
| DIVISION 16 ELECTRICAL WORKS | Div16.5 | Security & Access Control System |
| DIVISION 16 ELECTRICAL WORKS | Div16.6 | Grounding System |
| DIVISION 16 ELECTRICAL WORKS | Div16.7 | Light Protection System |
| DIVISION 16 ELECTRICAL WORKS | Div16.8 | Fire Alarm System |
| DIVISION 16 ELECTRICAL WORKS | Div16.9 | Wiring Devices |
| DIVISION 8- DOORS & WINDOWS | Div-8.1 | Doors |
| DIVISION 8- DOORS & WINDOWS | Div-8.2 | Windows |
| DIVISION 9-FINISHES | Div-9.1 | Floor Finishes |
| DIVISION 9-FINISHES | Div-9.2 | Wall Finishes |
| DIVISION 9-FINISHES | Div-9.3 | Ceiling Finishes |
| DIVISION-02-SITE WORKS | AD | Air Dome |
| DIVISION-02-SITE WORKS | Div-2.1 | Earthwork |
| DIVISION-02-SITE WORKS | Div-2.2 | Parking |
| DIVISION-02-SITE WORKS | Div-2.3 | Landscape works |
| DIVISION-3 CONCRETE | Div-3 | Concrete |
| DIVISION-4 MASONRY | Div-4 | Masonry |
| DIVISION-5-METALS | Div-5 | Metal |
| H,Q,T-Location | H | Hail |
| H,Q,T-Location | Q | Qassim |
| H,Q,T-Location | T | Tabuk |
