# Project:PASSENGER STATION FOR SAR RAILWAY - PACKAGE 1 SUDAIR

Schedule from Primavera P6, 2026-04-07 to 2027-08-06, data date 2026-04-07, costs in SAR.
Must finish by 2027-08-06

## Calendars

- 6x10 Sudair Station: Mon-Thu 07:00-12:00, 13:00-18:00; Fri off; Sat-Sun 07:00-12:00, 13:00-18:00. Exceptions (off unless hours are given): 2026-05-27 to 2026-05-28, 2026-05-30 to 2026-05-31, 2026-09-23, 2027-02-08 09:00-15:00, 2027-02-09 to 2027-02-11 09:00-12:00, 13:00-16:00, 2027-02-13 to 2027-02-18 09:00-12:00, 13:00-16:00, 2027-02-20 to 2027-02-21 09:00-12:00, 13:00-16:00, 2027-02-22, 2027-02-23 to 2027-02-25 09:00-12:00, 13:00-16:00, 2027-02-27 to 2027-03-04 09:00-12:00, 13:00-16:00, 2027-03-06 to 2027-03-07 09:00-12:00, 13:00-16:00, 2027-03-09 to 2027-03-11, 2027-03-13, 2027-05-16 to 2027-05-20, 2027-08-06 07:00-17:00.
- 5x10 Sudair Station: Mon-Fri 07:00-12:00, 13:00-18:00; Sat-Sun off. Exceptions (off unless hours are given): 2026-05-27 to 2026-05-29, 2026-09-23, 2027-02-08 09:00-15:00, 2027-02-09 to 2027-02-12 09:00-12:00, 13:00-16:00, 2027-02-15 to 2027-02-19 09:00-12:00, 13:00-16:00, 2027-02-22, 2027-02-23 to 2027-02-26 09:00-12:00, 13:00-16:00, 2027-03-01 to 2027-03-05 09:00-12:00, 13:00-16:00, 2027-03-09 to 2027-03-12, 2027-05-17 to 2027-05-20.
- 7x10 Sudair Station: Mon-Sun 05:00-12:00, 16:00-19:00. Exceptions (off unless hours are given): 2026-05-27 to 2026-05-30, 2026-09-23, 2027-02-08 to 2027-02-21 07:00-12:00, 16:00-17:00, 2027-02-22, 2027-02-23 to 2027-03-07 07:00-12:00, 16:00-17:00, 2027-03-09 to 2027-03-13, 2027-05-16 to 2027-05-20.
- TDEC 7x10: Mon-Sun 07:00-17:00.

## Resources

| Resource | Group | Rate |
| --- | --- | --- |
| charpenter | labor |  |
| SIC- Cost | material | 1 |
| Supervisor | labor |  |
| Mason | labor |  |
| Mason Helper | labor |  |
| Surveyor | labor |  |
| Helper | labor |  |
| Painter | labor |  |
| Electrical Technician | labor |  |
| Electrical Helper | labor |  |
| Steel Structure Subcontractor | labor |  |
| Metal Fabricator | labor |  |
| Mobilzation Team | labor |  |
| Safety Engineer | labor |  |
| QA/QC Engineer | labor |  |
| Project Controls Manager | labor |  |
| Project Manager | labor |  |
| Planning Engineer | labor |  |
| Mechanical Drafman | labor |  |
| Design Engineer | labor |  |
| Project Coordinator | labor |  |
| Pipe Fitter | labor |  |
| Labor | labor |  |
| Excavator | equipment |  |
| Excavator Operator | labor |  |
| Loader | equipment |  |
| Dumper Operator | labor |  |
| Dumper Truck | equipment |  |
| Grader | equipment |  |
| Grader Operator | labor |  |
| Loader Operator | labor |  |
| Un-Skilled Labor | labor |  |
| Supervisor | labor |  |
| Skilled Labor | labor |  |
| Surveyor | labor |  |
| Painter | labor |  |
| Painter Helper | labor |  |
| Compactor | equipment |  |
| Sweeper Machine | equipment |  |
| Sweeper Machine Operator | labor |  |
| Pneumatic Tire Roller | equipment |  |
| Pneumatic Roller Operator | labor |  |
| Asphalt Paver | equipment |  |
| Asphalt Paver Operator | labor |  |
| Water Tanker | equipment |  |
| Water Tanker Operator | labor |  |
| Electrical Forman | labor |  |
| Plumber | labor |  |
| Plumbing Helper | labor |  |
| Civil Forman | labor |  |
| Carpenter | labor |  |
| Carpenter Helper | labor |  |
| Aluminum Cladding Subcontractor | labor |  |
| Civil Engineer | labor |  |
| Delivery Team | labor |  |
| Mechanical Engineer | labor |  |
| Civil Drafman | labor |  |
| Electrical Engineer | labor |  |
| Mechanical Forman | labor |  |
| Architecture | labor |  |
| Electrical Drafman | labor |  |

## Schedule

| ID | WBS | Activity | Type | Duration | Start | Finish | Predecessors | Total float | Free float | Resources |
| --- | --- | --- | --- | --- | --- | --- | --- | --- | --- | --- |
|  | 1 | **Milestone** |  |  | 2026-04-07 | 2027-08-06 |  |  |  |  |
| SDR-ST-MILS-1000 |  | Project Start | milestone | 0d | 2026-04-07 | 2026-04-07 |  | 0d |  |  |
| SDR-ST-MILS-1070 |  | Completion of road and paving works | milestone | 0d | 2026-12-06 | 2026-12-06 | SDR-ST-CON-P1-4770 FF | 10.4d | 3.1d |  |
| SDR-ST-MILS-1100 |  | Completion of site and platform works | milestone | 0d | 2027-02-11 | 2027-02-11 | SDR-ST-CON-P3-1490 FF | 9.1d | 0.9d |  |
| SDR-ST-MILS-1140 |  | Project Finish | milestone | 0d | 2027-08-06 | 2027-08-06 | SDR-ST-CO-1080 FF, SDR-ST-CO-1090 FF, SDR-ST-CON-P1-1050, SDR-ST-CON-P1-1000, SDR-ST-CON-P1-1090, SDR-ST-CON-P1-1150, SDR-ST-CON-P1-1200, SDR-ST-CON-P1-1470, SDR-ST-CON-P1-2140, SDR-ST-CON-P1-2710, SDR-ST-CON-P1-3260, SDR-ST-CON-P1-3850, SDR-ST-CON-P1-4770, SDR-ST-CON-P1-4410, SDR-ST-CON-P1-5110, SDR-ST-CON-P1-3860, SDR-ST-CON-P1-4530, SDR-ST-CON-P1-4620, SDR-ST-CON-P1-4100, SDR-ST-CON-P1-5310, SDR-ST-CON-P1-5210, SDR-ST-CON-P1-5470, SDR-ST-CON-P1-5480, SDR-ST-CON-P1-5320, SDR-ST-CON-P1-5220, SDR-ST-CON-P1-5490, SDR-ST-CON-P1-1010, SDR-ST-CON-P1-1070, SDR-ST-CON-P1-1120, SDR-ST-CON-P1-1190, SDR-ST-CON-P1-2090, SDR-ST-CON-P1-1400, SDR-ST-CON-P1-2570, SDR-ST-CON-P1-3140, SDR-ST-CON-P1-3720, SDR-ST-CON-P1-4730, SDR-ST-CON-P1-4430, SDR-ST-CON-P1-5040, SDR-ST-CON-P1-3730, SDR-ST-CON-P1-4480, SDR-ST-CON-P1-4490, SDR-ST-CON-P1-3890, SDR-ST-CON-P1-5400, SDR-ST-CON-P1-5270, SDR-ST-CON-P1-5150, SDR-ST-CON-P1-5080, SDR-ST-CON-P1-5160, SDR-ST-CON-P1-5090, SDR-ST-CON-P1-5280, SDR-ST-CON-P1-1020, SDR-ST-CON-P1-1080, SDR-ST-CON-P1-1140, SDR-ST-CON-P1-1210 FF, SDR-ST-CON-P1-1580, SDR-ST-CON-P1-2220, SDR-ST-CON-P1-2880, SDR-ST-CON-P1-3600, SDR-ST-CON-P1-4220, SDR-ST-CON-P1-5010, SDR-ST-CON-P1-4750, SDR-ST-CON-P1-5200, SDR-ST-CON-P1-4230, SDR-ST-CON-P1-4950, SDR-ST-CON-P1-4870, SDR-ST-CON-P1-4440, SDR-ST-CON-P1-5690, SDR-ST-CON-P1-5610, SDR-ST-CON-P1-5450, SDR-ST-CON-P1-5300, SDR-ST-CON-P1-5680, SDR-ST-CON-P1-5540, SDR-ST-CON-P1-5460, SDR-ST-CON-P1-1030, SDR-ST-CON-P1-1100, SDR-ST-CON-P1-1160, SDR-ST-CON-P1-2920, SDR-ST-CON-P1-2620, SDR-ST-CON-P1-1910, SDR-ST-CON-P1-1300, SDR-ST-CON-P1-3390, SDR-ST-CON-P1-3960, SDR-ST-CON-P1-4890, SDR-ST-CON-P1-4540, SDR-ST-CON-P1-5130, SDR-ST-CON-P1-3970, SDR-ST-CON-P1-4690, SDR-ST-CON-P1-4780, SDR-ST-CON-P1-4200, SDR-ST-CON-P1-5550, SDR-ST-CON-P1-5370, SDR-ST-CON-P1-5250, SDR-ST-CON-P1-5630, SDR-ST-CON-P1-5560, SDR-ST-CON-P1-5380, SDR-ST-CON-P1-5260, SDR-ST-CON-P1-5390, SDR-ST-CON-P1-1040, SDR-ST-CON-P1-1110, SDR-ST-CON-P1-1170, SDR-ST-CON-P1-2540, SDR-ST-CON-P1-1830, SDR-ST-CON-P1-1250, SDR-ST-CON-P1-3100, SDR-ST-CON-P1-3540, SDR-ST-CON-P1-4130, SDR-ST-CON-P1-4930, SDR-ST-CON-P1-4600, SDR-ST-CON-P1-5180, SDR-ST-CON-P1-4140, SDR-ST-CON-P1-4810, SDR-ST-CON-P1-4920, SDR-ST-CON-P1-4350, SDR-ST-CON-P1-5640, SDR-ST-CON-P1-5580, SDR-ST-CON-P1-5410, SDR-ST-CON-P1-5290, SDR-ST-CON-P1-5590, SDR-ST-CON-P1-5420, SDR-ST-CON-P1-5430, SDR-ST-CON-P1-1060, SDR-ST-CON-P1-1130, SDR-ST-CON-P1-1220, SDR-ST-CON-P1-2730, SDR-ST-CON-P1-1350, SDR-ST-CON-P1-1990, SDR-ST-CON-P1-3320, SDR-ST-CON-P1-3740, SDR-ST-CON-P1-4290, SDR-ST-CON-P1-4980, SDR-ST-CON-P1-4650, SDR-ST-CON-P1-5230, SDR-ST-CON-P1-4300, SDR-ST-CON-P1-4860, SDR-ST-CON-P1-4450, SDR-ST-CON-P1-4940, SDR-ST-CON-P1-5650, SDR-ST-CON-P1-5600, SDR-ST-CON-P1-5510, SDR-ST-CON-P1-5350, SDR-ST-CON-P1-5660, SDR-ST-CON-P1-5520, SDR-ST-CON-P1-5360, SDR-ST-CON-P1-5530, SDR-ST-CON-P1-1570, SDR-ST-CON-P1-2270, SDR-ST-CON-P1-3000, SDR-ST-CON-P1-3900, SDR-ST-CON-P1-1720, SDR-ST-CON-P1-2420, SDR-ST-CON-P1-3150, SDR-ST-CON-P1-4000, SDR-ST-CON-P1-1770, SDR-ST-CON-P1-2500, SDR-ST-CON-P1-3280, SDR-ST-CON-P1-4250, SDR-ST-CON-P1-1730, SDR-ST-CON-P1-2430, SDR-ST-CON-P1-3160, SDR-ST-CON-P1-4010, SDR-ST-CON-P1-1920, SDR-ST-CON-P1-2660, SDR-ST-CON-P1-3430, SDR-ST-CON-P1-4320, SDR-ST-CON-P1-1840, SDR-ST-CON-P1-2590, SDR-ST-CON-P1-3340, SDR-ST-CON-P1-4050, SDR-ST-CON-P1-2000, SDR-ST-CON-P1-2750, SDR-ST-CON-P1-3460, SDR-ST-CON-P1-3980, SDR-ST-CON-P1-4840, SDR-ST-CON-P1-1180, SDR-ST-CON-P1-2250, SDR-ST-CON-P1-1560, SDR-ST-CON-P1-2980, SDR-ST-CON-P1-3870, SDR-ST-CON-P1-5170, SDR-ST-CON-P1-4420, SDR-ST-CON-P1-3120, SDR-ST-CON-P1-1590, SDR-ST-CON-P1-2390, SDR-ST-CON-P1-3990, SDR-ST-CON-P1-4680, SDR-ST-CON-P1-5760, SDR-ST-CON-P1-5050, SDR-ST-CON-P1-3040, SDR-ST-CON-P1-1500, SDR-ST-CON-P1-2320, SDR-ST-CON-P1-3920, SDR-ST-CON-P1-4850, SDR-ST-CON-P1-5780, SDR-ST-CON-P1-5330, SDR-ST-CON-P1-3190, SDR-ST-CON-P1-1700, SDR-ST-CON-P1-2410, SDR-ST-CON-P1-4110, SDR-ST-CON-P1-4960, SDR-ST-CON-P1-5790, SDR-ST-CON-P1-5340, SDR-ST-CON-P1-1450, SDR-ST-CON-P1-2160, SDR-ST-CON-P1-2890, SDR-ST-CON-P1-3530, SDR-ST-CON-P1-3810, SDR-ST-CON-P1-1600, SDR-ST-CON-P1-2280, SDR-ST-CON-P1-2800, SDR-ST-CON-P1-3250, SDR-ST-CON-P1-3670, SDR-ST-CON-P1-1510, SDR-ST-CON-P1-2180, SDR-ST-CON-P1-2930, SDR-ST-CON-P1-3510, SDR-ST-CON-P1-3760, SDR-ST-CON-P1-1710, SDR-ST-CON-P1-2360, SDR-ST-CON-P1-3090, SDR-ST-CON-P1-3520, SDR-ST-CON-P1-3930, SDR-ST-CON-P1-5840, SDR-ST-CON-P1-5890, SDR-ST-CON-P1-5920, SDR-ST-CON-P1-5880, SDR-ST-CON-P1-5930, SDR-ST-CON-P1-6000, SDR-ST-CON-P1-5940, SDR-ST-CON-P1-6010, SDR-ST-CON-P1-6040, SDR-ST-CON-P1-5960, SDR-ST-CON-P1-5950, SDR-ST-CON-P1-6020, SDR-ST-CON-P1-6050, SDR-ST-CON-P1-1310, SDR-ST-CON-P1-2350, SDR-ST-CON-P1-1780, SDR-ST-CON-P1-2860, SDR-ST-CON-P1-3500, SDR-ST-CON-P1-4570, SDR-ST-CON-P1-4260, SDR-ST-CON-P1-1260, SDR-ST-CON-P1-2260, SDR-ST-CON-P1-1760, SDR-ST-CON-P1-2770, SDR-ST-CON-P1-3350, SDR-ST-CON-P1-4400, SDR-ST-CON-P1-3940, SDR-ST-CON-P1-2400, SDR-ST-CON-P1-1360, SDR-ST-CON-P1-1900, SDR-ST-CON-P1-2840, SDR-ST-CON-P1-3470, SDR-ST-CON-P1-4610, SDR-ST-CON-P1-4080, SDR-ST-CON-P1-1320, SDR-ST-CON-P1-1950, SDR-ST-CON-P1-2560, SDR-ST-CON-P1-3200, SDR-ST-CON-P1-3700, SDR-ST-CON-P1-1270, SDR-ST-CON-P1-1870, SDR-ST-CON-P1-2470, SDR-ST-CON-P1-2970, SDR-ST-CON-P1-3360, SDR-ST-CON-P1-1370, SDR-ST-CON-P1-2060, SDR-ST-CON-P1-2600, SDR-ST-CON-P1-3110, SDR-ST-CON-P1-3480, SDR-ST-CON-P1-5810, SDR-ST-CON-P1-5850, SDR-ST-CON-P1-5970, SDR-ST-CON-P1-5820, SDR-ST-CON-P1-5860, SDR-ST-CON-P1-5980, SDR-ST-CON-P1-5830, SDR-ST-CON-P1-5870, SDR-ST-CON-P1-5910, SDR-ST-CON-P1-5900, SDR-ST-CON-P1-5990, SDR-ST-CON-P1-6030, SDR-ST-CON-P1-1690, SDR-ST-CON-P1-2340, SDR-ST-CON-P1-3070, SDR-ST-CON-P1-3680, SDR-ST-CON-P1-4310, SDR-ST-CON-P1-2370, SDR-ST-CON-P1-1680, SDR-ST-CON-P1-3080, SDR-ST-CON-P1-3690, SDR-ST-CON-P1-4360, SDR-ST-CON-P1-4880, SDR-ST-CON-P1-1530, SDR-ST-CON-P1-2190, SDR-ST-CON-P1-2940, SDR-ST-CON-P1-3770, SDR-ST-CON-P1-4370, SDR-ST-CON-P1-2200, SDR-ST-CON-P1-1520, SDR-ST-CON-P1-2950, SDR-ST-CON-P1-3780, SDR-ST-CON-P1-4630, SDR-ST-CON-P1-5140, SDR-ST-CON-P1-1240, SDR-ST-CON-P1-1790, SDR-ST-CON-P1-2510, SDR-ST-CON-P1-3230, SDR-ST-CON-P1-4020, SDR-ST-CON-P1-1230, SDR-ST-CON-P1-1800, SDR-ST-CON-P1-2520, SDR-ST-CON-P1-3240, SDR-ST-CON-P1-4150, SDR-ST-CON-P1-4740, SDR-ST-CON-P1-2290, SDR-ST-CON-P1-1620, SDR-ST-CON-P1-3010, SDR-ST-CON-P1-3630, SDR-ST-CON-P1-4240, SDR-ST-CON-P1-1610, SDR-ST-CON-P1-2300, SDR-ST-CON-P1-3020, SDR-ST-CON-P1-3820, SDR-ST-CON-P1-4720, SDR-ST-CON-P1-5240, SDR-ST-CON-P1-1340, SDR-ST-CON-P1-1960, SDR-ST-CON-P1-2670, SDR-ST-CON-P1-3440, SDR-ST-CON-P1-4270, SDR-ST-CON-P1-1330, SDR-ST-CON-P1-1970, SDR-ST-CON-P1-2680, SDR-ST-CON-P1-3450, SDR-ST-CON-P1-4380, SDR-ST-CON-P1-4900, SDR-ST-CON-P1-1290, SDR-ST-CON-P1-1880, SDR-ST-CON-P1-2640, SDR-ST-CON-P1-3370, SDR-ST-CON-P1-4160, SDR-ST-CON-P1-1280, SDR-ST-CON-P1-1890, SDR-ST-CON-P1-2650, SDR-ST-CON-P1-3380, SDR-ST-CON-P1-4280, SDR-ST-CON-P1-4820, SDR-ST-CON-P1-1390, SDR-ST-CON-P1-2070, SDR-ST-CON-P1-2780, SDR-ST-CON-P1-3580, SDR-ST-CON-P1-4170, SDR-ST-CON-P1-1380, SDR-ST-CON-P1-2080, SDR-ST-CON-P1-2790, SDR-ST-CON-P1-3590, SDR-ST-CON-P1-4500, SDR-ST-CON-P1-5000, SDR-ST-CON-P1-1670, SDR-ST-CON-P1-2330, SDR-ST-CON-P1-2990, SDR-ST-CON-P1-3880, SDR-ST-CON-P1-1740, SDR-ST-CON-P1-2440, SDR-ST-CON-P1-3170, SDR-ST-CON-P1-4040, SDR-ST-CON-P1-1750, SDR-ST-CON-P1-2450, SDR-ST-CON-P1-3180, SDR-ST-CON-P1-4070, SDR-ST-CON-P1-1480, SDR-ST-CON-P1-1980, SDR-ST-CON-P1-2490, SDR-ST-CON-P1-3270, SDR-ST-CON-P1-4190, SDR-ST-CON-P1-4800, SDR-ST-CON-P1-2150, SDR-ST-CON-P1-1490, SDR-ST-CON-P1-2850, SDR-ST-CON-P1-3560, SDR-ST-CON-P1-4470, SDR-ST-CON-P1-5030, SDR-ST-CON-P1-1410, SDR-ST-CON-P1-2050, SDR-ST-CON-P1-2690, SDR-ST-CON-P1-3290, SDR-ST-CON-P1-4030, SDR-ST-CON-P1-4700, SDR-ST-CON-P1-2100, SDR-ST-CON-P1-1420, SDR-ST-CON-P1-2820, SDR-ST-CON-P1-3660, SDR-ST-CON-P1-4550, SDR-ST-CON-P1-5100, SDR-ST-CON-P1-1630, SDR-ST-CON-P1-2130, SDR-ST-CON-P1-2810, SDR-ST-CON-P1-3490, SDR-ST-CON-P1-3950, SDR-ST-CON-P1-4520, SDR-ST-CON-P1-2230, SDR-ST-CON-P1-1640, SDR-ST-CON-P1-2900, SDR-ST-CON-P1-3640, SDR-ST-CON-P1-4510, SDR-ST-CON-P1-5070, SDR-ST-CON-P1-1930, SDR-ST-CON-P1-2480, SDR-ST-CON-P1-3130, SDR-ST-CON-P1-3650, SDR-ST-CON-P1-4340, SDR-ST-CON-P1-4910, SDR-ST-CON-P1-1940, SDR-ST-CON-P1-2630, SDR-ST-CON-P1-3400, SDR-ST-CON-P1-4330, SDR-ST-CON-P1-5060, SDR-ST-CON-P1-5730, SDR-ST-CON-P1-2460, SDR-ST-CON-P1-1850, SDR-ST-CON-P1-3060, SDR-ST-CON-P1-3570, SDR-ST-CON-P1-4060, SDR-ST-CON-P1-4640, SDR-ST-CON-P1-1860, SDR-ST-CON-P1-2550, SDR-ST-CON-P1-3310, SDR-ST-CON-P1-4210, SDR-ST-CON-P1-4990, SDR-ST-CON-P1-5710, SDR-ST-CON-P1-2010, SDR-ST-CON-P1-2610, SDR-ST-CON-P1-3220, SDR-ST-CON-P1-3610, SDR-ST-CON-P1-4090, SDR-ST-CON-P1-4660, SDR-ST-CON-P1-2020, SDR-ST-CON-P1-2740, SDR-ST-CON-P1-3550, SDR-ST-CON-P1-4460, SDR-ST-CON-P1-5190, SDR-ST-CON-P1-5750, SDR-ST-CON-P1-1540, SDR-ST-CON-P1-2380, SDR-ST-CON-P1-3050, SDR-ST-CON-P1-3710, SDR-ST-CON-P1-4590, SDR-ST-CON-P1-5570, SDR-ST-CON-P1-1550, SDR-ST-CON-P1-2210, SDR-ST-CON-P1-2960, SDR-ST-CON-P1-3840, SDR-ST-CON-P1-4790, SDR-ST-CON-P1-5720, SDR-ST-CON-P1-1430, SDR-ST-CON-P1-2110, SDR-ST-CON-P1-2720, SDR-ST-CON-P1-3300, SDR-ST-CON-P1-4120, SDR-ST-CON-P1-4970, SDR-ST-CON-P1-1440, SDR-ST-CON-P1-2120, SDR-ST-CON-P1-2870, SDR-ST-CON-P1-3790, SDR-ST-CON-P1-4710, SDR-ST-CON-P1-5700, SDR-ST-CON-P1-2240, SDR-ST-CON-P1-1650, SDR-ST-CON-P1-2830, SDR-ST-CON-P1-3420, SDR-ST-CON-P1-4180, SDR-ST-CON-P1-5020, SDR-ST-CON-P1-1660, SDR-ST-CON-P1-2310, SDR-ST-CON-P1-3030, SDR-ST-CON-P1-3910, SDR-ST-CON-P1-4830, SDR-ST-CON-P1-5740, SDR-ST-CON-P1-2530, SDR-ST-CON-P1-1810, SDR-ST-CON-P1-3210, SDR-ST-CON-P1-3800, SDR-ST-CON-P1-4580, SDR-ST-CON-P1-5500, SDR-ST-CON-P1-1820, SDR-ST-CON-P1-2580, SDR-ST-CON-P1-3410, SDR-ST-CON-P1-4390, SDR-ST-CON-P1-5120, SDR-ST-CON-P1-5770, SDR-ST-CON-P1-2030, SDR-ST-CON-P1-2700, SDR-ST-CON-P1-3330, SDR-ST-CON-P1-3750, SDR-ST-CON-P1-4670, SDR-ST-CON-P1-5670, SDR-ST-CON-P1-2040, SDR-ST-CON-P1-2760, SDR-ST-CON-P1-3620, SDR-ST-CON-P1-4560, SDR-ST-CON-P1-5440, SDR-ST-CON-P1-5800, SDR-ST-CON-P1-1460, SDR-ST-CON-P1-2170, SDR-ST-CON-P1-2910, SDR-ST-CON-P1-3830, SDR-ST-CON-P1-4760, SDR-ST-CON-P3-1000, SDR-ST-CON-P3-1010, SDR-ST-CON-P3-1020, SDR-ST-CON-P3-1030, SDR-ST-CON-P3-1040 FF, SDR-ST-CON-P3-1060, SDR-ST-CON-P3-1080, SDR-ST-CON-P3-1100, SDR-ST-CON-P3-1180, SDR-ST-CON-P3-1150, SDR-ST-CON-P3-1130, SDR-ST-CON-P3-1220, SDR-ST-CON-P3-1200, SDR-ST-CON-P3-1230, SDR-ST-CON-P3-1210, SDR-ST-CON-P3-1250, SDR-ST-CON-P3-1190, SDR-ST-CON-P3-1300, SDR-ST-CON-P3-1430, SDR-ST-CON-P3-1370, SDR-ST-CON-P3-1290, SDR-ST-CON-P3-1270, SDR-ST-CON-P3-1360, SDR-ST-CON-P3-1320, SDR-ST-CON-P3-1380, SDR-ST-CON-P3-1400, SDR-ST-CON-P3-1500, SDR-ST-CON-P3-1480, SDR-ST-CON-P3-1420, SDR-ST-CON-P3-1490, SDR-ST-CON-P3-1540, SDR-ST-CON-P3-1640, SDR-ST-CON-P3-1590, SDR-ST-CON-P3-1840, SDR-ST-CON-P3-1760, SDR-ST-CON-P3-1710, SDR-ST-CON-P3-1310, SDR-ST-CON-P3-1140, SDR-ST-CON-P3-1110, SDR-ST-CON-P3-1090, SDR-ST-CON-P3-1050, SDR-ST-CON-P3-1460, SDR-ST-CON-P3-1240, SDR-ST-CON-P3-1160, SDR-ST-CON-P3-1410, SDR-ST-CON-P3-1260, SDR-ST-CON-P3-1330, SDR-ST-CON-P3-1470, SDR-ST-CON-P3-1390, SDR-ST-CON-P3-1340, SDR-ST-CON-P3-1450, SDR-ST-CON-P3-1280, SDR-ST-CON-P3-1440, SDR-ST-CON-P3-1350, SDR-ST-CON-P3-1120, SDR-ST-CON-P3-1690, SDR-ST-CON-P3-1880, SDR-ST-CON-P3-1770, SDR-ST-CON-P3-1620, SDR-ST-CON-P3-1830, SDR-ST-CON-P3-1720, SDR-ST-CON-P3-1560, SDR-ST-CON-P3-1530, SDR-ST-CON-P3-1700, SDR-ST-CON-P3-1860, SDR-ST-CON-P3-1820, SDR-ST-CON-P3-1750, SDR-ST-CON-P3-1660, SDR-ST-CON-P3-1890, SDR-ST-CON-P3-1850, SDR-ST-CON-P3-1810, SDR-ST-CON-P3-1730, SDR-ST-CON-P3-1610, SDR-ST-CON-P3-1170, SDR-ST-CON-P3-1070, SDR-ST-CON-P3-1510, SDR-ST-CON-P3-1580, SDR-ST-CON-P3-1630, SDR-ST-CON-P3-1650, SDR-ST-CON-P3-1740, SDR-ST-CON-P3-1570, SDR-ST-CON-P3-1670, SDR-ST-CON-P3-1790, SDR-ST-CON-P3-1600, SDR-ST-CON-P3-1780, SDR-ST-CON-P3-1680, SDR-ST-CON-P3-1550, SDR-ST-CON-P3-1520, SDR-ST-PRO-DL-1260, SDR-ST-PRO-DL-1030, SDR-ST-PRO-DL-1060, SDR-ST-PRO-DL-1040, SDR-ST-PRO-DL-1270, SDR-ST-PRO-DL-1020, SDR-ST-PRO-DL-1010, SDR-ST-PRO-DL-1100, SDR-ST-PRO-DL-1130, SDR-ST-PRO-DL-1050, SDR-ST-PRO-DL-1070, SDR-ST-PRO-DL-1110, SDR-ST-PRO-DL-1200, SDR-ST-PRO-DL-1230, SDR-ST-PRO-DL-1000, SDR-ST-PRO-DL-1080, SDR-ST-PRO-DL-1120, SDR-ST-PRO-DL-1090, SDR-ST-PRO-DL-1140, SDR-ST-CON-P1-6090, SDR-ST-CON-P1-6100, SDR-ST-CON-P1-6110, SDR-ST-CON-P1-6120, SDR-ST-CON-P1-6130, SDR-ST-CON-P1-6140, SDR-ST-CON-P1-6150, SDR-ST-CON-P1-6160, SDR-ST-CON-P1-6170, SDR-ST-CON-P1-6180, SDR-ST-CON-P1-6190, SDR-ST-CON-P1-6200, SDR-ST-CON-P1-6210, SDR-ST-CON-P1-6220, SDR-ST-MILS-1110 FF | 0d |  |  |
|  | 1 | **Major Milestone** |  |  | 2026-04-07 | 2027-08-06 |  |  |  |  |
| SDR-ST-MILS-1010 |  | Project Start Milstone | milestone | 0d | 2026-04-07 | 2026-04-07 | SDR-ST-MILS-1000 SS | 4d |  |  |
| SDR-ST-MILS-1120 |  | Project Finish Milstone | milestone | 0d | 2027-08-06 | 2027-08-06 | SDR-ST-MILS-1130 FF, SDR-ST-CO-1060 FF | 0.1d |  |  |
|  | 3 | **Contractual Milestone** |  |  | 2026-05-06 | 2027-07-20 |  |  |  |  |
| SDR-ST-MILS-1020 |  | Mobilization Finish Milestone | milestone | 0d | 2026-05-06 | 2026-05-06 | SDR-ST-MOBL-1060 FF | 18d |  |  |
| SDR-ST-MILS-1030 |  | Execution Plan and Baseline Submission Finish Milestone | milestone | 0d | 2026-05-06 | 2026-05-06 | SDR-ST-PREL-1110 FF | 18d |  |  |
| SDR-ST-MILS-1040 |  | Submission and approval of plans and materials Finish Milestone | milestone | 0d | 2026-05-06 | 2026-05-06 | SDR-ST-ENG-AP-1230 FF | 18d |  |  |
| SDR-ST-MILS-1080 |  | Completion of road works | milestone | 0d | 2026-12-06 | 2026-12-06 | SDR-ST-CON-P1-4770 FF | 8.8d | 7.3d |  |
| SDR-ST-MILS-1060 |  | Completion of medium voltage works | milestone | 0d | 2027-05-12 | 2027-05-12 | SDR-ST-CON-P1-4320 FF, SDR-ST-CON-P1-3980 FF | 11.9d | 6.3d |  |
| SDR-ST-MILS-1130 |  | Completion of finishing works in the project | milestone | 0d | 2027-07-20 | 2027-07-20 | SDR-ST-CON-P3-1840 FF, SDR-ST-CON-P3-1890 FF | 15d | 14.9d |  |
|  | 2 | **Phases Milestone** |  |  | 2026-05-06 | 2027-07-21 |  |  |  |  |
| SDR-ST-MILS-1050 |  | Engineering Phase Finish Milestone | milestone | 0d | 2026-05-06 | 2026-05-06 | SDR-ST-ENG-AP-1230 FF | 18d |  |  |
| SDR-ST-MILS-1090 |  | Procurment Phase Finish Milestone | milestone | 0d | 2027-04-15 | 2027-04-15 | SDR-ST-PRO-DL-1250 FF, SDR-ST-PRO-MS-1250 FF | 6.8d |  |  |
| SDR-ST-MILS-1110 |  | Construction Phase Finish Milestone | milestone | 0d | 2027-07-21 | 2027-07-21 | SDR-ST-CON-P1-6050 FF, SDR-ST-CON-P1-6040 FF, SDR-ST-CON-P3-1890 FF, SDR-ST-CON-P3-1790 FF | 14d |  |  |
|  | 9 | **Mobilization** |  |  | 2026-04-07 | 2026-05-06 |  |  |  |  |
|  | 6 | **Office Site Prepare** |  |  | 2026-04-07 | 2026-04-11 |  |  |  |  |
| SDR-ST-MOBL-1000 |  | Office Area Grading and Prepare |  | 4d | 2026-04-07 | 2026-04-11 | SDR-ST-MILS-1000 SS | 0d |  | Mobilzation Team [2736.29 h] |
|  | 3 | **Access Roads** |  |  | 2026-04-12 | 2026-04-15 |  |  |  |  |
| SDR-ST-MOBL-1010 |  | Office Area Access Roads Prepare |  | 4d | 2026-04-12 | 2026-04-15 | SDR-ST-MOBL-1000, SDR-ST-MILS-1010 SS | 0d |  | Mobilzation Team [2736.29 h] |

| ID | WBS | Activity | Duration | Start | Finish | Predecessors | Total float | Free float | Resources |
| --- | --- | --- | --- | --- | --- | --- | --- | --- | --- |
|  | 5 | **Offices Installation** |  | 2026-04-16 | 2026-04-21 |  |  |  |  |
| SDR-ST-MOBL-1020 |  | Offices Cabins Installation | 5d | 2026-04-16 | 2026-04-21 | SDR-ST-MOBL-1010 | 0d |  | Mobilzation Team [2736.29 h] |
|  | 10 | **Offices MEP Works** |  | 2026-04-16 | 2026-04-21 |  |  |  |  |
| SDR-ST-MOBL-1030 |  | Office Cabins MEP Works | 5d | 2026-04-16 | 2026-04-21 | SDR-ST-MOBL-1020 FF | 0d |  | Mobilzation Team [2736.29 h] |
|  | 4 | **Manpower Mobilization** |  | 2026-04-22 | 2026-04-26 |  |  |  |  |
| SDR-ST-MOBL-1040 |  | Manpower Arrive | 4d | 2026-04-22 | 2026-04-26 | SDR-ST-MOBL-1030 | 0d |  | Mobilzation Team [2736.29 h] |
|  | 7 | **Equipment Mobilization** |  | 2026-04-27 | 2026-04-29 |  |  |  |  |
| SDR-ST-MOBL-1050 |  | Equipment Arrive | 3d | 2026-04-27 | 2026-04-29 | SDR-ST-MOBL-1040 | 0d |  | Mobilzation Team [2736.29 h] |
|  | 1 | **Project Signage** |  | 2026-04-30 | 2026-05-06 |  |  |  |  |
| SDR-ST-MOBL-1060 |  | Project Sign Installation | 6d | 2026-04-30 | 2026-05-06 | SDR-ST-MOBL-1050 | 0d |  | Mobilzation Team [2736.29 h] |
|  | 2 | **Preliminary Submittals** |  | 2026-04-30 | 2026-05-06 |  |  |  |  |
|  | 1 | **HSSE Plan** |  | 2026-04-30 | 2026-05-05 |  |  |  |  |
| SDR-ST-PREL-1000 |  | Project HSSE Plan Submission | 3d | 2026-04-30 | 2026-05-03 | SDR-ST-MOBL-1050, SDR-ST-MOBL-1020 | 17d | 0d | Safety Engineer |
| SDR-ST-PREL-1060 |  | Project HSSE Plan Approval | 2d | 2026-05-04 | 2026-05-05 | SDR-ST-PREL-1000 | 19d |  | Safety Engineer |
|  | 2 | **Quality Control Plan** |  | 2026-04-30 | 2026-05-05 |  |  |  |  |
| SDR-ST-PREL-1010 |  | Project Quality Plan Submission | 3d | 2026-04-30 | 2026-05-03 | SDR-ST-PREL-1000 SS | 19d | 0d | QA/QC Engineer |
| SDR-ST-PREL-1070 |  | Project Quality Plan Approval | 2d | 2026-05-04 | 2026-05-05 | SDR-ST-PREL-1010 | 19d |  | QA/QC Engineer |
|  | 3 | **Communications Plan** |  | 2026-04-30 | 2026-05-05 |  |  |  |  |
| SDR-ST-PREL-1020 |  | Project Communication Plan Submission | 3d | 2026-04-30 | 2026-05-03 | SDR-ST-PREL-1010 SS | 19d | 0d | Project Controls Manager |
| SDR-ST-PREL-1080 |  | Project Communication Plan Approval | 2d | 2026-05-04 | 2026-05-05 | SDR-ST-PREL-1020 | 19d |  | Project Controls Manager |
|  | 4 | **Risk Managment Plan** |  | 2026-04-30 | 2026-05-05 |  |  |  |  |
| SDR-ST-PREL-1030 |  | Project Risk Managment Plan Submission | 3d | 2026-04-30 | 2026-05-03 | SDR-ST-PREL-1020 SS | 19d | 0d | Project Manager |
| SDR-ST-PREL-1090 |  | Project Risk Managment Plan Approvals | 2d | 2026-05-04 | 2026-05-05 | SDR-ST-PREL-1030 | 19d |  | Project Manager |
|  | 5 | **Project Execution Plan** |  | 2026-04-30 | 2026-05-05 |  |  |  |  |
| SDR-ST-PREL-1040 |  | Project Execution Plan Submission | 3d | 2026-04-30 | 2026-05-03 | SDR-ST-PREL-1030 SS | 19d | 0d | Project Manager |
| SDR-ST-PREL-1100 |  | Project Execution Plan Approvals | 2d | 2026-05-04 | 2026-05-05 | SDR-ST-PREL-1040 | 19d |  | Project Manager |

| ID | WBS | Activity | Duration | Start | Finish | Predecessors | Total float | Free float | Calendar | Resources |
| --- | --- | --- | --- | --- | --- | --- | --- | --- | --- | --- |
|  | 6 | **Project Schedule** |  | 2026-04-30 | 2026-05-06 |  |  |  |  |  |
| SDR-ST-PREL-1050 |  | Project Schedule Submission | 3d | 2026-04-30 | 2026-05-03 | SDR-ST-PREL-1000 SS | 17d | 0d |  | Planning Engineer |
| SDR-ST-PREL-1110 |  | Project Schedule Approvals | 3d | 2026-05-04 | 2026-05-06 | SDR-ST-PREL-1050 | 17d | 0d |  | Planning Engineer |
|  | 3 | **Engineering** |  | 2026-04-16 | 2026-05-06 |  |  |  |  |  |
|  | 5 | **Shop Drawings Stage** |  | 2026-04-16 | 2026-05-06 |  |  |  |  |  |
|  | 1 | **Submission** |  | 2026-04-16 | 2026-04-24 |  |  |  |  |  |
|  | 4 | **Civil** |  | 2026-04-16 | 2026-04-24 |  |  |  |  |  |
| SDR-ST-ENG-SUB-1080 |  | STRUCTURAL STEEL GENERAL NOTES Submission | 7d | 2026-04-16 | 2026-04-24 | SDR-ST-MILS-1000 SS+8d | 15d | 0d | 5x10 Sudair Station | Civil Engineer [266.03 h]; Civil Drafman [266.03 h] |
| SDR-ST-ENG-SUB-1090 |  | REINFORCED CONCRETE GENERAL NOTES - 01 Submission | 7d | 2026-04-16 | 2026-04-24 | SDR-ST-MILS-1000 SS+8d | 15d | 0d | 5x10 Sudair Station | Civil Engineer [266.03 h]; Civil Drafman [266.03 h] |
| SDR-ST-ENG-SUB-1100 |  | EXTERNAL CANOPY PLANS Submission | 7d | 2026-04-16 | 2026-04-24 | SDR-ST-ENG-SUB-1080 SS | 15d | 0d | 5x10 Sudair Station | Civil Engineer [266.03 h]; Civil Drafman [266.03 h] |
| SDR-ST-ENG-SUB-1110 |  | CANOPY FRAMING Submission | 7d | 2026-04-16 | 2026-04-24 | SDR-ST-ENG-SUB-1080 SS | 15d | 0d | 5x10 Sudair Station | Civil Engineer [266.03 h]; Civil Drafman [266.03 h] |
| SDR-ST-ENG-SUB-1120 |  | RC DETAILS Submission | 7d | 2026-04-16 | 2026-04-24 | SDR-ST-ENG-SUB-1080 SS | 15d | 0d | 5x10 Sudair Station | Civil Engineer [266.03 h]; Civil Drafman [266.03 h] |
|  | 6 | **Sewerage Network** |  | 2026-04-16 | 2026-04-24 |  |  |  |  |  |
| SDR-ST-ENG-SUB-1000 |  | Sewage Layout Master Plan Submission | 7d | 2026-04-16 | 2026-04-24 | SDR-ST-MILS-1000 SS+8d | 15d | 0d | 5x10 Sudair Station | SIC- Cost; Mechanical Drafman [266.03 h]; Design Engineer [266.03 h] |
| SDR-ST-ENG-SUB-1010 |  | Sewage Network Profile Submission | 7d | 2026-04-16 | 2026-04-24 | SDR-ST-ENG-SUB-1000 SS | 15d | 0d | 5x10 Sudair Station | SIC- Cost; Mechanical Drafman [266.03 h]; Design Engineer [266.03 h] |
| SDR-ST-ENG-SUB-1020 |  | Sewage Network Standard Details Submission | 7d | 2026-04-16 | 2026-04-24 | SDR-ST-ENG-SUB-1000 SS | 15d | 0d | 5x10 Sudair Station | SIC- Cost; Mechanical Drafman [266.05 h]; Design Engineer [266.05 h] |
| SDR-ST-ENG-SUB-1030 |  | Sewage Network Section Submission | 7d | 2026-04-16 | 2026-04-24 | SDR-ST-ENG-SUB-1000 SS | 15d | 0d | 5x10 Sudair Station | SIC- Cost; Mechanical Drafman [266.03 h]; Design Engineer [266.03 h] |
|  | 8 | **Portable Water** |  | 2026-04-16 | 2026-04-24 |  |  |  |  |  |
| SDR-ST-ENG-SUB-1040 |  | Potable Water Piping Layout Master Plan Submission | 7d | 2026-04-16 | 2026-04-24 | SDR-ST-MILS-1000 SS+8d | 15d | 0d | 5x10 Sudair Station | SIC- Cost; Mechanical Drafman [266.03 h]; Design Engineer [266.03 h] |
| SDR-ST-ENG-SUB-1050 |  | Potable Water Piping Layout Submission | 7d | 2026-04-16 | 2026-04-24 | SDR-ST-ENG-SUB-1040 SS | 15d | 0d | 5x10 Sudair Station | SIC- Cost; Mechanical Drafman [266.03 h]; Design Engineer [266.03 h] |
| SDR-ST-ENG-SUB-1060 |  | Potable Water Standard Details Submission | 7d | 2026-04-16 | 2026-04-24 | SDR-ST-ENG-SUB-1040 SS | 15d | 0d | 5x10 Sudair Station | SIC- Cost; Mechanical Drafman [266.03 h]; Design Engineer [266.03 h] |
| SDR-ST-ENG-SUB-1070 |  | Potable Water Section Submission | 7d | 2026-04-16 | 2026-04-24 | SDR-ST-ENG-SUB-1040 SS | 15d | 0d | 5x10 Sudair Station | SIC- Cost; Mechanical Drafman [266.03 h]; Design Engineer [266.03 h] |
|  | 9 | **Electrical** |  | 2026-04-16 | 2026-04-24 |  |  |  |  |  |
| SDR-ST-ENG-SUB-1130 |  | Medium Voltage Network Submission | 7d | 2026-04-16 | 2026-04-24 | SDR-ST-MILS-1000 SS+8d | 15d | 0d | 5x10 Sudair Station | Electrical Engineer [266.03 h]; Electrical Forman [266.03 h] |
| SDR-ST-ENG-SUB-1140 |  | Standard Details Medium Voltage Submission | 7d | 2026-04-16 | 2026-04-24 | SDR-ST-ENG-SUB-1130 SS | 15d | 0d | 5x10 Sudair Station | Electrical Engineer [266.03 h]; Electrical Forman [266.03 h] |
| SDR-ST-ENG-SUB-1150 |  | Low Voltage Network Submission | 7d | 2026-04-16 | 2026-04-24 | SDR-ST-ENG-SUB-1130 SS | 15d | 0d | 5x10 Sudair Station | Electrical Engineer [266.03 h]; Electrical Forman [266.03 h] |
| SDR-ST-ENG-SUB-1160 |  | Standard Details_Low Voltage Submission | 7d | 2026-04-16 | 2026-04-24 | SDR-ST-ENG-SUB-1130 SS | 15d | 0d | 5x10 Sudair Station | Electrical Engineer [266.03 h]; Electrical Forman [266.03 h] |
| SDR-ST-ENG-SUB-1170 |  | Street Lighting Network Submission | 7d | 2026-04-16 | 2026-04-24 | SDR-ST-ENG-SUB-1130 SS | 15d | 0d | 5x10 Sudair Station | Electrical Engineer [266.03 h]; Electrical Forman [266.03 h] |
| SDR-ST-ENG-SUB-1180 |  | Standard Details_Street Lighting Submission | 7d | 2026-04-16 | 2026-04-24 | SDR-ST-ENG-SUB-1130 SS | 15d | 0d | 5x10 Sudair Station | Electrical Engineer [266.03 h]; Electrical Forman [266.03 h] |
| SDR-ST-ENG-SUB-1190 |  | Telecommunication Network Submission | 7d | 2026-04-16 | 2026-04-24 | SDR-ST-ENG-SUB-1130 SS | 15d | 0d | 5x10 Sudair Station | Electrical Engineer [266.03 h]; Electrical Forman [266.03 h] |
| SDR-ST-ENG-SUB-1200 |  | Telecommunication Standard Details Submission | 7d | 2026-04-16 | 2026-04-24 | SDR-ST-ENG-SUB-1130 SS | 15d | 0d | 5x10 Sudair Station | Electrical Engineer [266.03 h]; Electrical Forman [266.03 h] |
| SDR-ST-ENG-SUB-1210 |  | Canopy:Ground Floor Lighting Plan Submission | 7d | 2026-04-16 | 2026-04-24 | SDR-ST-ENG-SUB-1130 SS | 15d | 0d | 5x10 Sudair Station | Electrical Engineer [266.03 h]; Electrical Forman [266.03 h] |
| SDR-ST-ENG-SUB-1220 |  | Canopy:Ground Floor CCTV Plan Submission | 7d | 2026-04-16 | 2026-04-24 | SDR-ST-ENG-SUB-1130 SS | 15d | 0d | 5x10 Sudair Station | Electrical Engineer [266.03 h]; Electrical Forman [266.03 h] |
| SDR-ST-ENG-SUB-1230 |  | Canopy:Ground Floor Voice Evacuation Plan Submission | 7d | 2026-04-16 | 2026-04-24 | SDR-ST-ENG-SUB-1130 SS | 15d | 0d | 5x10 Sudair Station | Electrical Engineer [266.03 h]; Electrical Forman [266.03 h] |

| ID | WBS | Activity | Duration | Start | Finish | Predecessors | Total float | Free float | Resources |
| --- | --- | --- | --- | --- | --- | --- | --- | --- | --- |
|  | 4 | **Approvals** |  | 2026-04-25 | 2026-05-06 |  |  |  |  |
|  | 4 | **Civil** |  | 2026-04-25 | 2026-05-06 |  |  |  |  |
| SDR-ST-ENG-AP-1080 |  | STRUCTURAL STEEL GENERAL NOTES Approval | 11d | 2026-04-25 | 2026-05-06 | SDR-ST-ENG-SUB-1080 | 18d |  | Civil Engineer [399.04 h]; Civil Forman [399.04 h] |
| SDR-ST-ENG-AP-1090 |  | REINFORCED CONCRETE GENERAL NOTES - 01 Approval | 11d | 2026-04-25 | 2026-05-06 | SDR-ST-ENG-SUB-1090 | 18d |  | Civil Engineer [399.04 h]; Civil Forman [399.04 h] |
| SDR-ST-ENG-AP-1100 |  | EXTERNAL CANOPY PLANS Approval | 11d | 2026-04-25 | 2026-05-06 | SDR-ST-ENG-SUB-1100 | 18d |  | Civil Engineer [399.04 h]; Civil Forman [399.04 h] |
| SDR-ST-ENG-AP-1110 |  | CANOPY FRAMING Approval | 11d | 2026-04-25 | 2026-05-06 | SDR-ST-ENG-SUB-1110 | 18d |  | Civil Engineer [399.04 h]; Civil Forman [399.04 h] |
| SDR-ST-ENG-AP-1120 |  | RC DETAILS Approval | 11d | 2026-04-25 | 2026-05-06 | SDR-ST-ENG-SUB-1120 | 18d |  | Civil Engineer [399.04 h]; Civil Forman [399.04 h] |
|  | 6 | **Sewerage Network** |  | 2026-04-25 | 2026-05-06 |  |  |  |  |
| SDR-ST-ENG-AP-1000 |  | Sewage Layout Master Plan Approval | 11d | 2026-04-25 | 2026-05-06 | SDR-ST-ENG-SUB-1000 | 18d |  | SIC- Cost; Project Coordinator [798.08 h] |
| SDR-ST-ENG-AP-1010 |  | Sewage Network Profile Approval | 11d | 2026-04-25 | 2026-05-06 | SDR-ST-ENG-SUB-1010 | 18d |  | SIC- Cost; Project Coordinator [798.08 h] |
| SDR-ST-ENG-AP-1020 |  | Sewage Network Standard Details Approval | 11d | 2026-04-25 | 2026-05-06 | SDR-ST-ENG-SUB-1020 | 18d |  | SIC- Cost; Project Coordinator [798.08 h] |
| SDR-ST-ENG-AP-1030 |  | Sewage Network Section Approval | 11d | 2026-04-25 | 2026-05-06 | SDR-ST-ENG-SUB-1030 | 18d |  | SIC- Cost; Project Coordinator [798.08 h] |
|  | 8 | **Portable Water** |  | 2026-04-25 | 2026-05-06 |  |  |  |  |
| SDR-ST-ENG-AP-1040 |  | Potable Water Piping Layout Master Plan Approval | 11d | 2026-04-25 | 2026-05-06 | SDR-ST-ENG-SUB-1040 | 18d |  | SIC- Cost; Project Coordinator [798.08 h] |
| SDR-ST-ENG-AP-1050 |  | Potable Water Piping Layout Approval | 11d | 2026-04-25 | 2026-05-06 | SDR-ST-ENG-SUB-1050 | 18d |  | SIC- Cost; Project Coordinator [798.08 h] |
| SDR-ST-ENG-AP-1060 |  | Potable Water Standard Details Approval | 11d | 2026-04-25 | 2026-05-06 | SDR-ST-ENG-SUB-1060 | 18d |  | SIC- Cost; Project Coordinator [798.08 h] |
| SDR-ST-ENG-AP-1070 |  | Potable Water Section Approval | 11d | 2026-04-25 | 2026-05-06 | SDR-ST-ENG-SUB-1070 | 18d |  | SIC- Cost; Project Coordinator [798.08 h] |
|  | 9 | **Electrical** |  | 2026-04-25 | 2026-05-06 |  |  |  |  |
| SDR-ST-ENG-AP-1130 |  | Medium Voltage Network Approval | 11d | 2026-04-25 | 2026-05-06 | SDR-ST-ENG-SUB-1130 | 18d |  | Electrical Engineer [399.04 h]; Electrical Forman [399.04 h] |
| SDR-ST-ENG-AP-1140 |  | Standard Details Medium Voltage Approval | 11d | 2026-04-25 | 2026-05-06 | SDR-ST-ENG-SUB-1140 | 18d |  | Electrical Engineer [399.04 h]; Electrical Forman [399.04 h] |
| SDR-ST-ENG-AP-1150 |  | Low Voltage Network Approval | 11d | 2026-04-25 | 2026-05-06 | SDR-ST-ENG-SUB-1150 | 18d |  | Electrical Engineer [399.04 h]; Electrical Forman [399.04 h] |
| SDR-ST-ENG-AP-1160 |  | Standard Details_Low Voltage Approval | 11d | 2026-04-25 | 2026-05-06 | SDR-ST-ENG-SUB-1160 | 18d |  | Electrical Engineer [399.04 h]; Electrical Forman [399.04 h] |
| SDR-ST-ENG-AP-1170 |  | Street Lighting Network Approval | 11d | 2026-04-25 | 2026-05-06 | SDR-ST-ENG-SUB-1170 | 18d |  | Electrical Engineer [399.04 h]; Electrical Forman [399.04 h] |
| SDR-ST-ENG-AP-1180 |  | Standard Details_Street Lighting Approval | 11d | 2026-04-25 | 2026-05-06 | SDR-ST-ENG-SUB-1180 | 18d |  | Electrical Engineer [399.04 h]; Electrical Forman [399.04 h] |
| SDR-ST-ENG-AP-1190 |  | Telecommunication Network Approval | 11d | 2026-04-25 | 2026-05-06 | SDR-ST-ENG-SUB-1190 | 18d |  | Electrical Engineer [399.04 h]; Electrical Forman [399.04 h] |
| SDR-ST-ENG-AP-1200 |  | Telecommunication Standard Details Approval | 11d | 2026-04-25 | 2026-05-06 | SDR-ST-ENG-SUB-1200 | 18d |  | Electrical Engineer [399.04 h]; Electrical Forman [399.04 h] |
| SDR-ST-ENG-AP-1210 |  | Canopy:Ground Floor Lighting Plan Approval | 11d | 2026-04-25 | 2026-05-06 | SDR-ST-ENG-SUB-1210 | 18d |  | Electrical Engineer [399.04 h]; Electrical Forman [399.04 h] |
| SDR-ST-ENG-AP-1220 |  | Canopy:Ground Floor CCTV Plan Approval | 11d | 2026-04-25 | 2026-05-06 | SDR-ST-ENG-SUB-1220 | 18d |  | Electrical Engineer [399.04 h]; Electrical Forman [399.04 h] |
| SDR-ST-ENG-AP-1230 |  | Canopy:Ground Floor Voice Evacuation Plan Approval | 11d | 2026-04-25 | 2026-05-06 | SDR-ST-ENG-SUB-1230 | 18d | 0d | Electrical Engineer [399.04 h]; Electrical Forman [399.04 h] |

| ID | WBS | Activity | Duration | Start | Finish | Predecessors | Total float | Free float | Calendar | Resources | BOQ Qty | UOM |
| --- | --- | --- | --- | --- | --- | --- | --- | --- | --- | --- | --- | --- |
|  | 6 | **Materials** |  | 2026-04-16 | 2026-05-06 |  |  |  |  |  |  |  |
|  | 5 | **Materials Submission** |  | 2026-04-16 | 2026-04-24 |  |  |  |  |  |  |  |
|  | 2 | **Short Lead Items** |  | 2026-04-16 | 2026-04-24 |  |  |  |  |  |  |  |
|  | 2 | **Civil** |  | 2026-04-16 | 2026-04-24 |  |  |  |  |  |  |  |
| SDR-ST-PRO-S-1010 |  | Waterproofing (Thermal & moisture Protection) | 7d | 2026-04-16 | 2026-04-24 | SDR-ST-PRO-S-1270 SS, SDR-ST-MILS-1000 SS | 0d |  | 5x10 Sudair Station | SIC- Cost; Civil Engineer |  |  |
| SDR-ST-PRO-S-1030 |  | Interlock | 7d | 2026-04-16 | 2026-04-24 | SDR-ST-MILS-1000 SS+8d, SDR-ST-MILS-1000 | 0d |  | 5x10 Sudair Station | SIC- Cost; Civil Engineer |  |  |
| SDR-ST-PRO-S-1060 |  | Kerbstone | 7d | 2026-04-16 | 2026-04-24 | SDR-ST-PRO-S-1030 SS, SDR-ST-MILS-1000 | 13d | 0d | 5x10 Sudair Station | SIC- Cost; Civil Engineer |  |  |
| SDR-ST-PRO-S-1260 |  | Steel Bars | 7d | 2026-04-16 | 2026-04-24 | SDR-ST-PRO-S-1030 SS, SDR-ST-MILS-1000 | 0d |  | 5x10 Sudair Station | SIC- Cost; Civil Engineer |  |  |
| SDR-ST-PRO-S-1270 |  | Asphalt | 7d | 2026-04-16 | 2026-04-24 | SDR-ST-PRO-S-1030 SS, SDR-ST-MILS-1000 | 0d |  | 5x10 Sudair Station | SIC- Cost; Civil Engineer |  |  |
|  | 4 | **Electrical** |  | 2026-04-16 | 2026-04-24 |  |  |  |  |  |  |  |
| SDR-ST-PRO-S-1140 |  | LOW VOLTAGE CABLES | 7d | 2026-04-16 | 2026-04-24 | SDR-ST-MILS-1000 SS+8d, SDR-ST-PRO-S-1010 SS | 13d | 0d | 5x10 Sudair Station | SIC- Cost; Electrical Engineer | 695 | M |
| SDR-ST-PRO-S-1150 |  | LOW VOLTAGE DISTRIBUTION Panel | 7d | 2026-04-16 | 2026-04-24 | SDR-ST-PRO-S-1140 SS, SDR-ST-MILS-1000 | 13d | 0d | 5x10 Sudair Station | SIC- Cost; Electrical Engineer | 1 | Number |
| SDR-ST-PRO-S-1160 |  | STREET LIGHTING FEEDER Panel | 7d | 2026-04-16 | 2026-04-24 | SDR-ST-PRO-S-1140 SS, SDR-ST-PRO-S-1150 SS, SDR-ST-MILS-1000 | 13d | 0d | 5x10 Sudair Station | SIC- Cost; Electrical Engineer | 2 | Number |
| SDR-ST-PRO-S-1170 |  | STREET LIGHTING CABLES | 7d | 2026-04-16 | 2026-04-24 | SDR-ST-PRO-S-1140 SS, SDR-ST-PRO-S-1160 SS, SDR-ST-MILS-1000 | 13d | 0d | 5x10 Sudair Station | SIC- Cost; Electrical Engineer | 6800 | M |
| SDR-ST-PRO-S-1200 |  | ROAD CROSSING DUCTS Ø110mm | 7d | 2026-04-16 | 2026-04-24 | SDR-ST-PRO-S-1140 SS, SDR-ST-PRO-S-1250 SS, SDR-ST-MILS-1000 | 13d | 0d | 5x10 Sudair Station | SIC- Cost; Electrical Engineer | 140 | M |
| SDR-ST-PRO-S-1210 |  | Drawpits | 7d | 2026-04-16 | 2026-04-24 | SDR-ST-PRO-S-1140 SS, SDR-ST-PRO-S-1150 SS, SDR-ST-MILS-1000 | 13d | 0d | 5x10 Sudair Station | SIC- Cost; Electrical Engineer | 16 | Number |
| SDR-ST-PRO-S-1230 |  | CCTV :5MP IP PoE Bullet Camera | 7d | 2026-04-16 | 2026-04-24 | SDR-ST-PRO-S-1140 SS, SDR-ST-PRO-S-1170 SS, SDR-ST-MILS-1000 | 13d | 0d | 5x10 Sudair Station | SIC- Cost; Electrical Engineer | 16 | Number |
| SDR-ST-PRO-S-1240 |  | CCTV :Pole mounted Filed Equipment cabinet (FE | 7d | 2026-04-16 | 2026-04-24 | SDR-ST-PRO-S-1140 SS, SDR-ST-PRO-S-1250 SS, SDR-ST-MILS-1000 | 13d | 0d | 5x10 Sudair Station | SIC- Cost; Electrical Engineer | 4 | Number |
| SDR-ST-PRO-S-1250 |  | VOICE EVACUATION SYSTEM | 7d | 2026-04-16 | 2026-04-24 | SDR-ST-PRO-S-1140 SS, SDR-ST-PRO-S-1230 SS, SDR-ST-MILS-1000 | 13d | 0d | 5x10 Sudair Station | SIC- Cost; Electrical Engineer | 32 | Number |
|  | 1 | **Mechanical** |  | 2026-04-16 | 2026-04-24 |  |  |  |  |  |  |  |
| SDR-ST-PRO-S-1040 |  | HDPE PIPES & FITTINGS | 7d | 2026-04-16 | 2026-04-24 | SDR-ST-PRO-S-1030 SS, SDR-ST-MILS-1000 | 13d | 0d | 5x10 Sudair Station | SIC- Cost; Mechanical Engineer |  |  |
| SDR-ST-PRO-S-1050 |  | CONCRETE PIPES AND FITTINGS | 7d | 2026-04-16 | 2026-04-24 | SDR-ST-PRO-S-1030 SS, SDR-ST-MILS-1000 | 13d | 0d | 5x10 Sudair Station | SIC- Cost; Mechanical Engineer |  |  |
| SDR-ST-PRO-S-1070 |  | GI GOOSENECK & VENT | 7d | 2026-04-16 | 2026-04-24 | SDR-ST-PRO-S-1030 SS, SDR-ST-MILS-1000 | 13d | 0d | 5x10 Sudair Station | SIC- Cost; Mechanical Engineer |  |  |
| SDR-ST-PRO-S-1080 |  | WARNING TAPE | 7d | 2026-04-16 | 2026-04-24 | SDR-ST-PRO-S-1030 SS, SDR-ST-MILS-1000 | 13d | 0d | 5x10 Sudair Station | SIC- Cost; Mechanical Engineer |  |  |
| SDR-ST-PRO-S-1090 |  | MANHOLE, CATCH BASIN & VALVE BOX COVER | 7d | 2026-04-16 | 2026-04-24 | SDR-ST-PRO-S-1030 SS, SDR-ST-MILS-1000 | 13d | 0d | 5x10 Sudair Station | SIC- Cost; Mechanical Engineer |  |  |

| ID | WBS | Activity | Duration | Start | Finish | Predecessors | Total float | Free float | Calendar | Resources | BOQ Qty | UOM |
| --- | --- | --- | --- | --- | --- | --- | --- | --- | --- | --- | --- | --- |
|  | 1 | **Long Lead Items** |  | 2026-04-16 | 2026-04-24 |  |  |  |  |  |  |  |
|  | 1 | **Civil** |  | 2026-04-16 | 2026-04-24 |  |  |  |  |  |  |  |
| SDR-ST-PRO-S-1000 |  | Metal railing for platform | 7d | 2026-04-16 | 2026-04-24 | SDR-ST-MILS-1000 SS+8d, SDR-ST-MILS-1000 | 13d | 0d | 5x10 Sudair Station | SIC- Cost; Civil Engineer |  |  |
| SDR-ST-PRO-S-1020 |  | Canopy | 7d | 2026-04-16 | 2026-04-24 | SDR-ST-MILS-1000 SS+8d, SDR-ST-MILS-1000 | 13d | 0d | 5x10 Sudair Station | SIC- Cost; Civil Engineer |  |  |
|  | 3 | **Electrical** |  | 2026-04-16 | 2026-04-24 |  |  |  |  |  |  |  |
| SDR-ST-PRO-S-1110 |  | MEDIUM VOLTAGE CABLES DUCT BANKS | 7d | 2026-04-16 | 2026-04-24 | SDR-ST-MILS-1000 SS+8d, SDR-ST-MILS-1000 | 13d | 0d | 5x10 Sudair Station | SIC- Cost; Electrical Engineer | 105 | M |
| SDR-ST-PRO-S-1120 |  | MEDIUM VOLTAGE CABLES | 7d | 2026-04-16 | 2026-04-24 | SDR-ST-PRO-S-1110 SS, SDR-ST-MILS-1000 | 13d | 0d | 5x10 Sudair Station | SIC- Cost; Electrical Engineer | 7120 | M |
| SDR-ST-PRO-S-1130 |  | SUB-STATION | 7d | 2026-04-16 | 2026-04-24 | SDR-ST-PRO-S-1110 SS, SDR-ST-MILS-1000 | 13d | 0d | 5x10 Sudair Station | SIC- Cost; Electrical Engineer | 2 | Number |
| SDR-ST-PRO-S-1180 |  | LIGHTING POLES | 7d | 2026-04-16 | 2026-04-24 | SDR-ST-PRO-S-1110 SS, SDR-ST-MILS-1000 | 13d | 0d | 5x10 Sudair Station | SIC- Cost; Electrical Engineer | 143 | Number |
| SDR-ST-PRO-S-1190 |  | STREET LIGHTING LUMINAIRE | 7d | 2026-04-16 | 2026-04-24 | SDR-ST-PRO-S-1110 SS, SDR-ST-MILS-1000 | 13d | 0d | 5x10 Sudair Station | SIC- Cost; Electrical Engineer | 276 | Number |
| SDR-ST-PRO-S-1220 |  | Outdoor Lighting Fixtures | 7d | 2026-04-16 | 2026-04-24 | SDR-ST-PRO-S-1110 SS, SDR-ST-MILS-1000 | 13d | 0d | 5x10 Sudair Station | SIC- Cost; Electrical Engineer | 390 | Number |
|  | 2 | **Mechanical** |  | 2026-04-16 | 2026-04-24 |  |  |  |  |  |  |  |
| SDR-ST-PRO-S-1100 |  | WASHOUT & AIR VALVE, GATE VALVE, BUTTERFLY VALVE | 7d | 2026-04-16 | 2026-04-24 | SDR-ST-MILS-1000 SS+8d, SDR-ST-PRO-S-1220 SS, SDR-ST-MILS-1000 | 15d | 0d | 5x10 Sudair Station | SIC- Cost; Mechanical Engineer |  |  |
|  | 6 | **Materials Approval** |  | 2026-04-22 | 2026-05-06 |  |  |  |  |  |  |  |
|  | 2 | **Short Lead Items** |  | 2026-04-22 | 2026-05-06 |  |  |  |  |  |  |  |
|  | 1 | **Civil** |  | 2026-04-25 | 2026-05-06 |  |  |  |  |  |  |  |
| SDR-ST-PRO-A-1010 |  | Waterproofing (Thermal & moisture Protection) | 11d | 2026-04-25 | 2026-05-06 | SDR-ST-PRO-S-1010 | 0d |  |  | SIC- Cost; Civil Engineer |  |  |
| SDR-ST-PRO-A-1030 |  | Interlock | 11d | 2026-04-25 | 2026-05-06 | SDR-ST-PRO-S-1030 | 17d |  |  | SIC- Cost; Civil Engineer |  |  |
| SDR-ST-PRO-A-1060 |  | Kerbstone | 11d | 2026-04-25 | 2026-05-06 | SDR-ST-PRO-S-1060 | 17d |  |  | SIC- Cost; Civil Engineer |  |  |
| SDR-ST-PRO-A-1260 |  | Steel Bars | 11d | 2026-04-25 | 2026-05-06 | SDR-ST-PRO-S-1260 | 0d |  |  | SIC- Cost; Civil Engineer |  |  |
| SDR-ST-PRO-A-1270 |  | Asphalt | 11d | 2026-04-25 | 2026-05-06 | SDR-ST-PRO-S-1270 | 17d |  |  | SIC- Cost; Civil Engineer |  |  |
|  | 3 | **Electrical** |  | 2026-04-22 | 2026-05-06 |  |  |  |  |  |  |  |
| SDR-ST-PRO-A-1130 |  | STREET LIGHTING FEEDER Panel | 11d | 2026-04-22 | 2026-05-04 | SDR-ST-PRO-S-1160 SS+4d | 19d |  |  | SIC- Cost; Electrical Engineer | 2 | Number |
| SDR-ST-PRO-A-1110 |  | LOW VOLTAGE CABLES | 11d | 2026-04-25 | 2026-05-06 | SDR-ST-PRO-S-1140 | 17d |  |  | SIC- Cost; Electrical Engineer | 695 | M |
| SDR-ST-PRO-A-1120 |  | LOW VOLTAGE DISTRIBUTION Panel | 11d | 2026-04-25 | 2026-05-06 | SDR-ST-PRO-S-1150 | 17d |  |  | SIC- Cost; Electrical Engineer | 1 | Number |
| SDR-ST-PRO-A-1140 |  | STREET LIGHTING CABLES | 11d | 2026-04-25 | 2026-05-06 | SDR-ST-PRO-S-1170 | 17d |  |  | SIC- Cost; Electrical Engineer | 6800 | M |
| SDR-ST-PRO-A-1150 |  | ROAD CROSSING DUCTS Ø110mm | 11d | 2026-04-25 | 2026-05-06 | SDR-ST-PRO-S-1200 | 17d |  |  | SIC- Cost; Electrical Engineer | 140 | M |
| SDR-ST-PRO-A-1160 |  | Drawpits | 11d | 2026-04-25 | 2026-05-06 | SDR-ST-PRO-S-1210 | 17d |  |  | SIC- Cost; Electrical Engineer | 16 | Number |
| SDR-ST-PRO-A-1170 |  | CCTV :5MP IP PoE Bullet Camera | 11d | 2026-04-25 | 2026-05-06 | SDR-ST-PRO-S-1230 | 17d |  |  | SIC- Cost; Electrical Engineer | 16 | Number |
| SDR-ST-PRO-A-1180 |  | CCTV :Pole mounted Filed Equipment cabinet (FE | 11d | 2026-04-25 | 2026-05-06 | SDR-ST-PRO-S-1240 | 17d |  |  | SIC- Cost; Electrical Engineer | 4 | Number |
| SDR-ST-PRO-A-1190 |  | VOICE EVACUATION SYSTEM | 11d | 2026-04-25 | 2026-05-06 | SDR-ST-PRO-S-1250 | 17d |  |  | SIC- Cost; Electrical Engineer | 32 | Number |

| ID | WBS | Activity | Duration | Start | Finish | Predecessors | Total float | Free float | Calendar | Resources | BOQ Qty | UOM |
| --- | --- | --- | --- | --- | --- | --- | --- | --- | --- | --- | --- | --- |
|  | 2 | **Mechanical** |  | 2026-04-25 | 2026-05-06 |  |  |  |  |  |  |  |
| SDR-ST-PRO-A-1040 |  | HDPE PIPES & FITTINGS | 11d | 2026-04-25 | 2026-05-06 | SDR-ST-PRO-S-1040 | 17d |  |  | SIC- Cost; Mechanical Engineer |  |  |
| SDR-ST-PRO-A-1050 |  | CONCRETE PIPES AND FITTINGS | 11d | 2026-04-25 | 2026-05-06 | SDR-ST-PRO-S-1050 | 17d |  |  | SIC- Cost; Mechanical Engineer |  |  |
| SDR-ST-PRO-A-1070 |  | GI GOOSENECK & VENT | 11d | 2026-04-25 | 2026-05-06 | SDR-ST-PRO-S-1070 | 17d |  |  | SIC- Cost; Mechanical Engineer |  |  |
| SDR-ST-PRO-A-1080 |  | WARNING TAPE | 11d | 2026-04-25 | 2026-05-06 | SDR-ST-PRO-S-1080 | 17d |  |  | SIC- Cost; Mechanical Engineer |  |  |
| SDR-ST-PRO-A-1090 |  | MANHOLE, CATCH BASIN & VALVE BOX COVER | 11d | 2026-04-25 | 2026-05-06 | SDR-ST-PRO-S-1090 | 17d |  |  | SIC- Cost; Mechanical Engineer |  |  |
|  | 1 | **Long Lead Items** |  | 2026-04-25 | 2026-05-06 |  |  |  |  |  |  |  |
|  | 1 | **Civil** |  | 2026-04-25 | 2026-05-06 |  |  |  |  |  |  |  |
| SDR-ST-PRO-A-1000 |  | Metal railing for platform | 11d | 2026-04-25 | 2026-05-06 | SDR-ST-PRO-S-1000 | 17d | 10d |  | SIC- Cost; Civil Engineer |  |  |
| SDR-ST-PRO-A-1020 |  | Canopy | 11d | 2026-04-25 | 2026-05-06 | SDR-ST-PRO-S-1020 | 17d |  |  | SIC- Cost; Civil Engineer |  |  |
|  | 3 | **Electrical** |  | 2026-04-25 | 2026-05-06 |  |  |  |  |  |  |  |
| SDR-ST-PRO-A-1200 |  | MEDIUM VOLTAGE CABLES DUCT BANKS | 11d | 2026-04-25 | 2026-05-06 | SDR-ST-PRO-S-1110 | 17d |  |  | SIC- Cost; Electrical Engineer | 105 | M |
| SDR-ST-PRO-A-1210 |  | MEDIUM VOLTAGE CABLES | 11d | 2026-04-25 | 2026-05-06 | SDR-ST-PRO-S-1120 | 17d |  |  | SIC- Cost; Electrical Engineer | 7120 | M |
| SDR-ST-PRO-A-1220 |  | SUB-STATION | 11d | 2026-04-25 | 2026-05-06 | SDR-ST-PRO-S-1130 | 17d |  |  | SIC- Cost; Electrical Engineer | 2 | Number |
| SDR-ST-PRO-A-1230 |  | LIGHTING POLES | 11d | 2026-04-25 | 2026-05-06 | SDR-ST-PRO-S-1180 | 17d |  |  | SIC- Cost; Electrical Engineer | 143 | Number |
| SDR-ST-PRO-A-1240 |  | STREET LIGHTING LUMINAIRE | 11d | 2026-04-25 | 2026-05-06 | SDR-ST-PRO-S-1190 | 17d |  |  | SIC- Cost; Electrical Engineer | 276 | Number |
| SDR-ST-PRO-A-1250 |  | Outdoor Lighting Fixtures | 11d | 2026-04-25 | 2026-05-06 | SDR-ST-PRO-S-1220 | 17d |  |  | SIC- Cost; Electrical Engineer | 390 | Number |
|  | 2 | **Mechanical** |  | 2026-04-25 | 2026-05-06 |  |  |  |  |  |  |  |
| SDR-ST-PRO-A-1100 |  | WASHOUT & AIR VALVE, GATE VALVE, BUTTERFLY VALVE | 11d | 2026-04-25 | 2026-05-06 | SDR-ST-PRO-S-1100 | 18d |  |  | SIC- Cost; Mechanical Engineer |  |  |
|  | 4 | **Procurement** |  | 2026-06-01 | 2027-04-15 |  |  |  |  |  |  |  |
|  | 5 | **Purchase Order** |  | 2026-06-01 | 2026-12-10 |  |  |  |  |  |  |  |
|  | 4 | **Short Lead Items** |  | 2026-06-01 | 2026-11-11 |  |  |  |  |  |  |  |
|  | 1 | **Civil** |  | 2026-06-01 | 2026-11-09 |  |  |  |  |  |  |  |
| SDR-ST-PRO-PO-1260 |  | Steel Bars | 10d | 2026-06-01 | 2026-06-12 | SDR-ST-PRO-A-1260 FS+17d, SDR-ST-PRO-A-1030, SDR-ST-PRO-A-1060, SDR-ST-PRO-A-1260 FF, SDR-ST-PRO-A-1270, SDR-ST-PRO-A-1130, SDR-ST-PRO-A-1110, SDR-ST-PRO-A-1120, SDR-ST-PRO-A-1140, SDR-ST-PRO-A-1150, SDR-ST-PRO-A-1160, SDR-ST-PRO-A-1170, SDR-ST-PRO-A-1180, SDR-ST-PRO-A-1190, SDR-ST-PRO-A-1040, SDR-ST-PRO-A-1050, SDR-ST-PRO-A-1070, SDR-ST-PRO-A-1080, SDR-ST-PRO-A-1090, SDR-ST-PRO-A-1000, SDR-ST-PRO-A-1020, SDR-ST-PRO-A-1200, SDR-ST-PRO-A-1210, SDR-ST-PRO-A-1220, SDR-ST-PRO-A-1230, SDR-ST-PRO-A-1240, SDR-ST-PRO-A-1250, SDR-ST-PREL-1110, SDR-ST-PRO-S-1160 | 0d |  | 5x10 Sudair Station | Civil Engineer [456.05 h] |  |  |
| SDR-ST-PRO-PO-1030 |  | Waterproofing (Thermal & moisture Protection) | 20d | 2026-08-10 | 2026-09-04 | SDR-ST-PRO-A-1010 FS+77d | 0d |  | 5x10 Sudair Station | Civil Engineer [456.05 h] |  |  |
| SDR-ST-PRO-PO-1040 |  | Interlock | 12d | 2026-09-02 | 2026-09-17 | SDR-ST-PRO-A-1030 FS+60d, SDR-ST-PRO-PO-1030 SS+17d | 0.1d | 0d | 5x10 Sudair Station | Civil Engineer [456.05 h] |  |  |
| SDR-ST-PRO-PO-1060 |  | Kerbstone | 10d | 2026-09-03 | 2026-09-16 | SDR-ST-PRO-A-1060 FS+61d, SDR-ST-PRO-PO-1040 SS+1d | 1d | 0d | 5x10 Sudair Station | Civil Engineer [456.05 h] |  |  |
| SDR-ST-PRO-PO-1270 |  | Asphalt | 10d | 2026-10-27 | 2026-11-09 | SDR-ST-PRO-A-1270 FS+100d, SDR-ST-PRO-PO-1060 FS+27d | 9.3d | 0d | 5x10 Sudair Station | Civil Engineer [456.05 h] |  |  |

| ID | WBS | Activity | Duration | Start | Finish | Predecessors | Total float | Free float | Calendar | Resources | BOQ Qty | UOM |
| --- | --- | --- | --- | --- | --- | --- | --- | --- | --- | --- | --- | --- |
|  | 3 | **Electrical** |  | 2026-08-18 | 2026-11-11 |  |  |  |  |  |  |  |
| SDR-ST-PRO-PO-1100 |  | LOW VOLTAGE CABLES | 20d | 2026-08-18 | 2026-09-14 | SDR-ST-PRO-A-1110 FS+62d, SDR-ST-PRO-PO-1030 SS+6d | 0d |  | 5x10 Sudair Station | Electrical Engineer [456.05 h] | 695 | M |
| SDR-ST-PRO-PO-1020 |  | Drawpits | 10d | 2026-08-28 | 2026-09-10 | SDR-ST-PRO-A-1160 FS+55d, SDR-ST-PRO-PO-1100 SS+8d | 0d |  | 5x10 Sudair Station | Electrical Engineer [456.05 h] | 16 | Number |
| SDR-ST-PRO-PO-1010 |  | ROAD CROSSING DUCTS Ø110mm | 10d | 2026-08-31 | 2026-09-11 | SDR-ST-PRO-A-1150 FS+55d, SDR-ST-PRO-PO-1260 FS+55d, SDR-ST-PRO-PO-1070 SS | 0d |  | 5x10 Sudair Station | Electrical Engineer [456.05 h] | 140 | M |
| SDR-ST-PRO-PO-1070 |  | STREET LIGHTING FEEDER Panel | 10d | 2026-08-31 | 2026-09-11 | SDR-ST-PRO-A-1130 FS+60d, SDR-ST-PRO-PO-1020 SS+1d | 0d |  | 5x10 Sudair Station | Electrical Engineer [456.05 h] | 2 | Number |
| SDR-ST-PRO-PO-1130 |  | LOW VOLTAGE DISTRIBUTION Panel | 10d | 2026-09-01 | 2026-09-14 | SDR-ST-PRO-A-1120 FS+68d, SDR-ST-PRO-PO-1010 SS+1d | 0d |  | 5x10 Sudair Station | Electrical Engineer [456.05 h] | 1 | Number |
| SDR-ST-PRO-PO-1050 |  | CCTV :Pole mounted Filed Equipment cabinet | 10d | 2026-09-07 | 2026-09-18 | SDR-ST-PRO-A-1180 FS+60d, SDR-ST-PRO-PO-1130 SS+4d | 0d |  | 5x10 Sudair Station | Electrical Engineer [456.02 h] | 4 | Number |
| SDR-ST-PRO-PO-1110 |  | STREET LIGHTING CABLES | 11d | 2026-09-08 | 2026-09-22 | SDR-ST-PRO-A-1140 FS+62d, SDR-ST-PRO-PO-1050 SS+1d | 0d |  | 5x10 Sudair Station | Electrical Engineer [456.05 h] | 6800 | M |
| SDR-ST-PRO-PO-1220 |  | VOICE EVACUATION SYSTEM | 10d | 2026-10-26 | 2026-11-06 | SDR-ST-PRO-A-1190 FS+100d, SDR-ST-PRO-PO-1110 FS+22d | 0d |  | 5x10 Sudair Station | Electrical Engineer [456.05 h] | 32 | Number |
| SDR-ST-PRO-PO-1230 |  | CCTV :5MP IP PoE Bullet Camera | 10d | 2026-10-29 | 2026-11-11 | SDR-ST-PRO-A-1170 FS+105d, SDR-ST-PRO-PO-1220 SS+3d | 1.8d | 0d | 5x10 Sudair Station | Electrical Engineer [456.05 h] | 16 | Number |
|  | 2 | **Mechanical** |  | 2026-08-24 | 2026-09-28 |  |  |  |  |  |  |  |
| SDR-ST-PRO-PO-1000 |  | WARNING TAPE | 10d | 2026-08-24 | 2026-09-04 | SDR-ST-PRO-A-1080 FS+50d, SDR-ST-ENG-AP-1230, SDR-ST-ENG-AP-1080, SDR-ST-ENG-AP-1090, SDR-ST-ENG-AP-1100, SDR-ST-ENG-AP-1110, SDR-ST-ENG-AP-1120, SDR-ST-ENG-AP-1000, SDR-ST-ENG-AP-1010, SDR-ST-ENG-AP-1020, SDR-ST-ENG-AP-1030, SDR-ST-ENG-AP-1040, SDR-ST-ENG-AP-1050, SDR-ST-ENG-AP-1060, SDR-ST-ENG-AP-1070, SDR-ST-ENG-AP-1130, SDR-ST-ENG-AP-1140, SDR-ST-ENG-AP-1150, SDR-ST-ENG-AP-1160, SDR-ST-ENG-AP-1170, SDR-ST-ENG-AP-1180, SDR-ST-ENG-AP-1190, SDR-ST-ENG-AP-1200, SDR-ST-ENG-AP-1210, SDR-ST-ENG-AP-1220, SDR-ST-MILS-1050, SDR-ST-MILS-1040, SDR-ST-MILS-1030, SDR-ST-MILS-1020, SDR-ST-PREL-1100, SDR-ST-PREL-1090, SDR-ST-PREL-1080, SDR-ST-PREL-1060, SDR-ST-PREL-1070, SDR-ST-PRO-PO-1100 SS+4d | 4.1d | 0d | 5x10 Sudair Station | Mechanical Engineer [456.05 h] |  |  |
| SDR-ST-PRO-PO-1080 |  | HDPE PIPES & FITTINGS | 10d | 2026-09-07 | 2026-09-18 | SDR-ST-PRO-A-1040 FS+62d, SDR-ST-PRO-PO-1030 | 0d |  | 5x10 Sudair Station | Mechanical Engineer [456.05 h] |  |  |
| SDR-ST-PRO-PO-1090 |  | GI GOOSENECK & VENT | 10d | 2026-09-07 | 2026-09-18 | SDR-ST-PRO-A-1070 FS+62d, SDR-ST-PRO-PO-1030 | 1.1d | 0d | 5x10 Sudair Station | Mechanical Engineer [456.05 h] |  |  |
| SDR-ST-PRO-PO-1120 |  | CONCRETE PIPES AND FITTINGS | 10d | 2026-09-07 | 2026-09-18 | SDR-ST-PRO-A-1050 FS+63d, SDR-ST-PRO-PO-1030 | 0d |  | 5x10 Sudair Station | Mechanical Engineer [456.05 h] |  |  |
| SDR-ST-PRO-PO-1140 |  | MANHOLE, CATCH BASIN & VALVE BOX COVER | 10d | 2026-09-14 | 2026-09-28 | SDR-ST-PRO-A-1090 FS+70d, SDR-ST-PRO-PO-1030 FS+5d | 0.2d | 0d | 5x10 Sudair Station | Mechanical Engineer [456.05 h] |  |  |
|  | 5 | **Long Lead Items** |  | 2026-08-25 | 2026-12-10 |  |  |  |  |  |  |  |
|  | 1 | **Civil** |  | 2026-08-25 | 2026-12-08 |  |  |  |  |  |  |  |
| SDR-ST-PRO-PO-1150 |  | Metal railing for platform | 26d | 2026-08-25 | 2026-09-30 | SDR-ST-PRO-A-1000 FS+80d, SDR-ST-PRO-PO-1000 SS+1d | 6.9d | 0d | 5x10 Sudair Station | Civil Engineer [456.05 h] |  |  |
| SDR-ST-PRO-PO-1240 |  | Canopy | 14d | 2026-11-19 | 2026-12-08 | SDR-ST-PRO-A-1020 FS+120d, SDR-ST-PRO-PO-1230 FS+5d | 1.8d | 0d | 5x10 Sudair Station | Civil Engineer [456.05 h] |  |  |
|  | 3 | **Electrical** |  | 2026-10-12 | 2026-12-10 |  |  |  |  |  |  |  |
| SDR-ST-PRO-PO-1160 |  | MEDIUM VOLTAGE CABLES DUCT BANKS | 14d | 2026-10-12 | 2026-10-29 | SDR-ST-PRO-A-1200 FS+90d, SDR-ST-PRO-PO-1140 FS+9d | 0.2d | 0d | 5x10 Sudair Station | Electrical Engineer [456.05 h] | 105 | M |
| SDR-ST-PRO-PO-1170 |  | MEDIUM VOLTAGE CABLES | 14.8d | 2026-10-12 | 2026-10-30 | SDR-ST-PRO-A-1210 FS+90d, SDR-ST-PRO-PO-1160 SS | 0.2d | 0d | 5x10 Sudair Station | Electrical Engineer [456.05 h] | 7120 | M |
| SDR-ST-PRO-PO-1180 |  | Outdoor Lighting Fixtures | 14d | 2026-10-19 | 2026-11-05 | SDR-ST-PRO-A-1250 FS+95d, SDR-ST-PRO-PO-1140 FS+14d | 1.2d | 0d | 5x10 Sudair Station | Electrical Engineer [456.05 h] | 390 | Number |
| SDR-ST-PRO-PO-1200 |  | LIGHTING POLES | 14d | 2026-10-19 | 2026-11-05 | SDR-ST-PRO-A-1230 FS+96d, SDR-ST-PRO-PO-1140 FS+14d, SDR-ST-PRO-MS-1000 | 6d | 0d | 5x10 Sudair Station | Electrical Engineer [456.05 h] | 143 | Number |
| SDR-ST-PRO-PO-1210 |  | STREET LIGHTING LUMINAIRE | 14d | 2026-11-10 | 2026-11-27 | SDR-ST-PRO-A-1240 FS+97d, SDR-ST-PRO-PO-1220 FS+1d | 0d |  | 5x10 Sudair Station | Electrical Engineer [456.05 h] | 276 | Number |
| SDR-ST-PRO-PO-1250 |  | SUB-STATION | 14d | 2026-11-23 | 2026-12-10 | SDR-ST-PRO-A-1220 FS+125d, SDR-ST-PRO-PO-1230 FS+7d | 6d | 0d | 5x10 Sudair Station | Electrical Engineer [456.05 h] | 2 | Number |

| ID | WBS | Activity | Duration | Start | Finish | Predecessors | Total float | Free float | Calendar | Resources | BOQ Qty | UOM |
| --- | --- | --- | --- | --- | --- | --- | --- | --- | --- | --- | --- | --- |
|  | 2 | **Mechanical** |  | 2026-10-26 | 2026-11-12 |  |  |  |  |  |  |  |
| SDR-ST-PRO-PO-1190 |  | WASHOUT & AIR VALVE, GATE VALVE, BUTTERFLY VALVE | 14d | 2026-10-26 | 2026-11-12 | SDR-ST-PRO-A-1100 FS+96d, SDR-ST-PRO-PO-1180 SS+5d | 1.2d | 0d | 5x10 Sudair Station | Mechanical Engineer [456.05 h] |  |  |
|  | 6 | **Delivery to Site** |  | 2026-07-22 | 2027-04-11 |  |  |  |  |  |  |  |
|  | 2 | **Short Lead Items Delivery** |  | 2026-07-22 | 2027-02-09 |  |  |  |  |  |  |  |
|  | 1 | **Civil** |  | 2026-07-22 | 2027-02-09 |  |  |  |  |  |  |  |
| SDR-ST-PRO-DL-1260 |  | Steel Bars | 60d | 2026-07-22 | 2026-09-20 | SDR-ST-PRO-PO-1260 FS+28d | 7.8d | 0d | 7x10 Sudair Station | SIC- Cost; Delivery Team [2736.29 h] |  |  |
| SDR-ST-PRO-DL-1030 |  | Waterproofing (Thermal & moisture Protection) | 60d | 2026-09-04 | 2026-11-04 | SDR-ST-PRO-PO-1030 | 15.4d | 0d | 7x10 Sudair Station | SIC- Cost; Delivery Team [2736.29 h] |  |  |
| SDR-ST-PRO-DL-1060 |  | Kerbstone | 60d | 2026-09-17 | 2026-11-17 | SDR-ST-PRO-PO-1060 FS+1d | 2.4d | 0d | 7x10 Sudair Station | SIC- Cost; Delivery Team [2736.29 h] |  |  |
| SDR-ST-PRO-DL-1040 |  | Interlock | 52d | 2026-09-28 | 2026-11-19 | SDR-ST-PRO-PO-1040 FS+6d | 0.4d | 0d | 7x10 Sudair Station | SIC- Cost; Delivery Team [2736.29 h] |  |  |
| SDR-ST-PRO-DL-1270 |  | Asphalt | 90d | 2026-11-10 | 2027-02-09 | SDR-ST-PRO-PO-1270 FS+1d | 13.6d | 0d | 7x10 Sudair Station | SIC- Cost; Delivery Team [2736.29 h] |  |  |
|  | 3 | **Electrical** |  | 2026-09-10 | 2027-01-10 |  |  |  |  |  |  |  |
| SDR-ST-PRO-DL-1020 |  | Drawpits | 30d | 2026-09-10 | 2026-10-11 | SDR-ST-PRO-PO-1020 | 3.9d | 0d | 7x10 Sudair Station | SIC- Cost; Delivery Team [2736.29 h] | 16 | Number |
| SDR-ST-PRO-DL-1010 |  | ROAD CROSSING DUCTS Ø110mm | 29d | 2026-09-11 | 2026-10-11 | SDR-ST-PRO-PO-1010 | 11.3d | 0d | 7x10 Sudair Station | SIC- Cost; Delivery Team [2736.29 h] | 140 | M |
| SDR-ST-PRO-DL-1100 |  | LOW VOLTAGE CABLES | 60d | 2026-09-14 | 2026-11-14 | SDR-ST-PRO-PO-1100 | 5.4d | 0d | 7x10 Sudair Station | SIC- Cost; Delivery Team [2736.29 h] | 695 | M |
| SDR-ST-PRO-DL-1130 |  | LOW VOLTAGE DISTRIBUTION Panel | 40d | 2026-09-17 | 2026-10-28 | SDR-ST-PRO-PO-1130 FS+3d | 8.4d | 0d | 7x10 Sudair Station | SIC- Cost; Delivery Team [2736.29 h] | 1 | Number |
| SDR-ST-PRO-DL-1050 |  | CCTV :Pole mounted Filed Equipment cabinet | 60d | 2026-09-18 | 2026-11-18 | SDR-ST-PRO-PO-1050 | 1.4d | 0d | 7x10 Sudair Station | SIC- Cost; Delivery Team [2736.29 h] | 4 | Number |
| SDR-ST-PRO-DL-1070 |  | STREET LIGHTING FEEDER Panel | 40d | 2026-09-21 | 2026-11-01 | SDR-ST-PRO-PO-1070 FS+6d | 4.4d | 0d | 7x10 Sudair Station | SIC- Cost; Delivery Team [2736.29 h] | 2 | Number |
| SDR-ST-PRO-DL-1110 |  | STREET LIGHTING CABLES | 35d | 2026-09-28 | 2026-11-02 | SDR-ST-PRO-PO-1110 FS+3d | 3.4d | 0d | 7x10 Sudair Station | SIC- Cost; Delivery Team [2736.29 h] | 6800 | M |
| SDR-ST-PRO-DL-1200 |  | VOICE EVACUATION SYSTEM | 60d | 2026-11-06 | 2027-01-05 | SDR-ST-PRO-PO-1220 | 8.4d | 0d | 7x10 Sudair Station | SIC- Cost; Delivery Team [2736.29 h] | 32 | Number |
| SDR-ST-PRO-DL-1230 |  | CCTV :5MP IP PoE Bullet Camera | 60d | 2026-11-11 | 2027-01-10 | SDR-ST-PRO-PO-1230 | 3.4d | 0d | 7x10 Sudair Station | SIC- Cost; Delivery Team [2736.29 h] | 16 | Number |
|  | 2 | **Mechanical** |  | 2026-09-04 | 2026-12-07 |  |  |  |  |  |  |  |
| SDR-ST-PRO-DL-1000 |  | WARNING TAPE | 55d | 2026-09-04 | 2026-10-30 | SDR-ST-PRO-PO-1000 | 6.4d | 0d | 7x10 Sudair Station | SIC- Cost; Delivery Team [2736.29 h] |  |  |
| SDR-ST-PRO-DL-1080 |  | HDPE PIPES & FITTINGS | 60d | 2026-09-18 | 2026-11-18 | SDR-ST-PRO-PO-1080 | 1.4d | 0d | 7x10 Sudair Station | SIC- Cost; Delivery Team [2736.29 h] |  |  |
| SDR-ST-PRO-DL-1090 |  | GI GOOSENECK & VENT | 58d | 2026-09-18 | 2026-11-16 | SDR-ST-PRO-PO-1090 | 3.4d | 0d | 7x10 Sudair Station | SIC- Cost; Delivery Team [2736.29 h] |  |  |
| SDR-ST-PRO-DL-1120 |  | CONCRETE PIPES AND FITTINGS | 79d | 2026-09-18 | 2026-12-07 | SDR-ST-PRO-PO-1120 | 1.4d | 0d | 7x10 Sudair Station | SIC- Cost; Delivery Team [2736.29 h] |  |  |
| SDR-ST-PRO-DL-1140 |  | VALVE & BOX COVER | 70d | 2026-09-28 | 2026-12-07 | SDR-ST-PRO-PO-1140 | 1.4d | 0d | 7x10 Sudair Station | SIC- Cost; Delivery Team [2736.29 h] |  |  |

| ID | WBS | Activity | Duration | Start | Finish | Predecessors | Total float | Free float | Calendar | Resources | BOQ Qty | UOM |
| --- | --- | --- | --- | --- | --- | --- | --- | --- | --- | --- | --- | --- |
|  | 5 | **Long Lead Items Delivery** |  | 2026-10-28 | 2027-04-11 |  |  |  |  |  |  |  |
|  | 1 | **Civil** |  | 2026-10-28 | 2027-04-08 |  |  |  |  |  |  |  |
| SDR-ST-PRO-DL-1150 |  | Metal railing for platform | 97d | 2026-10-28 | 2027-02-02 | SDR-ST-PRO-PO-1150 FS+20d | 8.9d | 0d | 7x10 Sudair Station | SIC- Cost; Delivery Team [2736.29 h] |  |  |
| SDR-ST-PRO-DL-1240 |  | Canopy | 90d | 2026-12-22 | 2027-04-08 | SDR-ST-PRO-PO-1240 FS+10d | 1.8d | 0d | 7x10 Sudair Station | SIC- Cost; Delivery Team [2736.29 h] |  |  |
|  | 3 | **Electrical** |  | 2026-10-29 | 2027-04-11 |  |  |  |  |  |  |  |
| SDR-ST-PRO-DL-1160 |  | MEDIUM VOLTAGE CABLES DUCT BANKS | 105d | 2026-10-29 | 2027-02-14 | SDR-ST-PRO-PO-1160 | 1.6d | 0d | 7x10 Sudair Station | SIC- Cost; Delivery Team [2736.29 h] | 105 | M |
| SDR-ST-PRO-DL-1170 |  | MEDIUM VOLTAGE CABLES | 105d | 2026-10-30 | 2027-02-15 | SDR-ST-PRO-PO-1170 | 0.8d | 0d | 7x10 Sudair Station | SIC- Cost; Delivery Team [2736.29 h] | 7120 | M |
| SDR-ST-PRO-DL-1210 |  | LIGHTING POLES | 105d | 2026-11-05 | 2027-02-27 | SDR-ST-PRO-PO-1200 | 8.9d | 0d | 7x10 Sudair Station | SIC- Cost; Delivery Team [2736.29 h] | 143 | Number |
| SDR-ST-PRO-DL-1180 |  | Outdoor Lighting Fixtures | 80d | 2026-12-03 | 2027-03-04 | SDR-ST-PRO-PO-1180 FS+20d | 8.8d | 0d | 7x10 Sudair Station | SIC- Cost; Delivery Team [2736.29 h] | 390 | Number |
| SDR-ST-PRO-DL-1250 |  | SUB-STATION | 105d | 2026-12-10 | 2027-04-11 | SDR-ST-PRO-PO-1250 | 8.8d | 0d | 7x10 Sudair Station | SIC- Cost; Delivery Team [2736.29 h] | 2 | Number |
| SDR-ST-PRO-DL-1220 |  | STREET LIGHTING LUMINAIRE | 80d | 2026-12-18 | 2027-03-25 | SDR-ST-PRO-PO-1210 FS+15d | 1.5d | 0d | 7x10 Sudair Station | SIC- Cost; Delivery Team [2736.29 h] | 276 | Number |
|  | 2 | **Mechanical** |  | 2026-12-08 | 2027-03-25 |  |  |  |  |  |  |  |
| SDR-ST-PRO-DL-1190 |  | WASHOUT & AIR VALVE, GATE VALVE, BUTTERFLY VALVE | 90d | 2026-12-08 | 2027-03-25 | SDR-ST-PRO-PO-1190 FS+18d | 1.5d | 0d | 7x10 Sudair Station | SIC- Cost; Delivery Team [2736.29 h] |  |  |
|  | 4 | **Materials Staging Time** |  | 2026-09-20 | 2027-04-15 |  |  |  |  |  |  |  |
|  | 4 | **Short Lead Items Delivery** |  | 2026-09-20 | 2027-02-16 |  |  |  |  |  |  |  |
|  | 1 | **Civil** |  | 2026-09-20 | 2027-02-16 |  |  |  |  |  |  |  |
| SDR-ST-PRO-MS-1260 |  | Steel Bars | 4d | 2026-09-20 | 2026-09-25 | SDR-ST-PRO-DL-1260 | 7.8d | 5.4d | 7x10 Sudair Station | Delivery Team |  |  |
| SDR-ST-PRO-MS-1070 |  | Waterproofing (Thermal & moisture Protection) | 4d | 2026-11-04 | 2026-11-08 | SDR-ST-PRO-DL-1030 | 15.4d | 15.3d | 7x10 Sudair Station | Delivery Team |  |  |
| SDR-ST-PRO-MS-1100 |  | Kerbstone | 4d | 2026-11-17 | 2026-11-21 | SDR-ST-PRO-DL-1060 | 2.4d | 2.3d | 7x10 Sudair Station | Delivery Team |  |  |
| SDR-ST-PRO-MS-1080 |  | Interlock | 4d | 2026-11-19 | 2026-11-23 | SDR-ST-PRO-DL-1040 | 0.4d | 0.3d | 7x10 Sudair Station | Delivery Team |  |  |
| SDR-ST-PRO-MS-1270 |  | Asphalt | 4d | 2027-02-09 | 2027-02-16 | SDR-ST-PRO-DL-1270, SDR-ST-CON-P1-5570 | 13.6d |  | 7x10 Sudair Station | Delivery Team |  |  |
|  | 3 | **Electrical** |  | 2026-10-11 | 2027-01-14 |  |  |  |  |  |  |  |
| SDR-ST-PRO-MS-1000 |  | ROAD CROSSING DUCTS Ø110mm | 4d | 2026-10-11 | 2026-10-15 | SDR-ST-PRO-DL-1010 | 11.3d | 3.3d | 7x10 Sudair Station | Delivery Team | 140 | M |
| SDR-ST-PRO-MS-1010 |  | Drawpits | 4d | 2026-10-11 | 2026-10-15 | SDR-ST-PRO-DL-1020 | 3.9d |  | 7x10 Sudair Station | Delivery Team | 16 | Number |
| SDR-ST-PRO-MS-1040 |  | LOW VOLTAGE DISTRIBUTION Panel | 4d | 2026-10-28 | 2026-11-01 | SDR-ST-PRO-DL-1130 | 8.4d | 5.3d | 7x10 Sudair Station | Delivery Team | 1 | Number |
| SDR-ST-PRO-MS-1020 |  | STREET LIGHTING FEEDER Panel | 4d | 2026-11-01 | 2026-11-05 | SDR-ST-PRO-DL-1070 | 4.4d | 1.3d | 7x10 Sudair Station | Delivery Team | 2 | Number |
| SDR-ST-PRO-MS-1030 |  | STREET LIGHTING CABLES | 4d | 2026-11-02 | 2026-11-06 | SDR-ST-PRO-DL-1110 | 3.4d | 0.3d | 7x10 Sudair Station | Delivery Team | 6800 | M |
| SDR-ST-PRO-MS-1120 |  | LOW VOLTAGE CABLES | 4d | 2026-11-14 | 2026-11-18 | SDR-ST-PRO-DL-1100 | 5.4d | 5.3d | 7x10 Sudair Station | Delivery Team | 695 | M |
| SDR-ST-PRO-MS-1090 |  | CCTV :Pole mounted Filed Equipment cabinet | 4d | 2026-11-18 | 2026-11-22 | SDR-ST-PRO-DL-1050 | 1.4d | 1.3d | 7x10 Sudair Station | Delivery Team | 4 | Number |
| SDR-ST-PRO-MS-1150 |  | VOICE EVACUATION SYSTEM | 4d | 2027-01-05 | 2027-01-09 | SDR-ST-PRO-DL-1200 | 8.4d | 8.3d | 7x10 Sudair Station | Delivery Team | 32 | Number |
| SDR-ST-PRO-MS-1160 |  | CCTV :5MP IP PoE Bullet Camera | 4d | 2027-01-10 | 2027-01-14 | SDR-ST-PRO-DL-1230 | 3.4d | 3.3d | 7x10 Sudair Station | Delivery Team | 16 | Number |

| ID | WBS | Activity | Duration | Start | Finish | Predecessors | Total float | Free float | Calendar | Resources | Cost | BOQ Qty | UOM | BOQ Line item | Activities Codes Sudair Station |
| --- | --- | --- | --- | --- | --- | --- | --- | --- | --- | --- | --- | --- | --- | --- | --- |
|  | 2 | **Mechanical** |  | 2026-10-30 | 2026-12-11 |  |  |  |  |  |  |  |  |  |  |
| SDR-ST-PRO-MS-1050 |  | WARNING TAPE | 4d | 2026-10-30 | 2026-11-03 | SDR-ST-PRO-DL-1000 | 6.4d | 3.3d | 7x10 Sudair Station | Delivery Team |  |  |  |  |  |
| SDR-ST-PRO-MS-1060 |  | GI GOOSENECK & VENT | 4d | 2026-11-16 | 2026-11-20 | SDR-ST-PRO-DL-1090 | 3.4d | 3.3d | 7x10 Sudair Station | Delivery Team |  |  |  |  |  |
| SDR-ST-PRO-MS-1110 |  | HDPE PIPES & FITTINGS | 4d | 2026-11-18 | 2026-11-22 | SDR-ST-PRO-DL-1080 | 1.4d | 1.3d | 7x10 Sudair Station | Delivery Team |  |  |  |  |  |
| SDR-ST-PRO-MS-1130 |  | CONCRETE PIPES AND FITTINGS | 4d | 2026-12-07 | 2026-12-11 | SDR-ST-PRO-DL-1120 | 1.4d | 1.3d | 7x10 Sudair Station | Delivery Team |  |  |  |  |  |
| SDR-ST-PRO-MS-1140 |  | MANHOLE, CATCH BASIN & VALVE BOX COVER | 4d | 2026-12-07 | 2026-12-11 | SDR-ST-PRO-DL-1140 | 1.4d | 1.3d | 7x10 Sudair Station | Delivery Team |  |  |  |  |  |
|  | 5 | **Long Lead Items Delivery** |  | 2027-02-02 | 2027-04-15 |  |  |  |  |  |  |  |  |  |  |
|  | 1 | **Civil** |  | 2027-04-08 | 2027-04-12 |  |  |  |  |  |  |  |  |  |  |
| SDR-ST-PRO-MS-1240 |  | Aluminum Cladding Panels | 4d | 2027-04-08 | 2027-04-12 | SDR-ST-PRO-DL-1240 | 1.8d |  | 7x10 Sudair Station | Delivery Team |  |  |  |  |  |
|  | 3 | **Electrical** |  | 2027-02-14 | 2027-04-15 |  |  |  |  |  |  |  |  |  |  |
| SDR-ST-PRO-MS-1210 |  | MEDIUM VOLTAGE CABLES DUCT BANKS | 4d | 2027-02-14 | 2027-02-21 | SDR-ST-PRO-DL-1160, SDR-ST-CON-P1-5570 | 1.6d |  | 7x10 Sudair Station | Delivery Team |  | 105 | M |  |  |
| SDR-ST-PRO-MS-1220 |  | MEDIUM VOLTAGE CABLES | 4d | 2027-02-15 | 2027-02-23 | SDR-ST-PRO-DL-1170 | 0.8d |  | 7x10 Sudair Station | Delivery Team |  | 7120 | M |  |  |
| SDR-ST-PRO-MS-1230 |  | LIGHTING POLES | 4d | 2027-02-27 | 2027-03-05 | SDR-ST-PRO-DL-1210 | 8.9d | 0.6d | 7x10 Sudair Station | Delivery Team |  | 143 | Number |  |  |
| SDR-ST-PRO-MS-1170 |  | Outdoor Lighting Fixtures | 4d | 2027-03-18 | 2027-03-22 | SDR-ST-PRO-DL-1180 FS+8d | 8.8d |  | 7x10 Sudair Station | Delivery Team |  | 390 | Number |  |  |
| SDR-ST-PRO-MS-1180 |  | STREET LIGHTING LUMINAIRE | 4d | 2027-03-25 | 2027-03-29 | SDR-ST-PRO-DL-1220 | 1.5d |  | 7x10 Sudair Station | Delivery Team |  | 276 | Number |  |  |
| SDR-ST-PRO-MS-1250 |  | SUB-STATION | 4d | 2027-04-11 | 2027-04-15 | SDR-ST-PRO-DL-1250 | 8.8d | 0d | 7x10 Sudair Station | Delivery Team |  | 2 | Number |  |  |
|  | 2 | **Mechanical** |  | 2027-02-02 | 2027-03-29 |  |  |  |  |  |  |  |  |  |  |
| SDR-ST-PRO-MS-1200 |  | Metal railing for platform | 4d | 2027-02-02 | 2027-02-06 | SDR-ST-PRO-DL-1150 | 8.9d | 8.8d | 7x10 Sudair Station | Delivery Team |  |  |  |  |  |
| SDR-ST-PRO-MS-1190 |  | WASHOUT & AIR VALVE, GATE VALVE, BUTTERFLY VALVE | 4d | 2027-03-25 | 2027-03-29 | SDR-ST-PRO-DL-1190 | 1.5d |  | 7x10 Sudair Station | Delivery Team |  |  |  |  |  |
|  | 5 | **Construction** |  | 2026-05-07 | 2027-07-21 |  |  |  |  |  |  |  |  |  |  |
|  | 1 | **Package-1** |  | 2026-05-07 | 2027-07-17 |  |  |  |  |  |  |  |  |  |  |
|  | 15 | **ROAD WORKS 1** |  | 2026-05-07 | 2027-05-08 |  |  |  |  |  |  |  |  |  |  |
|  | 8 | **ROAD - 01** |  | 2026-05-07 | 2027-04-27 |  |  |  |  |  |  |  |  |  |  |
|  | 6 | **ROAD-01 From 0 to 470 m (3)** |  | 2026-05-07 | 2027-04-20 |  |  |  |  |  |  |  |  |  |  |
|  | 14 | **GENERAL WORKS** |  | 2026-05-07 | 2026-07-25 |  |  |  |  |  |  |  |  |  |  |
|  | 10 | **Cleaning and removal of organic materials in Zone A** |  | 2026-05-07 | 2026-07-08 |  |  |  |  |  |  |  |  |  |  |
| SDR-ST-CON-P1-1000 |  | Cleaning and removal of organic materials Part 1 | 18d | 2026-05-07 | 2026-06-01 | SDR-ST-MOBL-1060 | 0d |  |  | SIC- Cost [2153.77]; Excavator [200 h]; Excavator Operator [143.96 h]; Dumper Operator [143.96 h]; Dumper Truck [1040 h]; Grader [200 h]; Grader Operator [143.96 h]; Loader [200 h]; Loader Operator [143.96 h]; Un-Skilled Labor [143.96 h]; Supervisor [71.98 h]; Skilled Labor [143.96 h] | 2,153.77 | 4150 | M2 | B1.31 23 16.01 | P1-R.W |
| SDR-ST-CON-P1-1050 |  | Cleaning and removal of organic materials Part 2 | 19.9d | 2026-06-02 | 2026-06-24 | SDR-ST-CON-P1-1000, SDR-ST-ENG-AP-1130, SDR-ST-ENG-AP-1140, SDR-ST-ENG-AP-1150, SDR-ST-ENG-AP-1160, SDR-ST-ENG-AP-1170, SDR-ST-ENG-AP-1180, SDR-ST-ENG-AP-1120, SDR-ST-ENG-AP-1110, SDR-ST-ENG-AP-1100, SDR-ST-ENG-AP-1090, SDR-ST-ENG-AP-1080, SDR-ST-ENG-AP-1030, SDR-ST-ENG-AP-1020, SDR-ST-ENG-AP-1010, SDR-ST-ENG-AP-1000, SDR-ST-ENG-AP-1070, SDR-ST-ENG-AP-1060, SDR-ST-ENG-AP-1050, SDR-ST-ENG-AP-1040, SDR-ST-ENG-AP-1230, SDR-ST-ENG-AP-1220, SDR-ST-ENG-AP-1210, SDR-ST-ENG-AP-1200, SDR-ST-ENG-AP-1190, SDR-ST-MILS-1040, SDR-ST-MILS-1030, SDR-ST-MILS-1020, SDR-ST-MILS-1050, SDR-ST-PREL-1060, SDR-ST-PREL-1070, SDR-ST-PREL-1010, SDR-ST-PREL-1080, SDR-ST-PREL-1020, SDR-ST-PREL-1090, SDR-ST-PREL-1030, SDR-ST-PREL-1100, SDR-ST-PREL-1040, SDR-ST-PRO-A-1100 | 0d |  |  | SIC- Cost [2153.77]; Excavator [100 h]; Excavator Operator [143.96 h]; Dumper Operator [143.96 h]; Dumper Truck [520 h]; Grader [100 h]; Grader Operator [143.96 h]; Loader [100 h]; Loader Operator [143.96 h]; Un-Skilled Labor [8930.79 h]; Supervisor [71.98 h]; Skilled Labor [4184.36 h] | 2,153.77 | 4150 | M2 | B1.31 23 16.01 | P1-R.W |
| SDR-ST-CON-P1-6060 |  | Cleaning and removal of organic materials Part 3 | 14d | 2026-06-25 | 2026-07-08 | SDR-ST-CON-P1-1050 | 0d |  | TDEC 7x10 | SIC- Cost [2155.52]; Excavator [100 h]; Excavator Operator [100.61 h]; Grader [100 h]; Grader Operator [100.61 h]; Loader [100 h]; Loader Operator [100.61 h] | 2,155.52 |  |  |  | P1-R.W |

| ID | WBS | Activity | Duration | Start | Finish | Predecessors | Total float | Free float | Resources | Cost | BOQ Qty | BOQ Line item | UOM | Activities Codes Sudair Station |
| --- | --- | --- | --- | --- | --- | --- | --- | --- | --- | --- | --- | --- | --- | --- |
|  | 12 | **Surveying works Zone A** |  | 2026-07-08 | 2026-07-25 |  |  |  |  |  |  |  |  |  |
| SDR-ST-CON-P1-1090 |  | Surveying works Zone A | 13.7d | 2026-07-08 | 2026-07-25 | SDR-ST-CON-P1-1050, SDR-ST-CON-P1-6060 | 0d |  | SIC- Cost [3877.83]; Un-Skilled Labor [115.17 h]; Surveyor [115.17 h]; Supervisor [57.58 h] | 3,877.83 | 8300 | B1.31 23 16.02 | M2 | P1-R.W |
|  | 1 | **Earth Works Road** |  | 2026-07-25 | 2026-08-08 |  |  |  |  |  |  |  |  |  |
| SDR-ST-CON-P1-1150 |  | Roadway Excavation and cuttings | 12d | 2026-07-25 | 2026-08-08 | SDR-ST-CON-P1-1090 | 0d |  | SIC- Cost [15511.3]; Excavator [46 h]; Excavator Operator [143.96 h]; Dumper Operator [143.96 h]; Dumper Truck [2180 h]; Grader [200 h]; Grader Operator [143.96 h]; Loader [200 h]; Loader Operator [143.96 h]; Un-Skilled Labor [143.96 h]; Supervisor [71.98 h]; Skilled Labor [143.96 h] | 15,511.33 | 917 | B1.31 23 16.03 | M3 | P1-R.W |
|  | 10 | **Backfilling Works** |  | 2026-08-08 | 2026-10-24 |  |  |  |  |  |  |  |  |  |
| SDR-ST-CON-P1-1200 |  | Embankments to the Road 1 Layer | 20d | 2026-08-08 | 2026-08-31 | SDR-ST-CON-P1-1150 | 0d |  | SIC- Cost [252647]; Excavator [65 h]; Excavator Operator [143.96 h]; Dumper Operator [143.96 h]; Dumper Truck [200 h]; Grader [200 h]; Grader Operator [143.96 h]; Loader [200 h]; Loader Operator [143.96 h]; Un-Skilled Labor [143.96 h]; Supervisor [71.98 h]; Skilled Labor [143.96 h]; Water Tanker [200 h] | 252,646.68 | 8958.25 | B1.31 23 23.01 | M3 | P1-R.W |
| SDR-ST-CON-P1-1470 |  | Embankments to the Road 2 Layer | 20d | 2026-08-31 | 2026-09-24 | SDR-ST-CON-P1-1200 | 1d | 0d | SIC- Cost [252647]; Compactor [200 h]; Excavator [15 h]; Excavator Operator [143.96 h]; Dumper Operator [143.96 h]; Dumper Truck [200 h]; Grader [200 h]; Grader Operator [143.96 h]; Loader [50 h]; Loader Operator [143.96 h]; Un-Skilled Labor [47.99 h]; Supervisor [71.98 h]; Skilled Labor [47.99 h]; Water Tanker [200 h] | 252,646.68 | 8958.25 | B1.31 23 23.02 | M3 | P1-R.W |
| SDR-ST-CON-P1-2140 |  | Embankments to the Road 3 Layer | 13d | 2026-09-24 | 2026-10-10 | SDR-ST-CON-P1-1470 | 1d | 0d | SIC- Cost [252647]; Compactor [200 h]; Excavator [30 h]; Excavator Operator [143.96 h]; Dumper Operator [143.96 h]; Dumper Truck [1870 h]; Grader [70 h]; Grader Operator [143.96 h]; Loader [200 h]; Loader Operator [143.96 h]; Un-Skilled Labor [38.39 h]; Supervisor [35.99 h]; Skilled Labor [38.39 h]; Water Tanker [79.06 h] | 252,646.68 | 8958.25 | B1.31 23 23.03 | M3 | P1-R.W |
| SDR-ST-CON-P1-2710 |  | Embankments to the Road 4 Layer | 12d | 2026-10-10 | 2026-10-24 | SDR-ST-CON-P1-2140 | 1d | 0d | SIC- Cost [252647]; Compactor [96.67 h]; Excavator [20 h]; Excavator Operator [143.96 h]; Dumper Operator [143.96 h]; Dumper Truck [96.67 h]; Grader [68.11 h]; Grader Operator [143.96 h]; Loader [395.65 h]; Loader Operator [143.96 h]; Un-Skilled Labor [38.39 h]; Supervisor [28.79 h]; Skilled Labor [38.39 h]; Water Tanker [200 h] | 252,646.68 | 8958.25 | B1.31 23 23.04 | M3 | P1-R.W |
|  | 11 | **Subgrade** |  | 2026-10-24 | 2026-11-09 |  |  |  |  |  |  |  |  |  |
| SDR-ST-CON-P1-3260 |  | Subgrade layer works | 14.2d | 2026-10-24 | 2026-11-09 | SDR-ST-CON-P1-2710, SDR-ST-CON-P3-1040, SDR-ST-PRO-MS-1260 | 1d | 0d | SIC- Cost [144749]; Compactor [50 h]; Excavator [15 h]; Excavator Operator [143.96 h]; Dumper Operator [143.96 h]; Dumper Truck [50 h]; Grader [80 h]; Grader Operator [143.96 h]; Loader [50 h]; Loader Operator [143.96 h]; Un-Skilled Labor [38.39 h]; Supervisor [28.79 h]; Skilled Labor [38.39 h]; Water Tanker [40 h]; Water Tanker Operator [38.39 h] | 144,748.92 | 3422 | B1.32 11 13.01 | M3 | P1-R.W |
|  | 2 | **Base Course** |  | 2026-11-09 | 2026-11-24 |  |  |  |  |  |  |  |  |  |
| SDR-ST-CON-P1-3850 |  | Aggregate base course layer | 13d | 2026-11-09 | 2026-11-24 | SDR-ST-CON-P1-3260 | 1d | 0d | SIC- Cost [174309]; Compactor [61.66 h]; Dumper Operator [136.76 h]; Dumper Truck [63.25 h]; Grader [100 h]; Grader Operator [136.76 h]; Loader [105.57 h]; Loader Operator [136.76 h]; Un-Skilled Labor [136.76 h]; Supervisor [28.79 h]; Skilled Labor [136.76 h]; Water Tanker [78.5 h]; Water Tanker Operator [136.76 h] | 174,308.58 | 2248 | B1.32 11 23.01 | M3 | P1-R.W |
|  | 3 | **Asphalt Works** |  | 2026-11-24 | 2027-01-02 |  |  |  |  |  |  |  |  |  |
|  | 1 | **Bituminous base course** |  | 2026-11-24 | 2026-12-06 |  |  |  |  |  |  |  |  |  |
| SDR-ST-CON-P1-4410 |  | Bituminous base course (Grading I - Class A 1st Layer with RC-01 | 6d | 2026-11-24 | 2026-12-01 | SDR-ST-CON-P1-3850 | 1d | 0d | SIC- Cost [518809]; Compactor [50 h]; Dumper Operator [129.56 h]; Dumper Truck [50 h]; Supervisor [28.79 h]; Sweeper Machine [30 h]; Sweeper Machine Operator [129.56 h]; Pneumatic Tire Roller [288.26 h]; Pneumatic Roller Operator [129.56 h]; Asphalt Paver [30 h]; Asphalt Paver Operator [129.56 h] | 518,808.78 | 828.5 | B1.32 11 26.01 | M3 | P1-R.W |
| SDR-ST-CON-P1-4770 |  | Bituminous base course (Grading I - Class A 2nd layer with RC-02 | 4d | 2026-12-01 | 2026-12-06 | SDR-ST-CON-P1-4410 | 1d | 0d | SIC- Cost [518809]; Compactor [50 h]; Dumper Operator [129.56 h]; Dumper Truck [50 h]; Supervisor [28.79 h]; Sweeper Machine [30 h]; Sweeper Machine Operator [849.36 h]; Pneumatic Tire Roller [30 h]; Pneumatic Roller Operator [129.56 h]; Asphalt Paver [30 h]; Asphalt Paver Operator [129.56 h] | 518,808.78 | 828.5 | B1.32 11 26.02 | M3 | P1-R.W |
|  | 2 | **Bituminous concrete wearing course** |  | 2026-12-08 | 2027-01-02 |  |  |  |  |  |  |  |  |  |
| SDR-ST-CON-P1-5110 |  | Bituminous concrete wearing course, (Grading I - Class A), including tack coat (RC2) | 21d | 2026-12-08 | 2027-01-02 | SDR-ST-CON-P1-4770 FS+2d | 1d | 0d | SIC- Cost [366211]; Compactor [80 h]; Dumper Operator [115.17 h]; Dumper Truck [230 h]; Supervisor [28.79 h]; Sweeper Machine [200 h]; Sweeper Machine Operator [115.17 h]; Pneumatic Tire Roller [140 h]; Pneumatic Roller Operator [115.17 h]; Asphalt Paver [475 h]; Asphalt Paver Operator [115.17 h] | 366,210.74 | 570 | B1.32 12 16.01 | M3 | P1-R.W |
|  | 4 | **Kerbstone Installation** |  | 2026-11-09 | 2027-01-13 |  |  |  |  |  |  |  |  |  |
| SDR-ST-CON-P1-3860 |  | Precast Concrete Curbstone, Type A2 | 21d | 2026-11-09 | 2026-12-03 | SDR-ST-CON-P1-3260 | 6d | 5.1d | SIC- Cost [144150]; Un-Skilled Labor [129.56 h]; Supervisor [129.56 h]; Skilled Labor [129.56 h] | 144,149.62 | 2275 | B1.32 16 13.23.01 | lm | P1-R.W |
| SDR-ST-CON-P1-4530 |  | Precast Concrete Curbstone, Type D | 10d | 2027-01-02 | 2027-01-13 | SDR-ST-CON-P1-3860, SDR-ST-CON-P1-5110, SDR-ST-CON-P3-1230, SDR-ST-CON-P3-1220 | 1d | 0d | SIC- Cost [70526]; Un-Skilled Labor [40.4 h]; Supervisor [40.4 h]; Skilled Labor [40.4 h] | 70,526.03 | 1154 | B1.32 16 13.23.02 | lm | P1-R.W |
|  | 5 | **Interlock Installation** |  | 2027-01-13 | 2027-03-17 |  |  |  |  |  |  |  |  |  |
| SDR-ST-CON-P1-4100 |  | Interlock Installation Part 1 | 20d | 2027-01-13 | 2027-02-06 | SDR-ST-CON-P1-3860, SDR-ST-CON-P1-2710, SDR-ST-ENG-AP-1080, SDR-ST-CON-P1-4530 | 1d | 0d | SIC- Cost [213105]; Un-Skilled Labor [143.96 h]; Supervisor [143.96 h]; Skilled Labor [143.96 h] | 213,104.54 | 775 | B1.32 14 13.13.02 | M2 | P1-R.W |
| SDR-ST-CON-P1-4620 |  | Interlock Installation Part 2 | 20d | 2027-02-06 | 2027-03-17 | SDR-ST-CON-P1-4100, SDR-ST-CON-P1-4170 | 1d |  | SIC- Cost [213105]; Un-Skilled Labor [143.96 h]; Supervisor [143.96 h]; Skilled Labor [143.96 h] | 213,104.54 | 775 | B1.32 14 13.13.01 | M2 | P1-R.W |

| ID | WBS | Activity | Duration | Start | Finish | Predecessors | Total float | Free float | Resources | Cost | BOQ Qty | BOQ Line item | UOM | Activities Codes Sudair Station |
| --- | --- | --- | --- | --- | --- | --- | --- | --- | --- | --- | --- | --- | --- | --- |
|  | 6 | **Road Marking** |  | 2027-03-31 | 2027-04-19 |  |  |  |  |  |  |  |  |  |
| SDR-ST-CON-P1-5210 |  | Retroreflective Thermoplastic White Traffic lines | 4d | 2027-03-31 | 2027-04-05 | SDR-ST-CON-P1-5110 SS, SDR-ST-CON-P1-2710, SDR-ST-ENG-AP-1080, SDR-ST-CON-P1-4620, SDR-ST-TC-1030, SDR-ST-PRO-MS-1190, SDR-ST-PRO-MS-1180 | 3d | 0d | SIC- Cost [19365.7]; Painter [28.79 h]; Supervisor [7.2 h]; Painter Helper [28.79 h] | 19,365.66 | 343 | B1.32 17 23.01 | M2 | P1-R.W |
| SDR-ST-CON-P1-5310 |  | Retroreflective Thermoplastic Yellow, Traffic lines | 4d | 2027-04-05 | 2027-04-10 | SDR-ST-CON-P1-5210, SDR-ST-PRO-MS-1190 | 7.7d | 0d | SIC- Cost [13725.2]; Painter [28.79 h]; Supervisor [7.2 h]; Painter Helper [28.79 h] | 13,725.18 | 243 | B1.32 17 23.02 | M2 | P1-R.W |
| SDR-ST-CON-P1-5470 |  | Ceramic raised pavement markers | 4d | 2027-04-10 | 2027-04-14 | SDR-ST-CON-P1-5310 | 7.7d | 0d | SIC- Cost [733.26]; Un-Skilled Labor [28.79 h]; Supervisor [7.2 h]; Skilled Labor [28.79 h] | 733.26 | 17 | B1.32 17 23.03 | Number | P1-R.W |
| SDR-ST-CON-P1-5620 |  | Rumble strip | 4d | 2027-04-14 | 2027-04-19 | SDR-ST-CON-P1-5470 | 7.7d |  | SIC- Cost [928.33]; Un-Skilled Labor [28.79 h]; Supervisor [7.2 h]; Skilled Labor [28.79 h] | 928.33 | 66 | B1.32 17 23.04 | M | P1-R.W |
|  | 7 | **Traffic Signage** |  | 2027-03-31 | 2027-04-14 |  |  |  |  |  |  |  |  |  |
| SDR-ST-CON-P1-5220 |  | Traffic signs, ground mounted, 1 Sheet Alumenium, (breakaway) Single post, with all accessories | 4d | 2027-03-31 | 2027-04-05 | SDR-ST-CON-P1-5210 SS, SDR-ST-ENG-AP-1080 | 3d | 0d | SIC- Cost [8095.27]; Un-Skilled Labor [28.79 h]; Supervisor [7.2 h]; Skilled Labor [28.79 h] | 8,095.27 | 4 | B1.10 14 53.01 | Number | P1-R.W |
| SDR-ST-CON-P1-5320 |  | Traffic signs, ground mounted, 1 Sheet Aluminum, (breakaway) Double post, with all accessories | 4d | 2027-04-05 | 2027-04-10 | SDR-ST-CON-P1-5220 | 3d | 0d | SIC- Cost [8446.63]; Un-Skilled Labor [28.79 h]; Supervisor [7.2 h]; Skilled Labor [28.79 h] | 8,446.63 | 3 | B1.10 14 53.02 | Number | P1-R.W |
| SDR-ST-CON-P1-5480 |  | Traffic signs, ground mounted, 2 Sheet Aluminum, (breakaway) Single post, with all accessories | 4d | 2027-04-10 | 2027-04-14 | SDR-ST-CON-P1-5320 | 3d | 0d | SIC- Cost [3519.42]; Un-Skilled Labor [28.79 h]; Supervisor [7.2 h]; Skilled Labor [28.79 h] | 3,519.42 | 1 | B1.10 14 53.03 | Number | P1-R.W |
|  | 8 | **Speed table** |  | 2027-04-14 | 2027-04-20 |  |  |  |  |  |  |  |  |  |
| SDR-ST-CON-P1-5490 |  | Interlock speed table including interlock, flush kerb and marking | 5d | 2027-04-14 | 2027-04-20 | SDR-ST-CON-P1-5110, SDR-ST-CON-P1-5480 | 3d |  | SIC- Cost [15282.2]; Un-Skilled Labor [57.58 h]; Supervisor [14.4 h]; Skilled Labor [57.58 h] | 15,282.19 | 128 | B1.10 14 53.03 | M2 | P1-R.W |
|  | 7 | **ROAD-01 From 470 to 1125 m (6)** |  | 2026-06-24 | 2027-04-24 |  |  |  |  |  |  |  |  |  |
|  | 14 | **GENERAL WORKS** |  | 2026-06-24 | 2026-08-11 |  |  |  |  |  |  |  |  |  |
|  | 10 | **Cleaning and removal of organic materials in Zone A** |  | 2026-06-24 | 2026-07-19 |  |  |  |  |  |  |  |  |  |
| SDR-ST-CON-P1-1010 |  | Cleaning and removal of organic materials in Zone A | 21d | 2026-06-24 | 2026-07-19 | SDR-ST-ENG-AP-1080, SDR-ST-CON-P1-1050 | 0d |  | SIC- Cost [6463.05]; Excavator [200 h]; Excavator Operator [143.96 h]; Dumper Operator [143.96 h]; Dumper Truck [886.3 h]; Grader [200 h]; Grader Operator [143.96 h]; Loader [200 h]; Loader Operator [143.96 h]; Un-Skilled Labor [143.96 h]; Supervisor [143.96 h]; Skilled Labor [143.96 h] | 6,463.05 | 8300 | B1.31 23 16.01 | M2 | P1-R.W |
|  | 12 | **Surveying works Zone A** |  | 2026-07-19 | 2026-08-11 |  |  |  |  |  |  |  |  |  |
| SDR-ST-CON-P1-1070 |  | Surveying works Zone A | 20d | 2026-07-19 | 2026-08-11 | SDR-ST-CON-P1-1010 | 0.9d | 0d | SIC- Cost [3877.83]; Un-Skilled Labor [115.17 h]; Surveyor [115.17 h]; Supervisor [35.99 h] | 3,877.83 | 8300 | B1.31 23 16.02 | M2 | P1-R.W |
|  | 1 | **Earth Works Road** |  | 2026-08-11 | 2026-08-27 |  |  |  |  |  |  |  |  |  |
| SDR-ST-CON-P1-1120 |  | Roadway Excavation and cuttings | 14d | 2026-08-11 | 2026-08-27 | SDR-ST-CON-P1-1070 | 0.9d | 0d | SIC- Cost [15511.3]; Excavator [111.43 h]; Excavator Operator [143.96 h]; Dumper Operator [143.96 h]; Dumper Truck [200 h]; Grader [200 h]; Grader Operator [143.96 h]; Loader [200 h]; Loader Operator [143.96 h]; Un-Skilled Labor [143.96 h]; Supervisor [143.96 h]; Skilled Labor [6381.53 h] | 15,511.33 | 917 | B1.31 23 16.03 | M3 | P1-R.W |
|  | 10 | **Backfilling Works** |  | 2026-08-27 | 2026-10-29 |  |  |  |  |  |  |  |  |  |
| SDR-ST-CON-P1-1190 |  | Embankments to the Road 1 Layer | 20d | 2026-08-27 | 2026-09-20 | SDR-ST-CON-P1-1120 | 0.9d | 0d | SIC- Cost [252647]; Compactor [200 h]; Excavator [65 h]; Excavator Operator [143.96 h]; Dumper Operator [143.96 h]; Dumper Truck [200 h]; Grader [200 h]; Grader Operator [143.96 h]; Loader [200 h]; Loader Operator [143.96 h]; Un-Skilled Labor [143.96 h]; Supervisor [28.79 h]; Skilled Labor [143.96 h]; Water Tanker [200 h] | 252,646.68 | 8958.25 | B1.31 23 23.01 | M3 | P1-R.W |
| SDR-ST-CON-P1-1400 |  | Embankments to the Road 2 Layer | 13d | 2026-09-20 | 2026-10-06 | SDR-ST-CON-P1-1190 | 0.9d | 0d | SIC- Cost [252647]; Compactor [200 h]; Excavator [15 h]; Excavator Operator [143.96 h]; Dumper Operator [143.96 h]; Dumper Truck [200 h]; Grader [200 h]; Grader Operator [143.96 h]; Loader [50 h]; Loader Operator [143.96 h]; Un-Skilled Labor [38.39 h]; Supervisor [28.79 h]; Skilled Labor [38.39 h] | 252,646.68 | 8958.25 | B1.31 23 23.02 | M3 | P1-R.W |
| SDR-ST-CON-P1-2090 |  | Embankments to the Road 3 Layer | 10d | 2026-10-06 | 2026-10-18 | SDR-ST-CON-P1-1400 | 0.9d | 0d | SIC- Cost [252647]; Compactor [50 h]; Excavator [30 h]; Excavator Operator [143.96 h]; Dumper Operator [143.96 h]; Dumper Truck [2150.77 h]; Grader [100 h]; Grader Operator [143.96 h]; Loader [100.77 h]; Loader Operator [143.96 h]; Un-Skilled Labor [38.39 h]; Supervisor [38.39 h]; Skilled Labor [38.39 h]; Water Tanker [100 h] | 252,646.68 | 8958.25 | B1.31 23 23.03 | M3 | P1-R.W |
| SDR-ST-CON-P1-2570 |  | Embankments to the Road 4 Layer | 10d | 2026-10-18 | 2026-10-29 | SDR-ST-CON-P1-2090 | 0.9d | 0d | SIC- Cost [252647]; Compactor [50 h]; Excavator [15 h]; Excavator Operator [143.96 h]; Dumper Operator [143.96 h]; Dumper Truck [50 h]; Grader [4813.44 h]; Grader Operator [143.96 h]; Loader [50 h]; Loader Operator [143.96 h]; Un-Skilled Labor [38.39 h]; Supervisor [28.79 h]; Skilled Labor [38.39 h]; Water Tanker [40 h] | 252,646.68 | 8958.25 | B1.31 23 23.04 | M3 | P1-R.W |

| ID | WBS | Activity | Duration | Start | Finish | Predecessors | Total float | Free float | Resources | Cost | BOQ Qty | BOQ Line item | UOM | Activities Codes Sudair Station |
| --- | --- | --- | --- | --- | --- | --- | --- | --- | --- | --- | --- | --- | --- | --- |
|  | 11 | **Subgrade** |  | 2026-10-29 | 2026-11-11 |  |  |  |  |  |  |  |  |  |
| SDR-ST-CON-P1-3140 |  | Subgrade layer works | 11d | 2026-10-29 | 2026-11-11 | SDR-ST-CON-P1-2570 | 0.9d | 0d | SIC- Cost [144749]; Compactor [200 h]; Excavator [30 h]; Excavator Operator [143.96 h]; Dumper Operator [143.96 h]; Dumper Truck [101.16 h]; Grader [200 h]; Grader Operator [143.96 h]; Loader [104.27 h]; Loader Operator [143.96 h]; Un-Skilled Labor [38.39 h]; Supervisor [38.39 h]; Skilled Labor [38.39 h]; Water Tanker [100 h]; Water Tanker Operator [95.97 h] | 144,748.92 | 3422 | B1.32 11 13.01 | M3 | P1-R.W |
|  | 2 | **Base Course** |  | 2026-11-11 | 2026-11-23 |  |  |  |  |  |  |  |  |  |
| SDR-ST-CON-P1-3720 |  | Aggregate base course layer | 10d | 2026-11-11 | 2026-11-23 | SDR-ST-CON-P1-3140 | 1.2d | 0d | SIC- Cost [174309]; Compactor [50 h]; Dumper Operator [136.76 h]; Dumper Truck [5969.32 h]; Grader [80 h]; Grader Operator [136.76 h]; Loader [50 h]; Loader Operator [136.76 h]; Un-Skilled Labor [38.39 h]; Supervisor [28.79 h]; Skilled Labor [38.39 h]; Water Tanker [300 h]; Water Tanker Operator [95.97 h] | 174,308.58 | 2248 | B1.32 11 23.01 | M3 | P1-R.W |
|  | 3 | **Asphalt Works** |  | 2026-11-23 | 2027-01-03 |  |  |  |  |  |  |  |  |  |
|  | 1 | **Bituminous base course** |  | 2026-11-23 | 2026-12-06 |  |  |  |  |  |  |  |  |  |
| SDR-ST-CON-P1-4430 |  | Bituminous base course (Grading I - Class A 1st Layer with RC-01 | 6d | 2026-11-23 | 2026-11-30 | SDR-ST-CON-P1-3720 | 1.2d | 0d | SIC- Cost [518809]; Compactor [56 h]; Dumper Operator [129.56 h]; Dumper Truck [51.48 h]; Supervisor [28.79 h]; Sweeper Machine [50 h]; Sweeper Machine Operator [129.56 h]; Pneumatic Tire Roller [30 h]; Pneumatic Roller Operator [129.56 h]; Asphalt Paver [550 h]; Asphalt Paver Operator [129.56 h] | 518,808.78 | 828.5 | B1.32 11 26.01 | M3 | P1-R.W |
| SDR-ST-CON-P1-4730 |  | Bituminous base course (Grading I - Class A 2nd layer with RC-02 | 5d | 2026-11-30 | 2026-12-06 | SDR-ST-CON-P1-4430 | 1.2d | 0d | SIC- Cost [518809]; Compactor [50 h]; Dumper Operator [129.56 h]; Dumper Truck [50 h]; Supervisor [28.79 h]; Sweeper Machine [30 h]; Sweeper Machine Operator [129.56 h]; Pneumatic Tire Roller [30 h]; Pneumatic Roller Operator [129.56 h]; Asphalt Paver [30 h]; Asphalt Paver Operator [129.56 h] | 518,808.78 | 828.5 | B1.32 11 26.02 | M3 | P1-R.W |
|  | 2 | **Bituminous concrete wearing course** |  | 2026-12-09 | 2027-01-03 |  |  |  |  |  |  |  |  |  |
| SDR-ST-CON-P1-5040 |  | Bituminous concrete wearing course, (Grading I - Class A), including tack coat (RC2) | 21d | 2026-12-09 | 2027-01-03 | SDR-ST-CON-P1-4730 FS+3d | 1.2d | 1.1d | SIC- Cost [365045]; Compactor [50 h]; Dumper Operator [100.77 h]; Dumper Truck [100 h]; Supervisor [35.99 h]; Sweeper Machine [30 h]; Sweeper Machine Operator [100.77 h]; Pneumatic Tire Roller [260 h]; Pneumatic Roller Operator [100.77 h]; Asphalt Paver [30 h]; Asphalt Paver Operator [100.77 h] | 365,045.07 | 570 | B1.32 12 16.01 | M3 | P1-R.W |
|  | 4 | **Kerbstone Installation** |  | 2026-11-11 | 2027-01-02 |  |  |  |  |  |  |  |  |  |
| SDR-ST-CON-P1-3730 |  | Precast Concrete Curbstone, Type A2 | 20d | 2026-11-11 | 2026-12-05 | SDR-ST-CON-P1-3140 | 0.9d | 0d | SIC- Cost [144150]; Un-Skilled Labor [38.39 h]; Supervisor [28.79 h]; Skilled Labor [38.39 h] | 144,149.62 | 2275 | B1.32 16 13.23.01 | lm | P1-R.W |
| SDR-ST-CON-P1-4480 |  | Precast Concrete Curbstone, Type D | 20d | 2026-12-09 | 2027-01-02 | SDR-ST-CON-P1-3730 FS+4d, SDR-ST-CON-P1-3860 | 0.9d | 0d | SIC- Cost [70526]; Un-Skilled Labor [38.39 h]; Supervisor [28.79 h]; Skilled Labor [38.39 h] | 70,526.03 | 1154 | B1.32 16 13.23.02 | lm | P1-R.W |
|  | 5 | **Interlock Installation** |  | 2027-01-02 | 2027-02-25 |  |  |  |  |  |  |  |  |  |
| SDR-ST-CON-P1-3890 |  | Interlock Installation Part 1 | 20d | 2027-01-02 | 2027-01-25 | SDR-ST-ENG-AP-1080, SDR-ST-CON-P1-4480 | 0.9d | 0d | SIC- Cost [213105]; Un-Skilled Labor [38.39 h]; Supervisor [28.79 h]; Skilled Labor [38.39 h] | 213,104.54 | 775 | B1.32 14 13.13.02 | M2 | P1-R.W |
| SDR-ST-CON-P1-4490 |  | Interlock Installation Part 2 | 20d | 2027-01-25 | 2027-02-25 | SDR-ST-CON-P1-3890, SDR-ST-CON-P1-4170 | 0.9d | 0d | SIC- Cost [213105]; Un-Skilled Labor [143.96 h]; Supervisor [28.79 h]; Skilled Labor [143.96 h] | 213,104.54 | 775 | B1.32 14 13.13.01 | M2 | P1-R.W |
|  | 6 | **Road Marking** |  | 2027-02-25 | 2027-03-30 |  |  |  |  |  |  |  |  |  |
| SDR-ST-CON-P1-5080 |  | Retroreflective Thermoplastic White Traffic lines | 5d | 2027-02-25 | 2027-03-08 | SDR-ST-CON-P1-5040 SS, SDR-ST-ENG-AP-1080, SDR-ST-CON-P1-4490, SDR-ST-CON-P1-5570 | 0.9d |  | SIC- Cost [19365.7]; Supervisor [7.2 h]; Painter [28.79 h]; Painter Helper [28.79 h] | 19,365.66 | 343 | B1.32 17 23.01 | M2 | P1-R.W |
| SDR-ST-CON-P1-5150 |  | Retroreflective Thermoplastic Yellow, Traffic lines | 5d | 2027-03-14 | 2027-03-18 | SDR-ST-CON-P1-5080, SDR-ST-CON-P3-1310, SDR-ST-CON-P1-6070, SDR-ST-CON-P1-5030 | 0d |  | SIC- Cost [13725.2]; Supervisor [7.2 h]; Painter [4040.4 h]; Painter Helper [28.79 h] | 13,725.18 | 243 | B1.32 17 23.02 | M2 | P1-R.W |
| SDR-ST-CON-P1-5270 |  | Ceramic raised pavement markers | 5d | 2027-03-20 | 2027-03-24 | SDR-ST-CON-P1-5150, SDR-ST-CON-P1-6070, SDR-ST-CON-P1-4620 | 0d |  | SIC- Cost [733.26]; Un-Skilled Labor [1038.89 h]; Supervisor [7.2 h]; Skilled Labor [1038.89 h] | 733.78 | 17 | B1.32 17 23.03 | Number | P1-R.W |
| SDR-ST-CON-P1-5400 |  | Rumble strip | 5d | 2027-03-25 | 2027-03-30 | SDR-ST-CON-P1-5270 | 0d |  | SIC- Cost [928.33]; Un-Skilled Labor [28.79 h]; Supervisor [7.2 h]; Skilled Labor [28.79 h] | 928.33 | 66 | B1.32 17 23.04 | M | P1-R.W |
|  | 7 | **Traffic Signage** |  | 2027-03-31 | 2027-04-13 |  |  |  |  |  |  |  |  |  |
| SDR-ST-CON-P1-5090 |  | Traffic signs, ground mounted, 1 Sheet Alumenium, (breakaway) Single post, with all accessories | 6d | 2027-03-31 | 2027-04-06 | SDR-ST-ENG-AP-1080, SDR-ST-CON-P1-5400, SDR-ST-PRO-MS-1190, SDR-ST-PRO-MS-1180 | 0d |  | SIC- Cost [8095.27]; Un-Skilled Labor [28.79 h]; Supervisor [7.2 h]; Skilled Labor [28.79 h] | 8,095.27 | 4 | B1.10 14 53.01 | Number | P1-R.W |
| SDR-ST-CON-P1-5160 |  | Traffic signs, ground mounted, 1 Sheet Aluminum, (breakaway) Double post, with all accessories | 6d | 2027-04-07 | 2027-04-13 | SDR-ST-CON-P1-5090, SDR-ST-PRO-MS-1190 | 0d |  | SIC- Cost [8446.63]; Un-Skilled Labor [28.79 h]; Supervisor [7.2 h]; Skilled Labor [28.79 h] | 8,446.63 | 3 | B1.10 14 53.02 | Number | P1-R.W |

| ID | WBS | Activity | Duration | Start | Finish | Predecessors | Total float | Free float | Resources | Cost | BOQ Qty | BOQ Line item | UOM | Activities Codes Sudair Station |
| --- | --- | --- | --- | --- | --- | --- | --- | --- | --- | --- | --- | --- | --- | --- |
|  | 8 | **Speed table** |  | 2027-04-14 | 2027-04-24 |  |  |  |  |  |  |  |  |  |
| SDR-ST-CON-P1-5280 |  | Interlock speed table including interlock, flush kerb and marking | 8.3d | 2027-04-14 | 2027-04-24 | SDR-ST-CON-P1-5160 | 0d |  | SIC- Cost [15282.2]; Un-Skilled Labor [57.58 h]; Supervisor [21.59 h]; Skilled Labor [57.58 h] | 15,282.19 | 128 | B1.10 14 53.03 | M2 | P1-R.W |
|  | 9 | **ROAD-01 From 1125 to 1765 m (7)** |  | 2026-07-02 | 2027-04-27 |  |  |  |  |  |  |  |  |  |
|  | 14 | **GENERAL WORKS** |  | 2026-07-02 | 2026-08-12 |  |  |  |  |  |  |  |  |  |
|  | 10 | **Cleaning and removal of organic materials in Zone A** |  | 2026-07-02 | 2026-07-27 |  |  |  |  |  |  |  |  |  |
| SDR-ST-CON-P1-1020 |  | Cleaning and removal of organic materials in Zone A | 21d | 2026-07-02 | 2026-07-27 | SDR-ST-CON-P1-1010 SS+7d, SDR-ST-ENG-AP-1080 | 0d |  | SIC- Cost [6463.05]; Excavator [200 h]; Excavator Operator [143.96 h]; Dumper Operator [143.96 h]; Dumper Truck [392.21 h]; Grader [200 h]; Grader Operator [143.96 h]; Loader [200 h]; Loader Operator [143.96 h]; Un-Skilled Labor [2164.16 h]; Supervisor [143.96 h]; Skilled Labor [9407.78 h] | 6,463.05 | 8300 | B1.31 23 16.01 | M2 | P1-R.W |
|  | 12 | **Surveying works Zone A** |  | 2026-07-27 | 2026-08-12 |  |  |  |  |  |  |  |  |  |
| SDR-ST-CON-P1-1080 |  | Surveying works Zone A | 14d | 2026-07-27 | 2026-08-12 | SDR-ST-CON-P1-1020 | 0d |  | SIC- Cost [3877.83]; Un-Skilled Labor [115.17 h]; Surveyor [115.17 h]; Supervisor [21.59 h] | 3,877.83 | 8300 | B1.31 23 16.02 | M2 | P1-R.W |
|  | 1 | **Earth Works Road** |  | 2026-08-12 | 2026-08-29 |  |  |  |  |  |  |  |  |  |
| SDR-ST-CON-P1-1140 |  | Roadway Excavation and cuttings | 14d | 2026-08-12 | 2026-08-29 | SDR-ST-CON-P1-1080 | 0d |  | SIC- Cost [15511.3]; Excavator [60 h]; Excavator Operator [143.96 h]; Dumper Operator [143.96 h]; Dumper Truck [1230 h]; Grader [200 h]; Grader Operator [143.96 h]; Loader [200 h]; Loader Operator [143.96 h]; Un-Skilled Labor [2164.16 h]; Supervisor [28.79 h]; Skilled Labor [2164.16 h] | 15,511.33 | 917 | B1.31 23 16.03 | M3 | P1-R.W |
|  | 10 | **Backfilling Works** |  | 2026-08-29 | 2026-11-01 |  |  |  |  |  |  |  |  |  |
| SDR-ST-CON-P1-1210 |  | Embankments to the Road 1 Layer | 20d | 2026-08-29 | 2026-09-21 | SDR-ST-CON-P1-1140 | 0d |  | SIC- Cost [252647]; Compactor [200 h]; Excavator [65 h]; Excavator Operator [143.96 h]; Dumper Operator [143.96 h]; Dumper Truck [200 h]; Grader [200 h]; Grader Operator [143.96 h]; Loader [200 h]; Loader Operator [143.96 h]; Un-Skilled Labor [143.96 h]; Supervisor [28.79 h]; Skilled Labor [143.96 h]; Water Tanker [200 h] | 252,646.68 | 8958.25 | B1.31 23 23.01 | M3 | P1-R.W |
| SDR-ST-CON-P1-1580 |  | Embankments to the Road 2 Layer | 13d | 2026-09-21 | 2026-10-07 | SDR-ST-CON-P1-1210 | 0d |  | SIC- Cost [252647]; Compactor [200 h]; Excavator [18 h]; Excavator Operator [143.96 h]; Dumper Operator [143.96 h]; Dumper Truck [200 h]; Grader [179 h]; Grader Operator [143.96 h]; Loader [60.51 h]; Loader Operator [143.96 h]; Un-Skilled Labor [47.99 h]; Supervisor [28.79 h]; Skilled Labor [47.99 h]; Water Tanker [200 h] | 252,646.68 | 8958.25 | B1.31 23 23.02 | M3 | P1-R.W |
| SDR-ST-CON-P1-2220 |  | Embankments to the Road 3 Layer | 12d | 2026-10-07 | 2026-10-21 | SDR-ST-CON-P1-1580 | 0d |  | SIC- Cost [252647]; Compactor [50 h]; Excavator [15 h]; Excavator Operator [143.96 h]; Dumper Operator [143.96 h]; Dumper Truck [200 h]; Grader [100 h]; Grader Operator [143.96 h]; Loader [50 h]; Loader Operator [143.96 h]; Un-Skilled Labor [38.39 h]; Supervisor [28.79 h]; Skilled Labor [38.39 h]; Water Tanker [50 h] | 252,646.68 | 8958.25 | B1.31 23 23.03 | M3 | P1-R.W |
| SDR-ST-CON-P1-2880 |  | Embankments to the Road 4 Layer | 9d | 2026-10-21 | 2026-11-01 | SDR-ST-CON-P1-2220 | 1.2d | 0d | SIC- Cost [252647]; Compactor [97.14 h]; Excavator [30 h]; Excavator Operator [143.96 h]; Dumper Operator [143.96 h]; Dumper Truck [147.14 h]; Grader [239.51 h]; Grader Operator [143.96 h]; Loader [126.42 h]; Loader Operator [143.96 h]; Un-Skilled Labor [38.39 h]; Supervisor [28.79 h]; Skilled Labor [38.39 h]; Water Tanker [128.8 h] | 252,646.68 | 8958.25 | B1.31 23 23.04 | M3 | P1-R.W |
|  | 11 | **Subgrade** |  | 2026-11-01 | 2026-11-12 |  |  |  |  |  |  |  |  |  |
| SDR-ST-CON-P1-3600 |  | Subgrade layer works | 10d | 2026-11-01 | 2026-11-12 | SDR-ST-CON-P1-2880 | 1.2d | 0d | SIC- Cost [144749]; Compactor [200 h]; Excavator [15 h]; Excavator Operator [143.96 h]; Dumper Operator [143.96 h]; Dumper Truck [180 h]; Grader [200 h]; Grader Operator [143.96 h]; Loader [150 h]; Loader Operator [143.96 h]; Un-Skilled Labor [143.96 h]; Supervisor [143.96 h]; Skilled Labor [143.96 h]; Water Tanker [50 h]; Water Tanker Operator [143.96 h] | 144,748.92 | 3422 | B1.32 11 13.01 | M3 | P1-R.W |
|  | 2 | **Base Course** |  | 2026-11-12 | 2026-11-23 |  |  |  |  |  |  |  |  |  |
| SDR-ST-CON-P1-4220 |  | Aggregate base course layer | 9d | 2026-11-12 | 2026-11-23 | SDR-ST-CON-P1-3600 | 1.2d | 0d | SIC- Cost [174309]; Compactor [71.33 h]; Dumper Operator [136.76 h]; Dumper Truck [2835 h]; Grader [101.55 h]; Grader Operator [136.76 h]; Loader [209.58 h]; Loader Operator [136.76 h]; Un-Skilled Labor [136.76 h]; Supervisor [21.59 h]; Skilled Labor [136.76 h]; Water Tanker [240 h]; Water Tanker Operator [136.76 h] | 174,308.58 | 2248 | B1.32 11 23.01 | M3 | P1-R.W |
|  | 3 | **Asphalt Works** |  | 2026-11-23 | 2027-01-03 |  |  |  |  |  |  |  |  |  |
|  | 1 | **Bituminous base course** |  | 2026-11-23 | 2026-12-06 |  |  |  |  |  |  |  |  |  |
| SDR-ST-CON-P1-4750 |  | Bituminous base course (Grading I - Class A 1st Layer with RC-01 | 6d | 2026-11-23 | 2026-11-30 | SDR-ST-CON-P1-4220 | 1.2d | 0d | SIC- Cost [518809]; Compactor [50 h]; Dumper Operator [129.56 h]; Dumper Truck [50 h]; Supervisor [28.79 h]; Sweeper Machine [30 h]; Sweeper Machine Operator [129.56 h]; Pneumatic Tire Roller [30 h]; Pneumatic Roller Operator [129.56 h]; Asphalt Paver [30 h]; Asphalt Paver Operator [129.56 h] | 518,808.78 | 828.5 | B1.32 11 26.01 | M3 | P1-R.W |
| SDR-ST-CON-P1-5010 |  | Bituminous base course (Grading I - Class A 2nd layer with RC-02 | 5d | 2026-11-30 | 2026-12-06 | SDR-ST-CON-P1-4750 | 1.2d | 0d | SIC- Cost [518809]; Compactor [50 h]; Dumper Operator [129.56 h]; Dumper Truck [50 h]; Supervisor [28.79 h]; Sweeper Machine [172 h]; Sweeper Machine Operator [129.56 h]; Pneumatic Tire Roller [120 h]; Pneumatic Roller Operator [129.56 h]; Asphalt Paver [30 h]; Asphalt Paver Operator [129.56 h] | 518,808.78 | 828.5 | B1.32 11 26.02 | M3 | P1-R.W |
|  | 2 | **Bituminous concrete wearing course** |  | 2026-12-09 | 2027-01-03 |  |  |  |  |  |  |  |  |  |
| SDR-ST-CON-P1-5200 |  | Bituminous concrete wearing course, (Grading I - Class A), including tack coat (RC2) | 21d | 2026-12-09 | 2027-01-03 | SDR-ST-CON-P1-5010 FS+3d | 1.2d | 1.1d | SIC- Cost [364403]; Compactor [50 h]; Dumper Operator [129.56 h]; Dumper Truck [50 h]; Supervisor [28.79 h]; Sweeper Machine [30 h]; Sweeper Machine Operator [129.56 h]; Pneumatic Tire Roller [36 h]; Pneumatic Roller Operator [129.56 h]; Asphalt Paver [30 h]; Asphalt Paver Operator [129.56 h] | 364,403.21 | 570 | B1.32 12 16.01 | M3 | P1-R.W |

| ID | WBS | Activity | Duration | Start | Finish | Predecessors | Total float | Free float | Resources | Cost | BOQ Qty | BOQ Line item | UOM | Activities Codes Sudair Station |
| --- | --- | --- | --- | --- | --- | --- | --- | --- | --- | --- | --- | --- | --- | --- |
|  | 4 | **Kerbstone Installation** |  | 2026-11-12 | 2027-01-03 |  |  |  |  |  |  |  |  |  |
| SDR-ST-CON-P1-4230 |  | Precast Concrete Curbstone, Type A2 | 20d | 2026-11-12 | 2026-12-06 | SDR-ST-CON-P1-3600 | 3.9d | 0d | SIC- Cost [144150]; Un-Skilled Labor [143.96 h]; Supervisor [28.79 h]; Skilled Labor [143.96 h] | 144,149.62 | 2275 | B1.32 16 13.23.01 | lm | P1-R.W |
| SDR-ST-CON-P1-4950 |  | Precast Concrete Curbstone, Type D | 20d | 2026-12-10 | 2027-01-03 | SDR-ST-CON-P1-4230 FS+4d | 3.9d | 0d | SIC- Cost [70526]; Un-Skilled Labor [143.96 h]; Supervisor [28.79 h]; Skilled Labor [143.96 h] | 70,526.03 | 1154 | B1.32 16 13.23.02 | lm | P1-R.W |
|  | 5 | **Interlock Installation** |  | 2027-01-03 | 2027-03-02 |  |  |  |  |  |  |  |  |  |
| SDR-ST-CON-P1-4440 |  | Interlock Installation Part 1 | 21d | 2027-01-03 | 2027-01-27 | SDR-ST-ENG-AP-1080, SDR-ST-CON-P1-4950 | 3.9d | 0d | SIC- Cost [213105]; Un-Skilled Labor [40.4 h]; Supervisor [28.79 h]; Skilled Labor [40.4 h] | 213,104.54 | 775 | B1.32 14 13.13.02 | M2 | P1-R.W |
| SDR-ST-CON-P1-4870 |  | Interlock Installation Part 2 | 20d | 2027-01-27 | 2027-03-02 | SDR-ST-CON-P1-4440 | 3.9d |  | SIC- Cost [213105]; Un-Skilled Labor [143.96 h]; Supervisor [28.79 h]; Skilled Labor [143.96 h] | 213,104.54 | 775 | B1.32 14 13.13.01 | M2 | P1-R.W |
|  | 6 | **Road Marking** |  | 2027-03-14 | 2027-04-05 |  |  |  |  |  |  |  |  |  |
| SDR-ST-CON-P1-5300 |  | Retroreflective Thermoplastic White Traffic lines | 5d | 2027-03-14 | 2027-03-18 | SDR-ST-CON-P1-5200 SS, SDR-ST-ENG-AP-1080, SDR-ST-CON-P1-4870, SDR-ST-CON-P3-1310, SDR-ST-CON-P3-1490, SDR-ST-CON-P1-6070 | 0d |  | SIC- Cost [19365.7]; Supervisor [7.2 h]; Painter [4069.19 h]; Painter Helper [28.79 h] | 19,365.66 | 343 | B1.32 17 23.01 | M2 | P1-R.W |
| SDR-ST-CON-P1-5450 |  | Retroreflective Thermoplastic Yellow, Traffic lines | 5d | 2027-03-20 | 2027-03-24 | SDR-ST-CON-P1-5300 | 0d |  | SIC- Cost [13725.2]; Supervisor [7.2 h]; Painter [4069.19 h]; Painter Helper [28.79 h] | 13,725.18 | 243 | B1.32 17 23.02 | M2 | P1-R.W |
| SDR-ST-CON-P1-5610 |  | Ceramic raised pavement markers | 5d | 2027-03-25 | 2027-03-30 | SDR-ST-CON-P1-5450 | 0d |  | SIC- Cost [733.26]; Un-Skilled Labor [28.79 h]; Supervisor [7.2 h]; Skilled Labor [28.79 h] | 733.26 | 17 | B1.32 17 23.03 | Number | P1-R.W |
| SDR-ST-CON-P1-5690 |  | Rumble strip | 5d | 2027-03-31 | 2027-04-05 | SDR-ST-CON-P1-5610 | 0d |  | SIC- Cost [928.33]; Un-Skilled Labor [28.79 h]; Supervisor [7.2 h]; Skilled Labor [28.79 h] | 928.33 | 66 | B1.32 17 23.04 | M | P1-R.W |
|  | 7 | **Traffic Signage** |  | 2027-04-06 | 2027-04-18 |  |  |  |  |  |  |  |  |  |
| SDR-ST-CON-P1-5540 |  | Traffic signs, ground mounted, 1 Sheet Alumenium, (breakaway) Single post, with all accessories | 5d | 2027-04-06 | 2027-04-11 | SDR-ST-ENG-AP-1080, SDR-ST-CON-P1-5690, SDR-ST-PRO-MS-1190 | 0d |  | SIC- Cost [8095.27]; Un-Skilled Labor [4069.19 h]; Supervisor [7.2 h]; Skilled Labor [4069.19 h] | 8,095.27 | 4 | B1.10 14 53.01 | Number | P1-R.W |
| SDR-ST-CON-P1-5680 |  | Traffic signs, ground mounted, 1 Sheet Aluminum, (breakaway) Double post, with all accessories | 6d | 2027-04-12 | 2027-04-18 | SDR-ST-CON-P1-5540 | 0d |  | SIC- Cost [8446.63]; Un-Skilled Labor [4069.19 h]; Supervisor [7.2 h]; Skilled Labor [4069.19 h] | 8,446.63 | 3 | B1.10 14 53.02 | Number | P1-R.W |
|  | 8 | **Speed table** |  | 2027-04-19 | 2027-04-27 |  |  |  |  |  |  |  |  |  |
| SDR-ST-CON-P1-5460 |  | Interlock speed table including interlock, flush kerb and marking | 8d | 2027-04-19 | 2027-04-27 | SDR-ST-ENG-AP-1080, SDR-ST-CON-P1-5680 | 0d |  | SIC- Cost [15282.2]; Un-Skilled Labor [57.58 h]; Supervisor [7.2 h]; Skilled Labor [57.58 h] | 15,282.19 | 128 | B1.10 14 53.03 | M2 | P1-R.W |
|  | 6 | **ROAD - 02** |  | 2026-07-07 | 2027-05-08 |  |  |  |  |  |  |  |  |  |
|  | 1 | **ROAD-01 From 0 to 400 m (9)** |  | 2026-07-07 | 2027-05-04 |  |  |  |  |  |  |  |  |  |
|  | 14 | **GENERAL WORKS** |  | 2026-07-07 | 2026-08-23 |  |  |  |  |  |  |  |  |  |
|  | 10 | **Cleaning and removal of organic materials in Zone A** |  | 2026-07-07 | 2026-08-01 |  |  |  |  |  |  |  |  |  |
| SDR-ST-CON-P1-1030 |  | Cleaning and removal of organic materials in Zone A | 21d | 2026-07-07 | 2026-08-01 | SDR-ST-CON-P1-1020 SS+4d, SDR-ST-ENG-AP-1080 | 0d |  | SIC- Cost [4536.95]; Excavator [200 h]; Excavator Operator [143.96 h]; Dumper Operator [143.96 h]; Dumper Truck [200 h]; Grader [200 h]; Grader Operator [143.96 h]; Loader [200 h]; Loader Operator [143.96 h]; Un-Skilled Labor [143.96 h]; Supervisor [143.96 h]; Skilled Labor [143.96 h] | 4,536.95 | 8300 | B1.31 23 16.01 | M2 | P1-R.W |
|  | 12 | **Surveying works Zone A** |  | 2026-08-01 | 2026-08-23 |  |  |  |  |  |  |  |  |  |
| SDR-ST-CON-P1-1100 |  | Surveying works Zone A | 19d | 2026-08-01 | 2026-08-23 | SDR-ST-CON-P1-1030 | 0d |  | SIC- Cost [2722.17]; Un-Skilled Labor [115.17 h]; Surveyor [115.17 h]; Supervisor [28.79 h] | 2,722.17 | 8300 | B1.31 23 16.02 | M2 | P1-R.W |
|  | 1 | **Earth Works Road** |  | 2026-08-23 | 2026-09-08 |  |  |  |  |  |  |  |  |  |
| SDR-ST-CON-P1-1160 |  | Roadway Excavation and cuttings | 14d | 2026-08-23 | 2026-09-08 | SDR-ST-CON-P1-1100 | 0d |  | SIC- Cost [10888.7]; Excavator [50 h]; Excavator Operator [143.96 h]; Dumper Operator [143.96 h]; Dumper Truck [200 h]; Grader [200 h]; Grader Operator [143.96 h]; Loader [200 h]; Loader Operator [143.96 h]; Un-Skilled Labor [143.96 h]; Supervisor [143.96 h]; Skilled Labor [143.96 h] | 10,888.69 | 917 | B1.31 23 16.03 | M3 | P1-R.W |

| ID | WBS | Activity | Duration | Start | Finish | Predecessors | Total float | Free float | Resources | Cost | BOQ Qty | BOQ Line item | UOM | Activities Codes Sudair Station |
| --- | --- | --- | --- | --- | --- | --- | --- | --- | --- | --- | --- | --- | --- | --- |
|  | 10 | **Backfilling Works** |  | 2026-09-08 | 2026-11-04 |  |  |  |  |  |  |  |  |  |
| SDR-ST-CON-P1-1300 |  | Embankments to the Road 1 Layer | 13d | 2026-09-08 | 2026-09-24 | SDR-ST-CON-P1-1160 | 0d |  | SIC- Cost [177354]; Compactor [200 h]; Excavator [40 h]; Excavator Operator [143.96 h]; Dumper Operator [143.96 h]; Dumper Truck [1215 h]; Grader [200 h]; Grader Operator [143.96 h]; Loader [200 h]; Loader Operator [143.96 h]; Un-Skilled Labor [38.39 h]; Supervisor [28.79 h]; Skilled Labor [38.39 h]; Water Tanker [200 h] | 177,353.68 | 8958.25 | B1.31 23 23.01 | M3 | P1-R.W |
| SDR-ST-CON-P1-1910 |  | Embankments to the Road 2 Layer | 13d | 2026-09-24 | 2026-10-10 | SDR-ST-CON-P1-1300 | 0d |  | SIC- Cost [177354]; Compactor [200 h]; Excavator [30 h]; Excavator Operator [143.96 h]; Dumper Operator [143.96 h]; Dumper Truck [200 h]; Grader [175.38 h]; Grader Operator [143.96 h]; Loader [119.41 h]; Loader Operator [143.96 h]; Un-Skilled Labor [38.39 h]; Supervisor [28.79 h]; Skilled Labor [38.39 h]; Water Tanker [233.22 h] | 177,353.68 | 8958.25 | B1.31 23 23.02 | M3 | P1-R.W |
| SDR-ST-CON-P1-2620 |  | Embankments to the Road 3 Layer | 12d | 2026-10-10 | 2026-10-24 | SDR-ST-CON-P1-1910 | 0d |  | SIC- Cost [177354]; Compactor [50 h]; Excavator [15 h]; Excavator Operator [143.96 h]; Dumper Operator [143.96 h]; Dumper Truck [200 h]; Grader [100 h]; Grader Operator [143.96 h]; Loader [50 h]; Loader Operator [143.96 h]; Un-Skilled Labor [38.39 h]; Supervisor [28.79 h]; Skilled Labor [38.39 h]; Water Tanker [50 h] | 177,353.68 | 8958.25 | B1.31 23 23.03 | M3 | P1-R.W |
| SDR-ST-CON-P1-2920 |  | Embankments to the Road 4 Layer | 10d | 2026-10-24 | 2026-11-04 | SDR-ST-CON-P1-2620 | 0d |  | SIC- Cost [177354]; Compactor [160 h]; Excavator [30 h]; Excavator Operator [143.96 h]; Dumper Operator [143.96 h]; Dumper Truck [200 h]; Grader [200 h]; Grader Operator [143.96 h]; Loader [143.27 h]; Loader Operator [143.96 h]; Un-Skilled Labor [38.39 h]; Supervisor [38.39 h]; Skilled Labor [38.39 h]; Water Tanker [148.21 h] | 177,353.68 | 8958.25 | B1.31 23 23.04 | M3 | P1-R.W |
|  | 11 | **Subgrade** |  | 2026-11-04 | 2026-11-19 |  |  |  |  |  |  |  |  |  |
| SDR-ST-CON-P1-3390 |  | Subgrade layer works | 13d | 2026-11-04 | 2026-11-19 | SDR-ST-CON-P1-2920 | 0d |  | SIC- Cost [101611]; Compactor [50 h]; Excavator [15 h]; Excavator Operator [143.96 h]; Dumper Operator [143.96 h]; Dumper Truck [200 h]; Grader [200 h]; Grader Operator [143.96 h]; Loader [90.82 h]; Loader Operator [143.96 h]; Un-Skilled Labor [143.96 h]; Supervisor [143.96 h]; Skilled Labor [143.96 h]; Water Tanker [50 h]; Water Tanker Operator [143.96 h] | 101,611.28 | 3422 | B1.32 11 13.01 | M3 | P1-R.W |
|  | 2 | **Base Course** |  | 2026-11-19 | 2026-11-28 |  |  |  |  |  |  |  |  |  |
| SDR-ST-CON-P1-3960 |  | Aggregate base course layer | 7d | 2026-11-19 | 2026-11-28 | SDR-ST-CON-P1-3390 | 16.7d | 0d | SIC- Cost [122362]; Compactor [85.55 h]; Dumper Operator [136.76 h]; Dumper Truck [1229.2 h]; Grader [101.27 h]; Grader Operator [136.76 h]; Loader [260 h]; Loader Operator [136.76 h]; Un-Skilled Labor [136.76 h]; Supervisor [136.76 h]; Skilled Labor [136.76 h]; Water Tanker [137.08 h]; Water Tanker Operator [136.76 h] | 122,361.66 | 2248 | B1.32 11 23.01 | M3 | P1-R.W |
|  | 3 | **Asphalt Works** |  | 2026-11-28 | 2027-01-02 |  |  |  |  |  |  |  |  |  |
|  | 1 | **Bituminous base course** |  | 2026-11-28 | 2026-12-06 |  |  |  |  |  |  |  |  |  |
| SDR-ST-CON-P1-4540 |  | Bituminous base course (Grading I - Class A 1st Layer with RC-01 | 4d | 2026-11-28 | 2026-12-02 | SDR-ST-CON-P1-3960 | 16.7d | 0d | SIC- Cost [364195]; Compactor [50 h]; Dumper Operator [129.56 h]; Dumper Truck [50 h]; Supervisor [28.79 h]; Sweeper Machine [30 h]; Sweeper Machine Operator [129.56 h]; Pneumatic Tire Roller [30 h]; Pneumatic Roller Operator [129.56 h]; Asphalt Paver [30 h]; Asphalt Paver Operator [129.56 h] | 364,194.94 | 828.5 | B1.32 11 26.01 | M3 | P1-R.W |
| SDR-ST-CON-P1-4890 |  | Bituminous base course (Grading I - Class A 2nd layer with RC-02 | 3d | 2026-12-02 | 2026-12-06 | SDR-ST-CON-P1-4540 | 16.7d | 0d | SIC- Cost [364195]; Compactor [50 h]; Dumper Operator [129.56 h]; Dumper Truck [50 h]; Supervisor [28.79 h]; Sweeper Machine [30 h]; Sweeper Machine Operator [129.56 h]; Pneumatic Tire Roller [30 h]; Pneumatic Roller Operator [129.56 h]; Asphalt Paver [30 h]; Asphalt Paver Operator [129.56 h] | 364,194.94 | 828.5 | B1.32 11 26.02 | M3 | P1-R.W |
|  | 2 | **Bituminous concrete wearing course** |  | 2026-12-08 | 2027-01-02 |  |  |  |  |  |  |  |  |  |
| SDR-ST-CON-P1-5130 |  | Bituminous concrete wearing course, (Grading I - Class A), including tack coat (RC2) | 21d | 2026-12-08 | 2027-01-02 | SDR-ST-CON-P1-4890 FS+2d | 16.7d | 10.7d | SIC- Cost [256255]; Compactor [1460 h]; Dumper Operator [129.56 h]; Dumper Truck [125 h]; Supervisor [28.79 h]; Sweeper Machine [460 h]; Sweeper Machine Operator [129.56 h]; Pneumatic Tire Roller [160 h]; Pneumatic Roller Operator [129.56 h]; Asphalt Paver [105 h]; Asphalt Paver Operator [129.56 h] | 256,255.43 | 570 | B1.32 12 16.01 | M3 | P1-R.W |
|  | 4 | **Kerbstone Installation** |  | 2026-11-19 | 2027-01-10 |  |  |  |  |  |  |  |  |  |
| SDR-ST-CON-P1-3970 |  | Precast Concrete Curbstone, Type A2 | 20d | 2026-11-19 | 2026-12-13 | SDR-ST-CON-P1-3390 | 0d |  | SIC- Cost [101191]; Un-Skilled Labor [129.56 h]; Supervisor [28.85 h]; Skilled Labor [129.56 h] | 101,190.58 | 2275 | B1.32 16 13.23.01 | lm | P1-R.W |
| SDR-ST-CON-P1-4690 |  | Precast Concrete Curbstone, Type D | 20d | 2026-12-17 | 2027-01-10 | SDR-ST-CON-P1-3970 FS+4d | 0d |  | SIC- Cost [49508.1]; Un-Skilled Labor [129.56 h]; Supervisor [28.79 h]; Skilled Labor [129.56 h] | 49,508.07 | 1154 | B1.32 16 13.23.02 | lm | P1-R.W |
|  | 5 | **Interlock Installation** |  | 2027-01-10 | 2027-03-15 |  |  |  |  |  |  |  |  |  |
| SDR-ST-CON-P1-4200 |  | Interlock Installation Part 1 | 20d | 2027-01-10 | 2027-02-02 | SDR-ST-CON-P1-3970 FS+4d, SDR-ST-ENG-AP-1080, SDR-ST-CON-P1-4690 | 0d |  | SIC- Cost [149596]; Un-Skilled Labor [143.96 h]; Supervisor [28.79 h]; Skilled Labor [143.96 h] | 149,595.76 | 775 | B1.32 14 13.13.02 | M2 | P1-R.W |
| SDR-ST-CON-P1-4780 |  | Interlock Installation Part 2 | 20d | 2027-02-02 | 2027-03-15 | SDR-ST-CON-P1-4200 | 0d |  | SIC- Cost [149596]; Un-Skilled Labor [143.96 h]; Supervisor [28.79 h]; Skilled Labor [143.96 h] | 149,595.76 | 775 | B1.32 14 13.13.01 | M2 | P1-R.W |
|  | 6 | **Road Marking** |  | 2027-03-15 | 2027-04-07 |  |  |  |  |  |  |  |  |  |
| SDR-ST-CON-P1-5250 |  | Retroreflective Thermoplastic White Traffic lines | 5d | 2027-03-15 | 2027-03-21 | SDR-ST-ENG-AP-1080, SDR-ST-CON-P1-4780, SDR-ST-PRO-MS-1270, SDR-ST-CON-P3-1310, SDR-ST-CON-P1-6070, SDR-ST-CON-P1-6070 FF | 0d |  | SIC- Cost [13594.4]; Supervisor [7.2 h]; Painter [4069.19 h]; Painter Helper [28.79 h] | 13,594.36 | 343 | B1.32 17 23.01 | M2 | P1-R.W |
| SDR-ST-CON-P1-5370 |  | Retroreflective Thermoplastic Yellow, Traffic lines | 5d | 2027-03-21 | 2027-03-27 | SDR-ST-CON-P1-5250, SDR-ST-CON-P1-6070 | 0d |  | SIC- Cost [9634.84]; Supervisor [7.2 h]; Painter [4069.19 h]; Painter Helper [28.79 h] | 9,634.84 | 243 | B1.32 17 23.02 | M2 | P1-R.W |
| SDR-ST-CON-P1-5550 |  | Ceramic raised pavement markers | 5d | 2027-03-27 | 2027-04-01 | SDR-ST-CON-P1-5370 | 0d |  | SIC- Cost [514.74]; Un-Skilled Labor [28.79 h]; Supervisor [7.2 h]; Skilled Labor [28.79 h] | 514.74 | 17 | B1.32 17 23.03 | Number | P1-R.W |
| SDR-ST-CON-P1-5630 |  | Rumble strip | 5d | 2027-04-01 | 2027-04-07 | SDR-ST-CON-P1-5550, SDR-ST-PRO-MS-1180 | 0d |  | SIC- Cost [651.67]; Un-Skilled Labor [7.21 h]; Supervisor [7.21 h]; Skilled Labor [7.21 h] | 651.67 | 66 | B1.32 17 23.04 | M | P1-R.W |

| ID | WBS | Activity | Duration | Start | Finish | Predecessors | Total float | Free float | Resources | Cost | BOQ Qty | BOQ Line item | UOM | Activities Codes Sudair Station |
| --- | --- | --- | --- | --- | --- | --- | --- | --- | --- | --- | --- | --- | --- | --- |
|  | 7 | **Traffic Signage** |  | 2027-04-07 | 2027-04-25 |  |  |  |  |  |  |  |  |  |
| SDR-ST-CON-P1-5260 |  | Traffic signs, ground mounted, 1 Sheet Alumenium, (breakaway) Single post, with all accessories | 5d | 2027-04-07 | 2027-04-13 | SDR-ST-CON-P1-5250, SDR-ST-ENG-AP-1080, SDR-ST-CON-P1-5630, SDR-ST-PRO-MS-1190 | 0d |  | SIC- Cost [5681.92]; Un-Skilled Labor [4069.19 h]; Supervisor [7.2 h]; Skilled Labor [4069.19 h] | 5,681.92 | 4 | B1.10 14 53.01 | Number | P1-R.W |
| SDR-ST-CON-P1-5380 |  | Traffic signs, ground mounted, 1 Sheet Aluminum, (breakaway) Double post, with all accessories | 5d | 2027-04-13 | 2027-04-19 | SDR-ST-CON-P1-5260 | 0d |  | SIC- Cost [5929.3]; Un-Skilled Labor [28.79 h]; Supervisor [7.2 h]; Skilled Labor [28.79 h] | 5,929.3 | 3 | B1.10 14 53.02 | Number | P1-R.W |
| SDR-ST-CON-P1-5560 |  | Traffic signs, ground mounted, 2 Sheet Aluminum, (breakaway) Single post, with all accessories | 5d | 2027-04-19 | 2027-04-25 | SDR-ST-CON-P1-5380 | 0d |  | SIC- Cost [2470.58]; Un-Skilled Labor [28.79 h]; Supervisor [7.2 h]; Skilled Labor [28.79 h] | 2,470.58 | 1 | B1.10 14 53.03 | Number | P1-R.W |
|  | 8 | **Speed table** |  | 2027-04-25 | 2027-05-04 |  |  |  |  |  |  |  |  |  |
| SDR-ST-CON-P1-5390 |  | Interlock speed table including interlock, flush kerb and marking | 8d | 2027-04-25 | 2027-05-04 | SDR-ST-CON-P1-5380, SDR-ST-ENG-AP-1080, SDR-ST-CON-P1-5560 | 0d |  | SIC- Cost [10727.8]; Un-Skilled Labor [57.58 h]; Supervisor [7.2 h]; Skilled Labor [57.58 h] | 10,727.83 | 128 | B1.10 14 53.03 | M2 | P1-R.W |
|  | 2 | **ROAD-01 From 400 to 900 m (10)** |  | 2026-07-12 | 2027-04-29 |  |  |  |  |  |  |  |  |  |
|  | 14 | **GENERAL WORKS** |  | 2026-07-12 | 2026-08-24 |  |  |  |  |  |  |  |  |  |
|  | 10 | **Cleaning and removal of organic materials in Zone A** |  | 2026-07-12 | 2026-08-05 |  |  |  |  |  |  |  |  |  |
| SDR-ST-CON-P1-1040 |  | Cleaning and removal of organic materials in Zone A | 21d | 2026-07-12 | 2026-08-05 | SDR-ST-CON-P1-1030 SS+3.2d, SDR-ST-ENG-AP-1080 | 0d |  | SIC- Cost [4536.95]; Excavator [200 h]; Excavator Operator [143.96 h]; Dumper Operator [143.96 h]; Dumper Truck [200 h]; Grader [200 h]; Grader Operator [143.96 h]; Loader [200 h]; Loader Operator [143.96 h]; Un-Skilled Labor [143.96 h]; Supervisor [143.96 h]; Skilled Labor [143.96 h] | 4,536.95 | 8300 | B1.31 23 16.01 | M2 | P1-R.W |
|  | 12 | **Surveying works Zone A** |  | 2026-08-05 | 2026-08-24 |  |  |  |  |  |  |  |  |  |
| SDR-ST-CON-P1-1110 |  | Surveying works Zone A | 16d | 2026-08-05 | 2026-08-24 | SDR-ST-CON-P1-1040 | 0d |  | SIC- Cost [2722.17]; Un-Skilled Labor [115.17 h]; Surveyor [115.17 h]; Supervisor [28.79 h] | 2,722.17 | 8300 | B1.31 23 16.02 | M2 | P1-R.W |
|  | 1 | **Earth Works Road** |  | 2026-08-24 | 2026-09-08 |  |  |  |  |  |  |  |  |  |
| SDR-ST-CON-P1-1170 |  | Roadway Excavation and cuttings | 13d | 2026-08-24 | 2026-09-08 | SDR-ST-CON-P1-1110 | 0d |  | SIC- Cost [10888.7]; Excavator [50 h]; Excavator Operator [143.96 h]; Dumper Operator [143.96 h]; Dumper Truck [200 h]; Grader [200 h]; Grader Operator [143.96 h]; Loader [200 h]; Loader Operator [143.96 h]; Un-Skilled Labor [143.96 h]; Supervisor [28.79 h]; Skilled Labor [143.96 h] | 10,888.69 | 917 | B1.31 23 16.03 | M3 | P1-R.W |
|  | 10 | **Backfilling Works** |  | 2026-09-08 | 2026-11-01 |  |  |  |  |  |  |  |  |  |
| SDR-ST-CON-P1-1250 |  | Embankments to the Road 1 Layer | 12d | 2026-09-08 | 2026-09-22 | SDR-ST-CON-P1-1170 | 0d |  | SIC- Cost [177354]; Compactor [200 h]; Excavator [57 h]; Excavator Operator [143.96 h]; Dumper Operator [143.96 h]; Dumper Truck [200 h]; Grader [200 h]; Grader Operator [143.96 h]; Loader [200 h]; Loader Operator [143.96 h]; Un-Skilled Labor [38.39 h]; Supervisor [28.79 h]; Skilled Labor [38.39 h]; Water Tanker [200 h] | 177,353.68 | 8958.25 | B1.31 23 23.01 | M3 | P1-R.W |
| SDR-ST-CON-P1-1830 |  | Embankments to the Road 2 Layer | 11d | 2026-09-22 | 2026-10-06 | SDR-ST-CON-P1-1250 | 6.7d | 0d | SIC- Cost [177354]; Compactor [200 h]; Excavator [30 h]; Excavator Operator [143.96 h]; Dumper Operator [143.96 h]; Dumper Truck [200 h]; Grader [187.69 h]; Grader Operator [143.96 h]; Loader [131.84 h]; Loader Operator [143.96 h]; Un-Skilled Labor [38.39 h]; Supervisor [28.79 h]; Skilled Labor [38.39 h]; Water Tanker [200 h] | 177,353.68 | 8958.25 | B1.31 23 23.02 | M3 | P1-R.W |
| SDR-ST-CON-P1-2540 |  | Embankments to the Road 3 Layer | 11d | 2026-10-06 | 2026-10-19 | SDR-ST-CON-P1-1830 | 6.7d | 0d | SIC- Cost [177354]; Compactor [50 h]; Excavator [15 h]; Excavator Operator [143.96 h]; Dumper Operator [143.96 h]; Dumper Truck [200 h]; Grader [100 h]; Grader Operator [143.96 h]; Loader [50 h]; Loader Operator [143.96 h]; Un-Skilled Labor [38.39 h]; Supervisor [28.79 h]; Skilled Labor [38.39 h]; Water Tanker [200 h] | 177,353.68 | 8958.25 | B1.31 23 23.03 | M3 | P1-R.W |
| SDR-ST-CON-P1-3100 |  | Embankments to the Road 4 Layer | 11d | 2026-10-19 | 2026-11-01 | SDR-ST-CON-P1-2540 | 6.7d | 0d | SIC- Cost [177354]; Compactor [200 h]; Excavator [30 h]; Excavator Operator [143.96 h]; Dumper Operator [143.96 h]; Dumper Truck [200 h]; Grader [200 h]; Grader Operator [143.96 h]; Loader [139.18 h]; Loader Operator [143.96 h]; Un-Skilled Labor [38.39 h]; Supervisor [28.79 h]; Skilled Labor [38.39 h]; Water Tanker [200 h] | 177,353.68 | 8958.25 | B1.31 23 23.04 | M3 | P1-R.W |
|  | 11 | **Subgrade** |  | 2026-11-01 | 2026-11-14 |  |  |  |  |  |  |  |  |  |
| SDR-ST-CON-P1-3540 |  | Subgrade layer works | 11d | 2026-11-01 | 2026-11-14 | SDR-ST-CON-P1-3100 | 6.7d | 0d | SIC- Cost [101611]; Compactor [50 h]; Excavator [15 h]; Excavator Operator [143.96 h]; Dumper Operator [143.96 h]; Dumper Truck [200 h]; Grader [200 h]; Grader Operator [143.96 h]; Loader [200 h]; Loader Operator [143.96 h]; Un-Skilled Labor [143.96 h]; Supervisor [28.79 h]; Skilled Labor [143.96 h]; Water Tanker [200 h]; Water Tanker Operator [143.96 h] | 101,611.28 | 3422 | B1.32 11 13.01 | M3 | P1-R.W |
|  | 2 | **Base Course** |  | 2026-11-14 | 2026-11-25 |  |  |  |  |  |  |  |  |  |
| SDR-ST-CON-P1-4130 |  | Aggregate base course layer | 10d | 2026-11-14 | 2026-11-25 | SDR-ST-CON-P1-3540 | 6.7d | 0d | SIC- Cost [122362]; Compactor [68.1 h]; Dumper Operator [136.76 h]; Dumper Truck [190 h]; Grader [103.81 h]; Grader Operator [136.76 h]; Loader [190 h]; Loader Operator [136.76 h]; Un-Skilled Labor [136.76 h]; Supervisor [21.59 h]; Skilled Labor [136.76 h]; Water Tanker [94.33 h]; Water Tanker Operator [136.76 h] | 122,361.66 | 2248 | B1.32 11 23.01 | M3 | P1-R.W |
|  | 3 | **Asphalt Works** |  | 2026-11-25 | 2027-01-02 |  |  |  |  |  |  |  |  |  |
|  | 1 | **Bituminous base course** |  | 2026-11-25 | 2026-12-06 |  |  |  |  |  |  |  |  |  |
| SDR-ST-CON-P1-4600 |  | Bituminous base course (Grading I - Class A 1st Layer with RC-01 | 5d | 2026-11-25 | 2026-12-01 | SDR-ST-CON-P1-4130 | 6.7d | 0d | SIC- Cost [364195]; Compactor [50 h]; Dumper Operator [57.13 h]; Dumper Truck [50 h]; Supervisor [9.52 h]; Sweeper Machine [30 h]; Sweeper Machine Operator [57.13 h]; Pneumatic Tire Roller [30 h]; Pneumatic Roller Operator [57.13 h]; Asphalt Paver [30 h]; Asphalt Paver Operator [57.13 h] | 364,194.94 | 828.5 | B1.32 11 26.01 | M3 | P1-R.W |
| SDR-ST-CON-P1-4930 |  | Bituminous base course (Grading I - Class A 2nd layer with RC-02 | 4d | 2026-12-01 | 2026-12-06 | SDR-ST-CON-P1-4600 | 6.7d | 0d | SIC- Cost [364195]; Compactor [50 h]; Dumper Operator [57.13 h]; Dumper Truck [50 h]; Supervisor [9.52 h]; Sweeper Machine [30 h]; Sweeper Machine Operator [57.13 h]; Pneumatic Tire Roller [60 h]; Pneumatic Roller Operator [57.13 h]; Asphalt Paver [30 h]; Asphalt Paver Operator [57.13 h] | 364,194.94 | 828.5 | B1.32 11 26.02 | M3 | P1-R.W |

| ID | WBS | Activity | Duration | Start | Finish | Predecessors | Total float | Free float | Resources | Cost | BOQ Qty | BOQ Line item | UOM | Activities Codes Sudair Station |
| --- | --- | --- | --- | --- | --- | --- | --- | --- | --- | --- | --- | --- | --- | --- |
|  | 2 | **Bituminous concrete wearing course** |  | 2026-12-08 | 2027-01-02 |  |  |  |  |  |  |  |  |  |
| SDR-ST-CON-P1-5180 |  | Bituminous concrete wearing course, (Grading I - Class A), including tack coat (RC2) | 21d | 2026-12-08 | 2027-01-02 | SDR-ST-CON-P1-4930 FS+2d | 6.7d | 2d | SIC- Cost [256255]; Compactor [50 h]; Dumper Operator [274.44 h]; Dumper Truck [180 h]; Supervisor [45.74 h]; Sweeper Machine [30 h]; Sweeper Machine Operator [274.44 h]; Pneumatic Tire Roller [42 h]; Pneumatic Roller Operator [274.44 h]; Asphalt Paver [30 h]; Asphalt Paver Operator [274.44 h] | 256,255.43 | 570 | B1.32 12 16.01 | M3 | P1-R.W |
|  | 4 | **Kerbstone Installation** |  | 2026-11-14 | 2027-01-04 |  |  |  |  |  |  |  |  |  |
| SDR-ST-CON-P1-4140 |  | Precast Concrete Curbstone, Type A2 | 20d | 2026-11-14 | 2026-12-07 | SDR-ST-CON-P1-3540 | 6.7d | 0d | SIC- Cost [101191]; Un-Skilled Labor [129.56 h]; Supervisor [28.85 h]; Skilled Labor [129.56 h] | 101,190.58 | 2275 | B1.32 16 13.23.01 | lm | P1-R.W |
| SDR-ST-CON-P1-4810 |  | Precast Concrete Curbstone, Type D | 20d | 2026-12-12 | 2027-01-04 | SDR-ST-CON-P1-4140 FS+4d | 6.7d | 0d | SIC- Cost [49508.2]; Un-Skilled Labor [129.56 h]; Supervisor [28.85 h]; Skilled Labor [129.56 h] | 49,508.17 | 1154 | B1.32 16 13.23.02 | lm | P1-R.W |
|  | 5 | **Interlock Installation** |  | 2027-01-04 | 2027-02-28 |  |  |  |  |  |  |  |  |  |
| SDR-ST-CON-P1-4350 |  | Interlock Installation Part 1 | 20d | 2027-01-04 | 2027-01-27 | SDR-ST-CON-P1-4140 SS, SDR-ST-ENG-AP-1080, SDR-ST-CON-P1-4810, SDR-ST-CON-P1-5180 | 6.7d | 0d | SIC- Cost [149596]; Dumper Truck [40 h]; Un-Skilled Labor [40.4 h]; Supervisor [28.85 h]; Skilled Labor [40.4 h] | 149,595.76 | 775 | B1.32 14 13.13.02 | M2 | P1-R.W |
| SDR-ST-CON-P1-4920 |  | Interlock Installation Part 2 | 20d | 2027-01-27 | 2027-02-28 | SDR-ST-CON-P1-4350 | 6.7d | 0d | SIC- Cost [149596]; Un-Skilled Labor [4067.59 h]; Supervisor [28.85 h]; Skilled Labor [4067.59 h] | 149,595.76 | 775 | B1.32 14 13.13.01 | M2 | P1-R.W |
|  | 6 | **Road Marking** |  | 2027-02-28 | 2027-04-05 |  |  |  |  |  |  |  |  |  |
| SDR-ST-CON-P1-5290 |  | Retroreflective Thermoplastic White Traffic lines | 6d | 2027-02-28 | 2027-03-15 | SDR-ST-CON-P1-5180 SS, SDR-ST-ENG-AP-1080, SDR-ST-CON-P1-4920, SDR-ST-CON-P3-1310, SDR-ST-CON-P3-1490 | 6.7d | 0d | SIC- Cost [13594.4]; Dumper Truck [260 h]; Un-Skilled Labor [28.79 h]; Supervisor [7.2 h]; Skilled Labor [28.79 h] | 13,594.36 | 343 | B1.32 17 23.01 | M2 | P1-R.W |
| SDR-ST-CON-P1-5410 |  | Retroreflective Thermoplastic Yellow, Traffic lines | 6d | 2027-03-15 | 2027-03-22 | SDR-ST-CON-P1-5290 | 6.7d | 0d | SIC- Cost [9634.84]; Un-Skilled Labor [28.79 h]; Supervisor [7.21 h]; Skilled Labor [28.79 h] | 9,634.84 | 243 | B1.32 17 23.02 | M2 | P1-R.W |
| SDR-ST-CON-P1-5580 |  | Ceramic raised pavement markers | 6d | 2027-03-22 | 2027-03-29 | SDR-ST-CON-P1-5410 | 6.7d | 0d | SIC- Cost [514.74]; Un-Skilled Labor [28.79 h]; Supervisor [7.21 h]; Skilled Labor [28.79 h] | 514.74 | 17 | B1.32 17 23.03 | Number | P1-R.W |
| SDR-ST-CON-P1-5640 |  | Rumble strip | 6d | 2027-03-29 | 2027-04-05 | SDR-ST-CON-P1-5580 | 6.7d | 0d | SIC- Cost [651.67]; Un-Skilled Labor [28.79 h]; Supervisor [7.21 h]; Skilled Labor [28.79 h] | 651.67 | 66 | B1.32 17 23.04 | M | P1-R.W |
|  | 7 | **Traffic Signage** |  | 2027-04-05 | 2027-04-19 |  |  |  |  |  |  |  |  |  |
| SDR-ST-CON-P1-5420 |  | Traffic signs, ground mounted, 1 Sheet Alumenium, (breakaway) Single post, with all accessories | 6d | 2027-04-05 | 2027-04-12 | SDR-ST-CON-P1-5290 SS, SDR-ST-ENG-AP-1080, SDR-ST-CON-P1-5640 | 6.7d | 0d | SIC- Cost [5681.92]; Dumper Truck [260 h]; Un-Skilled Labor [3059.09 h]; Supervisor [7.2 h]; Skilled Labor [3059.09 h] | 5,681.92 | 4 | B1.10 14 53.01 | Number | P1-R.W |
| SDR-ST-CON-P1-5590 |  | Traffic signs, ground mounted, 1 Sheet Aluminum, (breakaway) Double post, with all accessories | 6d | 2027-04-12 | 2027-04-19 | SDR-ST-CON-P1-5420 | 6.7d | 0d | SIC- Cost [5929.39]; Un-Skilled Labor [2352.02 h]; Supervisor [7.2 h]; Skilled Labor [2048.99 h] | 5,929.39 | 3 | B1.10 14 53.02 | Number | P1-R.W |
|  | 8 | **Speed table** |  | 2027-04-19 | 2027-04-29 |  |  |  |  |  |  |  |  |  |
| SDR-ST-CON-P1-5430 |  | Interlock speed table including interlock, flush kerb and marking | 9d | 2027-04-19 | 2027-04-29 | SDR-ST-CON-P1-5410 SS, SDR-ST-ENG-AP-1080, SDR-ST-CON-P1-5590 | 6.7d | 0d | SIC- Cost [10727.8]; Un-Skilled Labor [57.58 h]; Supervisor [21.59 h]; Skilled Labor [57.58 h] | 10,727.83 | 128 | B1.10 14 53.03 | M2 | P1-R.W |
|  | 3 | **ROAD-01 From 900 to 1239 m (11)** |  | 2026-07-19 | 2027-05-08 |  |  |  |  |  |  |  |  |  |
|  | 14 | **GENERAL WORKS** |  | 2026-07-19 | 2026-09-02 |  |  |  |  |  |  |  |  |  |
|  | 10 | **Cleaning and removal of organic materials in Zone A** |  | 2026-07-19 | 2026-08-12 |  |  |  |  |  |  |  |  |  |
| SDR-ST-CON-P1-1060 |  | Cleaning and removal of organic materials in Zone A | 21d | 2026-07-19 | 2026-08-12 | SDR-ST-CON-P1-1040 SS+6d, SDR-ST-ENG-AP-1080 | 1d | 0d | SIC- Cost [4536.95]; Excavator [200 h]; Excavator Operator [143.96 h]; Dumper Operator [143.96 h]; Dumper Truck [608.13 h]; Grader [200 h]; Grader Operator [143.96 h]; Loader [200 h]; Loader Operator [143.96 h]; Un-Skilled Labor [143.96 h]; Supervisor [21.59 h]; Skilled Labor [143.96 h] | 4,536.95 | 8300 | B1.31 23 16.01 | M2 | P1-R.W |
|  | 12 | **Surveying works Zone A** |  | 2026-08-12 | 2026-09-02 |  |  |  |  |  |  |  |  |  |
| SDR-ST-CON-P1-1130 |  | Surveying works Zone A | 18d | 2026-08-12 | 2026-09-02 | SDR-ST-CON-P1-1060 | 1d | 0d | SIC- Cost [2722.17]; Un-Skilled Labor [115.17 h]; Surveyor [115.17 h]; Supervisor [21.59 h] | 2,722.17 | 8300 | B1.31 23 16.02 | M2 | P1-R.W |

| ID | WBS | Activity | Duration | Start | Finish | Predecessors | Total float | Free float | Resources | Cost | BOQ Qty | BOQ Line item | UOM | Activities Codes Sudair Station |
| --- | --- | --- | --- | --- | --- | --- | --- | --- | --- | --- | --- | --- | --- | --- |
|  | 1 | **Earth Works Road** |  | 2026-09-02 | 2026-09-17 |  |  |  |  |  |  |  |  |  |
| SDR-ST-CON-P1-1220 |  | Roadway Excavation and cuttings | 13d | 2026-09-02 | 2026-09-17 | SDR-ST-CON-P1-1130 | 1d | 0d | SIC- Cost [10888.7]; Excavator [63.85 h]; Excavator Operator [143.96 h]; Dumper Operator [143.96 h]; Dumper Truck [200 h]; Grader [200 h]; Grader Operator [143.96 h]; Loader [200 h]; Loader Operator [143.96 h]; Un-Skilled Labor [143.96 h]; Supervisor [21.59 h]; Skilled Labor [143.96 h] | 10,888.69 | 917 | B1.31 23 16.03 | M3 | P1-R.W |
|  | 10 | **Backfilling Works** |  | 2026-09-17 | 2026-11-08 |  |  |  |  |  |  |  |  |  |
| SDR-ST-CON-P1-1350 |  | Embankments to the Road 1 Layer | 11d | 2026-09-17 | 2026-10-01 | SDR-ST-CON-P1-1220 | 1d | 0d | SIC- Cost [177354]; Compactor [200 h]; Excavator [15 h]; Excavator Operator [143.96 h]; Dumper Operator [143.96 h]; Dumper Truck [2780 h]; Grader [200 h]; Grader Operator [143.96 h]; Loader [200 h]; Loader Operator [143.96 h]; Un-Skilled Labor [38.39 h]; Supervisor [28.79 h]; Skilled Labor [38.39 h]; Water Tanker [200 h] | 177,353.68 | 8958.25 | B1.31 23 23.01 | M3 | P1-R.W |
| SDR-ST-CON-P1-1990 |  | Embankments to the Road 2 Layer | 11d | 2026-10-01 | 2026-10-14 | SDR-ST-CON-P1-1350, SDR-ST-PRO-MS-1260 | 1.7d | 0d | SIC- Cost [177354]; Compactor [90 h]; Excavator [20 h]; Excavator Operator [143.96 h]; Dumper Operator [143.96 h]; Dumper Truck [200 h]; Grader [100 h]; Grader Operator [143.96 h]; Loader [94.57 h]; Loader Operator [143.96 h]; Un-Skilled Labor [38.39 h]; Supervisor [21.59 h]; Skilled Labor [38.39 h]; Water Tanker [200 h] | 177,353.68 | 8958.25 | B1.31 23 23.02 | M3 | P1-R.W |
| SDR-ST-CON-P1-2730 |  | Embankments to the Road 3 Layer | 11d | 2026-10-14 | 2026-10-27 | SDR-ST-CON-P1-1990 | 1.7d | 0d | SIC- Cost [177354]; Compactor [50 h]; Excavator [15 h]; Excavator Operator [143.96 h]; Dumper Operator [143.96 h]; Dumper Truck [200 h]; Grader [200 h]; Grader Operator [143.96 h]; Loader [50 h]; Loader Operator [143.96 h]; Un-Skilled Labor [38.39 h]; Supervisor [28.79 h]; Skilled Labor [38.39 h]; Water Tanker [200 h] | 177,353.68 | 8958.25 | B1.31 23 23.03 | M3 | P1-R.W |
| SDR-ST-CON-P1-3320 |  | Embankments to the Road 4 Layer | 10d | 2026-10-27 | 2026-11-08 | SDR-ST-CON-P1-2730 | 1.7d | 0d | SIC- Cost [177354]; Compactor [72 h]; Excavator [37 h]; Excavator Operator [143.96 h]; Dumper Operator [143.96 h]; Dumper Truck [150 h]; Grader [150 h]; Grader Operator [143.96 h]; Loader [150 h]; Loader Operator [143.96 h]; Un-Skilled Labor [38.39 h]; Supervisor [21.59 h]; Skilled Labor [38.39 h]; Water Tanker [200 h] | 177,353.68 | 8958.25 | B1.31 23 23.04 | M3 | P1-R.W |
|  | 11 | **Subgrade** |  | 2026-11-08 | 2026-11-17 |  |  |  |  |  |  |  |  |  |
| SDR-ST-CON-P1-3740 |  | Subgrade layer works | 8d | 2026-11-08 | 2026-11-17 | SDR-ST-CON-P1-3320 | 1.7d | 0d | SIC- Cost [101611]; Compactor [50 h]; Excavator [15 h]; Excavator Operator [143.96 h]; Dumper Operator [143.96 h]; Dumper Truck [150 h]; Grader [100 h]; Grader Operator [143.96 h]; Loader [150 h]; Loader Operator [143.96 h]; Un-Skilled Labor [38.39 h]; Supervisor [21.59 h]; Skilled Labor [38.39 h]; Water Tanker [150 h]; Water Tanker Operator [143.96 h] | 101,611.28 | 3422 | B1.32 11 13.01 | M3 | P1-R.W |
|  | 2 | **Base Course** |  | 2026-11-17 | 2026-11-25 |  |  |  |  |  |  |  |  |  |
| SDR-ST-CON-P1-4290 |  | Aggregate base course layer | 7d | 2026-11-17 | 2026-11-25 | SDR-ST-CON-P1-3740 | 17.5d | 0d | SIC- Cost [122362]; Compactor [69.15 h]; Dumper Operator [134.36 h]; Dumper Truck [140 h]; Grader [103.87 h]; Grader Operator [134.36 h]; Loader [140 h]; Loader Operator [134.36 h]; Un-Skilled Labor [38.39 h]; Supervisor [21.59 h]; Skilled Labor [38.39 h]; Water Tanker [140 h]; Water Tanker Operator [134.36 h] | 122,361.66 | 2248 | B1.32 11 23.01 | M3 | P1-R.W |
|  | 3 | **Asphalt Works** |  | 2026-11-25 | 2027-01-02 |  |  |  |  |  |  |  |  |  |
|  | 1 | **Bituminous base course** |  | 2026-11-25 | 2026-12-06 |  |  |  |  |  |  |  |  |  |
| SDR-ST-CON-P1-4650 |  | Bituminous base course (Grading I - Class A 1st Layer with RC-01 | 5d | 2026-11-25 | 2026-12-01 | SDR-ST-CON-P1-4290 | 17.5d | 0d | SIC- Cost [364195]; Compactor [50 h]; Dumper Operator [129.56 h]; Dumper Truck [180 h]; Supervisor [21.59 h]; Sweeper Machine [30 h]; Sweeper Machine Operator [129.56 h]; Pneumatic Tire Roller [30 h]; Pneumatic Roller Operator [129.56 h]; Asphalt Paver [30 h]; Asphalt Paver Operator [129.56 h] | 364,194.94 | 828.5 | B1.32 11 26.01 | M3 | P1-R.W |
| SDR-ST-CON-P1-4980 |  | Bituminous base course (Grading I - Class A 2nd layer with RC-02 | 4d | 2026-12-01 | 2026-12-06 | SDR-ST-CON-P1-4650 | 17.5d | 0d | SIC- Cost [364195]; Compactor [50 h]; Dumper Operator [129.56 h]; Dumper Truck [180 h]; Supervisor [21.59 h]; Sweeper Machine [30 h]; Sweeper Machine Operator [129.56 h]; Pneumatic Tire Roller [90 h]; Pneumatic Roller Operator [129.56 h]; Asphalt Paver [30 h]; Asphalt Paver Operator [129.56 h] | 364,194.94 | 828.5 | B1.32 11 26.02 | M3 | P1-R.W |
|  | 2 | **Bituminous concrete wearing course** |  | 2026-12-08 | 2027-01-02 |  |  |  |  |  |  |  |  |  |
| SDR-ST-CON-P1-5230 |  | Bituminous concrete wearing course, (Grading I - Class A), including tack coat (RC2) | 21d | 2026-12-08 | 2027-01-02 | SDR-ST-CON-P1-4980 FS+2d | 17.5d | 12.8d | SIC- Cost [256255]; Compactor [50 h]; Dumper Operator [129.56 h]; Dumper Truck [80 h]; Supervisor [21.59 h]; Sweeper Machine [30 h]; Sweeper Machine Operator [129.56 h]; Pneumatic Tire Roller [58.5 h]; Pneumatic Roller Operator [129.56 h]; Asphalt Paver [30 h]; Asphalt Paver Operator [129.56 h] | 256,255.43 | 570 | B1.32 12 16.01 | M3 | P1-R.W |
|  | 4 | **Kerbstone Installation** |  | 2026-11-17 | 2027-01-07 |  |  |  |  |  |  |  |  |  |
| SDR-ST-CON-P1-4300 |  | Precast Concrete Curbstone, Type A2 | 20d | 2026-11-17 | 2026-12-10 | SDR-ST-CON-P1-3740 | 1.7d | 0d | SIC- Cost [101191]; Un-Skilled Labor [129.56 h]; Supervisor [28.85 h]; Skilled Labor [129.56 h] | 101,190.58 | 2275 | B1.32 16 13.23.01 | lm | P1-R.W |
| SDR-ST-CON-P1-4860 |  | Precast Concrete Curbstone, Type D | 20d | 2026-12-15 | 2027-01-07 | SDR-ST-CON-P1-4300 FS+4d | 1.7d | 0d | SIC- Cost [49508.1]; Un-Skilled Labor [129.56 h]; Supervisor [28.85 h]; Skilled Labor [129.56 h] | 49,508.07 | 1154 | B1.32 16 13.23.02 | lm | P1-R.W |
|  | 5 | **Interlock Installation** |  | 2027-01-07 | 2027-03-06 |  |  |  |  |  |  |  |  |  |
| SDR-ST-CON-P1-4450 |  | Interlock Installation Part 1 | 20d | 2027-01-07 | 2027-01-31 | SDR-ST-CON-P1-4300 SS, SDR-ST-ENG-AP-1080, SDR-ST-CON-P1-4860, SDR-ST-CON-P1-5180 | 1.7d | 0d | SIC- Cost [149596]; Un-Skilled Labor [40.4 h]; Supervisor [28.85 h]; Skilled Labor [40.4 h] | 149,595.76 | 775 | B1.32 14 13.13.02 | M2 | P1-R.W |
| SDR-ST-CON-P1-4940 |  | Interlock Installation Part 2 | 20d | 2027-01-31 | 2027-03-06 | SDR-ST-CON-P1-4450 | 1.7d |  | SIC- Cost [149596]; Un-Skilled Labor [4053.19 h]; Supervisor [28.85 h]; Skilled Labor [4053.19 h] | 149,595.76 | 775 | B1.32 14 13.13.01 | M2 | P1-R.W |
|  | 6 | **Road Marking** |  | 2027-03-14 | 2027-04-10 |  |  |  |  |  |  |  |  |  |
| SDR-ST-CON-P1-5350 |  | Retroreflective Thermoplastic White Traffic lines | 6d | 2027-03-14 | 2027-03-20 | SDR-ST-CON-P1-5230 SS, SDR-ST-ENG-AP-1080, SDR-ST-CON-P1-4940, SDR-ST-CON-P1-5750, SDR-ST-CON-P1-6070 | 0d |  | SIC- Cost [13594.4]; Un-Skilled Labor [28.79 h]; Supervisor [7.21 h]; Skilled Labor [28.79 h] | 13,594.36 | 343 | B1.32 17 23.01 | M2 | P1-R.W |
| SDR-ST-CON-P1-5510 |  | Retroreflective Thermoplastic Yellow, Traffic lines | 6d | 2027-03-21 | 2027-03-27 | SDR-ST-CON-P1-5350 | 0d |  | SIC- Cost [9634.84]; Un-Skilled Labor [28.79 h]; Supervisor [7.21 h]; Skilled Labor [28.79 h] | 9,634.84 | 243 | B1.32 17 23.02 | M2 | P1-R.W |
| SDR-ST-CON-P1-5600 |  | Ceramic raised pavement markers | 6d | 2027-03-28 | 2027-04-03 | SDR-ST-CON-P1-5510 | 0d |  | SIC- Cost [514.74]; Un-Skilled Labor [28.79 h]; Supervisor [7.21 h]; Skilled Labor [28.79 h] | 514.74 | 17 | B1.32 17 23.03 | Number | P1-R.W |
| SDR-ST-CON-P1-5650 |  | Rumble strip | 6d | 2027-04-04 | 2027-04-10 | SDR-ST-CON-P1-5600, SDR-ST-PRO-MS-1190 | 0d |  | SIC- Cost [651.67]; Un-Skilled Labor [28.79 h]; Supervisor [7.21 h]; Skilled Labor [28.79 h] | 651.67 | 66 | B1.32 17 23.04 | M | P1-R.W |

| ID | WBS | Activity | Duration | Start | Finish | Predecessors | Total float | Free float | Resources | Cost | BOQ Qty | BOQ Line item | UOM | Activities Codes Sudair Station |
| --- | --- | --- | --- | --- | --- | --- | --- | --- | --- | --- | --- | --- | --- | --- |
|  | 7 | **Traffic Signage** |  | 2027-04-11 | 2027-04-27 |  |  |  |  |  |  |  |  |  |
| SDR-ST-CON-P1-5360 |  | Traffic signs, ground mounted, 1 Sheet Alumenium, (breakaway) Single post, with all accessories | 5d | 2027-04-11 | 2027-04-15 | SDR-ST-CON-P1-5350 SS, SDR-ST-ENG-AP-1080, SDR-ST-CON-P1-5650 | 0d |  | SIC- Cost [5681.92]; Un-Skilled Labor [28.79 h]; Supervisor [7.2 h]; Skilled Labor [28.79 h] | 5,681.92 | 4 | B1.10 14 53.01 | Number | P1-R.W |
| SDR-ST-CON-P1-5520 |  | Traffic signs, ground mounted, 1 Sheet Aluminum, (breakaway) Double post, with all accessories | 5d | 2027-04-17 | 2027-04-21 | SDR-ST-CON-P1-5360 | 0d |  | SIC- Cost [5929.39]; Un-Skilled Labor [28.79 h]; Supervisor [7.2 h]; Skilled Labor [28.79 h] | 5,929.39 | 3 | B1.10 14 53.02 | Number | P1-R.W |
| SDR-ST-CON-P1-5660 |  | Traffic signs, ground mounted, 2 Sheet Aluminum, (breakaway) Single post, with all accessories | 5d | 2027-04-22 | 2027-04-27 | SDR-ST-CON-P1-5520 | 0d |  | SIC- Cost [2470.58]; Un-Skilled Labor [28.79 h]; Supervisor [7.2 h]; Skilled Labor [28.79 h] | 2,470.58 | 1 | B1.10 14 53.03 | Number | P1-R.W |
|  | 8 | **Speed table** |  | 2027-04-28 | 2027-05-08 |  |  |  |  |  |  |  |  |  |
| SDR-ST-CON-P1-5530 |  | Interlock speed table including interlock, flush kerb and marking | 9d | 2027-04-28 | 2027-05-08 | SDR-ST-CON-P1-5350, SDR-ST-CON-P1-5660, SDR-ST-CON-P1-5620, SDR-ST-CON-P1-5460 | 0d |  | SIC- Cost [10727.8]; Compactor [260 h]; Dumper Truck [260 h]; Un-Skilled Labor [57.58 h]; Supervisor [7.2 h]; Skilled Labor [57.58 h] | 10,727.83 | 128 | B1.10 14 53.03 | M2 | P1-R.W |
|  | 12 | **ELECTRICAL WORKS** |  | 2026-08-27 | 2027-07-17 |  |  |  |  |  |  |  |  |  |
|  | 2 | **MV Network** |  | 2026-10-21 | 2027-05-12 |  |  |  |  |  |  |  |  |  |
|  | 5 | **ROAD - 01** |  | 2026-10-21 | 2027-04-18 |  |  |  |  |  |  |  |  |  |
|  | 4 | **ROAD-01 From 1125 to 1765 m (7)** |  | 2026-10-21 | 2027-04-03 |  |  |  |  |  |  |  |  |  |
|  | 6 | **Excavation** |  | 2026-10-21 | 2027-01-03 |  |  |  |  |  |  |  |  |  |
| SDR-ST-CON-P1-1570 |  | Excavation Works Part 1 | 21d | 2026-10-21 | 2026-11-15 | SDR-ST-CON-P1-1210, SDR-ST-CON-P1-2220 | 0d |  | SIC- Cost [22541.3]; Electrical Forman [151.16 h]; Electrical Technician [151.16 h]; Electrical Helper [151.16 h]; Labor [38.39 h]; Excavator [26.38 h]; Excavator Operator [151.16 h] | 22,541.29 | 378 | B2.31 23 00.01 | M3 | P1-M.V |
| SDR-ST-CON-P1-6090 |  | Excavation Works Part 2 | 21d | 2026-11-15 | 2026-12-09 | SDR-ST-CON-P1-1570 | 0d |  | SIC- Cost; Electrical Forman [151.16 h]; Electrical Technician [151.16 h]; Electrical Helper [151.16 h]; Labor [38.39 h]; Excavator [26.38 h]; Excavator Operator [151.16 h] |  | 378 | B2.31 23 00.01 | M3 | P1-M.V |
| SDR-ST-CON-P1-6100 |  | Excavation Works Part 3 | 21d | 2026-12-09 | 2027-01-03 | SDR-ST-CON-P1-6090 | 0d |  | SIC- Cost; Electrical Forman [151.16 h]; Electrical Technician [151.16 h]; Electrical Helper [151.16 h]; Labor [38.39 h]; Excavator [26.38 h]; Excavator Operator [151.16 h] |  | 378 | B2.31 23 00.01 | M3 | P1-M.V |
|  | 7 | **Pipe laying** |  | 2027-01-03 | 2027-01-27 |  |  |  |  |  |  |  |  |  |
| SDR-ST-CON-P1-2270 |  | Pipe Laying | 21d | 2027-01-03 | 2027-01-27 | SDR-ST-CON-P1-6100 | 0d |  | SIC- Cost [45082.6]; Electrical Forman [40.4 h]; Electrical Technician [40.4 h]; Electrical Helper [40.4 h]; Labor [38.39 h] | 45,082.58 | 1187 | B2.33 71 49.23.01 | M | P1-M.V |
|  | 8 | **Backfilling** |  | 2027-01-27 | 2027-03-02 |  |  |  |  |  |  |  |  |  |
| SDR-ST-CON-P1-3000 |  | Backfilling Works | 20d | 2027-01-27 | 2027-03-02 | SDR-ST-CON-P1-2270, SDR-ST-CON-P1-4660 | 0d |  | SIC- Cost [22541.3]; Electrical Forman [151.16 h]; Electrical Technician [151.16 h]; Electrical Helper [151.16 h]; Labor [151.16 h]; Excavator [30 h]; Excavator Operator [151.16 h] | 22,541.29 | 378 | B2.33 71 49.23.02 | M3 | P1-M.V |
|  | 9 | **Pulling Cable** |  | 2027-03-02 | 2027-04-03 |  |  |  |  |  |  |  |  |  |
| SDR-ST-CON-P1-3900 |  | Pulling Cable | 21.3d | 2027-03-02 | 2027-04-03 | SDR-ST-CON-P1-2270, SDR-ST-CON-P1-3000 | 0d |  | SIC- Cost [135248]; Electrical Forman [151.16 h]; Electrical Technician [2373.38 h]; Electrical Helper [2373.38 h]; Labor [5080.85 h] | 135,247.74 | 1187 | B2.33 71 49.23.03 | M | P1-M.V |
|  | 3 | **ROAD-01 From 470 to 1125 m (6)** |  | 2026-10-29 | 2027-04-06 |  |  |  |  |  |  |  |  |  |
|  | 6 | **Excavation** |  | 2026-10-29 | 2027-01-07 |  |  |  |  |  |  |  |  |  |
| SDR-ST-CON-P1-1720 |  | Excavation Works Part 1 | 21d | 2026-10-29 | 2026-11-23 | SDR-ST-CON-P1-1190, SDR-ST-CON-P1-1570 SS+7d | 0.1d | 0d | SIC- Cost [22541.3]; Electrical Forman [151.16 h]; Electrical Technician [151.16 h]; Electrical Helper [151.16 h]; Labor [151.16 h]; Excavator [30 h]; Excavator Operator [151.16 h] | 22,541.29 | 378 | B2.31 23 00.01 | M3 | P1-M.V |
| SDR-ST-CON-P1-6110 |  | Excavation Works Part2 | 21d | 2026-11-23 | 2026-12-17 | SDR-ST-CON-P1-1720 | 4d | 0d | SIC- Cost; Electrical Forman [151.16 h]; Electrical Technician [151.16 h]; Electrical Helper [151.16 h]; Labor [151.16 h]; Excavator [30 h]; Excavator Operator [151.16 h] |  | 378 | B2.31 23 00.01 | M3 | P1-M.V |
| SDR-ST-CON-P1-6120 |  | Excavation Works Part 3 | 18d | 2026-12-17 | 2027-01-07 | SDR-ST-CON-P1-6110 | 4d | 0d | SIC- Cost; Electrical Forman [151.16 h]; Electrical Technician [151.16 h]; Electrical Helper [151.16 h]; Labor [151.16 h]; Excavator [30 h]; Excavator Operator [151.16 h] |  | 378 | B2.31 23 00.01 | M3 | P1-M.V |

| ID | WBS | Activity | Duration | Start | Finish | Predecessors | Total float | Free float | Resources | Cost | BOQ Qty | BOQ Line item | UOM | Activities Codes Sudair Station |
| --- | --- | --- | --- | --- | --- | --- | --- | --- | --- | --- | --- | --- | --- | --- |
|  | 7 | **Pipe laying** |  | 2027-01-07 | 2027-02-01 |  |  |  |  |  |  |  |  |  |
| SDR-ST-CON-P1-2420 |  | Pipe Laying | 21d | 2027-01-07 | 2027-02-01 | SDR-ST-CON-P1-6120 | 4d | 0d | SIC- Cost [45082.6]; Electrical Forman [143.96 h]; Electrical Technician [143.96 h]; Electrical Helper [143.96 h]; Labor [38.39 h] | 45,082.58 | 1187 | B2.33 71 49.23.01 | M | P1-M.V |
|  | 8 | **Backfilling** |  | 2027-02-01 | 2027-03-14 |  |  |  |  |  |  |  |  |  |
| SDR-ST-CON-P1-3150 |  | Backfilling Works | 20d | 2027-02-01 | 2027-03-14 | SDR-ST-CON-P1-2420, SDR-ST-CON-P1-4660 | 4d | 0d | SIC- Cost [22541.3]; Electrical Forman [38.39 h]; Electrical Technician [151.16 h]; Electrical Helper [151.16 h]; Labor [38.39 h]; Excavator [20.25 h]; Excavator Operator [151.16 h] | 22,541.29 | 378 | B2.33 71 49.23.02 | M3 | P1-M.V |
|  | 9 | **Pulling Cable** |  | 2027-03-14 | 2027-04-06 |  |  |  |  |  |  |  |  |  |
| SDR-ST-CON-P1-4000 |  | Pulling Cable | 20d | 2027-03-14 | 2027-04-06 | SDR-ST-CON-P1-2420, SDR-ST-CON-P1-3150 | 4d |  | SIC- Cost [135248]; Electrical Forman [151.16 h]; Electrical Technician [3068.73 h]; Electrical Helper [151.16 h]; Labor [151.16 h] | 135,247.74 | 1187 | B2.33 71 49.23.03 | M | P1-M.V |
|  | 2 | **ROAD-01 N 03** |  | 2026-11-07 | 2027-04-14 |  |  |  |  |  |  |  |  |  |
|  | 6 | **Excavation** |  | 2026-11-07 | 2027-01-16 |  |  |  |  |  |  |  |  |  |
| SDR-ST-CON-P1-1770 |  | Excavation Works Part 1 | 21d | 2026-11-07 | 2026-12-01 | SDR-ST-CON-P1-1200, SDR-ST-CON-P1-1720 SS+7d | 0.1d | 0d | SIC- Cost [22541.3]; Electrical Forman [38.39 h]; Electrical Technician [151.16 h]; Electrical Helper [151.16 h]; Labor [38.39 h]; Excavator [30 h]; Excavator Operator [143.96 h] | 22,541.29 | 378 | B2.31 23 00.01 | M3 | P1-M.V |
| SDR-ST-CON-P1-6130 |  | Excavation Works Part 2 | 21d | 2026-12-01 | 2026-12-26 | SDR-ST-CON-P1-1770 | 0.1d | 0d | SIC- Cost; Electrical Forman [38.39 h]; Electrical Technician [151.16 h]; Electrical Helper [151.16 h]; Labor [38.39 h]; Excavator [30 h]; Excavator Operator [143.96 h] |  | 378 | B2.31 23 00.01 | M3 | P1-M.V |
| SDR-ST-CON-P1-6140 |  | Excavation Works Part 3 | 18d | 2026-12-26 | 2027-01-16 | SDR-ST-CON-P1-6130 | 0.1d | 0d | SIC- Cost; Electrical Forman [38.39 h]; Electrical Technician [151.16 h]; Electrical Helper [151.16 h]; Labor [38.39 h]; Excavator [30 h]; Excavator Operator [143.96 h] |  | 378 | B2.31 23 00.01 | M3 | P1-M.V |
|  | 7 | **Pipe laying** |  | 2027-01-16 | 2027-02-11 |  |  |  |  |  |  |  |  |  |
| SDR-ST-CON-P1-2500 |  | Pipe Laying | 21d | 2027-01-16 | 2027-02-11 | SDR-ST-CON-P1-6140 | 0.1d |  | SIC- Cost [45082.6]; Electrical Forman [151.16 h]; Electrical Technician [151.16 h]; Electrical Helper [151.16 h]; Labor [38.39 h] | 45,082.58 | 1187 | B2.33 71 49.23.01 | M | P1-M.V |
|  | 8 | **Backfilling** |  | 2027-02-11 | 2027-03-22 |  |  |  |  |  |  |  |  |  |
| SDR-ST-CON-P1-3280 |  | Backfilling Works | 20d | 2027-02-11 | 2027-03-22 | SDR-ST-CON-P1-2500, SDR-ST-CON-P3-1490 | 0d |  | SIC- Cost [22541.3]; Electrical Forman [151.16 h]; Electrical Technician [151.16 h]; Electrical Helper [151.16 h]; Compactor [600 h]; Labor [151.16 h]; Excavator [15 h]; Excavator Operator [151.16 h] | 22,541.29 | 378 | B2.33 71 49.23.02 | M3 | P1-M.V |
|  | 9 | **Pulling Cable** |  | 2027-03-22 | 2027-04-14 |  |  |  |  |  |  |  |  |  |
| SDR-ST-CON-P1-4250 |  | Pulling Cable | 20.1d | 2027-03-22 | 2027-04-14 | SDR-ST-CON-P1-2500, SDR-ST-CON-P1-3280 | 0d |  | SIC- Cost [135248]; Electrical Forman [97.38 h]; Electrical Technician [2018.96 h]; Electrical Helper [97.38 h]; Compactor [520 h]; Labor [97.38 h] | 135,247.74 | 1187 | B2.33 71 49.23.03 | M | P1-M.V |
|  | 1 | **ROAD-01 N 01** |  | 2026-11-15 | 2027-04-18 |  |  |  |  |  |  |  |  |  |
|  | 6 | **Excavation** |  | 2026-11-15 | 2027-01-24 |  |  |  |  |  |  |  |  |  |
| SDR-ST-CON-P1-1730 |  | Excavation Works Part 1 | 21d | 2026-11-15 | 2026-12-09 | SDR-ST-ENG-AP-1080, SDR-ST-CON-P1-1770 SS+7d | 0.3d | 0d | SIC- Cost [22541.3]; Electrical Forman [38.39 h]; Electrical Technician [97.38 h]; Electrical Helper [97.38 h]; Labor [38.39 h]; Excavator [16 h]; Excavator Operator [15.36 h] | 22,541.29 | 378 | B2.31 23 00.01 | M3 | P1-M.V |
| SDR-ST-CON-P1-6150 |  | Excavation Works Part 2 | 20d | 2026-12-09 | 2027-01-02 | SDR-ST-CON-P1-1730, SDR-ST-MILS-1070 | 7.3d | 0d | SIC- Cost; Electrical Forman [38.39 h]; Electrical Technician [97.38 h]; Electrical Helper [97.38 h]; Labor [38.39 h]; Excavator [16 h]; Excavator Operator [15.36 h] |  | 378 | B2.31 23 00.01 | M3 | P1-M.V |
| SDR-ST-CON-P1-6160 |  | Excavation Works Part 3 | 19d | 2027-01-02 | 2027-01-24 | SDR-ST-CON-P1-6150 | 7.3d | 0d | SIC- Cost; Electrical Forman [38.39 h]; Electrical Technician [97.38 h]; Electrical Helper [97.38 h]; Labor [38.39 h]; Excavator [16 h]; Excavator Operator [15.36 h] |  | 378 | B2.31 23 00.01 | M3 | P1-M.V |
|  | 7 | **Pipe laying** |  | 2027-01-24 | 2027-02-24 |  |  |  |  |  |  |  |  |  |
| SDR-ST-CON-P1-2430 |  | Pipe Laying | 20d | 2027-01-24 | 2027-02-24 | SDR-ST-CON-P1-6160, SDR-ST-CON-P1-4640 | 7.3d | 0d | SIC- Cost [45082.6]; Electrical Forman [38.39 h]; Electrical Technician [97.38 h]; Electrical Helper [97.38 h]; Labor [38.39 h] | 45,082.58 | 1187 | B2.33 71 49.23.01 | M | P1-M.V |

| ID | WBS | Activity | Duration | Start | Finish | Predecessors | Total float | Free float | Resources | Cost | BOQ Qty | BOQ Line item | UOM | Activities Codes Sudair Station |
| --- | --- | --- | --- | --- | --- | --- | --- | --- | --- | --- | --- | --- | --- | --- |
|  | 8 | **Backfilling** |  | 2027-02-24 | 2027-03-28 |  |  |  |  |  |  |  |  |  |
| SDR-ST-CON-P1-3160 |  | Backfilling Works | 19d | 2027-02-24 | 2027-03-28 | SDR-ST-CON-P1-2430, SDR-ST-CON-P1-5720, SDR-ST-CON-P1-5570, SDR-ST-CON-P1-5710, SDR-ST-CON-P1-5730 | 7.3d | 0d | SIC- Cost [22541.3]; Electrical Forman [38.39 h]; Electrical Technician [97.38 h]; Electrical Helper [96.93 h]; Labor [97.38 h]; Excavator [12 h]; Excavator Operator [97.38 h] | 22,541.29 | 378 | B2.33 71 49.23.02 | M3 | P1-M.V |
|  | 9 | **Pulling Cable** |  | 2027-03-28 | 2027-04-18 |  |  |  |  |  |  |  |  |  |
| SDR-ST-CON-P1-4010 |  | Pulling Cable | 18d | 2027-03-28 | 2027-04-18 | SDR-ST-CON-P1-2430, SDR-ST-CON-P1-3160, SDR-ST-CON-P1-4910, SDR-ST-CON-P1-4520 | 7.3d |  | SIC- Cost [135248]; Electrical Forman [38.39 h]; Electrical Technician [2018.96 h]; Electrical Helper [97.38 h]; Labor [38.39 h] | 135,247.74 | 1187 | B2.33 71 49.23.03 | M | P1-M.V |
|  | 6 | **ROAD - 02** |  | 2026-11-23 | 2027-05-12 |  |  |  |  |  |  |  |  |  |
|  | 3 | **ROAD-01 From 0 to 400 m (9) 2 Way 150 mm** |  | 2026-11-23 | 2027-04-26 |  |  |  |  |  |  |  |  |  |
|  | 6 | **Excavation** |  | 2026-11-23 | 2027-02-01 |  |  |  |  |  |  |  |  |  |
| SDR-ST-CON-P1-1920 |  | Excavation Works Part 1 | 21d | 2026-11-23 | 2026-12-17 | SDR-ST-CON-P1-1300, SDR-ST-CON-P1-1730 SS+7d | 0.3d | 0d | SIC- Cost [22541.3]; Electrical Forman [38.39 h]; Electrical Technician [97.38 h]; Electrical Helper [97.38 h]; Labor [38.39 h]; Excavator [30 h]; Excavator Operator [97.38 h] | 22,541.29 | 378 | B2.31 23 00.01 | M3 | P1-M.V |
| SDR-ST-CON-P1-6170 |  | Excavation Works Part 2 | 20d | 2026-12-17 | 2027-01-10 | SDR-ST-CON-P1-1920 | 0.3d | 0d | SIC- Cost; Electrical Forman [38.39 h]; Electrical Technician [97.38 h]; Electrical Helper [97.38 h]; Labor [38.39 h]; Excavator [30 h]; Excavator Operator [97.38 h] |  | 378 | B2.31 23 00.01 | M3 | P1-M.V |
| SDR-ST-CON-P1-6180 |  | Excavation Works Part 3 | 19d | 2027-01-10 | 2027-02-01 | SDR-ST-CON-P1-6170, SDR-ST-CON-P1-4020, SDR-ST-CON-P1-4310 | 0.3d | 0d | SIC- Cost; Electrical Forman [38.39 h]; Electrical Technician [97.38 h]; Electrical Helper [97.38 h]; Labor [38.39 h]; Excavator [30 h]; Excavator Operator [97.38 h] |  | 378 | B2.31 23 00.01 | M3 | P1-M.V |
|  | 7 | **Pipe laying** |  | 2027-02-01 | 2027-03-14 |  |  |  |  |  |  |  |  |  |
| SDR-ST-CON-P1-2660 |  | Pipe Laying | 20d | 2027-02-01 | 2027-03-14 | SDR-ST-CON-P1-6180, SDR-ST-CON-P1-4740, SDR-ST-CON-P1-4880 | 0.3d | 0d | SIC- Cost [45082.6]; Electrical Forman [38.39 h]; Electrical Technician [97.38 h]; Electrical Helper [97.38 h]; Labor [38.39 h] | 45,082.58 | 1187 | B2.33 71 49.23.01 | M | P1-M.V |
|  | 8 | **Backfilling** |  | 2027-03-14 | 2027-04-05 |  |  |  |  |  |  |  |  |  |
| SDR-ST-CON-P1-3430 |  | Backfilling Works | 19d | 2027-03-14 | 2027-04-05 | SDR-ST-CON-P1-2660 | 0.3d | 0d | SIC- Cost [22541.3]; Electrical Forman [38.39 h]; Electrical Technician [97.38 h]; Electrical Helper [96.93 h]; Labor [38.39 h]; Excavator [12 h]; Excavator Operator [97.38 h] | 22,541.29 | 378 | B2.33 71 49.23.02 | M3 | P1-M.V |
|  | 9 | **Pulling Cable** |  | 2027-04-05 | 2027-04-26 |  |  |  |  |  |  |  |  |  |
| SDR-ST-CON-P1-4320 |  | Pulling Cable | 18d | 2027-04-05 | 2027-04-26 | SDR-ST-CON-P1-2660, SDR-ST-CON-P1-3430 | 0.3d |  | SIC- Cost [135248]; Electrical Forman [97.38 h]; Electrical Technician [97.38 h]; Electrical Helper [97.38 h]; Labor [97.38 h] | 135,247.74 | 1187 | B2.33 71 49.23.03 | M | P1-M.V |
|  | 2 | **ROAD-01 From 400 to 900 m (10) 2 Way 150 mm** |  | 2026-12-01 | 2027-05-05 |  |  |  |  |  |  |  |  |  |
|  | 6 | **Excavation** |  | 2026-12-01 | 2027-02-13 |  |  |  |  |  |  |  |  |  |
| SDR-ST-CON-P1-1840 |  | Excavation Works Part 1 | 21d | 2026-12-01 | 2026-12-26 | SDR-ST-CON-P1-1250, SDR-ST-CON-P1-1920 SS+7d | 0.7d | 0d | SIC- Cost [22541.3]; Electrical Forman [38.39 h]; Electrical Technician [97.38 h]; Electrical Helper [97.38 h]; Labor [38.39 h]; Excavator [30 h]; Excavator Operator [97.38 h] | 22,541.29 | 378 | B2.31 23 00.01 | M3 | P1-M.V |
| SDR-ST-CON-P1-6190 |  | Excavation Works Part 2 | 20d | 2026-12-26 | 2027-01-18 | SDR-ST-CON-P1-1840, SDR-ST-MILS-1070 | 8.2d | 0d | SIC- Cost; Electrical Forman [38.39 h]; Electrical Technician [97.38 h]; Electrical Helper [97.38 h]; Labor [38.39 h]; Excavator [30 h]; Excavator Operator [97.38 h] |  | 378 | B2.31 23 00.01 | M3 | P1-M.V |
| SDR-ST-CON-P1-6200 |  | Excavation Works Part 3 | 20d | 2027-01-18 | 2027-02-13 | SDR-ST-CON-P1-6190 | 8.2d | 0d | SIC- Cost; Electrical Forman [38.39 h]; Electrical Technician [97.38 h]; Electrical Helper [97.38 h]; Labor [38.39 h]; Excavator [30 h]; Excavator Operator [97.38 h] |  | 378 | B2.31 23 00.01 | M3 | P1-M.V |
|  | 7 | **Pipe laying** |  | 2027-02-13 | 2027-03-23 |  |  |  |  |  |  |  |  |  |
| SDR-ST-CON-P1-2590 |  | Pipe Laying | 20d | 2027-02-13 | 2027-03-23 | SDR-ST-CON-P1-1840, SDR-ST-CON-P1-6200, SDR-ST-MILS-1100 | 8.2d | 0d | SIC- Cost [45082.6]; Electrical Forman [38.39 h]; Electrical Technician [97.38 h]; Electrical Helper [97.38 h]; Labor [38.39 h] | 45,082.58 | 1187 | B2.33 71 49.23.01 | M | P1-M.V |
|  | 8 | **Backfilling** |  | 2027-03-23 | 2027-04-14 |  |  |  |  |  |  |  |  |  |
| SDR-ST-CON-P1-3340 |  | Backfilling Works | 19d | 2027-03-23 | 2027-04-14 | SDR-ST-CON-P1-2590 | 8.2d | 0d | SIC- Cost [22541.3]; Electrical Forman [38.39 h]; Electrical Technician [97.38 h]; Electrical Helper [96.93 h]; Labor [38.39 h]; Excavator [12 h]; Excavator Operator [11.52 h] | 22,541.29 | 378 | B2.33 71 49.23.02 | M3 | P1-M.V |

| ID | WBS | Activity | Duration | Start | Finish | Predecessors | Total float | Free float | Resources | Cost | BOQ Qty | BOQ Line item | UOM | Activities Codes Sudair Station |
| --- | --- | --- | --- | --- | --- | --- | --- | --- | --- | --- | --- | --- | --- | --- |
|  | 9 | **Pulling Cable** |  | 2027-04-14 | 2027-05-05 |  |  |  |  |  |  |  |  |  |
| SDR-ST-CON-P1-4050 |  | Pulling Cable | 18d | 2027-04-14 | 2027-05-05 | SDR-ST-CON-P1-2590, SDR-ST-CON-P1-3340 | 8.2d |  | SIC- Cost [135248]; Electrical Forman [97.38 h]; Electrical Technician [97.38 h]; Electrical Helper [97.38 h]; Labor [97.38 h] | 135,247.74 | 1187 | B2.33 71 49.23.03 | M | P1-M.V |
|  | 1 | **ROAD-01 From 900 to 1239 m (11) 2 Way 150 mm** |  | 2026-12-09 | 2027-05-12 |  |  |  |  |  |  |  |  |  |
|  | 6 | **Excavation** |  | 2026-12-09 | 2027-02-25 |  |  |  |  |  |  |  |  |  |
| SDR-ST-CON-P1-2000 |  | Excavation Works Part 1 | 21d | 2026-12-09 | 2027-01-03 | SDR-ST-CON-P1-1350, SDR-ST-CON-P1-1840 SS+7d | 0.7d | 0d | SIC- Cost [22541.3]; Electrical Forman [38.39 h]; Electrical Technician [97.38 h]; Electrical Helper [97.38 h]; Labor [38.39 h]; Excavator [30 h]; Excavator Operator [97.38 h] | 22,541.29 | 378 | B2.31 23 00.01 | M3 | P1-M.V |
| SDR-ST-CON-P1-6210 |  | Excavation Works Part 2 | 20d | 2027-01-03 | 2027-01-26 | SDR-ST-CON-P1-2000 | 0.7d | 0d | SIC- Cost; Electrical Forman [38.39 h]; Electrical Technician [97.38 h]; Electrical Helper [97.38 h]; Labor [38.39 h]; Excavator [30 h]; Excavator Operator [97.38 h] |  | 378 | B2.31 23 00.01 | M3 | P1-M.V |
| SDR-ST-CON-P1-6220 |  | Excavation Works Part 3 | 19d | 2027-01-26 | 2027-02-25 | SDR-ST-CON-P1-6210 | 2.2d | 0d | SIC- Cost; Electrical Forman [38.39 h]; Electrical Technician [97.38 h]; Electrical Helper [97.38 h]; Labor [38.39 h]; Excavator [1070 h]; Excavator Operator [97.38 h] |  | 378 | B2.31 23 00.01 | M3 | P1-M.V |
|  | 7 | **Pipe laying** |  | 2027-02-25 | 2027-03-30 |  |  |  |  |  |  |  |  |  |
| SDR-ST-CON-P1-2750 |  | Pipe Laying | 20d | 2027-02-25 | 2027-03-30 | SDR-ST-CON-P1-6220, SDR-ST-CON-P1-4660 | 2.2d | 0d | SIC- Cost [45082.6]; Electrical Forman [38.39 h]; Electrical Technician [97.38 h]; Electrical Helper [97.38 h]; Labor [38.39 h] | 45,082.58 | 1187 | B2.33 71 49.23.01 | M | P1-M.V |
|  | 8 | **Backfilling** |  | 2027-03-30 | 2027-04-21 |  |  |  |  |  |  |  |  |  |
| SDR-ST-CON-P1-3460 |  | Backfilling Works | 19d | 2027-03-30 | 2027-04-21 | SDR-ST-CON-P1-2750 | 2.2d | 0d | SIC- Cost [22541.3]; Electrical Forman [38.39 h]; Electrical Technician [97.38 h]; Electrical Helper [96.93 h]; Labor [38.39 h]; Excavator [12 h]; Excavator Operator [11.52 h] | 22,541.29 | 378 | B2.33 71 49.23.02 | M3 | P1-M.V |
|  | 9 | **Pulling Cable** |  | 2027-04-21 | 2027-05-12 |  |  |  |  |  |  |  |  |  |
| SDR-ST-CON-P1-3980 |  | Pulling Cable | 18d | 2027-04-21 | 2027-05-12 | SDR-ST-CON-P1-2750, SDR-ST-CON-P1-3460 | 2.2d | 0d | SIC- Cost [135248]; Electrical Forman [97.38 h]; Electrical Technician [3025.02 h]; Electrical Helper [97.38 h]; Labor [97.38 h] | 135,247.74 | 1187 | B2.33 71 49.23.03 | M | P1-M.V |
|  | 1 | **Earthing System** |  | 2027-01-26 | 2027-02-18 |  |  |  |  |  |  |  |  |  |
| SDR-ST-CON-P1-4840 |  | Installation of Earthing System Including lighting poles circuits | 16d | 2027-01-26 | 2027-02-18 | SDR-ST-CON-P1-6210 | 0.7d |  | SIC- Cost [4795]; Electrical Technician [86.38 h]; Electrical Helper [86.38 h] | 4,795 | 7 | B2.33 71 19.01 | Number | P1-M.V |
|  | 16 | **Street Lighting Network** |  | 2026-08-27 | 2027-07-17 |  |  |  |  |  |  |  |  |  |
|  | 7 | **ROAD - 01** |  | 2026-08-27 | 2027-07-17 |  |  |  |  |  |  |  |  |  |
|  | 2 | **ROAD-01 From 470 to 1125 m (6)** |  | 2026-08-27 | 2027-02-06 |  |  |  |  |  |  |  |  |  |
|  | 10 | **Excavation** |  | 2026-08-27 | 2026-11-12 |  |  |  |  |  |  |  |  |  |
| SDR-ST-CON-P1-1180 |  | Excavation for LV Cable trench Section 1 | 21d | 2026-08-27 | 2026-09-21 | SDR-ST-CON-P1-1190 SS, SDR-ST-ENG-AP-1080 | 1.3d | 0d | SIC- Cost [5106]; Electrical Forman [97.38 h]; Electrical Technician [97.38 h]; Electrical Helper [97.38 h]; Labor [97.38 h]; Excavator [65 h]; Excavator Operator [97.38 h] | 5,106 | 107.85 | B2.31 23 00.01 | M3 | P1-S.L |
| SDR-ST-CON-P1-1560 |  | Excavation for LV Cable trench Section 2 | 21d | 2026-09-24 | 2026-10-19 | SDR-ST-CON-P1-1180 FS+2d | 7.7d | 0d | SIC- Cost [5106]; Electrical Forman [38.39 h]; Electrical Technician [97.38 h]; Electrical Helper [97.38 h]; Labor [38.39 h]; Excavator [15.36 h]; Excavator Operator [97.38 h] | 5,106 | 107.85 | B2.31 23 00.01 | M3 | P1-S.L |
| SDR-ST-CON-P1-2250 |  | Excavation for LV Cable trench Section 3 | 21d | 2026-10-19 | 2026-11-12 | SDR-ST-CON-P1-1560 | 7.7d | 0d | SIC- Cost [5106]; Electrical Forman [38.39 h]; Electrical Technician [97.38 h]; Electrical Helper [97.38 h]; Labor [38.39 h]; Excavator [15 h]; Excavator Operator [97.38 h] | 5,106 | 107.85 | B2.31 23 00.02 | M3 | P1-S.L |
|  | 11 | **Install Footings** |  | 2026-11-12 | 2026-12-07 |  |  |  |  |  |  |  |  |  |
| SDR-ST-CON-P1-2980 |  | Install Footings | 21d | 2026-11-12 | 2026-12-07 | SDR-ST-CON-P1-2250 | 7.7d | 0d | SIC- Cost [15318]; Electrical Forman [38.39 h]; Electrical Technician [97.38 h]; Electrical Helper [97.38 h]; Labor [38.39 h] | 15,318 | 20 | B2.33 71 00 01.01 | Number | P1-S.L |

| ID | WBS | Activity | Duration | Start | Finish | Predecessors | Total float | Free float | Resources | Cost | BOQ Qty | BOQ Line item | UOM | Activities Codes Sudair Station |
| --- | --- | --- | --- | --- | --- | --- | --- | --- | --- | --- | --- | --- | --- | --- |
|  | 12 | **Backfilling** |  | 2026-12-07 | 2026-12-19 |  |  |  |  |  |  |  |  |  |
| SDR-ST-CON-P1-3870 |  | Backfilling over LV Cables of Street lighting | 10d | 2026-12-07 | 2026-12-19 | SDR-ST-CON-P1-2980 | 7.7d | 0d | SIC- Cost [15318]; Electrical Forman [48.69 h]; Electrical Technician [48.69 h]; Electrical Helper [48.69 h]; Labor [9.18 h]; Excavator [65 h]; Excavator Operator [48.69 h] | 15,318 | 323 | B2.31 23 00.01 | M3 | P1-S.L |
|  | 13 | **Install pole** |  | 2026-12-19 | 2027-02-06 |  |  |  |  |  |  |  |  |  |
| SDR-ST-CON-P1-4420 |  | Install Pole Part 1 | 21d | 2026-12-19 | 2027-01-12 | SDR-ST-CON-P1-3870 | 7.7d | 0d | SIC- Cost [53613]; Electrical Forman [48.69 h]; Electrical Technician [48.69 h]; Electrical Helper [48.69 h]; Labor [48.69 h] | 53,612.98 | 10 | B2.33 71 16.01 | Number | P1-S.L |
| SDR-ST-CON-P1-5170 |  | Install Pole Part 2 | 21d | 2027-01-12 | 2027-02-06 | SDR-ST-CON-P1-4420 | 7.7d |  | SIC- Cost [53613]; Electrical Forman [48.69 h]; Electrical Technician [48.69 h]; Electrical Helper [48.69 h]; Labor [48.69 h] | 53,612.98 | 10 | B2.33 71 16.01 | Number | P1-S.L |
|  | 3 | **ROAD-01 From 1125 to 1765 m (7)** |  | 2026-09-21 | 2027-03-08 |  |  |  |  |  |  |  |  |  |
|  | 10 | **Excavation** |  | 2026-09-21 | 2026-12-07 |  |  |  |  |  |  |  |  |  |
| SDR-ST-CON-P1-1590 |  | Excavation for LV Cable trench Section 1 | 21d | 2026-09-21 | 2026-10-17 | SDR-ST-CON-P1-1210 | 0d |  | SIC- Cost [5106]; Electrical Forman [38.39 h]; Electrical Technician [97.38 h]; Electrical Helper [97.38 h]; Labor [38.39 h]; Excavator [22.18 h]; Excavator Operator [97.38 h] | 5,106 | 107.85 | B2.31 23 00.01 | M3 | P1-S.L |
| SDR-ST-CON-P1-2390 |  | Excavation for LV Cable trench Section 2 | 21d | 2026-10-19 | 2026-11-12 | SDR-ST-CON-P1-1590 FS+2d | 0d |  | SIC- Cost [5106]; Electrical Forman [38.39 h]; Electrical Technician [97.38 h]; Electrical Helper [97.38 h]; Labor [38.39 h]; Excavator [15 h]; Excavator Operator [97.38 h] | 5,106 | 107.85 | B2.31 23 00.01 | M3 | P1-S.L |
| SDR-ST-CON-P1-3120 |  | Excavation for LV Cable trench Section 3 | 21d | 2026-11-12 | 2026-12-07 | SDR-ST-CON-P1-2390 | 0d |  | SIC- Cost [5106]; Electrical Forman [38.39 h]; Electrical Technician [97.38 h]; Electrical Helper [97.38 h]; Labor [38.39 h]; Excavator [30 h]; Excavator Operator [97.38 h] | 5,106 | 107.85 | B2.31 23 00.02 | M3 | P1-S.L |
|  | 11 | **Install Footings** |  | 2026-12-07 | 2026-12-24 |  |  |  |  |  |  |  |  |  |
| SDR-ST-CON-P1-3990 |  | Install Footings | 15d | 2026-12-07 | 2026-12-24 | SDR-ST-CON-P1-3120 | 0d |  | SIC- Cost [15318]; Electrical Forman [97.38 h]; Electrical Technician [97.38 h]; Electrical Helper [97.38 h]; Labor [97.38 h] | 15,318 | 20 | B2.33 71 00 01.01 | Number | P1-S.L |
|  | 12 | **Backfilling** |  | 2026-12-24 | 2027-01-05 |  |  |  |  |  |  |  |  |  |
| SDR-ST-CON-P1-4680 |  | Backfilling over LV Cables of Street lighting | 10d | 2026-12-24 | 2027-01-05 | SDR-ST-CON-P1-3990 | 0d |  | SIC- Cost [15318]; Electrical Forman [48.69 h]; Electrical Technician [48.69 h]; Electrical Helper [48.69 h]; Labor [9.18 h]; Excavator [15 h]; Excavator Operator [48.69 h] | 15,318 | 323 | B2.31 23 00.01 | M3 | P1-S.L |
|  | 13 | **Install pole** |  | 2027-01-05 | 2027-03-08 |  |  |  |  |  |  |  |  |  |
| SDR-ST-CON-P1-5050 |  | Install Pole Part 1 | 21d | 2027-01-05 | 2027-01-30 | SDR-ST-CON-P1-4680 | 0d |  | SIC- Cost [53613]; Electrical Forman [48.69 h]; Electrical Technician [48.69 h]; Electrical Helper [48.69 h]; Labor [48.69 h] | 53,612.98 | 10 | B2.33 71 16.01 | Number | P1-S.L |
| SDR-ST-CON-P1-5760 |  | Install Pole Part 2 | 21d | 2027-01-30 | 2027-03-08 | SDR-ST-CON-P1-5050 | 0d |  | SIC- Cost [53613]; Electrical Forman [48.69 h]; Electrical Technician [48.69 h]; Electrical Helper [48.69 h]; Labor [48.69 h] | 53,612.98 | 10 | B2.33 71 16.01 | Number | P1-S.L |
|  | 1 | **ROAD-01 From 0 to 470 m (3)** |  | 2026-08-31 | 2027-03-20 |  |  |  |  |  |  |  |  |  |
|  | 10 | **Excavation** |  | 2026-08-31 | 2026-11-14 |  |  |  |  |  |  |  |  |  |
| SDR-ST-CON-P1-1500 |  | Excavation for LV Cable trench Section 1 | 21d | 2026-08-31 | 2026-09-26 | SDR-ST-CON-P1-1200 | 0.6d | 0d | SIC- Cost [5106]; Electrical Forman [38.39 h]; Electrical Technician [97.38 h]; Electrical Helper [97.38 h]; Labor [38.39 h]; Excavator [15 h]; Excavator Operator [97.38 h] | 5,106 | 107.85 | B2.31 23 00.01 | M3 | P1-S.L |
| SDR-ST-CON-P1-2320 |  | Excavation for LV Cable trench Section 2 | 21d | 2026-09-26 | 2026-10-20 | SDR-ST-CON-P1-1500 | 4.7d | 0d | SIC- Cost [5106]; Electrical Forman [38.39 h]; Electrical Technician [97.38 h]; Electrical Helper [97.38 h]; Labor [38.39 h]; Excavator [15 h]; Excavator Operator [97.38 h] | 5,106 | 107.85 | B2.31 23 00.01 | M3 | P1-S.L |
| SDR-ST-CON-P1-3040 |  | Excavation for LV Cable trench Section 3 | 21d | 2026-10-20 | 2026-11-14 | SDR-ST-CON-P1-2320 | 4.7d | 0d | SIC- Cost [5106]; Electrical Forman [38.39 h]; Electrical Technician [97.38 h]; Electrical Helper [97.38 h]; Labor [38.39 h]; Excavator [30 h]; Excavator Operator [97.38 h] | 5,106 | 107.85 | B2.31 23 00.02 | M3 | P1-S.L |
|  | 11 | **Install Footings** |  | 2026-11-14 | 2026-12-08 |  |  |  |  |  |  |  |  |  |
| SDR-ST-CON-P1-3920 |  | Install Footings | 21d | 2026-11-14 | 2026-12-08 | SDR-ST-CON-P1-3040 | 4.7d | 0d | SIC- Cost [15318]; Electrical Forman [97.38 h]; Electrical Technician [97.38 h]; Electrical Helper [97.38 h]; Labor [97.38 h] | 15,318 | 20 | B2.33 71 00 01.01 | Number | P1-S.L |

| ID | WBS | Activity | Duration | Start | Finish | Predecessors | Total float | Free float | Calendar | Resources | Cost | BOQ Qty | BOQ Line item | UOM | Activities Codes Sudair Station |
| --- | --- | --- | --- | --- | --- | --- | --- | --- | --- | --- | --- | --- | --- | --- | --- |
|  | 12 | **Backfilling** |  | 2026-12-08 | 2026-12-22 |  |  |  |  |  |  |  |  |  |  |
| SDR-ST-CON-P1-4850 |  | Backfilling over LV Cables of Street lighting | 12.3d | 2026-12-08 | 2026-12-22 | SDR-ST-CON-P1-3920 | 4.7d | 0d |  | SIC- Cost [15318]; Electrical Forman [48.69 h]; Electrical Technician [48.69 h]; Electrical Helper [48.69 h]; Labor [9.18 h]; Excavator [15 h]; Excavator Operator [48.69 h] | 15,318 | 323 | B2.31 23 00.01 | M3 | P1-S.L |
|  | 13 | **Install pole** |  | 2026-12-22 | 2027-03-20 |  |  |  |  |  |  |  |  |  |  |
| SDR-ST-CON-P1-5330 |  | Install Pole Part 1 | 21d | 2026-12-22 | 2027-01-16 | SDR-ST-CON-P1-4850 | 4.7d | 0d |  | SIC- Cost [26807.5]; Electrical Forman [24.35 h]; Electrical Technician [24.35 h]; Electrical Helper [24.35 h]; Labor [24.35 h] | 26,807.48 | 10 | B2.33 71 16.01 | Number | P1-S.L |
| SDR-ST-CON-P1-5780 |  | Install Pole Part 2 | 21d | 2027-01-16 | 2027-02-11 | SDR-ST-CON-P1-5330, SDR-ST-CON-P1-4660, SDR-ST-CON-P1-5230, SDR-ST-CON-P1-5180, SDR-ST-CON-P1-4160, SDR-ST-CON-P1-4270 | 4.7d |  |  | SIC- Cost [26806]; Electrical Forman [24.35 h]; Electrical Technician [24.35 h]; Electrical Helper [24.35 h]; Labor [24.35 h] | 26,805.99 | 10 | B2.33 71 16.01 | Number | P1-S.L |
| SDR-ST-CON-P1-6070 |  | Install Pole Part 3 | 21d | 2027-02-20 | 2027-03-13 | SDR-ST-CON-P1-5780, SDR-ST-PRO-MS-1200, SDR-ST-CON-P1-5790, SDR-ST-CON-P1-5170, SDR-ST-CON-P1-4840, SDR-ST-CON-P1-4800 FS+2d, SDR-ST-CON-P1-5000, SDR-ST-CON-P1-4820, SDR-ST-CON-P1-4900, SDR-ST-CON-P1-5240 | 0.1d | 0d | TDEC 7x10 | SIC- Cost [26806]; Electrical Forman [24.34 h]; Electrical Technician [24.34 h]; Electrical Helper [24.34 h]; Labor [24.34 h] | 26,805.99 |  |  |  | P1-S.L |
| SDR-ST-CON-P1-6080 |  | Install Pole Part 4 | 7d | 2027-03-13 | 2027-03-20 | SDR-ST-CON-P1-6070, SDR-ST-CON-P3-1490, SDR-ST-CON-P1-5750 | 13.5d |  | TDEC 7x10 | SIC- Cost [26806.5]; Electrical Forman [24.35 h]; Electrical Technician [24.35 h]; Electrical Helper [24.35 h]; Labor [24.35 h] | 26,806.5 |  |  |  | P1-S.L |
|  | 4 | **ROAD-01 N (1)** |  | 2026-08-31 | 2027-02-08 |  |  |  |  |  |  |  |  |  |  |
|  | 10 | **Excavation** |  | 2026-08-31 | 2026-11-16 |  |  |  |  |  |  |  |  |  |  |
| SDR-ST-CON-P1-1700 |  | Excavation for LV Cable trench Section 1 | 21d | 2026-08-31 | 2026-09-26 | SDR-ST-CON-P1-1500 SS, SDR-ST-ENG-AP-1080 | 1.5d | 0d |  | SIC- Cost [4946.16]; Electrical Forman [38.39 h]; Electrical Technician [97.38 h]; Electrical Helper [97.38 h]; Labor [38.39 h]; Excavator [28.81 h]; Excavator Operator [97.38 h] | 4,946.16 | 107.85 | B2.31 23 00.01 | M3 | P1-S.L |
| SDR-ST-CON-P1-2410 |  | Excavation for LV Cable trench Section 2 | 21d | 2026-09-28 | 2026-10-22 | SDR-ST-CON-P1-1700 FS+2d | 6d | 0d |  | SIC- Cost [4946.16]; Electrical Forman [38.39 h]; Electrical Technician [97.38 h]; Electrical Helper [97.38 h]; Labor [38.39 h]; Excavator [15.26 h]; Excavator Operator [97.38 h] | 4,946.16 | 107.85 | B2.31 23 00.01 | M3 | P1-S.L |
| SDR-ST-CON-P1-3190 |  | Excavation for LV Cable trench Section 3 | 21d | 2026-10-22 | 2026-11-16 | SDR-ST-CON-P1-2410 | 6d | 0d |  | SIC- Cost [4946.16]; Electrical Forman [38.39 h]; Electrical Technician [97.38 h]; Electrical Helper [97.38 h]; Labor [38.39 h]; Excavator [15 h]; Excavator Operator [97.38 h] | 4,946.16 | 107.85 | B2.31 23 00.02 | M3 | P1-S.L |
|  | 11 | **Install Footings** |  | 2026-11-16 | 2026-12-10 |  |  |  |  |  |  |  |  |  |  |
| SDR-ST-CON-P1-4110 |  | Install Footings | 21d | 2026-11-16 | 2026-12-10 | SDR-ST-CON-P1-3190 | 6d | 0d |  | SIC- Cost [14838.5]; Electrical Forman [97.38 h]; Electrical Technician [97.38 h]; Electrical Helper [97.38 h]; Labor [97.38 h] | 14,838.5 | 20 | B2.33 71 00 01.01 | Number | P1-S.L |
|  | 12 | **Backfilling** |  | 2026-12-10 | 2026-12-21 |  |  |  |  |  |  |  |  |  |  |
| SDR-ST-CON-P1-4960 |  | Backfilling over LV Cables of Street lighting | 9d | 2026-12-10 | 2026-12-21 | SDR-ST-CON-P1-4110 | 6d | 0d |  | SIC- Cost [14838.5]; Electrical Forman [48.69 h]; Electrical Technician [48.69 h]; Electrical Helper [48.69 h]; Labor [9.18 h]; Excavator [15 h]; Excavator Operator [48.69 h] | 14,838.48 | 323 | B2.31 23 00.01 | M3 | P1-S.L |
|  | 13 | **Install pole** |  | 2026-12-21 | 2027-02-08 |  |  |  |  |  |  |  |  |  |  |
| SDR-ST-CON-P1-5340 |  | Install Pole Part 1 | 21d | 2026-12-21 | 2027-01-14 | SDR-ST-CON-P1-4960 | 6d | 0d |  | SIC- Cost [51934.7]; Electrical Forman [48.69 h]; Electrical Technician [48.69 h]; Electrical Helper [48.69 h]; Labor [48.69 h] | 51,934.74 | 10 | B2.33 71 16.01 | Number | P1-S.L |
| SDR-ST-CON-P1-5790 |  | Install Pole Part 2 | 21d | 2027-01-14 | 2027-02-08 | SDR-ST-CON-P1-5340, SDR-ST-CON-P1-5130 | 6d |  |  | SIC- Cost [51934.7]; Electrical Forman [48.69 h]; Electrical Technician [48.69 h]; Electrical Helper [48.69 h]; Labor [48.69 h] | 51,934.74 | 10 | B2.33 71 16.01 | Number | P1-S.L |
|  | 5 | **Road Crossing & Drawpits** |  | 2026-08-31 | 2026-12-12 |  |  |  |  |  |  |  |  |  |  |
|  | 1 | **ROAD - 01** |  | 2026-08-31 | 2026-12-12 |  |  |  |  |  |  |  |  |  |  |
|  | 1 | **ROAD-01 From 470 to 1125 m (6)** |  | 2026-09-21 | 2026-12-12 |  |  |  |  |  |  |  |  |  |  |
|  | 1 | **Road crossing Ducts & Drawpits** |  | 2026-09-21 | 2026-12-12 |  |  |  |  |  |  |  |  |  |  |
|  | 1 | **Excavation** |  | 2026-09-21 | 2026-10-17 |  |  |  |  |  |  |  |  |  |  |
| SDR-ST-CON-P1-1450 |  | Excavation for GRP Pipes Section 1 | 21d | 2026-09-21 | 2026-10-17 | SDR-ST-CON-P1-1180 | 7.2d | 0d |  | SIC- Cost [2160.34]; Labor [38.39 h]; Excavator [15 h]; Excavator Operator [143.96 h] | 2,160.34 | 20 |  | M | P1-S.L |

| ID | WBS | Activity | Duration | Start | Finish | Predecessors | Total float | Free float | Resources | Cost | BOQ Qty | UOM | Activities Codes Sudair Station |
| --- | --- | --- | --- | --- | --- | --- | --- | --- | --- | --- | --- | --- | --- |
|  | 7 | **bedding Works** |  | 2026-10-17 | 2026-11-10 |  |  |  |  |  |  |  |  |
| SDR-ST-CON-P1-2160 |  | Sand bedding for GRP Pipes | 21d | 2026-10-17 | 2026-11-10 | SDR-ST-CON-P1-1450 | 7.2d | 0d | SIC- Cost [540.09]; Labor [143.96 h]; Excavator [24.29 h]; Excavator Operator [143.96 h]; Loader [61.35 h] | 540.09 | 20 | M | P1-S.L |
|  | 2 | **Pipes Laying** |  | 2026-11-10 | 2026-11-26 |  |  |  |  |  |  |  |  |
| SDR-ST-CON-P1-2890 |  | Install ST GRP Pipes | 14d | 2026-11-10 | 2026-11-26 | SDR-ST-CON-P1-2160 | 7.2d | 0d | Pipe Fitter [143.96 h]; SIC- Cost [4860.77]; Labor [143.96 h] | 4,860.77 | 20 | M | P1-S.L |
|  | 6 | **Testing** |  | 2026-11-26 | 2026-12-05 |  |  |  |  |  |  |  |  |
| SDR-ST-CON-P1-3530 |  | Testing ST GRP Pipes | 7d | 2026-11-26 | 2026-12-05 | SDR-ST-CON-P1-2890 | 7.2d | 0d | Pipe Fitter [143.96 h]; SIC- Cost [1080.17]; Labor [38.39 h] | 1,080.17 | 20 | M | P1-S.L |
|  | 3 | **Backfilling** |  | 2026-12-05 | 2026-12-12 |  |  |  |  |  |  |  |  |
| SDR-ST-CON-P1-3810 |  | Backfilling ST GRP Pipes | 6d | 2026-12-05 | 2026-12-12 | SDR-ST-CON-P1-3530 | 7.2d |  | SIC- Cost [2160.34]; Labor [38.39 h]; Excavator [15 h]; Excavator Operator [143.96 h] | 2,160.34 | 20 | M | P1-S.L |
|  | 2 | **ROAD-01 From 1125 to 1765 m (7)** |  | 2026-09-21 | 2026-12-10 |  |  |  |  |  |  |  |  |
|  | 1 | **Road crossing Ducts & Drawpits** |  | 2026-09-21 | 2026-12-10 |  |  |  |  |  |  |  |  |
|  | 1 | **Excavation** |  | 2026-09-21 | 2026-10-17 |  |  |  |  |  |  |  |  |
| SDR-ST-CON-P1-1600 |  | Excavation for GRP Pipes Section 1 | 21d | 2026-09-21 | 2026-10-17 | SDR-ST-CON-P1-1590 SS, SDR-ST-ENG-AP-1080 | 0.1d | 0d | SIC- Cost [2160.34]; Labor [38.39 h]; Excavator [29.36 h]; Excavator Operator [143.96 h] | 2,160.34 | 20 | M | P1-S.L |
|  | 7 | **bedding Works** |  | 2026-10-17 | 2026-11-03 |  |  |  |  |  |  |  |  |
| SDR-ST-CON-P1-2280 |  | Sand bedding for GRP Pipes | 15d | 2026-10-17 | 2026-11-03 | SDR-ST-CON-P1-1600 | 0.1d | 0d | SIC- Cost [540.09]; Labor [143.96 h]; Excavator [15 h]; Excavator Operator [143.96 h]; Loader [50 h] | 540.09 | 20 | M | P1-S.L |
|  | 2 | **Pipes Laying** |  | 2026-11-03 | 2026-11-17 |  |  |  |  |  |  |  |  |
| SDR-ST-CON-P1-2800 |  | Install ST GRP Pipes | 12d | 2026-11-03 | 2026-11-17 | SDR-ST-CON-P1-2280 | 0.1d | 0d | Pipe Fitter [143.96 h]; SIC- Cost [4860.77]; Labor [38.39 h] | 4,860.77 | 20 | M | P1-S.L |
|  | 6 | **Testing** |  | 2026-11-17 | 2026-11-28 |  |  |  |  |  |  |  |  |
| SDR-ST-CON-P1-3250 |  | Testing ST GRP Pipes | 9d | 2026-11-17 | 2026-11-28 | SDR-ST-CON-P1-2800 | 0.1d | 0d | Pipe Fitter [143.96 h]; SIC- Cost [1080.17]; Labor [38.39 h] | 1,080.17 | 20 | M | P1-S.L |
|  | 3 | **Backfilling** |  | 2026-11-28 | 2026-12-10 |  |  |  |  |  |  |  |  |
| SDR-ST-CON-P1-3670 |  | Backfilling ST GRP Pipes | 11.1d | 2026-11-28 | 2026-12-10 | SDR-ST-CON-P1-3250 | 0.1d | 0d | SIC- Cost [2160.34]; Labor [143.96 h]; Excavator [15 h]; Excavator Operator [143.96 h] | 2,160.34 | 20 | M | P1-S.L |
|  | 3 | **ROAD-01 From 0 to 470 m (3)** |  | 2026-08-31 | 2026-11-23 |  |  |  |  |  |  |  |  |
|  | 1 | **Road crossing Ducts & Drawpits** |  | 2026-08-31 | 2026-11-23 |  |  |  |  |  |  |  |  |
|  | 1 | **Excavation** |  | 2026-08-31 | 2026-09-26 |  |  |  |  |  |  |  |  |
| SDR-ST-CON-P1-1510 |  | Excavation for GRP Pipes Section 1 | 21d | 2026-08-31 | 2026-09-26 | SDR-ST-CON-P1-1500 SS, SDR-ST-ENG-AP-1080 | 7d | 0d | SIC- Cost [2160.34]; Labor [38.39 h]; Excavator [15 h]; Excavator Operator [143.96 h] | 2,160.34 | 20 | M | P1-S.L |

| ID | WBS | Activity | Duration | Start | Finish | Predecessors | Total float | Free float | Resources | Cost | BOQ Qty | UOM | Activities Codes Sudair Station |
| --- | --- | --- | --- | --- | --- | --- | --- | --- | --- | --- | --- | --- | --- |
|  | 7 | **bedding Works** |  | 2026-09-26 | 2026-10-20 |  |  |  |  |  |  |  |  |
| SDR-ST-CON-P1-2180 |  | Sand bedding for GRP Pipes | 21d | 2026-09-26 | 2026-10-20 | SDR-ST-CON-P1-1510 | 7d | 0d | SIC- Cost [540.09]; Labor [38.39 h]; Excavator [18.57 h]; Excavator Operator [143.96 h]; Loader [54.37 h] | 540.09 | 20 | M | P1-S.L |
|  | 2 | **Pipes Laying** |  | 2026-10-20 | 2026-11-04 |  |  |  |  |  |  |  |  |
| SDR-ST-CON-P1-2930 |  | Install ST GRP Pipes | 13d | 2026-10-20 | 2026-11-04 | SDR-ST-CON-P1-2180 | 7d | 0d | Pipe Fitter [143.96 h]; SIC- Cost [4860.77]; Labor [38.39 h] | 4,860.77 | 20 | M | P1-S.L |
|  | 6 | **Testing** |  | 2026-11-04 | 2026-11-11 |  |  |  |  |  |  |  |  |
| SDR-ST-CON-P1-3510 |  | Testing ST GRP Pipes | 6d | 2026-11-04 | 2026-11-11 | SDR-ST-CON-P1-2930 | 7d | 0d | Pipe Fitter [143.96 h]; SIC- Cost [1080.17]; Labor [143.96 h] | 1,080.17 | 20 | M | P1-S.L |
|  | 3 | **Backfilling** |  | 2026-11-11 | 2026-11-23 |  |  |  |  |  |  |  |  |
| SDR-ST-CON-P1-3760 |  | Backfilling ST GRP Pipes | 10d | 2026-11-11 | 2026-11-23 | SDR-ST-CON-P1-3510 | 7d |  | SIC- Cost [2160.34]; Labor [143.96 h]; Excavator [15 h]; Excavator Operator [143.96 h] | 2,160.34 | 20 | M | P1-S.L |
|  | 4 | **ROAD-01 N (1)** |  | 2026-08-31 | 2026-11-21 |  |  |  |  |  |  |  |  |
|  | 1 | **Road crossing Ducts & Drawpits** |  | 2026-08-31 | 2026-11-21 |  |  |  |  |  |  |  |  |
|  | 1 | **Excavation** |  | 2026-08-31 | 2026-09-26 |  |  |  |  |  |  |  |  |
| SDR-ST-CON-P1-1710 |  | Excavation for GRP Pipes Section 1 | 21d | 2026-08-31 | 2026-09-26 | SDR-ST-CON-P1-1700 SS, SDR-ST-ENG-AP-1080 | 9d | 0d | SIC- Cost [2160.34]; Labor [38.39 h]; Excavator [35.51 h]; Excavator Operator [143.96 h] | 2,160.34 | 20 | M | P1-S.L |
|  | 7 | **bedding Works** |  | 2026-09-26 | 2026-10-20 |  |  |  |  |  |  |  |  |
| SDR-ST-CON-P1-2360 |  | Sand bedding for GRP Pipes | 21d | 2026-09-26 | 2026-10-20 | SDR-ST-CON-P1-1710 | 9d | 0d | SIC- Cost [540.09]; Labor [143.96 h]; Excavator [15 h]; Excavator Operator [143.96 h]; Loader [50 h] | 540.09 | 20 | M | P1-S.L |
|  | 2 | **Pipes Laying** |  | 2026-10-20 | 2026-11-01 |  |  |  |  |  |  |  |  |
| SDR-ST-CON-P1-3090 |  | Install ST GRP Pipes | 10d | 2026-10-20 | 2026-11-01 | SDR-ST-CON-P1-2360 | 9d | 0d | Pipe Fitter [143.96 h]; SIC- Cost [4860.77]; Labor [38.39 h] | 4,860.77 | 20 | M | P1-S.L |
|  | 6 | **Testing** |  | 2026-11-01 | 2026-11-12 |  |  |  |  |  |  |  |  |
| SDR-ST-CON-P1-3520 |  | Testing ST GRP Pipes | 10d | 2026-11-01 | 2026-11-12 | SDR-ST-CON-P1-3090 | 9d | 0d | Pipe Fitter [143.96 h]; SIC- Cost [1080.17]; Labor [143.96 h] | 1,080.17 | 20 | M | P1-S.L |
|  | 3 | **Backfilling** |  | 2026-11-12 | 2026-11-21 |  |  |  |  |  |  |  |  |
| SDR-ST-CON-P1-3930 |  | Backfilling ST GRP Pipes | 7d | 2026-11-12 | 2026-11-21 | SDR-ST-CON-P1-3520 | 9d |  | SIC- Cost [2160.34]; Labor [143.96 h]; Excavator [15 h]; Excavator Operator [143.96 h] | 2,160.34 | 20 | M | P1-S.L |
|  | 11 | **Ring Main Unit** |  | 2027-04-03 | 2027-06-17 |  |  |  |  |  |  |  |  |
|  | 1 | **Leveling** |  | 2027-04-03 | 2027-04-26 |  |  |  |  |  |  |  |  |
| SDR-ST-CON-P1-5840 |  | Ring Main Unit leveling | 20d | 2027-04-03 | 2027-04-26 | SDR-ST-CON-P1-5780, SDR-ST-CON-P3-1460, SDR-ST-CON-P1-6080, SDR-ST-CON-P1-3900 | 0d |  | SIC- Cost [5534.7]; Electrical Forman [143.96 h]; Electrical Technician [143.96 h]; Electrical Helper [143.96 h]; Labor [143.96 h] | 5,534.7 | 1 | Number | P1-S.L |
|  | 2 | **Lean Concrete** |  | 2027-04-26 | 2027-05-25 |  |  |  |  |  |  |  |  |
| SDR-ST-CON-P1-5890 |  | Ring Main Unit Lean Concrete | 20d | 2027-04-26 | 2027-05-25 | SDR-ST-CON-P1-5840, SDR-ST-CON-P1-4070 | 5.6d | 0d | SIC- Cost [11069.4]; Electrical Forman [143.96 h]; Electrical Technician [143.96 h]; Electrical Helper [143.96 h]; Labor [143.96 h] | 11,069.41 | 1 | Number | P1-S.L |

| ID | WBS | Activity | Duration | Start | Finish | Predecessors | Total float | Free float | Resources | Cost | BOQ Qty | UOM | Activities Codes Sudair Station |
| --- | --- | --- | --- | --- | --- | --- | --- | --- | --- | --- | --- | --- | --- |
|  | 3 | **Installation** |  | 2027-05-25 | 2027-06-17 |  |  |  |  |  |  |  |  |
| SDR-ST-CON-P1-5920 |  | Ring Main Unit installation for Street Lighting | 20d | 2027-05-25 | 2027-06-17 | SDR-ST-CON-P1-5890, SDR-ST-MILS-1080, SDR-ST-MILS-1060, SDR-ST-CON-P1-5800 | 5.6d | 0.9d | SIC- Cost [38742.9]; Electrical Forman [143.96 h]; Electrical Technician [143.96 h]; Electrical Helper [143.96 h]; Labor [143.96 h] | 38,742.93 | 1 | Number | P1-S.L |
|  | 12 | **Feeder Pillars** |  | 2027-04-26 | 2027-07-12 |  |  |  |  |  |  |  |  |
|  | 1 | **Leveling** |  | 2027-04-26 | 2027-05-26 |  |  |  |  |  |  |  |  |
| SDR-ST-CON-P1-5880 |  | Feeder Pillars Leveling | 21d | 2027-04-26 | 2027-05-26 | SDR-ST-CON-P1-5840, SDR-ST-CON-P1-4320, SDR-ST-CON-P1-4010, SDR-ST-CON-P1-4250, SDR-ST-CON-P1-4000 | 0d |  | SIC- Cost [1209.3]; Electrical Forman [143.96 h]; Electrical Technician [143.96 h]; Electrical Helper [143.96 h]; Labor [143.96 h] | 1,209.3 | 1 | Number | P1-S.L |
|  | 2 | **Lean Concrete** |  | 2027-05-26 | 2027-06-19 |  |  |  |  |  |  |  |  |
| SDR-ST-CON-P1-5930 |  | Feeder Pillars Lean Concrete | 20d | 2027-05-26 | 2027-06-19 | SDR-ST-CON-P1-5880, SDR-ST-MILS-1070, SDR-ST-MILS-1080, SDR-ST-CON-P3-1500 | 0d |  | SIC- Cost [2418.6]; Electrical Forman [143.96 h]; Electrical Technician [143.96 h]; Electrical Helper [143.96 h]; Labor [143.96 h] | 2,418.6 | 1 | Number | P1-S.L |
|  | 3 | **Installation** |  | 2027-06-19 | 2027-07-12 |  |  |  |  |  |  |  |  |
| SDR-ST-CON-P1-6000 |  | Feeder Pillars Installation | 20d | 2027-06-19 | 2027-07-12 | SDR-ST-CON-P1-5930 | 0d |  | SIC- Cost [8465.11]; Electrical Forman [143.96 h]; Electrical Technician [143.96 h]; Electrical Helper [143.96 h]; Labor [143.96 h] | 8,465.11 | 1 | Number | P1-S.L |
|  | 13 | **KWH Frame** |  | 2027-05-29 | 2027-07-17 |  |  |  |  |  |  |  |  |
|  | 1 | **Leveling** |  | 2027-05-29 | 2027-06-20 |  |  |  |  |  |  |  |  |
| SDR-ST-CON-P1-5940 |  | KWH meter mounting frame Leveling | 20d | 2027-05-29 | 2027-06-20 | SDR-ST-CON-P1-5880, SDR-ST-CO-1010 | 3d | 0d | SIC- Cost [720.9]; Electrical Forman [143.96 h]; Electrical Technician [143.96 h]; Electrical Helper [143.96 h]; Labor [143.96 h] | 720.9 | 1 | Number | P1-S.L |
|  | 2 | **Lean Concrete** |  | 2027-06-21 | 2027-07-07 |  |  |  |  |  |  |  |  |
| SDR-ST-CON-P1-6010 |  | KWH meter mounting frame Lean Concrete | 15d | 2027-06-21 | 2027-07-07 | SDR-ST-CON-P1-5940 | 3d | 0d | SIC- Cost [1441.8]; Electrical Forman [143.96 h]; Electrical Technician [143.96 h]; Electrical Helper [143.96 h]; Labor [143.96 h] | 1,441.8 | 1 | Number | P1-S.L |
|  | 3 | **Installation** |  | 2027-07-08 | 2027-07-17 |  |  |  |  |  |  |  |  |
| SDR-ST-CON-P1-6040 |  | KWH meter mounting frame installation | 8d | 2027-07-08 | 2027-07-17 | SDR-ST-CON-P1-6010 | 3d |  | SIC- Cost [5046.3]; Electrical Forman [143.96 h]; Electrical Technician [143.96 h]; Electrical Helper [143.96 h]; Labor [143.96 h] | 5,046.3 | 1 | Number | P1-S.L |
|  | 14 | **Street Lighting Sub-station** |  | 2027-06-05 | 2027-07-17 |  |  |  |  |  |  |  |  |
|  | 1 | **Leveling** |  | 2027-06-05 | 2027-06-27 |  |  |  |  |  |  |  |  |
| SDR-ST-CON-P1-5950 |  | Unit Substation Leveling Part 1 | 20d | 2027-06-05 | 2027-06-27 | SDR-ST-CON-P1-5940 SS+6d | 3d | 0d | SIC- Cost [4054.25]; Electrical Forman [143.96 h]; Electrical Technician [2055.47 h]; Electrical Helper [143.96 h]; Labor [143.96 h] | 4,054.25 | 1 | Number | P1-S.L |
| SDR-ST-CON-P1-5960 |  | Unit Substation Leveling Part 2 | 20d | 2027-06-05 | 2027-06-27 | SDR-ST-CON-P1-5950 SS, SDR-ST-ENG-AP-1080 | 3d | 0d | SIC- Cost [4054.25]; Electrical Forman [143.96 h]; Electrical Technician [2558.5 h]; Electrical Helper [143.96 h]; Labor [143.96 h] | 4,054.25 | 1 | Number | P1-S.L |
|  | 2 | **Lean Concrete** |  | 2027-06-28 | 2027-07-11 |  |  |  |  |  |  |  |  |
| SDR-ST-CON-P1-6020 |  | Unit Substation Lean Concrete | 12d | 2027-06-28 | 2027-07-11 | SDR-ST-CON-P1-5950, SDR-ST-CON-P1-5960 | 3d | 0d | SIC- Cost [16217]; Electrical Forman [143.96 h]; Electrical Technician [143.96 h]; Electrical Helper [143.96 h]; Labor [143.96 h] | 16,217.01 | 1 | Number | P1-S.L |
|  | 3 | **Installation** |  | 2027-07-12 | 2027-07-17 |  |  |  |  |  |  |  |  |
| SDR-ST-CON-P1-6050 |  | Unit Substation Install for Street Lighting | 5d | 2027-07-12 | 2027-07-17 | SDR-ST-CON-P1-6020 | 3d | 0d | SIC- Cost [56759.6]; Electrical Forman [143.96 h]; Electrical Technician [143.96 h]; Electrical Helper [143.96 h]; Labor [143.96 h] | 56,759.55 | 1 | Number | P1-S.L |

| ID | WBS | Activity | Duration | Start | Finish | Predecessors | Total float | Free float | Resources | Cost | BOQ Qty | BOQ Line item | UOM | Activities Codes Sudair Station |
| --- | --- | --- | --- | --- | --- | --- | --- | --- | --- | --- | --- | --- | --- | --- |
|  | 8 | **ROAD - 02** |  | 2026-09-08 | 2027-07-17 |  |  |  |  |  |  |  |  |  |
|  | 6 | **ROAD-01 From 0 to 400 m (9) 2 Way 110 mm** |  | 2026-09-08 | 2026-12-29 |  |  |  |  |  |  |  |  |  |
|  | 10 | **Excavation** |  | 2026-09-08 | 2026-11-04 |  |  |  |  |  |  |  |  |  |
| SDR-ST-CON-P1-1310 |  | Excavation for LV Cable trench Section 1 | 15d | 2026-09-08 | 2026-09-27 | SDR-ST-CON-P1-1300 SS, SDR-ST-ENG-AP-1090 | 0d |  | SIC- Cost [5106]; Electrical Forman [143.96 h]; Electrical Technician [143.96 h]; Electrical Helper [143.96 h]; Labor [143.96 h]; Excavator [84.31 h]; Excavator Operator [143.96 h] | 5,106 | 107.85 | B2.31 23 00.01 | M3 | P1-S.L |
| SDR-ST-CON-P1-1780 |  | Excavation for LV Cable trench Section 2 | 15d | 2026-09-29 | 2026-10-17 | SDR-ST-CON-P1-1310 FS+2d | 6.9d | 0d | SIC- Cost [5106]; Electrical Forman [143.96 h]; Electrical Technician [143.96 h]; Electrical Helper [143.96 h]; Labor [38.39 h]; Excavator [17.71 h]; Excavator Operator [143.96 h] | 5,106 | 107.85 | B2.31 23 00.01 | M3 | P1-S.L |
| SDR-ST-CON-P1-2350 |  | Excavation for LV Cable trench Section 3 | 16d | 2026-10-17 | 2026-11-04 | SDR-ST-CON-P1-1780 | 6.9d | 0d | SIC- Cost [5106]; Electrical Forman [143.96 h]; Electrical Technician [143.96 h]; Electrical Helper [143.96 h]; Labor [38.39 h]; Excavator [15 h]; Excavator Operator [143.96 h] | 5,106 | 107.85 | B2.31 23 00.02 | M3 | P1-S.L |
|  | 11 | **Install Footings** |  | 2026-11-04 | 2026-11-22 |  |  |  |  |  |  |  |  |  |
| SDR-ST-CON-P1-2860 |  | Install Footings | 15d | 2026-11-04 | 2026-11-22 | SDR-ST-CON-P1-2350 | 6.9d | 0d | SIC- Cost [15318]; Electrical Forman [38.39 h]; Electrical Technician [143.96 h]; Electrical Helper [143.96 h]; Labor [38.39 h] | 15,318 | 20 | B2.33 71 00 01.01 | Number | P1-S.L |
|  | 12 | **Backfilling** |  | 2026-11-22 | 2026-12-10 |  |  |  |  |  |  |  |  |  |
| SDR-ST-CON-P1-3500 |  | Backfilling over LV Cables of Street lighting | 16d | 2026-11-22 | 2026-12-10 | SDR-ST-CON-P1-2860 | 6.9d | 0d | SIC- Cost [15318]; Electrical Forman [38.39 h]; Electrical Technician [143.96 h]; Electrical Helper [143.96 h]; Labor [38.39 h]; Excavator [15 h]; Excavator Operator [143.96 h] | 15,318 | 323 | B2.31 23 00.01 | M3 | P1-S.L |
|  | 13 | **Install pole** |  | 2026-12-10 | 2026-12-29 |  |  |  |  |  |  |  |  |  |
| SDR-ST-CON-P1-4260 |  | Install Pole Part 1 | 8d | 2026-12-10 | 2026-12-20 | SDR-ST-CON-P1-3500 | 6.9d | 0d | SIC- Cost [53613]; Electrical Forman [143.96 h]; Electrical Technician [143.96 h]; Electrical Helper [143.96 h]; Labor [143.96 h] | 53,612.98 | 10 | B2.33 71 16.01 | Number | P1-S.L |
| SDR-ST-CON-P1-4570 |  | Install Pole Part 2 | 8d | 2026-12-20 | 2026-12-29 | SDR-ST-CON-P1-4260 | 6.9d | 3.7d | SIC- Cost [53613]; Electrical Forman [40.4 h]; Electrical Technician [40.4 h]; Electrical Helper [40.4 h]; Labor [40.4 h] | 53,612.98 | 10 | B2.33 71 16.01 | Number | P1-S.L |
|  | 5 | **ROAD-01 From 400 to 900 m (10) 4 Way 110 mm** |  | 2026-09-08 | 2026-12-24 |  |  |  |  |  |  |  |  |  |
|  | 10 | **Excavation** |  | 2026-09-08 | 2026-11-03 |  |  |  |  |  |  |  |  |  |
| SDR-ST-CON-P1-1260 |  | Excavation for LV Cable trench Section 1 | 15d | 2026-09-08 | 2026-09-27 | SDR-ST-CON-P1-1250 SS, SDR-ST-ENG-AP-1090 | 0d |  | SIC- Cost [5106]; Electrical Forman [143.96 h]; Electrical Technician [143.96 h]; Electrical Helper [143.96 h]; Labor [143.96 h]; Excavator [98.84 h]; Excavator Operator [143.96 h] | 5,106 | 107.85 | B2.31 23 00.01 | M3 | P1-S.L |
| SDR-ST-CON-P1-1760 |  | Excavation for LV Cable trench Section 2 | 15d | 2026-09-29 | 2026-10-17 | SDR-ST-CON-P1-1260 FS+2d | 1.5d | 0d | SIC- Cost [5106]; Electrical Forman [38.39 h]; Electrical Technician [143.96 h]; Electrical Helper [143.96 h]; Labor [38.39 h]; Excavator [15.87 h]; Excavator Operator [143.96 h] | 5,106 | 107.85 | B2.31 23 00.01 | M3 | P1-S.L |
| SDR-ST-CON-P1-2260 |  | Excavation for LV Cable trench Section 3 | 15d | 2026-10-17 | 2026-11-03 | SDR-ST-CON-P1-1760 | 1.5d | 0d | SIC- Cost [5106]; Electrical Forman [38.39 h]; Electrical Technician [143.96 h]; Electrical Helper [143.96 h]; Labor [38.39 h]; Excavator [15 h]; Excavator Operator [143.96 h] | 5,106 | 107.85 | B2.31 23 00.02 | M3 | P1-S.L |
|  | 11 | **Install Footings** |  | 2026-11-03 | 2026-11-19 |  |  |  |  |  |  |  |  |  |
| SDR-ST-CON-P1-2770 |  | Install Footings | 14d | 2026-11-03 | 2026-11-19 | SDR-ST-CON-P1-2260 | 1.5d | 0d | SIC- Cost [15318]; Electrical Forman [38.39 h]; Electrical Technician [143.96 h]; Electrical Helper [143.96 h]; Labor [38.39 h] | 15,318 | 20 | B2.33 71 00 01.01 | Number | P1-S.L |
|  | 12 | **Backfilling** |  | 2026-11-19 | 2026-12-06 |  |  |  |  |  |  |  |  |  |
| SDR-ST-CON-P1-3350 |  | Backfilling over LV Cables of Street lighting | 14d | 2026-11-19 | 2026-12-06 | SDR-ST-CON-P1-2770 | 1.5d | 0d | SIC- Cost [15318]; Electrical Forman [38.39 h]; Electrical Technician [143.96 h]; Electrical Helper [143.96 h]; Labor [38.39 h]; Excavator [15 h]; Excavator Operator [143.96 h] | 15,318 | 323 | B2.31 23 00.01 | M3 | P1-S.L |
|  | 13 | **Install pole** |  | 2026-12-06 | 2026-12-24 |  |  |  |  |  |  |  |  |  |
| SDR-ST-CON-P1-3940 |  | Install Pole Part 1 | 8d | 2026-12-06 | 2026-12-15 | SDR-ST-CON-P1-3350 | 1.5d | 0d | SIC- Cost [53613]; Electrical Forman [38.39 h]; Electrical Technician [40.4 h]; Electrical Helper [40.4 h]; Labor [38.39 h] | 53,612.98 | 10 | B2.33 71 16.01 | Number | P1-S.L |
| SDR-ST-CON-P1-4400 |  | Install Pole Part 2 | 8d | 2026-12-15 | 2026-12-24 | SDR-ST-CON-P1-3940, SDR-ST-MILS-1080 | 1.5d |  | SIC- Cost [53613]; Electrical Forman [40.4 h]; Electrical Technician [40.4 h]; Electrical Helper [40.4 h]; Labor [40.4 h] | 53,612.98 | 10 | B2.33 71 16.01 | Number | P1-S.L |

| ID | WBS | Activity | Duration | Start | Finish | Predecessors | Total float | Free float | Resources | Cost | BOQ Qty | BOQ Line item | UOM | Activities Codes Sudair Station |
| --- | --- | --- | --- | --- | --- | --- | --- | --- | --- | --- | --- | --- | --- | --- |
|  | 4 | **ROAD-01 From 900 to 1239 m (11) 2 Way 110 mm** |  | 2026-09-17 | 2027-01-12 |  |  |  |  |  |  |  |  |  |
|  | 10 | **Excavation** |  | 2026-09-17 | 2026-11-09 |  |  |  |  |  |  |  |  |  |
| SDR-ST-CON-P1-1360 |  | Excavation for LV Cable trench Section 1 | 14d | 2026-09-17 | 2026-10-05 | SDR-ST-CON-P1-1350 SS, SDR-ST-ENG-AP-1090 | 4d | 0d | SIC- Cost [5106]; Electrical Forman [143.96 h]; Electrical Technician [143.96 h]; Electrical Helper [143.96 h]; Labor [143.96 h]; Excavator [15 h]; Excavator Operator [143.96 h] | 5,106 | 107.85 | B2.31 23 00.01 | M3 | P1-S.L |
| SDR-ST-CON-P1-1900 |  | Excavation for LV Cable trench Section 2 | 14d | 2026-10-07 | 2026-10-24 | SDR-ST-CON-P1-1360 FS+2d | 4d | 0d | SIC- Cost [5106]; Electrical Forman [143.96 h]; Electrical Technician [143.96 h]; Electrical Helper [143.96 h]; Labor [143.96 h]; Excavator [20.63 h]; Excavator Operator [143.96 h] | 5,106 | 107.85 | B2.31 23 00.01 | M3 | P1-S.L |
| SDR-ST-CON-P1-2400 |  | Excavation for LV Cable trench Section 3 | 14d | 2026-10-24 | 2026-11-09 | SDR-ST-CON-P1-1900 | 4d | 0d | SIC- Cost [5106]; Electrical Forman [143.96 h]; Electrical Technician [143.96 h]; Electrical Helper [143.96 h]; Labor [143.96 h]; Excavator [15 h]; Excavator Operator [143.96 h] | 5,106 | 107.85 | B2.31 23 00.02 | M3 | P1-S.L |
|  | 11 | **Install Footings** |  | 2026-11-09 | 2026-11-25 |  |  |  |  |  |  |  |  |  |
| SDR-ST-CON-P1-2840 |  | Install Footings | 14d | 2026-11-09 | 2026-11-25 | SDR-ST-CON-P1-2400 | 4d | 0d | SIC- Cost [15318]; Electrical Forman [143.96 h]; Electrical Technician [143.96 h]; Electrical Helper [143.96 h]; Labor [143.96 h] | 15,318 | 20 | B2.33 71 00 01.01 | Number | P1-S.L |
|  | 12 | **Backfilling** |  | 2026-11-25 | 2026-12-12 |  |  |  |  |  |  |  |  |  |
| SDR-ST-CON-P1-3470 |  | Backfilling over LV Cables of Street lighting | 14d | 2026-11-25 | 2026-12-12 | SDR-ST-CON-P1-2840 | 4d | 0d | SIC- Cost [15318]; Electrical Forman [143.96 h]; Electrical Technician [143.96 h]; Electrical Helper [143.96 h]; Labor [143.96 h]; Excavator [15 h]; Excavator Operator [143.96 h] | 15,318 | 323 | B2.31 23 00.01 | M3 | P1-S.L |
|  | 13 | **Install pole** |  | 2026-12-12 | 2027-01-12 |  |  |  |  |  |  |  |  |  |
| SDR-ST-CON-P1-4080 |  | Install Pole Part 1 | 13d | 2026-12-12 | 2026-12-27 | SDR-ST-CON-P1-3470 | 4d | 0d | SIC- Cost [53613]; Electrical Forman [40.4 h]; Electrical Technician [40.4 h]; Electrical Helper [40.4 h]; Labor [40.4 h] | 53,612.98 | 10 | B2.33 71 16.01 | Number | P1-S.L |
| SDR-ST-CON-P1-4610 |  | Install Pole Part 2 | 14d | 2026-12-27 | 2027-01-12 | SDR-ST-CON-P1-4080 | 4d |  | SIC- Cost [53613]; Electrical Forman [143.96 h]; Electrical Technician [143.96 h]; Electrical Helper [143.96 h]; Labor [143.96 h] | 53,612.98 | 10 | B2.33 71 16.01 | Number | P1-S.L |
|  | 1 | **Road Crossing & Drawpits** |  | 2026-09-08 | 2026-12-09 |  |  |  |  |  |  |  |  |  |
|  | 2 | **ROAD - 02** |  | 2026-09-08 | 2026-12-09 |  |  |  |  |  |  |  |  |  |
|  | 1 | **ROAD-01 From 0 to 400 m (9) 2 Way 110 mm** |  | 2026-09-08 | 2026-12-09 |  |  |  |  |  |  |  |  |  |
|  | 1 | **Road crossing Ducts & Drawpits** |  | 2026-09-08 | 2026-12-09 |  |  |  |  |  |  |  |  |  |
|  | 1 | **Excavation** |  | 2026-09-08 | 2026-10-04 |  |  |  |  |  |  |  |  |  |
| SDR-ST-CON-P1-1320 |  | Excavation for GRP Pipes Section 1 | 21d | 2026-09-08 | 2026-10-04 | SDR-ST-CON-P1-1310 SS, SDR-ST-ENG-AP-1090 | 9.2d | 0d | SIC- Cost [2160.34]; Labor [38.39 h]; Excavator [42.61 h]; Excavator Operator [143.96 h] | 2,160.34 | 20 |  | M | P1-S.L |
|  | 7 | **bedding Works** |  | 2026-10-04 | 2026-10-25 |  |  |  |  |  |  |  |  |  |
| SDR-ST-CON-P1-1950 |  | Sand bedding for GRP Pipes | 18d | 2026-10-04 | 2026-10-25 | SDR-ST-CON-P1-1320 | 9.2d | 0d | SIC- Cost [540.09]; Labor [38.39 h]; Excavator [20 h]; Excavator Operator [143.96 h]; Loader [114.96 h] | 540.09 | 20 |  | M | P1-S.L |
|  | 2 | **Pipes Laying** |  | 2026-10-25 | 2026-11-12 |  |  |  |  |  |  |  |  |  |
| SDR-ST-CON-P1-2560 |  | Install ST GRP Pipes | 16d | 2026-10-25 | 2026-11-12 | SDR-ST-CON-P1-1950 | 9.2d | 0d | Pipe Fitter [143.96 h]; SIC- Cost [4860.77]; Labor [38.39 h] | 4,860.77 | 20 |  | M | P1-S.L |
|  | 6 | **Testing** |  | 2026-11-12 | 2026-11-26 |  |  |  |  |  |  |  |  |  |
| SDR-ST-CON-P1-3200 |  | Testing ST GRP Pipes | 12d | 2026-11-12 | 2026-11-26 | SDR-ST-CON-P1-2560 | 9.2d | 0d | Pipe Fitter [143.96 h]; SIC- Cost [1080.17]; Labor [143.96 h] | 1,080.17 | 20 |  | M | P1-S.L |

| ID | WBS | Activity | Duration | Start | Finish | Predecessors | Total float | Free float | Resources | Cost | BOQ Qty | UOM | Activities Codes Sudair Station |
| --- | --- | --- | --- | --- | --- | --- | --- | --- | --- | --- | --- | --- | --- |
|  | 3 | **Backfilling** |  | 2026-11-26 | 2026-12-09 |  |  |  |  |  |  |  |  |
| SDR-ST-CON-P1-3700 |  | Backfilling ST GRP Pipes | 11d | 2026-11-26 | 2026-12-09 | SDR-ST-CON-P1-3200 | 9.2d |  | SIC- Cost [2160.34]; Labor [143.96 h]; Excavator [15 h]; Excavator Operator [143.96 h] | 2,160.34 | 20 | M | P1-S.L |
|  | 2 | **ROAD-01 From 400 to 900 m (10) 4 Way 110 mm** |  | 2026-09-08 | 2026-12-06 |  |  |  |  |  |  |  |  |
|  | 1 | **Road crossing Ducts & Drawpits** |  | 2026-09-08 | 2026-12-06 |  |  |  |  |  |  |  |  |
|  | 1 | **Excavation** |  | 2026-09-08 | 2026-10-04 |  |  |  |  |  |  |  |  |
| SDR-ST-CON-P1-1270 |  | Excavation for GRP Pipes Section 1 | 21d | 2026-09-08 | 2026-10-04 | SDR-ST-CON-P1-1260 SS, SDR-ST-ENG-AP-1090 | 13d | 0d | SIC- Cost [2160.34]; Labor [143.96 h]; Excavator [76.85 h]; Excavator Operator [143.96 h] | 2,160.34 | 20 | M | P1-S.L |
|  | 7 | **bedding Works** |  | 2026-10-04 | 2026-10-24 |  |  |  |  |  |  |  |  |
| SDR-ST-CON-P1-1870 |  | Sand bedding for GRP Pipes | 17d | 2026-10-04 | 2026-10-24 | SDR-ST-CON-P1-1270 | 13d | 0d | SIC- Cost [540.09]; Labor [38.39 h]; Excavator [20 h]; Excavator Operator [143.96 h]; Loader [132.54 h] | 540.09 | 20 | M | P1-S.L |
|  | 2 | **Pipes Laying** |  | 2026-10-24 | 2026-11-09 |  |  |  |  |  |  |  |  |
| SDR-ST-CON-P1-2470 |  | Install ST GRP Pipes | 14d | 2026-10-24 | 2026-11-09 | SDR-ST-CON-P1-1870 | 13d | 0d | Pipe Fitter [143.96 h]; SIC- Cost [4860.77]; Labor [38.39 h] | 4,860.77 | 20 | M | P1-S.L |
|  | 6 | **Testing** |  | 2026-11-09 | 2026-11-19 |  |  |  |  |  |  |  |  |
| SDR-ST-CON-P1-2970 |  | Testing ST GRP Pipes | 9d | 2026-11-09 | 2026-11-19 | SDR-ST-CON-P1-2470 | 13d | 0d | Pipe Fitter [143.96 h]; SIC- Cost [1080.17]; Labor [38.39 h] | 1,080.17 | 20 | M | P1-S.L |
|  | 3 | **Backfilling** |  | 2026-11-19 | 2026-12-06 |  |  |  |  |  |  |  |  |
| SDR-ST-CON-P1-3360 |  | Backfilling ST GRP Pipes | 14d | 2026-11-19 | 2026-12-06 | SDR-ST-CON-P1-2970 | 13d |  | SIC- Cost [2160.34]; Labor [38.39 h]; Excavator [15 h]; Excavator Operator [143.96 h] | 2,160.34 | 20 | M | P1-S.L |
|  | 3 | **ROAD-01 From 900 to 1239 m (11) 2 Way 110 mm** |  | 2026-09-17 | 2026-12-09 |  |  |  |  |  |  |  |  |
|  | 1 | **Road crossing Ducts & Drawpits** |  | 2026-09-17 | 2026-12-09 |  |  |  |  |  |  |  |  |
|  | 1 | **Excavation** |  | 2026-09-17 | 2026-10-13 |  |  |  |  |  |  |  |  |
| SDR-ST-CON-P1-1370 |  | Excavation for GRP Pipes Section 1 | 21d | 2026-09-17 | 2026-10-13 | SDR-ST-CON-P1-1360 SS, SDR-ST-ENG-AP-1090 | 10d | 0d | SIC- Cost [2160.34]; Labor [38.39 h]; Excavator [15 h]; Excavator Operator [143.96 h] | 2,160.34 | 20 | M | P1-S.L |
|  | 7 | **bedding Works** |  | 2026-10-13 | 2026-10-31 |  |  |  |  |  |  |  |  |
| SDR-ST-CON-P1-2060 |  | Sand bedding for GRP Pipes | 15d | 2026-10-13 | 2026-10-31 | SDR-ST-CON-P1-1370 | 10d | 0d | SIC- Cost [540.09]; Labor [38.39 h]; Excavator [20 h]; Excavator Operator [143.96 h]; Loader [96.77 h] | 540.09 | 20 | M | P1-S.L |
|  | 2 | **Pipes Laying** |  | 2026-10-31 | 2026-11-16 |  |  |  |  |  |  |  |  |
| SDR-ST-CON-P1-2600 |  | Install ST GRP Pipes | 14d | 2026-10-31 | 2026-11-16 | SDR-ST-CON-P1-2060 | 10d | 0d | Pipe Fitter [143.96 h]; SIC- Cost [4860.77]; Labor [38.39 h] | 4,860.77 | 20 | M | P1-S.L |
|  | 6 | **Testing** |  | 2026-11-16 | 2026-11-25 |  |  |  |  |  |  |  |  |
| SDR-ST-CON-P1-3110 |  | Testing ST GRP Pipes | 8d | 2026-11-16 | 2026-11-25 | SDR-ST-CON-P1-2600 | 10d | 0d | Pipe Fitter [143.96 h]; SIC- Cost [1080.17]; Labor [38.39 h] | 1,080.17 | 20 | M | P1-S.L |

| ID | WBS | Activity | Duration | Start | Finish | Predecessors | Total float | Free float | Resources | Cost | BOQ Qty | UOM | Activities Codes Sudair Station |
| --- | --- | --- | --- | --- | --- | --- | --- | --- | --- | --- | --- | --- | --- |
|  | 3 | **Backfilling** |  | 2026-11-25 | 2026-12-09 |  |  |  |  |  |  |  |  |
| SDR-ST-CON-P1-3480 |  | Backfilling ST GRP Pipes | 12d | 2026-11-25 | 2026-12-09 | SDR-ST-CON-P1-3110 | 10d |  | SIC- Cost [2160.34]; Labor [38.39 h]; Excavator [15 h]; Excavator Operator [143.96 h] | 2,160.34 | 20 | M | P1-S.L |
|  | 11 | **Ring Main Unit** |  | 2027-04-11 | 2027-07-07 |  |  |  |  |  |  |  |  |
|  | 1 | **Leveling** |  | 2027-04-11 | 2027-05-04 |  |  |  |  |  |  |  |  |
| SDR-ST-CON-P1-5810 |  | Ring Main Unit leveling | 20d | 2027-04-11 | 2027-05-04 | SDR-ST-CON-P1-5760 FS+25d, SDR-ST-CON-P1-4000 | 0d |  | SIC- Cost [5534.7]; Electrical Forman [143.96 h]; Electrical Technician [143.96 h]; Electrical Helper [143.96 h]; Labor [143.96 h] | 5,534.7 | 1 | Number | P1-S.L |
|  | 2 | **Lean Concrete** |  | 2027-05-04 | 2027-06-02 |  |  |  |  |  |  |  |  |
| SDR-ST-CON-P1-5850 |  | Ring Main Unit Lean Concrete | 20d | 2027-05-04 | 2027-06-02 | SDR-ST-CON-P1-5810, SDR-ST-CON-P1-5390 | 0d |  | SIC- Cost [11069.4]; Electrical Forman [143.96 h]; Electrical Technician [143.96 h]; Electrical Helper [143.96 h]; Labor [143.96 h] | 11,069.41 | 1 | Number | P1-S.L |
|  | 3 | **Installation** |  | 2027-06-14 | 2027-07-07 |  |  |  |  |  |  |  |  |
| SDR-ST-CON-P1-5970 |  | Ring Main Unit installation for Street Lighting | 20d | 2027-06-14 | 2027-07-07 | SDR-ST-CON-P1-5850 FS+10d | 0d |  | SIC- Cost [38742.9]; Electrical Forman [143.96 h]; Electrical Technician [143.96 h]; Electrical Helper [143.96 h]; Labor [143.96 h] | 38,742.93 | 1 | Number | P1-S.L |
|  | 12 | **Feeder Pillars** |  | 2027-04-11 | 2027-07-13 |  |  |  |  |  |  |  |  |
|  | 1 | **Leveling** |  | 2027-04-11 | 2027-05-04 |  |  |  |  |  |  |  |  |
| SDR-ST-CON-P1-5820 |  | Feeder Pillars Leveling | 20d | 2027-04-11 | 2027-05-04 | SDR-ST-CON-P1-5810 SS, SDR-ST-ENG-AP-1090 | 3.9d | 0d | SIC- Cost [1209.3]; Electrical Forman [143.96 h]; Electrical Technician [143.96 h]; Electrical Helper [143.96 h]; Labor [143.96 h] | 1,209.3 | 1 | Number | P1-S.L |
|  | 2 | **Lean Concrete** |  | 2027-05-04 | 2027-06-02 |  |  |  |  |  |  |  |  |
| SDR-ST-CON-P1-5860 |  | Feeder Pillars Lean Concrete | 20d | 2027-05-04 | 2027-06-02 | SDR-ST-CON-P1-5820 | 6.9d | 0d | SIC- Cost [2418.6]; Electrical Forman [143.96 h]; Electrical Technician [143.96 h]; Electrical Helper [143.96 h]; Labor [143.96 h] | 2,418.6 | 1 | Number | P1-S.L |
|  | 3 | **Installation** |  | 2027-06-20 | 2027-07-13 |  |  |  |  |  |  |  |  |
| SDR-ST-CON-P1-5980 |  | Feeder Pillars Installation | 20d | 2027-06-20 | 2027-07-13 | SDR-ST-CON-P1-5860 FS+15d | 6.9d |  | SIC- Cost [8465.11]; Electrical Forman [143.96 h]; Electrical Technician [143.96 h]; Electrical Helper [143.96 h]; Labor [143.96 h] | 8,465.11 | 1 | Number | P1-S.L |
|  | 13 | **KWH Frame** |  | 2027-04-12 | 2027-06-27 |  |  |  |  |  |  |  |  |
|  | 1 | **Leveling** |  | 2027-04-12 | 2027-05-05 |  |  |  |  |  |  |  |  |
| SDR-ST-CON-P1-5830 |  | KWH meter mounting frame Leveling | 20d | 2027-04-12 | 2027-05-05 | SDR-ST-CON-P1-5820 SS+1d, SDR-ST-ENG-AP-1090 | 3.9d | 0d | SIC- Cost [720.9]; Electrical Forman [143.96 h]; Electrical Technician [143.96 h]; Electrical Helper [143.96 h]; Labor [143.96 h] | 720.9 | 1 | Number | P1-S.L |
|  | 2 | **Lean Concrete** |  | 2027-05-05 | 2027-06-03 |  |  |  |  |  |  |  |  |
| SDR-ST-CON-P1-5870 |  | KWH meter mounting frame Lean Concrete | 20d | 2027-05-05 | 2027-06-03 | SDR-ST-CON-P1-5830, SDR-ST-CON-P1-5460 | 9d | 0d | SIC- Cost [1441.8]; Electrical Forman [143.96 h]; Electrical Technician [143.96 h]; Electrical Helper [143.96 h]; Labor [143.96 h] | 1,441.8 | 1 | Number | P1-S.L |
|  | 3 | **Installation** |  | 2027-06-03 | 2027-06-27 |  |  |  |  |  |  |  |  |
| SDR-ST-CON-P1-5910 |  | KWH meter mounting frame installation | 20d | 2027-06-03 | 2027-06-27 | SDR-ST-CON-P1-5870 | 9d |  | SIC- Cost [5046.3]; Electrical Forman [143.96 h]; Electrical Technician [143.96 h]; Electrical Helper [143.96 h]; Labor [143.96 h] | 5,046.3 | 1 | Number | P1-S.L |
|  | 14 | **Street Lighting Sub-station** |  | 2027-05-05 | 2027-07-17 |  |  |  |  |  |  |  |  |
|  | 1 | **Leveling** |  | 2027-05-05 | 2027-06-03 |  |  |  |  |  |  |  |  |
| SDR-ST-CON-P1-5900 |  | Unit Substation Leveling | 20d | 2027-05-05 | 2027-06-03 | SDR-ST-CON-P1-5830, SDR-ST-PRO-MS-1250 | 3.9d | 0d | SIC- Cost [8108.51]; Electrical Forman [143.96 h]; Electrical Technician [143.96 h]; Electrical Helper [143.96 h]; Labor [48.69 h] | 8,108.51 | 1 | Number | P1-S.L |

| ID | WBS | Activity | Duration | Start | Finish | Predecessors | Total float | Free float | Resources | Cost | BOQ Qty | UOM | Activities Codes Sudair Station | BOQ Line item |
| --- | --- | --- | --- | --- | --- | --- | --- | --- | --- | --- | --- | --- | --- | --- |
|  | 2 | **Lean Concrete** |  | 2027-06-03 | 2027-06-27 |  |  |  |  |  |  |  |  |  |
| SDR-ST-CON-P1-5990 |  | Unit Substation Lean Concrete | 20d | 2027-06-03 | 2027-06-27 | SDR-ST-CON-P1-5900, SDR-ST-CO-1010 | 3.9d | 0d | SIC- Cost [16217]; Electrical Forman [143.96 h]; Electrical Technician [2055.47 h]; Electrical Helper [2055.47 h]; Labor [2055.47 h] | 16,217.01 | 1 | Number | P1-S.L |  |
|  | 3 | **Installation** |  | 2027-06-27 | 2027-07-17 |  |  |  |  |  |  |  |  |  |
| SDR-ST-CON-P1-6030 |  | Unit Substation Install for Street Lighting | 17d | 2027-06-27 | 2027-07-17 | SDR-ST-CON-P1-5990 | 3.9d |  | SIC- Cost [56759.6]; Electrical Forman [143.96 h]; Electrical Technician [143.96 h]; Electrical Helper [143.96 h]; Labor [143.96 h] | 56,759.55 | 1 | Number | P1-S.L |  |
|  | 5 | **TELECOMMUNICATIONS WORKS** |  | 2026-08-31 | 2027-02-07 |  |  |  |  |  |  |  |  |  |
|  | 3 | **ROAD - 01** |  | 2026-08-31 | 2027-02-07 |  |  |  |  |  |  |  |  |  |
|  | 4 | **ROAD-01 N 1 (2X3)X50 mm MH-15 to MH-16** |  | 2026-08-31 | 2027-01-20 |  |  |  |  |  |  |  |  |  |
|  | 3 | **Ducts** |  | 2026-08-31 | 2026-12-30 |  |  |  |  |  |  |  |  |  |
|  | 2 | **Excavation** |  | 2026-08-31 | 2026-10-20 |  |  |  |  |  |  |  |  |  |
| SDR-ST-CON-P1-1690 |  | Excavation for telecom trench Section 1 | 21d | 2026-08-31 | 2026-09-26 | SDR-ST-CON-P1-1700 SS, SDR-ST-ENG-AP-1090 | 1.5d | 0d | SIC- Cost [2028.61]; Excavator [31.46 h]; Excavator Operator [143.96 h] | 2,028.61 | 125 | M3 | P1-Tele | B2.1.33 81 26.01 |
| SDR-ST-CON-P1-2340 |  | Excavation for telecom trench Section 2 | 21d | 2026-09-26 | 2026-10-20 | SDR-ST-CON-P1-1690 | 1.5d | 0d | SIC- Cost [2028.61]; Excavator [15 h]; Excavator Operator [143.96 h] | 2,028.61 | 125 | M3 | P1-Tele | B2.1.33 81 26.02 |
|  | 5 | **Pipe laying** |  | 2026-10-20 | 2026-11-12 |  |  |  |  |  |  |  |  |  |
| SDR-ST-CON-P1-3070 |  | HDPE Pipes for Telecom Installation | 20d | 2026-10-20 | 2026-11-12 | SDR-ST-CON-P1-2340 | 1.5d | 0d | SIC- Cost [8114.47]; Electrical Forman [38.39 h]; Electrical Technician [136.76 h]; Electrical Helper [136.76 h] | 8,114.47 | 535 |  | P1-Tele | B2.1.33 81 26.03 |
|  | 6 | **Backfilling** |  | 2026-11-12 | 2026-12-06 |  |  |  |  |  |  |  |  |  |
| SDR-ST-CON-P1-3680 |  | Backfilling over HDPE Telecom Pipes | 20d | 2026-11-12 | 2026-12-06 | SDR-ST-CON-P1-3070 | 1.5d | 0d | SIC- Cost [4057.23]; Excavator [15 h]; Excavator Operator [129.56 h] | 4,057.23 | 535 |  | P1-Tele | B2.1.33 81 26.07 |
|  | 7 | **Pulling Cable** |  | 2026-12-06 | 2026-12-30 |  |  |  |  |  |  |  |  |  |
| SDR-ST-CON-P1-4310 |  | Pulling Cable | 21d | 2026-12-06 | 2026-12-30 | SDR-ST-CON-P1-3680 | 1.5d |  | SIC- Cost [24343.4]; Electrical Forman [129.56 h]; Electrical Technician [129.56 h]; Electrical Helper [129.56 h] | 24,343.4 | 535 |  | P1-Tele | B2.1.33 81 26.06 |
|  | 4 | **Manholes** |  | 2026-08-31 | 2027-01-20 |  |  |  |  |  |  |  |  |  |
|  | 1 | **Excavation** |  | 2026-08-31 | 2026-10-20 |  |  |  |  |  |  |  |  |  |
| SDR-ST-CON-P1-1680 |  | Excavation for Telecom Manhole Section 1 | 21d | 2026-08-31 | 2026-09-26 | SDR-ST-CON-P1-1690 SS, SDR-ST-ENG-AP-1090 | 2.6d | 0d | SIC- Cost [1012.67]; Excavator [30 h]; Excavator Operator [129.56 h] | 1,012.67 | 3 | M3 | P1-Tele | B2.1.33 81 26.03 |
| SDR-ST-CON-P1-2370 |  | Excavation for Telecom Manhole Section 2 | 21d | 2026-09-26 | 2026-10-20 | SDR-ST-CON-P1-1680 | 2.6d | 0d | SIC- Cost [1012.67]; Excavator [15 h]; Excavator Operator [129.56 h] | 1,012.67 | 3 | M3 | P1-Tele | B2.1.33 81 26.04 |
|  | 2 | **Bedding Work** |  | 2026-10-20 | 2026-11-12 |  |  |  |  |  |  |  |  |  |
| SDR-ST-CON-P1-3080 |  | Sand bedding for Telecom Manhole | 20d | 2026-10-20 | 2026-11-12 | SDR-ST-CON-P1-2370 | 2.6d | 0d | SIC- Cost [1350.23]; Labor [38.39 h]; Excavator [25.75 h]; Excavator Operator [129.56 h] | 1,350.23 | 10 | M3 | P1-Tele | B2.1.33 81 26.05 |
|  | 3 | **Install Manholes** |  | 2026-11-12 | 2026-12-06 |  |  |  |  |  |  |  |  |  |
| SDR-ST-CON-P1-3690 |  | Installation of Telecom Manhole | 20d | 2026-11-12 | 2026-12-06 | SDR-ST-CON-P1-1680, SDR-ST-CON-P1-3080 | 2.6d | 0d | SIC- Cost [6076.04]; Electrical Forman [129.56 h]; Electrical Technician [129.56 h]; Electrical Helper [129.56 h] | 6,076.04 | 2 | Number | P1-Tele | B2.1.33 81 26.06 |

| ID | WBS | Activity | Duration | Start | Finish | Predecessors | Total float | Free float | Resources | Cost | BOQ Qty | BOQ Line item | UOM | Activities Codes Sudair Station |
| --- | --- | --- | --- | --- | --- | --- | --- | --- | --- | --- | --- | --- | --- | --- |
|  | 4 | **Testting** |  | 2026-12-06 | 2026-12-29 |  |  |  |  |  |  |  |  |  |
| SDR-ST-CON-P1-4360 |  | Telecom Manhole finishing works | 20d | 2026-12-06 | 2026-12-29 | SDR-ST-CON-P1-3690 | 2.6d | 0d | SIC- Cost [1350.23]; Electrical Forman [129.56 h]; Electrical Technician [129.56 h]; Electrical Helper [129.56 h] | 1,350.23 | 2 | B2.1.33 81 26.07 | Number | P1-Tele |
|  | 5 | **Backfilling** |  | 2026-12-29 | 2027-01-20 |  |  |  |  |  |  |  |  |  |
| SDR-ST-CON-P1-4880 |  | Backfilling over Telecom Manhole | 19d | 2026-12-29 | 2027-01-20 | SDR-ST-CON-P1-4360 | 2.6d | 0d | SIC- Cost [2700.46]; Excavator [60 h]; Excavator Operator [129.56 h] | 2,700.46 | 10 | B2.1.33 81 26.08 | M3 | P1-Tele |
|  | 2 | **ROAD-01 From 0 to 470 m (3) (2X3)X50 mm MH-12 to MH-14** |  | 2026-08-31 | 2027-01-23 |  |  |  |  |  |  |  |  |  |
|  | 3 | **Ducts** |  | 2026-08-31 | 2027-01-02 |  |  |  |  |  |  |  |  |  |
|  | 2 | **Excavation** |  | 2026-08-31 | 2026-10-20 |  |  |  |  |  |  |  |  |  |
| SDR-ST-CON-P1-1530 |  | Excavation for telecom trench Section 1 | 21d | 2026-08-31 | 2026-09-26 | SDR-ST-CON-P1-1500 SS, SDR-ST-ENG-AP-1090 | 0.6d | 0d | SIC- Cost [2028.61]; Excavator [15 h]; Excavator Operator [129.56 h] | 2,028.61 | 125 | B2.1.33 81 26.01 | M3 | P1-Tele |
| SDR-ST-CON-P1-2190 |  | Excavation for telecom trench Section 2 | 21d | 2026-09-26 | 2026-10-20 | SDR-ST-CON-P1-1530 | 10.5d | 0d | SIC- Cost [2028.61]; Excavator [18.51 h]; Excavator Operator [129.56 h] | 2,028.61 | 125 | B2.1.33 81 26.02 | M3 | P1-Tele |
|  | 5 | **Pipe laying** |  | 2026-10-20 | 2026-11-14 |  |  |  |  |  |  |  |  |  |
| SDR-ST-CON-P1-2940 |  | HDPE Pipes for Telecom Installation | 21d | 2026-10-20 | 2026-11-14 | SDR-ST-CON-P1-2190 | 10.5d | 0d | SIC- Cost [8114.47]; Electrical Forman [38.39 h]; Electrical Technician [129.56 h]; Electrical Helper [129.56 h] | 8,114.47 | 535 | B2.1.33 81 26.03 |  | P1-Tele |
|  | 6 | **Backfilling** |  | 2026-11-14 | 2026-12-08 |  |  |  |  |  |  |  |  |  |
| SDR-ST-CON-P1-3770 |  | Backfilling over HDPE Telecom Pipes | 21d | 2026-11-14 | 2026-12-08 | SDR-ST-CON-P1-2940 | 10.5d | 0d | SIC- Cost [4057.23]; Excavator [22.5 h]; Excavator Operator [129.56 h] | 4,057.23 | 535 | B2.1.33 81 26.07 |  | P1-Tele |
|  | 7 | **Pulling Cable** |  | 2026-12-08 | 2027-01-02 |  |  |  |  |  |  |  |  |  |
| SDR-ST-CON-P1-4370 |  | Pulling Cable | 21d | 2026-12-08 | 2027-01-02 | SDR-ST-CON-P1-3770 | 10.5d | 0.5d | SIC- Cost [24343.4]; Electrical Forman [129.56 h]; Electrical Technician [129.56 h]; Electrical Helper [129.56 h] | 24,343.4 | 535 | B2.1.33 81 26.06 |  | P1-Tele |
|  | 4 | **Manholes** |  | 2026-08-31 | 2027-01-23 |  |  |  |  |  |  |  |  |  |
|  | 1 | **Excavation** |  | 2026-08-31 | 2026-10-20 |  |  |  |  |  |  |  |  |  |
| SDR-ST-CON-P1-1520 |  | Excavation for Telecom Manhole Section 1 | 21d | 2026-08-31 | 2026-09-26 | SDR-ST-CON-P1-1530 SS, SDR-ST-ENG-AP-1090 | 0.6d | 0d | SIC- Cost [1012.67]; Excavator [15 h]; Excavator Operator [129.56 h] | 1,012.67 | 3 | B2.1.33 81 26.03 | M3 | P1-Tele |
| SDR-ST-CON-P1-2200 |  | Excavation for Telecom Manhole Section 2 | 21d | 2026-09-26 | 2026-10-20 | SDR-ST-CON-P1-1520 | 0.6d | 0d | SIC- Cost [1012.67]; Excavator [17.63 h]; Excavator Operator [129.56 h] | 1,012.67 | 3 | B2.1.33 81 26.04 | M3 | P1-Tele |
|  | 2 | **Bedding Work** |  | 2026-10-20 | 2026-11-11 |  |  |  |  |  |  |  |  |  |
| SDR-ST-CON-P1-2950 |  | Sand bedding for Telecom Manhole | 19d | 2026-10-20 | 2026-11-11 | SDR-ST-CON-P1-2200, SDR-ST-PRO-MS-1010 | 0.6d | 0d | SIC- Cost [1350.23]; Labor [38.39 h]; Excavator [30 h]; Excavator Operator [129.56 h] | 1,350.23 | 10 | B2.1.33 81 26.05 | M3 | P1-Tele |
|  | 3 | **Install Manholes** |  | 2026-11-11 | 2026-12-05 |  |  |  |  |  |  |  |  |  |
| SDR-ST-CON-P1-3780 |  | Installation of Telecom Manhole | 20d | 2026-11-11 | 2026-12-05 | SDR-ST-CON-P1-1520, SDR-ST-CON-P1-2950 | 0.6d | 0d | SIC- Cost [6076.04]; Electrical Forman [129.56 h]; Electrical Technician [129.56 h]; Electrical Helper [129.56 h] | 6,076.04 | 3 | B2.1.33 81 26.06 | Number | P1-Tele |
|  | 4 | **Testting** |  | 2026-12-05 | 2026-12-29 |  |  |  |  |  |  |  |  |  |
| SDR-ST-CON-P1-4630 |  | Telecom Manhole finishing works | 21d | 2026-12-05 | 2026-12-29 | SDR-ST-CON-P1-3780 | 0.6d | 0d | SIC- Cost [1350.23]; Electrical Forman [100.77 h]; Electrical Technician [100.77 h]; Electrical Helper [100.77 h] | 1,350.23 | 3 | B2.1.33 81 26.07 | Number | P1-Tele |

| ID | WBS | Activity | Duration | Start | Finish | Predecessors | Total float | Free float | Resources | Cost | BOQ Qty | BOQ Line item | UOM | Activities Codes Sudair Station |
| --- | --- | --- | --- | --- | --- | --- | --- | --- | --- | --- | --- | --- | --- | --- |
|  | 5 | **Backfilling** |  | 2026-12-29 | 2027-01-23 |  |  |  |  |  |  |  |  |  |
| SDR-ST-CON-P1-5140 |  | Backfilling over Telecom Manhole | 21d | 2026-12-29 | 2027-01-23 | SDR-ST-CON-P1-4630 | 0.6d | 0.5d | SIC- Cost [2700.46]; Excavator [128.34 h]; Excavator Operator [129.56 h] | 2,700.46 | 10 | B2.1.33 81 26.08 | M3 | P1-Tele |
|  | 1 | **ROAD-01 From 470 to 1125 m (6) (2X3)X50 mm MH-10 to MH-11** |  | 2026-09-08 | 2027-01-31 |  |  |  |  |  |  |  |  |  |
|  | 3 | **Ducts** |  | 2026-09-08 | 2027-01-06 |  |  |  |  |  |  |  |  |  |
|  | 2 | **Excavation** |  | 2026-09-08 | 2026-10-28 |  |  |  |  |  |  |  |  |  |
| SDR-ST-CON-P1-1240 |  | Excavation for telecom trench Section 1 | 21d | 2026-09-08 | 2026-10-04 | SDR-ST-CON-P1-1180 SS+10d, SDR-ST-ENG-AP-1090 | 1.3d | 0d | SIC- Cost [2028.61]; Excavator [74.02 h]; Excavator Operator [129.56 h] | 2,028.61 | 125 | B2.1.33 81 26.01 | M3 | P1-Tele |
| SDR-ST-CON-P1-1790 |  | Excavation for telecom trench Section 2 | 21d | 2026-10-04 | 2026-10-28 | SDR-ST-CON-P1-1240 | 3.3d | 0d | SIC- Cost [2028.61]; Excavator [20 h]; Excavator Operator [129.56 h] | 2,028.61 | 125 | B2.1.33 81 26.02 | M3 | P1-Tele |
|  | 5 | **Pipe laying** |  | 2026-10-28 | 2026-11-22 |  |  |  |  |  |  |  |  |  |
| SDR-ST-CON-P1-2510 |  | HDPE Pipes for Telecom Installation | 21d | 2026-10-28 | 2026-11-22 | SDR-ST-CON-P1-1790 | 3.3d | 0d | SIC- Cost [8114.47]; Electrical Forman [38.39 h]; Electrical Technician [129.56 h]; Electrical Helper [129.56 h] | 8,114.47 | 535 | B2.1.33 81 26.03 |  | P1-Tele |
|  | 6 | **Backfilling** |  | 2026-11-22 | 2026-12-13 |  |  |  |  |  |  |  |  |  |
| SDR-ST-CON-P1-3230 |  | Backfilling over HDPE Telecom Pipes | 18d | 2026-11-22 | 2026-12-13 | SDR-ST-CON-P1-2510 | 3.3d | 0d | SIC- Cost [4057.23]; Excavator [100 h]; Excavator Operator [95.97 h] | 4,057.23 | 535 | B2.1.33 81 26.07 |  | P1-Tele |
|  | 7 | **Pulling Cable** |  | 2026-12-13 | 2027-01-06 |  |  |  |  |  |  |  |  |  |
| SDR-ST-CON-P1-4020 |  | Pulling Cable | 21d | 2026-12-13 | 2027-01-06 | SDR-ST-CON-P1-3230 | 3.3d | 3d | SIC- Cost [24343.4]; Electrical Forman [129.56 h]; Electrical Technician [129.56 h]; Electrical Helper [129.56 h] | 24,343.4 | 535 | B2.1.33 81 26.06 |  | P1-Tele |
|  | 4 | **Manholes** |  | 2026-09-08 | 2027-01-31 |  |  |  |  |  |  |  |  |  |
|  | 1 | **Excavation** |  | 2026-09-08 | 2026-10-28 |  |  |  |  |  |  |  |  |  |
| SDR-ST-CON-P1-1230 |  | Excavation for Telecom Manhole Section 1 | 21d | 2026-09-08 | 2026-10-04 | SDR-ST-CON-P1-1240 SS, SDR-ST-ENG-AP-1090 | 1.3d | 0d | SIC- Cost [1012.67]; Excavator [59.26 h]; Excavator Operator [129.56 h] | 1,012.67 | 3 | B2.1.33 81 26.03 | M3 | P1-Tele |
| SDR-ST-CON-P1-1800 |  | Excavation for Telecom Manhole Section 2 | 21d | 2026-10-04 | 2026-10-28 | SDR-ST-CON-P1-1230 | 1.3d | 0d | SIC- Cost [1012.67]; Excavator [20 h]; Excavator Operator [95.97 h] | 1,012.67 | 3 | B2.1.33 81 26.04 | M3 | P1-Tele |
|  | 2 | **Bedding Work** |  | 2026-10-28 | 2026-11-19 |  |  |  |  |  |  |  |  |  |
| SDR-ST-CON-P1-2520 |  | Sand bedding for Telecom Manhole | 19d | 2026-10-28 | 2026-11-19 | SDR-ST-CON-P1-1800, SDR-ST-PRO-MS-1010 | 1.3d | 0d | SIC- Cost [1350.23]; Labor [38.39 h]; Excavator [29.5 h]; Excavator Operator [38.39 h] | 1,350.23 | 10 | B2.1.33 81 26.05 | M3 | P1-Tele |
|  | 3 | **Install Manholes** |  | 2026-11-19 | 2026-12-13 |  |  |  |  |  |  |  |  |  |
| SDR-ST-CON-P1-3240 |  | Installation of Telecom Manhole | 20d | 2026-11-19 | 2026-12-13 | SDR-ST-CON-P1-1230, SDR-ST-CON-P1-2520 | 1.3d | 0d | SIC- Cost [6076.04]; Electrical Forman [38.39 h]; Electrical Technician [38.39 h]; Electrical Helper [38.39 h] | 6,076.04 | 2 | B2.1.33 81 26.06 | Number | P1-Tele |
|  | 4 | **Testting** |  | 2026-12-13 | 2027-01-06 |  |  |  |  |  |  |  |  |  |
| SDR-ST-CON-P1-4150 |  | Telecom Manhole finishing works | 21d | 2026-12-13 | 2027-01-06 | SDR-ST-CON-P1-3240 | 1.3d | 0d | SIC- Cost [1350.23]; Electrical Forman [100.77 h]; Electrical Technician [100.77 h]; Electrical Helper [100.77 h] | 1,350.23 | 2 | B2.1.33 81 26.07 | Number | P1-Tele |
|  | 5 | **Backfilling** |  | 2027-01-06 | 2027-01-31 |  |  |  |  |  |  |  |  |  |
| SDR-ST-CON-P1-4740 |  | Backfilling over Telecom Manhole | 21d | 2027-01-06 | 2027-01-31 | SDR-ST-CON-P1-4150 | 1.3d | 1d | SIC- Cost [2700.46]; Excavator [30 h]; Excavator Operator [129.56 h] | 2,700.46 | 10 | B2.1.33 81 26.08 | M3 | P1-Tele |

| ID | WBS | Activity | Duration | Start | Finish | Predecessors | Total float | Free float | Resources | Cost | BOQ Qty | BOQ Line item | UOM | Activities Codes Sudair Station |
| --- | --- | --- | --- | --- | --- | --- | --- | --- | --- | --- | --- | --- | --- | --- |
|  | 3 | **ROAD-01 From 1125 to 1765 m (7) (2X3)X50 mm MH-8 to MH-9** |  | 2026-09-21 | 2027-02-07 |  |  |  |  |  |  |  |  |  |
|  | 3 | **Ducts** |  | 2026-09-21 | 2027-01-23 |  |  |  |  |  |  |  |  |  |
|  | 2 | **Excavation** |  | 2026-09-21 | 2026-11-10 |  |  |  |  |  |  |  |  |  |
| SDR-ST-CON-P1-1620 |  | Excavation for telecom trench Section 1 | 21d | 2026-09-21 | 2026-10-17 | SDR-ST-CON-P1-1590 SS, SDR-ST-ENG-AP-1090 | 2.2d | 0d | SIC- Cost [2028.61]; Excavator [17.28 h]; Excavator Operator [38.39 h] | 2,028.61 | 125 | B2.1.33 81 26.01 | M3 | P1-Tele |
| SDR-ST-CON-P1-2290 |  | Excavation for telecom trench Section 2 | 21d | 2026-10-17 | 2026-11-10 | SDR-ST-CON-P1-1620 | 2.2d | 0d | SIC- Cost [2028.61]; Excavator [15 h]; Excavator Operator [129.56 h] | 2,028.61 | 125 | B2.1.33 81 26.02 | M3 | P1-Tele |
|  | 5 | **Pipe laying** |  | 2026-11-10 | 2026-12-05 |  |  |  |  |  |  |  |  |  |
| SDR-ST-CON-P1-3010 |  | HDPE Pipes for Telecom Installation | 21d | 2026-11-10 | 2026-12-05 | SDR-ST-CON-P1-2290 | 2.2d | 0d | SIC- Cost [8114.47]; Electrical Forman [129.56 h]; Electrical Technician [129.56 h]; Electrical Helper [129.56 h] | 8,114.47 | 535 | B2.1.33 81 26.03 |  | P1-Tele |
|  | 6 | **Backfilling** |  | 2026-12-05 | 2026-12-29 |  |  |  |  |  |  |  |  |  |
| SDR-ST-CON-P1-3630 |  | Backfilling over HDPE Telecom Pipes | 21d | 2026-12-05 | 2026-12-29 | SDR-ST-CON-P1-3010 | 2.2d | 0d | SIC- Cost [4057.23]; Excavator [15 h]; Excavator Operator [38.39 h] | 4,057.23 | 535 | B2.1.33 81 26.07 |  | P1-Tele |
|  | 7 | **Pulling Cable** |  | 2026-12-29 | 2027-01-23 |  |  |  |  |  |  |  |  |  |
| SDR-ST-CON-P1-4240 |  | Pulling Cable | 21d | 2026-12-29 | 2027-01-23 | SDR-ST-CON-P1-3630 | 2.2d |  | SIC- Cost [24343.4]; Electrical Forman [129.56 h]; Electrical Technician [129.56 h]; Electrical Helper [129.56 h] | 24,343.4 | 535 | B2.1.33 81 26.06 |  | P1-Tele |
|  | 4 | **Manholes** |  | 2026-09-21 | 2027-02-07 |  |  |  |  |  |  |  |  |  |
|  | 1 | **Excavation** |  | 2026-09-21 | 2026-11-10 |  |  |  |  |  |  |  |  |  |
| SDR-ST-CON-P1-1610 |  | Excavation for Telecom Manhole Section 1 | 21d | 2026-09-21 | 2026-10-17 | SDR-ST-CON-P1-1620 SS, SDR-ST-ENG-AP-1090 | 6.7d | 0d | SIC- Cost [1012.67]; Excavator [22.94 h]; Excavator Operator [95.97 h] | 1,012.67 | 3 | B2.1.33 81 26.03 | M3 | P1-Tele |
| SDR-ST-CON-P1-2300 |  | Excavation for Telecom Manhole Section 2 | 21d | 2026-10-17 | 2026-11-10 | SDR-ST-CON-P1-1610 | 6.7d | 0d | SIC- Cost [1012.67]; Excavator [15 h]; Excavator Operator [38.39 h] | 1,012.67 | 3 | B2.1.33 81 26.04 | M3 | P1-Tele |
|  | 2 | **Bedding Work** |  | 2026-11-10 | 2026-12-02 |  |  |  |  |  |  |  |  |  |
| SDR-ST-CON-P1-3020 |  | Sand bedding for Telecom Manhole | 19d | 2026-11-10 | 2026-12-02 | SDR-ST-CON-P1-2300 | 6.7d | 0d | SIC- Cost [1350.23]; Labor [38.39 h]; Excavator [19.22 h]; Excavator Operator [38.39 h] | 1,350.23 | 10 | B2.1.33 81 26.05 | M3 | P1-Tele |
|  | 3 | **Install Manholes** |  | 2026-12-02 | 2026-12-26 |  |  |  |  |  |  |  |  |  |
| SDR-ST-CON-P1-3820 |  | Installation of Telecom Manhole | 20d | 2026-12-02 | 2026-12-26 | SDR-ST-CON-P1-1610, SDR-ST-CON-P1-3020 | 6.7d | 0d | SIC- Cost [6076.04]; Electrical Forman [40.4 h]; Electrical Technician [40.4 h]; Electrical Helper [40.4 h] | 6,076.04 | 2 | B2.1.33 81 26.06 | Number | P1-Tele |
|  | 4 | **Testting** |  | 2026-12-26 | 2027-01-16 |  |  |  |  |  |  |  |  |  |
| SDR-ST-CON-P1-4720 |  | Telecom Manhole finishing works | 18d | 2026-12-26 | 2027-01-16 | SDR-ST-CON-P1-3820 | 6.7d | 0d | SIC- Cost [1350.23]; Electrical Forman [100.77 h]; Electrical Technician [100.77 h]; Electrical Helper [100.77 h] | 1,350.23 | 2 | B2.1.33 81 26.07 | Number | P1-Tele |
|  | 5 | **Backfilling** |  | 2027-01-16 | 2027-02-07 |  |  |  |  |  |  |  |  |  |
| SDR-ST-CON-P1-5240 |  | Backfilling over Telecom Manhole | 19d | 2027-01-16 | 2027-02-07 | SDR-ST-CON-P1-4720 | 6.7d |  | SIC- Cost [2700.46]; Excavator [30 h]; Excavator Operator [129.56 h] | 2,700.46 | 10 | B2.1.33 81 26.08 | M3 | P1-Tele |
|  | 4 | **ROAD - 02** |  | 2026-09-08 | 2027-02-07 |  |  |  |  |  |  |  |  |  |
|  | 3 | **ROAD-01 From 0 to 400 m (9) (2X3)X50 mm MH-5 to MH-7** |  | 2026-09-08 | 2027-02-02 |  |  |  |  |  |  |  |  |  |
|  | 3 | **Ducts** |  | 2026-09-08 | 2027-01-11 |  |  |  |  |  |  |  |  |  |
|  | 2 | **Excavation** |  | 2026-09-08 | 2026-10-28 |  |  |  |  |  |  |  |  |  |
| SDR-ST-CON-P1-1340 |  | Excavation for telecom trench Section 1 | 21d | 2026-09-08 | 2026-10-04 | SDR-ST-CON-P1-1310 SS, SDR-ST-ENG-AP-1090 | 0d |  | SIC- Cost [2028.61]; Excavator [38.42 h]; Excavator Operator [129.56 h] | 2,028.61 | 125 | B2.1.33 81 26.01 | M3 | P1-Tele |
| SDR-ST-CON-P1-1960 |  | Excavation for telecom trench Section 2 | 21d | 2026-10-04 | 2026-10-28 | SDR-ST-CON-P1-1340 | 0d |  | SIC- Cost [2028.61]; Excavator [20 h]; Excavator Operator [95.97 h] | 2,028.61 | 125 | B2.1.33 81 26.02 | M3 | P1-Tele |

| ID | WBS | Activity | Duration | Start | Finish | Predecessors | Total float | Free float | Resources | Cost | BOQ Qty | BOQ Line item | Activities Codes Sudair Station | UOM |
| --- | --- | --- | --- | --- | --- | --- | --- | --- | --- | --- | --- | --- | --- | --- |
|  | 5 | **Pipe laying** |  | 2026-10-28 | 2026-11-22 |  |  |  |  |  |  |  |  |  |
| SDR-ST-CON-P1-2670 |  | HDPE Pipes for Telecom Installation | 21d | 2026-10-28 | 2026-11-22 | SDR-ST-CON-P1-1960 | 0d |  | SIC- Cost [8114.47]; Electrical Forman [38.39 h]; Electrical Technician [129.56 h]; Electrical Helper [129.56 h] | 8,114.47 | 535 | B2.1.33 81 26.03 | P1-Tele |  |
|  | 6 | **Backfilling** |  | 2026-11-22 | 2026-12-16 |  |  |  |  |  |  |  |  |  |
| SDR-ST-CON-P1-3440 |  | Backfilling over HDPE Telecom Pipes | 21d | 2026-11-22 | 2026-12-16 | SDR-ST-CON-P1-2670 | 0d |  | SIC- Cost [4057.23]; Excavator [15 h]; Excavator Operator [38.39 h] | 4,057.23 | 535 | B2.1.33 81 26.07 | P1-Tele |  |
|  | 7 | **Pulling Cable** |  | 2026-12-16 | 2027-01-11 |  |  |  |  |  |  |  |  |  |
| SDR-ST-CON-P1-4270 |  | Pulling Cable | 21.2d | 2026-12-16 | 2027-01-11 | SDR-ST-CON-P1-3440 | 0d |  | SIC- Cost [24343.4]; Electrical Forman [129.56 h]; Electrical Technician [129.56 h]; Electrical Helper [129.56 h] | 24,343.4 | 535 | B2.1.33 81 26.06 | P1-Tele |  |
|  | 4 | **Manholes** |  | 2026-09-08 | 2027-02-02 |  |  |  |  |  |  |  |  |  |
|  | 1 | **Excavation** |  | 2026-09-08 | 2026-10-28 |  |  |  |  |  |  |  |  |  |
| SDR-ST-CON-P1-1330 |  | Excavation for Telecom Manhole Section 1 | 21d | 2026-09-08 | 2026-10-04 | SDR-ST-CON-P1-1340 SS, SDR-ST-ENG-AP-1090 | 10.7d | 0d | SIC- Cost [1012.67]; Excavator [32.56 h]; Excavator Operator [129.56 h] | 1,012.67 | 3 | B2.1.33 81 26.03 | P1-Tele | M3 |
| SDR-ST-CON-P1-1970 |  | Excavation for Telecom Manhole Section 2 | 21d | 2026-10-04 | 2026-10-28 | SDR-ST-CON-P1-1330 | 10.7d | 0d | SIC- Cost [1012.67]; Excavator [20 h]; Excavator Operator [38.39 h] | 1,012.67 | 3 | B2.1.33 81 26.04 | P1-Tele | M3 |
|  | 2 | **Bedding Work** |  | 2026-10-28 | 2026-11-22 |  |  |  |  |  |  |  |  |  |
| SDR-ST-CON-P1-2680 |  | Sand bedding for Telecom Manhole | 21d | 2026-10-28 | 2026-11-22 | SDR-ST-CON-P1-1970 | 10.7d | 0d | SIC- Cost [1350.23]; Labor [38.39 h]; Excavator [40 h]; Excavator Operator [38.39 h] | 1,350.23 | 10 | B2.1.33 81 26.05 | P1-Tele | M3 |
|  | 3 | **Install Manholes** |  | 2026-11-22 | 2026-12-15 |  |  |  |  |  |  |  |  |  |
| SDR-ST-CON-P1-3450 |  | Installation of Telecom Manhole | 20d | 2026-11-22 | 2026-12-15 | SDR-ST-CON-P1-1330, SDR-ST-CON-P1-2680 | 10.7d | 0d | SIC- Cost [6076.04]; Electrical Forman [129.56 h]; Electrical Technician [129.56 h]; Electrical Helper [129.56 h] | 6,076.04 | 3 | B2.1.33 81 26.06 | P1-Tele | Number |
|  | 4 | **Testting** |  | 2026-12-15 | 2027-01-09 |  |  |  |  |  |  |  |  |  |
| SDR-ST-CON-P1-4380 |  | Telecom Manhole finishing works | 21d | 2026-12-15 | 2027-01-09 | SDR-ST-CON-P1-3450 | 10.7d | 0d | SIC- Cost [1350.23]; Electrical Forman [100.77 h]; Electrical Technician [100.77 h]; Electrical Helper [100.77 h] | 1,350.23 | 3 | B2.1.33 81 26.07 | P1-Tele | Number |
|  | 5 | **Backfilling** |  | 2027-01-09 | 2027-02-02 |  |  |  |  |  |  |  |  |  |
| SDR-ST-CON-P1-4900 |  | Backfilling over Telecom Manhole | 21d | 2027-01-09 | 2027-02-02 | SDR-ST-CON-P1-4380 | 10.7d |  | SIC- Cost [2700.46]; Excavator [30 h]; Excavator Operator [129.56 h] | 2,700.46 | 10 | B2.1.33 81 26.08 | P1-Tele | M3 |
|  | 1 | **ROAD-01 From 400 to 900 m (10) (2X3)X50 mm MH-1 to MH-4** |  | 2026-09-08 | 2027-01-31 |  |  |  |  |  |  |  |  |  |
|  | 3 | **Ducts** |  | 2026-09-08 | 2027-01-10 |  |  |  |  |  |  |  |  |  |
|  | 2 | **Excavation** |  | 2026-09-08 | 2026-10-28 |  |  |  |  |  |  |  |  |  |
| SDR-ST-CON-P1-1290 |  | Excavation for telecom trench Section 1 | 21d | 2026-09-08 | 2026-10-04 | SDR-ST-CON-P1-1260 SS, SDR-ST-ENG-AP-1090 | 0d |  | SIC- Cost [2028.61]; Excavator [54.34 h]; Excavator Operator [129.56 h] | 2,028.61 | 125 | B2.1.33 81 26.01 | P1-Tele | M3 |
| SDR-ST-CON-P1-1880 |  | Excavation for telecom trench Section 2 | 21d | 2026-10-04 | 2026-10-28 | SDR-ST-CON-P1-1290 | 10.5d | 0d | SIC- Cost [2028.61]; Excavator [20 h]; Excavator Operator [95.97 h] | 2,028.61 | 125 | B2.1.33 81 26.02 | P1-Tele | M3 |
|  | 5 | **Pipe laying** |  | 2026-10-28 | 2026-11-22 |  |  |  |  |  |  |  |  |  |
| SDR-ST-CON-P1-2640 |  | HDPE Pipes for Telecom Installation | 21d | 2026-10-28 | 2026-11-22 | SDR-ST-CON-P1-1880 | 10.5d | 0d | SIC- Cost [8114.47]; Electrical Forman [38.39 h]; Electrical Technician [129.56 h]; Electrical Helper [129.56 h] | 8,114.47 | 535 | B2.1.33 81 26.03 | P1-Tele |  |

| ID | WBS | Activity | Duration | Start | Finish | Predecessors | Total float | Free float | Resources | Cost | BOQ Qty | BOQ Line item | Activities Codes Sudair Station | UOM |
| --- | --- | --- | --- | --- | --- | --- | --- | --- | --- | --- | --- | --- | --- | --- |
|  | 6 | **Backfilling** |  | 2026-11-22 | 2026-12-16 |  |  |  |  |  |  |  |  |  |
| SDR-ST-CON-P1-3370 |  | Backfilling over HDPE Telecom Pipes | 21d | 2026-11-22 | 2026-12-16 | SDR-ST-CON-P1-2640 | 10.5d | 0d | SIC- Cost [4057.23]; Excavator [15 h]; Excavator Operator [38.39 h] | 4,057.23 | 535 | B2.1.33 81 26.07 | P1-Tele |  |
|  | 7 | **Pulling Cable** |  | 2026-12-16 | 2027-01-10 |  |  |  |  |  |  |  |  |  |
| SDR-ST-CON-P1-4160 |  | Pulling Cable | 21d | 2026-12-16 | 2027-01-10 | SDR-ST-CON-P1-3370 | 10.5d | 5.8d | SIC- Cost [24343.4]; Electrical Forman [129.56 h]; Electrical Technician [129.56 h]; Electrical Helper [129.56 h] | 24,343.4 | 535 | B2.1.33 81 26.06 | P1-Tele |  |
|  | 4 | **Manholes** |  | 2026-09-08 | 2027-01-31 |  |  |  |  |  |  |  |  |  |
|  | 1 | **Excavation** |  | 2026-09-08 | 2026-10-28 |  |  |  |  |  |  |  |  |  |
| SDR-ST-CON-P1-1280 |  | Excavation for Telecom Manhole Section 1 | 21d | 2026-09-08 | 2026-10-04 | SDR-ST-CON-P1-1290 SS, SDR-ST-ENG-AP-1090 | 0d |  | SIC- Cost [1012.67]; Excavator [44.51 h]; Excavator Operator [129.56 h] | 1,012.67 | 3 | B2.1.33 81 26.03 | P1-Tele | M3 |
| SDR-ST-CON-P1-1890 |  | Excavation for Telecom Manhole Section 2 | 21d | 2026-10-04 | 2026-10-28 | SDR-ST-CON-P1-1280 | 0d |  | SIC- Cost [1012.67]; Excavator [20 h]; Excavator Operator [95.97 h] | 1,012.67 | 3 | B2.1.33 81 26.04 | P1-Tele | M3 |
|  | 2 | **Bedding Work** |  | 2026-10-28 | 2026-11-19 |  |  |  |  |  |  |  |  |  |
| SDR-ST-CON-P1-2650 |  | Sand bedding for Telecom Manhole | 19d | 2026-10-28 | 2026-11-19 | SDR-ST-CON-P1-1890 | 0d |  | SIC- Cost [1350.23]; Labor [38.39 h]; Excavator [40 h]; Excavator Operator [38.39 h] | 1,350.23 | 10 | B2.1.33 81 26.05 | P1-Tele | M3 |
|  | 3 | **Install Manholes** |  | 2026-11-19 | 2026-12-13 |  |  |  |  |  |  |  |  |  |
| SDR-ST-CON-P1-3380 |  | Installation of Telecom Manhole | 20d | 2026-11-19 | 2026-12-13 | SDR-ST-CON-P1-1280, SDR-ST-CON-P1-2650 | 0d |  | SIC- Cost [6076.04]; Electrical Forman [38.39 h]; Electrical Technician [38.39 h]; Electrical Helper [38.39 h] | 6,076.04 | 4 | B2.1.33 81 26.06 | P1-Tele | Number |
|  | 4 | **Testting** |  | 2026-12-13 | 2027-01-06 |  |  |  |  |  |  |  |  |  |
| SDR-ST-CON-P1-4280 |  | Telecom Manhole finishing works | 21d | 2026-12-13 | 2027-01-06 | SDR-ST-CON-P1-3380 | 0d |  | SIC- Cost [1350.23]; Electrical Forman [100.77 h]; Electrical Technician [100.77 h]; Electrical Helper [100.77 h] | 1,350.23 | 4 | B2.1.33 81 26.07 | P1-Tele | Number |
|  | 5 | **Backfilling** |  | 2027-01-06 | 2027-01-31 |  |  |  |  |  |  |  |  |  |
| SDR-ST-CON-P1-4820 |  | Backfilling over Telecom Manhole | 21d | 2027-01-06 | 2027-01-31 | SDR-ST-CON-P1-4280 | 0d |  | SIC- Cost [2700.46]; Excavator [30 h]; Excavator Operator [129.56 h] | 2,700.46 | 10 | B2.1.33 81 26.08 | P1-Tele | M3 |
|  | 2 | **ROAD-01 From 900 to 1239 m (11) (2)X32 mm MH-1** |  | 2026-09-17 | 2027-02-07 |  |  |  |  |  |  |  |  |  |
|  | 3 | **Ducts** |  | 2026-09-17 | 2027-01-19 |  |  |  |  |  |  |  |  |  |
|  | 2 | **Excavation** |  | 2026-09-17 | 2026-11-07 |  |  |  |  |  |  |  |  |  |
| SDR-ST-CON-P1-1390 |  | Excavation for telecom trench Section 1 | 21d | 2026-09-17 | 2026-10-13 | SDR-ST-CON-P1-1360 SS, SDR-ST-ENG-AP-1090 | 6.7d | 0d | SIC- Cost [2028.61]; Excavator [15 h]; Excavator Operator [129.56 h] | 2,028.61 | 125 | B2.1.33 81 26.01 | P1-Tele | M3 |
| SDR-ST-CON-P1-2070 |  | Excavation for telecom trench Section 2 | 21d | 2026-10-13 | 2026-11-07 | SDR-ST-CON-P1-1390 | 6.7d | 0d | SIC- Cost [2028.61]; Excavator [23.85 h]; Excavator Operator [95.97 h] | 2,028.61 | 125 | B2.1.33 81 26.02 | P1-Tele | M3 |
|  | 5 | **Pipe laying** |  | 2026-11-07 | 2026-12-01 |  |  |  |  |  |  |  |  |  |
| SDR-ST-CON-P1-2780 |  | HDPE Pipes for Telecom Installation | 21d | 2026-11-07 | 2026-12-01 | SDR-ST-CON-P1-2070 | 6.7d | 0d | SIC- Cost [8114.47]; Electrical Forman [38.39 h]; Electrical Technician [129.56 h]; Electrical Helper [129.56 h] | 8,114.47 | 535 | B2.1.33 81 26.03 | P1-Tele |  |
|  | 6 | **Backfilling** |  | 2026-12-01 | 2026-12-26 |  |  |  |  |  |  |  |  |  |
| SDR-ST-CON-P1-3580 |  | Backfilling over HDPE Telecom Pipes | 21d | 2026-12-01 | 2026-12-26 | SDR-ST-CON-P1-2780 | 6.7d | 0d | SIC- Cost [4057.23]; Excavator [15 h]; Excavator Operator [38.39 h] | 4,057.23 | 535 | B2.1.33 81 26.07 | P1-Tele |  |

| ID | WBS | Activity | Duration | Start | Finish | Predecessors | Total float | Free float | Resources | Cost | BOQ Qty | BOQ Line item | Activities Codes Sudair Station | UOM |
| --- | --- | --- | --- | --- | --- | --- | --- | --- | --- | --- | --- | --- | --- | --- |
|  | 7 | **Pulling Cable** |  | 2026-12-26 | 2027-01-19 |  |  |  |  |  |  |  |  |  |
| SDR-ST-CON-P1-4170 |  | Pulling Cable | 21d | 2026-12-26 | 2027-01-19 | SDR-ST-CON-P1-3580 | 6.7d | 5.8d | SIC- Cost [24343.4]; Electrical Forman [129.56 h]; Electrical Technician [129.56 h]; Electrical Helper [129.56 h] | 24,343.4 | 535 | B2.1.33 81 26.06 | P1-Tele |  |
|  | 4 | **Manholes** |  | 2026-09-17 | 2027-02-07 |  |  |  |  |  |  |  |  |  |
|  | 1 | **Excavation** |  | 2026-09-17 | 2026-11-07 |  |  |  |  |  |  |  |  |  |
| SDR-ST-CON-P1-1380 |  | Excavation for Telecom Manhole Section 1 | 21d | 2026-09-17 | 2026-10-13 | SDR-ST-CON-P1-1390 SS, SDR-ST-ENG-AP-1090 | 7.5d | 0d | SIC- Cost [1012.67]; Excavator [15 h]; Excavator Operator [129.56 h] | 1,012.67 | 3 | B2.1.33 81 26.03 | P1-Tele | M3 |
| SDR-ST-CON-P1-2080 |  | Excavation for Telecom Manhole Section 2 | 21d | 2026-10-13 | 2026-11-07 | SDR-ST-CON-P1-1380 | 7.5d | 0d | SIC- Cost [1012.67]; Excavator [34.91 h]; Excavator Operator [95.97 h] | 1,012.67 | 3 | B2.1.33 81 26.04 | P1-Tele | M3 |
|  | 2 | **Bedding Work** |  | 2026-11-07 | 2026-11-29 |  |  |  |  |  |  |  |  |  |
| SDR-ST-CON-P1-2790 |  | Sand bedding for Telecom Manhole | 19d | 2026-11-07 | 2026-11-29 | SDR-ST-CON-P1-2080 | 7.5d | 0d | SIC- Cost [1350.23]; Labor [38.39 h]; Excavator [30 h]; Excavator Operator [76.78 h] | 1,350.23 | 10 | B2.1.33 81 26.05 | P1-Tele | M3 |
|  | 3 | **Install Manholes** |  | 2026-11-29 | 2026-12-23 |  |  |  |  |  |  |  |  |  |
| SDR-ST-CON-P1-3590 |  | Installation of Telecom Manhole | 21d | 2026-11-29 | 2026-12-23 | SDR-ST-CON-P1-1380, SDR-ST-CON-P1-2790 | 7.5d | 0d | SIC- Cost [6076.04]; Electrical Forman [129.56 h]; Electrical Technician [129.56 h]; Electrical Helper [129.56 h] | 6,076.04 | 4 | B2.1.33 81 26.06 | P1-Tele | Number |
|  | 4 | **Testting** |  | 2026-12-23 | 2027-01-17 |  |  |  |  |  |  |  |  |  |
| SDR-ST-CON-P1-4500 |  | Telecom Manhole finishing works | 21d | 2026-12-23 | 2027-01-17 | SDR-ST-CON-P1-3590 | 7.5d | 0d | SIC- Cost [1350.23]; Electrical Forman [100.77 h]; Electrical Technician [100.77 h]; Electrical Helper [100.77 h] | 1,350.23 | 4 | B2.1.33 81 26.07 | P1-Tele | Number |
|  | 5 | **Backfilling** |  | 2027-01-17 | 2027-02-07 |  |  |  |  |  |  |  |  |  |
| SDR-ST-CON-P1-5000 |  | Backfilling over Telecom Manhole | 18d | 2027-01-17 | 2027-02-07 | SDR-ST-CON-P1-4500 | 7.5d |  | SIC- Cost [2700.46]; Excavator [30 h]; Excavator Operator [129.56 h] | 2,700.46 | 10 | B2.1.33 81 26.08 | P1-Tele | M3 |
|  | 13 | **LOW VOLTAGE** |  | 2026-11-15 | 2027-04-19 |  |  |  |  |  |  |  |  |  |
|  | 1 | **ROAD - 01** |  | 2026-11-15 | 2027-04-03 |  |  |  |  |  |  |  |  |  |
|  | 1 | **ROAD-01 From 470 to 1125 m (6)** |  | 2026-11-15 | 2027-04-03 |  |  |  |  |  |  |  |  |  |
|  | 6 | **Excavation** |  | 2026-11-15 | 2027-01-03 |  |  |  |  |  |  |  |  |  |
| SDR-ST-CON-P1-1670 |  | Excavation Works Part 1 | 21d | 2026-11-15 | 2026-12-09 | SDR-ST-CON-P1-1180, SDR-ST-ENG-AP-1090, SDR-ST-CON-P1-1570 | 3.2d | 0d | SIC- Cost [2898.07]; Electrical Forman [38.39 h]; Electrical Technician [129.56 h]; Electrical Helper [129.56 h]; Labor [38.39 h]; Excavator [24.56 h]; Excavator Operator [129.56 h] | 2,898.07 |  |  | P1-L.V |  |
| SDR-ST-CON-P1-6230 |  | Excavation Works Part 2 | 21d | 2026-12-09 | 2027-01-03 | SDR-ST-CON-P1-1670 | 10.2d | 0d | SIC- Cost; Electrical Forman [38.39 h]; Electrical Technician [129.56 h]; Electrical Helper [129.56 h]; Labor [38.39 h]; Excavator [24.56 h]; Excavator Operator [129.56 h] |  |  |  | P1-L.V |  |
|  | 7 | **Pipe laying** |  | 2027-01-03 | 2027-01-26 |  |  |  |  |  |  |  |  |  |
| SDR-ST-CON-P1-2330 |  | Pipe Laying | 20d | 2027-01-03 | 2027-01-26 | SDR-ST-CON-P1-1670, SDR-ST-CON-P1-6230 | 10.2d | 0d | SIC- Cost [5796.13]; Electrical Forman [38.39 h]; Electrical Technician [40.4 h]; Electrical Helper [40.4 h]; Labor [38.39 h] | 5,796.13 |  |  | P1-L.V |  |
|  | 8 | **Backfilling** |  | 2027-01-26 | 2027-03-02 |  |  |  |  |  |  |  |  |  |
| SDR-ST-CON-P1-2990 |  | Backfilling Works | 21d | 2027-01-26 | 2027-03-02 | SDR-ST-CON-P1-2330, SDR-ST-CON-P1-4880 | 10.2d | 0d | SIC- Cost [2898.07]; Electrical Forman [38.39 h]; Electrical Technician [129.56 h]; Electrical Helper [129.56 h]; Labor [38.39 h]; Excavator [30 h]; Excavator Operator [129.56 h] | 2,898.07 |  |  | P1-L.V |  |

| ID | WBS | Activity | Duration | Start | Finish | Predecessors | Total float | Free float | Resources | Cost | Activities Codes Sudair Station | BOQ Qty | BOQ Line item | UOM |
| --- | --- | --- | --- | --- | --- | --- | --- | --- | --- | --- | --- | --- | --- | --- |
|  | 9 | **Pulling Cable** |  | 2027-03-02 | 2027-04-03 |  |  |  |  |  |  |  |  |  |
| SDR-ST-CON-P1-3880 |  | Pulling Cable | 21d | 2027-03-02 | 2027-04-03 | SDR-ST-CON-P1-2330, SDR-ST-CON-P1-2990, SDR-ST-CON-P1-5750 | 10.2d |  | SIC- Cost [17388.4]; Electrical Forman [129.56 h]; Electrical Technician [129.56 h]; Electrical Helper [129.56 h]; Labor [129.56 h] | 17,388.4 | P1-L.V |  |  |  |
|  | 2 | **ROAD - 02** |  | 2026-11-23 | 2027-04-19 |  |  |  |  |  |  |  |  |  |
|  | 1 | **ROAD-01 From 400 to 900 m (10)** |  | 2026-11-23 | 2027-04-11 |  |  |  |  |  |  |  |  |  |
|  | 6 | **Excavation** |  | 2026-11-23 | 2027-01-11 |  |  |  |  |  |  |  |  |  |
| SDR-ST-CON-P1-1740 |  | Excavation Works Part 1 | 21d | 2026-11-23 | 2026-12-17 | SDR-ST-CON-P1-1260, SDR-ST-CON-P1-1670 SS+7d | 3.2d | 0d | SIC- Cost [2898.07]; Electrical Forman [38.39 h]; Electrical Technician [129.56 h]; Electrical Helper [129.56 h]; Labor [38.39 h]; Excavator [30 h]; Excavator Operator [129.56 h] | 2,898.07 | P1-L.V |  |  |  |
| SDR-ST-CON-P1-6240 |  | Excavation Works Part 2 | 21d | 2026-12-17 | 2027-01-11 | SDR-ST-CON-P1-1740 | 3.2d | 0d | SIC- Cost; Electrical Forman [38.39 h]; Electrical Technician [129.56 h]; Electrical Helper [129.56 h]; Labor [38.39 h]; Excavator [30 h]; Excavator Operator [129.56 h] |  | P1-L.V |  |  |  |
|  | 7 | **Pipe laying** |  | 2027-01-11 | 2027-02-03 |  |  |  |  |  |  |  |  |  |
| SDR-ST-CON-P1-2440 |  | Pipe Laying | 20d | 2027-01-11 | 2027-02-03 | SDR-ST-CON-P1-1740, SDR-ST-CON-P1-6240 | 3.2d | 0d | SIC- Cost [5796.13]; Electrical Forman [38.39 h]; Electrical Technician [129.56 h]; Electrical Helper [129.56 h]; Labor [38.39 h] | 5,796.13 | P1-L.V |  |  |  |
|  | 8 | **Backfilling** |  | 2027-02-03 | 2027-03-17 |  |  |  |  |  |  |  |  |  |
| SDR-ST-CON-P1-3170 |  | Backfilling Works | 21d | 2027-02-03 | 2027-03-17 | SDR-ST-CON-P1-2440 | 3.2d | 0d | SIC- Cost [2898.07]; Electrical Forman [38.39 h]; Electrical Technician [129.56 h]; Electrical Helper [129.56 h]; Labor [38.39 h]; Excavator [17.25 h]; Excavator Operator [129.56 h] | 2,898.07 | P1-L.V |  |  |  |
|  | 9 | **Pulling Cable** |  | 2027-03-17 | 2027-04-11 |  |  |  |  |  |  |  |  |  |
| SDR-ST-CON-P1-4040 |  | Pulling Cable | 21d | 2027-03-17 | 2027-04-11 | SDR-ST-CON-P1-2440, SDR-ST-CON-P1-3170, SDR-ST-CON-P1-4520, SDR-ST-CON-P1-4700, SDR-ST-CON-P1-4910 | 3.2d |  | SIC- Cost [17388.4]; Electrical Forman [129.56 h]; Electrical Technician [129.56 h]; Electrical Helper [129.56 h]; Labor [129.56 h] | 17,388.41 | P1-L.V |  |  |  |
|  | 4 | **ROAD-01 From 900 to 1239 m (11)** |  | 2026-12-01 | 2027-04-19 |  |  |  |  |  |  |  |  |  |
|  | 6 | **Excavation** |  | 2026-12-01 | 2027-01-19 |  |  |  |  |  |  |  |  |  |
| SDR-ST-CON-P1-1750 |  | Excavation Works Part 1 | 21d | 2026-12-01 | 2026-12-26 | SDR-ST-CON-P1-1360 SS, SDR-ST-ENG-AP-1090, SDR-ST-CON-P1-1740 SS+7d | 4.2d | 0d | SIC- Cost [2898.07]; Electrical Forman [38.39 h]; Electrical Technician [40.4 h]; Electrical Helper [40.4 h]; Labor [38.39 h]; Excavator [30 h]; Excavator Operator [40.4 h] | 2,898.07 | P1-L.V |  |  |  |
| SDR-ST-CON-P1-6250 |  | Excavation Works Part 2 | 21d | 2026-12-26 | 2027-01-19 | SDR-ST-CON-P1-1750 | 4.2d | 0d | SIC- Cost; Electrical Forman [38.39 h]; Electrical Technician [129.56 h]; Electrical Helper [129.56 h]; Labor [38.39 h]; Excavator [30 h]; Excavator Operator [129.56 h] |  | P1-L.V |  |  |  |
|  | 7 | **Pipe laying** |  | 2027-01-19 | 2027-02-15 |  |  |  |  |  |  |  |  |  |
| SDR-ST-CON-P1-2450 |  | Pipe Laying | 20d | 2027-01-19 | 2027-02-15 | SDR-ST-CON-P1-1750, SDR-ST-CON-P1-6250 | 4.2d | 0d | SIC- Cost [5796.13]; Electrical Forman [129.56 h]; Electrical Technician [129.56 h]; Electrical Helper [129.56 h]; Labor [129.56 h] | 5,796.13 | P1-L.V |  |  |  |
|  | 8 | **Backfilling** |  | 2027-02-15 | 2027-03-25 |  |  |  |  |  |  |  |  |  |
| SDR-ST-CON-P1-3180 |  | Backfilling Works | 21d | 2027-02-15 | 2027-03-25 | SDR-ST-CON-P1-2450 | 4.2d | 0d | SIC- Cost [2898.07]; Electrical Forman [129.56 h]; Electrical Technician [129.56 h]; Electrical Helper [129.56 h]; Labor [129.56 h]; Excavator [16.5 h]; Excavator Operator [129.56 h] | 2,898.07 | P1-L.V |  |  |  |
|  | 9 | **Pulling Cable** |  | 2027-03-25 | 2027-04-19 |  |  |  |  |  |  |  |  |  |
| SDR-ST-CON-P1-4070 |  | Pulling Cable | 21d | 2027-03-25 | 2027-04-19 | SDR-ST-CON-P1-2450, SDR-ST-CON-P1-3180, SDR-ST-CON-P1-6070, SDR-ST-CON-P1-5100, SDR-ST-CON-P1-5070 | 4.2d |  | SIC- Cost [17388.4]; Electrical Forman [129.56 h]; Electrical Technician [129.56 h]; Electrical Helper [129.56 h]; Labor [97.38 h] | 17,388.41 | P1-L.V |  |  |  |
|  | 10 | **PORTABLE WATER** |  | 2026-09-17 | 2027-03-22 |  |  |  |  |  |  |  |  |  |
|  | 2 | **ROAD - 01** |  | 2026-09-17 | 2027-03-22 |  |  |  |  |  |  |  |  |  |
|  | 2 | **ROAD-01 From 0 to 470 m (3)** |  | 2026-09-17 | 2027-03-03 |  |  |  |  |  |  |  |  |  |
|  | 7 | **Pipes Work** |  | 2026-09-17 | 2027-02-16 |  |  |  |  |  |  |  |  |  |
|  | 1 | **Excavation** |  | 2026-09-17 | 2026-11-07 |  |  |  |  |  |  |  |  |  |
| SDR-ST-CON-P1-1480 |  | Excavation for PW HDPE Pipes 315 mm Section 1 | 21d | 2026-09-17 | 2026-10-13 | SDR-ST-CON-P1-1200 FS+15d | 0d |  | SIC- Cost [5079]; Plumbing Helper [129.56 h]; Labor [129.56 h]; Plumber [129.56 h]; Excavator [15 h]; Excavator Operator [129.56 h]; Un-Skilled Labor [129.56 h]; Skilled Labor [129.56 h] | 5,079 | P1-P.W | 125 | B3.33 14 13.01 | M3 |
| SDR-ST-CON-P1-1980 |  | Excavation for PW HDPE Pipes 315 mm Section 2 | 21d | 2026-10-13 | 2026-11-07 | SDR-ST-CON-P1-1480 | 0d |  | SIC- Cost [5079]; Plumbing Helper [129.56 h]; Labor [129.56 h]; Plumber [129.56 h]; Excavator [33.61 h]; Excavator Operator [129.56 h]; Un-Skilled Labor [38.39 h]; Skilled Labor [38.39 h] | 5,079 | P1-P.W | 125 | B3.33 14 13.02 | M3 |

| ID | WBS | Activity | Duration | Start | Finish | Predecessors | Total float | Free float | Resources | Cost | BOQ Qty | BOQ Line item | UOM | Activities Codes Sudair Station |
| --- | --- | --- | --- | --- | --- | --- | --- | --- | --- | --- | --- | --- | --- | --- |
|  | 8 | **bedding Works** |  | 2026-11-07 | 2026-12-01 |  |  |  |  |  |  |  |  |  |
| SDR-ST-CON-P1-2490 |  | Sand bedding for PW HDPE Pipes 315 mm | 21d | 2026-11-07 | 2026-12-01 | SDR-ST-CON-P1-1980 | 0d |  | SIC- Cost [2539.5]; Plumbing Helper [129.56 h]; Labor [129.56 h]; Plumber [129.56 h]; Excavator [22 h]; Excavator Operator [129.56 h]; Un-Skilled Labor [38.39 h]; Skilled Labor [38.39 h] | 2,539.5 | 410 | B3.33 14 13.03 | M | P1-P.W |
|  | 2 | **Pipes Laying** |  | 2026-12-01 | 2026-12-26 |  |  |  |  |  |  |  |  |  |
| SDR-ST-CON-P1-3270 |  | Install PW 315 mm HDPE Pipe | 21d | 2026-12-01 | 2026-12-26 | SDR-ST-CON-P1-2490, SDR-ST-CON-P1-3930, SDR-ST-CON-P1-3760 | 0d |  | SIC- Cost [22855.5]; Plumbing Helper [38.39 h]; Labor [38.39 h]; Plumber [38.39 h]; Excavator [15 h]; Excavator Operator [38.39 h]; Un-Skilled Labor [38.39 h]; Skilled Labor [38.39 h] | 22,855.52 | 410 | B3.33 14 13.04 | M | P1-P.W |
|  | 5 | **Testing** |  | 2026-12-26 | 2027-01-19 |  |  |  |  |  |  |  |  |  |
| SDR-ST-CON-P1-4190 |  | Testing of PW HDPE Pipe 315 mm. | 21d | 2026-12-26 | 2027-01-19 | SDR-ST-CON-P1-3270, SDR-ST-CON-P1-4400 | 0d |  | SIC- Cost [5079]; Plumbing Helper [107.97 h]; Labor [107.97 h]; Plumber [107.97 h]; Excavator [30 h]; Excavator Operator [107.97 h]; Un-Skilled Labor [107.97 h]; Skilled Labor [107.97 h] | 5,079 | 410 | B3.33 14 13.05 | M | P1-P.W |
|  | 9 | **Backfilling** |  | 2027-01-19 | 2027-02-16 |  |  |  |  |  |  |  |  |  |
| SDR-ST-CON-P1-4800 |  | Backfilling of PW HDPE Pipe 315 mm. | 21d | 2027-01-19 | 2027-02-16 | SDR-ST-CON-P1-4190 | 0d |  | SIC- Cost [10158]; Plumbing Helper [129.56 h]; Labor [129.56 h]; Plumber [129.56 h]; Excavator [30 h]; Excavator Operator [129.56 h]; Un-Skilled Labor [129.56 h]; Skilled Labor [129.56 h] | 10,158.01 | 410 | B3.33 14 13.06 | M | P1-P.W |
|  | 3 | **Valve Chambers & Valves & Fire Hydrant** |  | 2026-09-27 | 2027-03-03 |  |  |  |  |  |  |  |  |  |
|  | 3 | **Excavation** |  | 2026-09-27 | 2026-11-15 |  |  |  |  |  |  |  |  |  |
| SDR-ST-CON-P1-1490 |  | Excavation for Valve Chambers Section 1 | 21d | 2026-09-27 | 2026-10-21 | SDR-ST-CON-P1-1480 SS+7d | 3.2d | 0d | SIC- Cost [1249.33]; Plumbing Helper [129.56 h]; Labor [129.56 h]; Plumber [129.56 h]; Excavator [15 h]; Excavator Operator [129.56 h]; Un-Skilled Labor [38.39 h]; Skilled Labor [38.39 h] | 1,249.33 | 125 | B3.33 14 19.01 | M3 | P1-P.W |
| SDR-ST-CON-P1-2150 |  | Excavation for Valve Chambers Section 2 | 21d | 2026-10-21 | 2026-11-15 | SDR-ST-CON-P1-1490, SDR-ST-PRO-MS-1010 | 3.2d | 0d | SIC- Cost [1249.33]; Plumbing Helper [129.56 h]; Labor [129.56 h]; Plumber [129.56 h]; Excavator [30.1 h]; Excavator Operator [172.75 h]; Un-Skilled Labor [38.39 h]; Skilled Labor [38.39 h] | 1,249.33 | 125 | B3.33 14 19.02 | M3 | P1-P.W |
|  | 1 | **bedding Works** |  | 2026-11-15 | 2026-12-09 |  |  |  |  |  |  |  |  |  |
| SDR-ST-CON-P1-2850 |  | Sand bedding for Valve Chambers | 21d | 2026-11-15 | 2026-12-09 | SDR-ST-CON-P1-2150 | 3.2d | 0d | SIC- Cost [624.67]; Plumbing Helper [129.56 h]; Labor [129.56 h]; Plumber [129.56 h]; Excavator [30 h]; Excavator Operator [129.56 h]; Un-Skilled Labor [38.39 h]; Skilled Labor [38.39 h] | 624.67 | 10 | B3.33 14 19.03 | M3 | P1-P.W |
|  | 4 | **Install Chambers & Valves & Fire Hydrant** |  | 2026-12-09 | 2027-01-03 |  |  |  |  |  |  |  |  |  |
| SDR-ST-CON-P1-3560 |  | Install Chambers & Valves | 21d | 2026-12-09 | 2027-01-03 | SDR-ST-CON-P1-2850 | 3.2d | 0d | SIC- Cost [5622]; Plumbing Helper [129.56 h]; Labor [129.56 h]; Plumber [129.56 h]; Excavator [30 h]; Excavator Operator [129.56 h]; Un-Skilled Labor [129.56 h]; Skilled Labor [129.56 h] | 5,622 | 2 | B3.33 14 19.04 | Number | P1-P.W |
|  | 2 | **Testing** |  | 2027-01-03 | 2027-01-27 |  |  |  |  |  |  |  |  |  |
| SDR-ST-CON-P1-4470 |  | Testing for Chambers & Valves | 21d | 2027-01-03 | 2027-01-27 | SDR-ST-CON-P1-3560, SDR-ST-CON-P1-4570, SDR-ST-CON-P1-4310 | 3.2d | 0d | SIC- Cost [1249.33]; Plumbing Helper [40.4 h]; Labor [40.4 h]; Plumber [40.4 h]; Excavator [15 h]; Excavator Operator [40.4 h]; Un-Skilled Labor [40.4 h]; Skilled Labor [40.4 h] | 1,249.33 | 2 | B3.33 14 19.05 | Number | P1-P.W |
|  | 6 | **Backfilling** |  | 2027-01-27 | 2027-03-03 |  |  |  |  |  |  |  |  |  |
| SDR-ST-CON-P1-5030 |  | Backfilling for Chambers & Valves | 21d | 2027-01-27 | 2027-03-03 | SDR-ST-CON-P1-4470 | 3.2d |  | SIC- Cost [2498.67]; Plumbing Helper [129.56 h]; Labor [129.56 h]; Plumber [129.56 h]; Excavator [16.45 h]; Excavator Operator [129.56 h]; Un-Skilled Labor [107.97 h]; Skilled Labor [129.56 h] | 2,498.67 | 10 | B3.33 14 19.06 | M3 | P1-P.W |
|  | 1 | **ROAD-01 From 470 to 1125 m (6)** |  | 2026-09-29 | 2027-03-21 |  |  |  |  |  |  |  |  |  |
|  | 7 | **Pipes Work** |  | 2026-09-29 | 2027-03-08 |  |  |  |  |  |  |  |  |  |
|  | 1 | **Excavation** |  | 2026-09-29 | 2026-11-17 |  |  |  |  |  |  |  |  |  |
| SDR-ST-CON-P1-1410 |  | Excavation for PW HDPE Pipes 315 mm Section 1 | 21d | 2026-09-29 | 2026-10-24 | SDR-ST-CON-P1-1190 FS+7d | 7.2d | 0d | SIC- Cost [5079]; Plumbing Helper [129.56 h]; Labor [129.56 h]; Plumber [129.56 h]; Excavator [15 h]; Excavator Operator [129.56 h]; Un-Skilled Labor [38.39 h]; Skilled Labor [38.39 h] | 5,079 | 125 | B3.33 14 13.01 | M3 | P1-P.W |
| SDR-ST-CON-P1-2050 |  | Excavation for PW HDPE Pipes 315 mm Section 2 | 21d | 2026-10-24 | 2026-11-17 | SDR-ST-CON-P1-1410 | 7.2d | 0d | SIC- Cost [5079]; Plumbing Helper [129.56 h]; Labor [129.56 h]; Plumber [129.56 h]; Excavator [30 h]; Excavator Operator [129.56 h]; Un-Skilled Labor [38.39 h]; Skilled Labor [38.39 h] | 5,079 | 125 | B3.33 14 13.02 | M3 | P1-P.W |

| ID | WBS | Activity | Duration | Start | Finish | Predecessors | Total float | Free float | Resources | Cost | BOQ Qty | BOQ Line item | UOM | Activities Codes Sudair Station |
| --- | --- | --- | --- | --- | --- | --- | --- | --- | --- | --- | --- | --- | --- | --- |
|  | 8 | **bedding Works** |  | 2026-11-17 | 2026-12-12 |  |  |  |  |  |  |  |  |  |
| SDR-ST-CON-P1-2690 |  | Sand bedding for PW HDPE Pipes 315 mm | 21d | 2026-11-17 | 2026-12-12 | SDR-ST-CON-P1-2050 | 7.2d | 0d | SIC- Cost [2539.5]; Plumbing Helper [129.56 h]; Labor [129.56 h]; Plumber [129.56 h]; Excavator [30 h]; Excavator Operator [129.56 h]; Un-Skilled Labor [38.39 h]; Skilled Labor [38.39 h] | 2,539.5 | 410 | B3.33 14 13.03 | M | P1-P.W |
|  | 2 | **Pipes Laying** |  | 2026-12-12 | 2027-01-05 |  |  |  |  |  |  |  |  |  |
| SDR-ST-CON-P1-3290 |  | Install PW 315 mm HDPE Pipe | 21d | 2026-12-12 | 2027-01-05 | SDR-ST-CON-P1-2690 | 7.2d | 0d | SIC- Cost [22855.5]; Plumbing Helper [38.39 h]; Labor [129.56 h]; Plumber [38.39 h]; Excavator [15 h]; Excavator Operator [129.56 h]; Un-Skilled Labor [38.39 h]; Skilled Labor [38.39 h] | 22,855.52 | 410 | B3.33 14 13.04 | M | P1-P.W |
|  | 5 | **Testing** |  | 2027-01-05 | 2027-01-30 |  |  |  |  |  |  |  |  |  |
| SDR-ST-CON-P1-4030 |  | Testing of PW HDPE Pipe 315 mm. | 21d | 2027-01-05 | 2027-01-30 | SDR-ST-CON-P1-3290, SDR-ST-CON-P1-4570 | 7.2d | 0d | SIC- Cost [5079]; Plumbing Helper [40.4 h]; Labor [40.4 h]; Plumber [40.4 h]; Excavator [30 h]; Excavator Operator [40.4 h]; Un-Skilled Labor [40.4 h]; Skilled Labor [40.4 h] | 5,079 | 410 | B3.33 14 13.05 | M | P1-P.W |
|  | 9 | **Backfilling** |  | 2027-01-30 | 2027-03-08 |  |  |  |  |  |  |  |  |  |
| SDR-ST-CON-P1-4700 |  | Backfilling of PW HDPE Pipe 315 mm. | 21d | 2027-01-30 | 2027-03-08 | SDR-ST-CON-P1-4030 | 7.2d | 4d | SIC- Cost [10158]; Plumbing Helper [129.56 h]; Labor [129.56 h]; Plumber [129.56 h]; Excavator [30 h]; Excavator Operator [129.56 h]; Un-Skilled Labor [129.56 h]; Skilled Labor [129.56 h] | 10,158.01 | 410 | B3.33 14 13.06 | M | P1-P.W |
|  | 3 | **Valve Chambers & Valves & Fire Hydrant** |  | 2026-10-07 | 2027-03-21 |  |  |  |  |  |  |  |  |  |
|  | 3 | **Excavation** |  | 2026-10-07 | 2026-11-25 |  |  |  |  |  |  |  |  |  |
| SDR-ST-CON-P1-1420 |  | Excavation for Valve Chambers Section 1 | 21d | 2026-10-07 | 2026-11-01 | SDR-ST-CON-P1-1410 SS+7d, SDR-ST-ENG-AP-1090 | 8.2d | 0d | SIC- Cost [1249.33]; Plumbing Helper [38.39 h]; Labor [129.56 h]; Plumber [38.39 h]; Excavator [15 h]; Excavator Operator [129.56 h]; Un-Skilled Labor [38.39 h]; Skilled Labor [38.39 h] | 1,249.33 | 125 | B3.33 14 19.01 | M3 | P1-P.W |
| SDR-ST-CON-P1-2100 |  | Excavation for Valve Chambers Section 2 | 21d | 2026-11-01 | 2026-11-25 | SDR-ST-CON-P1-1420 | 8.2d | 0d | SIC- Cost [1249.33]; Plumbing Helper [129.56 h]; Labor [129.56 h]; Plumber [129.56 h]; Excavator [22.38 h]; Excavator Operator [129.56 h]; Un-Skilled Labor [38.39 h]; Skilled Labor [38.39 h] | 1,249.33 | 125 | B3.33 14 19.02 | M3 | P1-P.W |
|  | 1 | **bedding Works** |  | 2026-11-25 | 2026-12-20 |  |  |  |  |  |  |  |  |  |
| SDR-ST-CON-P1-2820 |  | Sand bedding for Valve Chambers | 21d | 2026-11-25 | 2026-12-20 | SDR-ST-CON-P1-2100 | 8.2d | 0d | SIC- Cost [624.67]; Plumbing Helper [129.56 h]; Labor [129.56 h]; Plumber [129.56 h]; Excavator [30 h]; Excavator Operator [129.56 h]; Un-Skilled Labor [38.39 h]; Skilled Labor [38.39 h] | 624.67 | 10 | B3.33 14 19.03 | M3 | P1-P.W |
|  | 4 | **Install Chambers & Valves & Fire Hydrant** |  | 2026-12-20 | 2027-01-13 |  |  |  |  |  |  |  |  |  |
| SDR-ST-CON-P1-3660 |  | Install Chambers & Valves | 21d | 2026-12-20 | 2027-01-13 | SDR-ST-CON-P1-2820 | 8.2d | 0d | SIC- Cost [5622]; Plumbing Helper [129.56 h]; Labor [129.56 h]; Plumber [129.56 h]; Excavator [147.06 h]; Excavator Operator [129.56 h]; Un-Skilled Labor [129.56 h]; Skilled Labor [129.56 h] | 5,622 | 2 | B3.33 14 19.04 | Number | P1-P.W |
|  | 2 | **Testing** |  | 2027-01-13 | 2027-02-07 |  |  |  |  |  |  |  |  |  |
| SDR-ST-CON-P1-4550 |  | Testing for Chambers & Valves | 21d | 2027-01-13 | 2027-02-07 | SDR-ST-CON-P1-3660 | 8.2d | 0d | SIC- Cost [1249.33]; Plumbing Helper [107.97 h]; Labor [107.97 h]; Plumber [107.97 h]; Excavator [15 h]; Excavator Operator [107.97 h]; Un-Skilled Labor [107.97 h]; Skilled Labor [107.97 h] | 1,249.33 | 2 | B3.33 14 19.05 | Number | P1-P.W |
|  | 6 | **Backfilling** |  | 2027-02-07 | 2027-03-21 |  |  |  |  |  |  |  |  |  |
| SDR-ST-CON-P1-5100 |  | Backfilling for Chambers & Valves | 21d | 2027-02-07 | 2027-03-21 | SDR-ST-CON-P1-4550 | 8.2d | 4d | SIC- Cost [2498.67]; Plumbing Helper [129.56 h]; Labor [129.56 h]; Plumber [129.56 h]; Excavator [16.03 h]; Excavator Operator [129.56 h]; Un-Skilled Labor [129.56 h]; Skilled Labor [129.56 h] | 2,498.67 | 10 | B3.33 14 19.06 | M3 | P1-P.W |
|  | 3 | **ROAD-01 From 1125 to 1765 m (7)** |  | 2026-09-30 | 2027-03-22 |  |  |  |  |  |  |  |  |  |
|  | 7 | **Pipes Work** |  | 2026-09-30 | 2027-03-14 |  |  |  |  |  |  |  |  |  |
|  | 1 | **Excavation** |  | 2026-09-30 | 2026-11-18 |  |  |  |  |  |  |  |  |  |
| SDR-ST-CON-P1-1630 |  | Excavation for PW HDPE Pipes 315 mm Section 1 | 21d | 2026-09-30 | 2026-10-25 | SDR-ST-CON-P1-1210 FS+7d | 1d | 0d | SIC- Cost [5079]; Plumbing Helper [38.39 h]; Labor [129.56 h]; Plumber [38.39 h]; Excavator [15 h]; Excavator Operator [129.56 h]; Un-Skilled Labor [38.39 h]; Skilled Labor [38.39 h] | 5,079 | 125 | B3.33 14 13.01 | M3 | P1-P.W |
| SDR-ST-CON-P1-2130 |  | Excavation for PW HDPE Pipes 315 mm Section 2 | 21d | 2026-10-25 | 2026-11-18 | SDR-ST-CON-P1-1630, SDR-ST-PRO-MS-1010 | 6.2d | 0d | SIC- Cost [5079]; Plumbing Helper [38.39 h]; Labor [129.56 h]; Plumber [38.39 h]; Excavator [31.21 h]; Excavator Operator [129.56 h]; Un-Skilled Labor [38.39 h]; Skilled Labor [38.39 h] | 5,079 | 125 | B3.33 14 13.02 | M3 | P1-P.W |

| ID | WBS | Activity | Duration | Start | Finish | Predecessors | Total float | Free float | Resources | Cost | BOQ Qty | BOQ Line item | UOM | Activities Codes Sudair Station |
| --- | --- | --- | --- | --- | --- | --- | --- | --- | --- | --- | --- | --- | --- | --- |
|  | 8 | **bedding Works** |  | 2026-11-18 | 2026-12-13 |  |  |  |  |  |  |  |  |  |
| SDR-ST-CON-P1-2810 |  | Sand bedding for PW HDPE Pipes 315 mm | 21d | 2026-11-18 | 2026-12-13 | SDR-ST-CON-P1-2130 | 6.2d | 0d | SIC- Cost [2539.5]; Plumbing Helper [38.39 h]; Labor [129.56 h]; Plumber [38.39 h]; Excavator [30 h]; Excavator Operator [129.56 h]; Un-Skilled Labor [38.39 h]; Skilled Labor [38.39 h] | 2,539.5 | 410 | B3.33 14 13.03 | M | P1-P.W |
|  | 2 | **Pipes Laying** |  | 2026-12-13 | 2027-01-06 |  |  |  |  |  |  |  |  |  |
| SDR-ST-CON-P1-3490 |  | Install PW 315 mm HDPE Pipe | 21d | 2026-12-13 | 2027-01-06 | SDR-ST-CON-P1-2810 | 6.2d | 0d | SIC- Cost [22855.5]; Plumbing Helper [38.39 h]; Labor [38.39 h]; Plumber [38.39 h]; Excavator [15 h]; Excavator Operator [38.39 h]; Un-Skilled Labor [38.39 h]; Skilled Labor [38.39 h] | 22,855.52 | 410 | B3.33 14 13.04 | M | P1-P.W |
|  | 5 | **Testing** |  | 2027-01-06 | 2027-01-31 |  |  |  |  |  |  |  |  |  |
| SDR-ST-CON-P1-3950 |  | Testing of PW HDPE Pipe 315 mm. | 21d | 2027-01-06 | 2027-01-31 | SDR-ST-CON-P1-3490, SDR-ST-CON-P1-4370 | 6.2d | 0d | SIC- Cost [5079]; Plumbing Helper [86.38 h]; Labor [86.38 h]; Plumber [86.38 h]; Excavator [30 h]; Excavator Operator [86.38 h]; Un-Skilled Labor [86.38 h]; Skilled Labor [86.38 h] | 5,079 | 410 | B3.33 14 13.05 | M | P1-P.W |
|  | 9 | **Backfilling** |  | 2027-01-31 | 2027-03-14 |  |  |  |  |  |  |  |  |  |
| SDR-ST-CON-P1-4520 |  | Backfilling of PW HDPE Pipe 315 mm. | 21d | 2027-01-31 | 2027-03-14 | SDR-ST-CON-P1-3950 | 6.2d | 3d | SIC- Cost [10158]; Plumbing Helper [129.56 h]; Labor [129.56 h]; Plumber [129.56 h]; Excavator [17.57 h]; Excavator Operator [129.56 h]; Un-Skilled Labor [129.56 h]; Skilled Labor [129.56 h] | 10,158.01 | 410 | B3.33 14 13.06 | M | P1-P.W |
|  | 3 | **Valve Chambers & Valves & Fire Hydrant** |  | 2026-10-08 | 2027-03-22 |  |  |  |  |  |  |  |  |  |
|  | 3 | **Excavation** |  | 2026-10-08 | 2026-11-26 |  |  |  |  |  |  |  |  |  |
| SDR-ST-CON-P1-1640 |  | Excavation for Valve Chambers Section 1 | 21d | 2026-10-08 | 2026-11-02 | SDR-ST-CON-P1-1630 SS+7d, SDR-ST-ENG-AP-1090 | 1d | 0d | SIC- Cost [1249.33]; Plumbing Helper [38.39 h]; Labor [129.56 h]; Plumber [38.39 h]; Excavator [32.23 h]; Excavator Operator [129.56 h]; Un-Skilled Labor [38.39 h]; Skilled Labor [38.39 h] | 1,249.33 | 125 | B3.33 14 19.01 | M3 | P1-P.W |
| SDR-ST-CON-P1-2230 |  | Excavation for Valve Chambers Section 2 | 21d | 2026-11-02 | 2026-11-26 | SDR-ST-CON-P1-1640 | 1d | 0d | SIC- Cost [1249.33]; Plumbing Helper [129.56 h]; Labor [129.56 h]; Plumber [129.56 h]; Excavator [15 h]; Excavator Operator [129.56 h]; Un-Skilled Labor [38.39 h]; Skilled Labor [38.39 h] | 1,249.33 | 125 | B3.33 14 19.02 | M3 | P1-P.W |
|  | 1 | **bedding Works** |  | 2026-11-26 | 2026-12-21 |  |  |  |  |  |  |  |  |  |
| SDR-ST-CON-P1-2900 |  | Sand bedding for Valve Chambers | 21d | 2026-11-26 | 2026-12-21 | SDR-ST-CON-P1-2230 | 1d | 0d | SIC- Cost [624.67]; Plumbing Helper [38.39 h]; Labor [115.17 h]; Plumber [38.39 h]; Excavator [30 h]; Excavator Operator [115.17 h]; Un-Skilled Labor [38.39 h]; Skilled Labor [38.39 h] | 624.67 | 10 | B3.33 14 19.03 | M3 | P1-P.W |
|  | 4 | **Install Chambers & Valves & Fire Hydrant** |  | 2026-12-21 | 2027-01-14 |  |  |  |  |  |  |  |  |  |
| SDR-ST-CON-P1-3640 |  | Install Chambers & Valves | 21d | 2026-12-21 | 2027-01-14 | SDR-ST-CON-P1-2900 | 1d | 0d | SIC- Cost [5622]; Plumbing Helper [129.56 h]; Labor [129.56 h]; Plumber [129.56 h]; Excavator [30 h]; Excavator Operator [129.56 h]; Un-Skilled Labor [129.56 h]; Skilled Labor [129.56 h] | 5,622 | 2 | B3.33 14 19.04 | Number | P1-P.W |
|  | 2 | **Testing** |  | 2027-01-14 | 2027-02-09 |  |  |  |  |  |  |  |  |  |
| SDR-ST-CON-P1-4510 |  | Testing for Chambers & Valves | 21d | 2027-01-14 | 2027-02-09 | SDR-ST-CON-P1-3640, SDR-ST-CON-P1-4370 | 1d | 0d | SIC- Cost [1249.33]; Plumbing Helper [107.97 h]; Labor [107.97 h]; Plumber [107.97 h]; Excavator [15 h]; Excavator Operator [107.97 h]; Un-Skilled Labor [107.97 h]; Skilled Labor [107.97 h] | 1,249.33 | 2 | B3.33 14 19.05 | Number | P1-P.W |
|  | 6 | **Backfilling** |  | 2027-02-09 | 2027-03-22 |  |  |  |  |  |  |  |  |  |
| SDR-ST-CON-P1-5070 |  | Backfilling for Chambers & Valves | 21d | 2027-02-09 | 2027-03-22 | SDR-ST-CON-P1-4510, SDR-ST-CON-P1-5020, SDR-ST-CON-P1-4970, SDR-ST-CON-P1-5140 | 1d | 0d | SIC- Cost [2498.67]; Plumbing Helper [44.44 h]; Compactor [600 h]; Labor [18.36 h]; Plumber [44.44 h]; Excavator [16.63 h]; Excavator Operator [64.75 h]; Un-Skilled Labor [71.98 h]; Skilled Labor [57.53 h] | 2,498.67 | 10 | B3.33 14 19.06 | M3 | P1-P.W |
|  | 3 | **ROAD - 02** |  | 2026-10-01 | 2027-03-16 |  |  |  |  |  |  |  |  |  |
|  | 3 | **ROAD-01 From 0 to 400 m (9)** |  | 2026-10-03 | 2027-03-16 |  |  |  |  |  |  |  |  |  |
|  | 7 | **Pipes Work** |  | 2026-10-03 | 2027-03-16 |  |  |  |  |  |  |  |  |  |
|  | 1 | **Excavation** |  | 2026-10-03 | 2026-11-21 |  |  |  |  |  |  |  |  |  |
| SDR-ST-CON-P1-1930 |  | Excavation for PW HDPE Pipes 315 mm Section 1 | 21d | 2026-10-03 | 2026-10-27 | SDR-ST-CON-P1-1300 FS+7d | 4.2d | 0d | SIC- Cost [5079]; Plumbing Helper [38.39 h]; Labor [129.56 h]; Plumber [38.39 h]; Excavator [20 h]; Excavator Operator [129.56 h]; Un-Skilled Labor [38.39 h]; Skilled Labor [38.39 h] | 5,079 | 125 | B3.33 14 13.01 | M3 | P1-P.W |
| SDR-ST-CON-P1-2480 |  | Excavation for PW HDPE Pipes 315 mm Section 2 | 21d | 2026-10-27 | 2026-11-21 | SDR-ST-CON-P1-1930 | 4.2d | 0d | SIC- Cost [5079]; Plumbing Helper [38.39 h]; Labor [129.56 h]; Plumber [38.39 h]; Excavator [15 h]; Excavator Operator [129.56 h]; Un-Skilled Labor [38.39 h]; Skilled Labor [38.39 h] | 5,079 | 125 | B3.33 14 13.02 | M3 | P1-P.W |

| ID | WBS | Activity | Duration | Start | Finish | Predecessors | Total float | Free float | Resources | Cost | BOQ Qty | BOQ Line item | UOM | Activities Codes Sudair Station |
| --- | --- | --- | --- | --- | --- | --- | --- | --- | --- | --- | --- | --- | --- | --- |
|  | 8 | **bedding Works** |  | 2026-11-21 | 2026-12-15 |  |  |  |  |  |  |  |  |  |
| SDR-ST-CON-P1-3130 |  | Sand bedding for PW HDPE Pipes 315 mm | 21d | 2026-11-21 | 2026-12-15 | SDR-ST-CON-P1-2480 | 4.2d | 0d | SIC- Cost [2539.5]; Plumbing Helper [38.39 h]; Labor [129.56 h]; Plumber [38.39 h]; Excavator [20.62 h]; Excavator Operator [129.56 h]; Un-Skilled Labor [38.39 h]; Skilled Labor [38.39 h] | 2,539.5 | 410 | B3.33 14 13.03 | M | P1-P.W |
|  | 2 | **Pipes Laying** |  | 2026-12-15 | 2027-01-09 |  |  |  |  |  |  |  |  |  |
| SDR-ST-CON-P1-3650 |  | Install PW 315 mm HDPE Pipe | 21d | 2026-12-15 | 2027-01-09 | SDR-ST-CON-P1-3130 | 4.2d | 0d | SIC- Cost [22855.5]; Plumbing Helper [38.39 h]; Labor [38.39 h]; Plumber [38.39 h]; Excavator [15 h]; Excavator Operator [38.39 h]; Un-Skilled Labor [38.39 h]; Skilled Labor [38.39 h] | 22,855.52 | 410 | B3.33 14 13.04 | M | P1-P.W |
|  | 5 | **Testing** |  | 2027-01-09 | 2027-02-02 |  |  |  |  |  |  |  |  |  |
| SDR-ST-CON-P1-4340 |  | Testing of PW HDPE Pipe 315 mm. | 21d | 2027-01-09 | 2027-02-02 | SDR-ST-CON-P1-3650 | 4.2d | 0d | SIC- Cost [5079]; Plumbing Helper [107.97 h]; Labor [107.97 h]; Plumber [107.97 h]; Excavator [19.39 h]; Excavator Operator [107.97 h]; Un-Skilled Labor [107.97 h]; Skilled Labor [107.97 h] | 5,079 | 410 | B3.33 14 13.05 | M | P1-P.W |
|  | 9 | **Backfilling** |  | 2027-02-02 | 2027-03-16 |  |  |  |  |  |  |  |  |  |
| SDR-ST-CON-P1-4910 |  | Backfilling of PW HDPE Pipe 315 mm. | 21d | 2027-02-02 | 2027-03-16 | SDR-ST-CON-P1-4340, SDR-ST-CON-P1-5020, SDR-ST-CON-P1-4740, SDR-ST-CON-P1-4880 | 4.2d | 1d | SIC- Cost [10158]; Plumbing Helper [107.97 h]; Labor [107.97 h]; Plumber [107.97 h]; Excavator [101.25 h]; Excavator Operator [107.97 h]; Un-Skilled Labor [107.97 h]; Skilled Labor [107.97 h] | 10,158.01 | 410 | B3.33 14 13.06 | M | P1-P.W |
|  | 3 | **Valve Chambers & Valves & Fire Hydrant** |  | 2026-10-03 | 2027-02-18 |  |  |  |  |  |  |  |  |  |
|  | 3 | **Excavation** |  | 2026-10-03 | 2026-11-18 |  |  |  |  |  |  |  |  |  |
| SDR-ST-CON-P1-1940 |  | Excavation for Valve Chambers Section 1 | 20d | 2026-10-03 | 2026-10-26 | SDR-ST-CON-P1-1930 SS, SDR-ST-ENG-AP-1090 | 9.3d | 0d | SIC- Cost [1249.33]; Plumbing Helper [129.56 h]; Labor [129.56 h]; Plumber [129.56 h]; Excavator [20 h]; Excavator Operator [129.56 h]; Un-Skilled Labor [38.39 h]; Skilled Labor [38.39 h] | 1,249.33 | 125 | B3.33 14 19.01 | M3 | P1-P.W |
| SDR-ST-CON-P1-2630 |  | Excavation for Valve Chambers Section 2 | 20d | 2026-10-26 | 2026-11-18 | SDR-ST-CON-P1-1940 | 9.3d | 0d | SIC- Cost [1249.33]; Plumbing Helper [129.56 h]; Labor [129.56 h]; Plumber [129.56 h]; Excavator [30 h]; Excavator Operator [129.56 h]; Un-Skilled Labor [38.39 h]; Skilled Labor [38.39 h] | 1,249.33 | 125 | B3.33 14 19.02 | M3 | P1-P.W |
|  | 1 | **bedding Works** |  | 2026-11-18 | 2026-12-12 |  |  |  |  |  |  |  |  |  |
| SDR-ST-CON-P1-3400 |  | Sand bedding for Valve Chambers | 20d | 2026-11-18 | 2026-12-12 | SDR-ST-CON-P1-2630 | 9.3d | 0d | SIC- Cost [624.67]; Plumbing Helper [38.39 h]; Labor [129.56 h]; Plumber [38.39 h]; Excavator [15 h]; Excavator Operator [129.56 h]; Un-Skilled Labor [38.39 h]; Skilled Labor [38.39 h] | 624.67 | 10 | B3.33 14 19.03 | M3 | P1-P.W |
|  | 4 | **Install Chambers & Valves & Fire Hydrant** |  | 2026-12-12 | 2027-01-04 |  |  |  |  |  |  |  |  |  |
| SDR-ST-CON-P1-4330 |  | Install Chambers & Valves | 20d | 2026-12-12 | 2027-01-04 | SDR-ST-CON-P1-3400 | 9.3d | 0d | SIC- Cost [5622]; Plumbing Helper [129.56 h]; Labor [129.56 h]; Plumber [129.56 h]; Excavator [19.84 h]; Excavator Operator [129.56 h]; Un-Skilled Labor [129.56 h]; Skilled Labor [129.56 h] | 5,622 | 2 | B3.33 14 19.04 | Number | P1-P.W |
|  | 2 | **Testing** |  | 2027-01-04 | 2027-01-20 |  |  |  |  |  |  |  |  |  |
| SDR-ST-CON-P1-5060 |  | Testing for Chambers & Valves | 14d | 2027-01-04 | 2027-01-20 | SDR-ST-CON-P1-4330, SDR-ST-CON-P1-4370 | 9.3d | 0d | SIC- Cost [1249.33]; Plumbing Helper [100.77 h]; Labor [100.77 h]; Plumber [100.77 h]; Excavator [106.49 h]; Excavator Operator [100.77 h]; Un-Skilled Labor [100.77 h]; Skilled Labor [100.77 h] | 1,249.33 | 2 | B3.33 14 19.05 | Number | P1-P.W |
|  | 6 | **Backfilling** |  | 2027-01-20 | 2027-02-18 |  |  |  |  |  |  |  |  |  |
| SDR-ST-CON-P1-5730 |  | Backfilling for Chambers & Valves | 21d | 2027-01-20 | 2027-02-18 | SDR-ST-CON-P1-5060, SDR-ST-CON-P1-4020, SDR-ST-CON-P1-4610 | 9.3d | 2d | SIC- Cost [2498.67]; Plumbing Helper [129.56 h]; Labor [129.56 h]; Plumber [129.56 h]; Excavator [180 h]; Excavator Operator [129.56 h]; Un-Skilled Labor [129.56 h]; Skilled Labor [129.56 h] | 2,498.67 | 10 | B3.33 14 19.06 | M3 | P1-P.W |
|  | 2 | **ROAD-01 From 400 to 900 m (10)** |  | 2026-10-03 | 2027-02-18 |  |  |  |  |  |  |  |  |  |
|  | 7 | **Pipes Work** |  | 2026-10-03 | 2027-01-18 |  |  |  |  |  |  |  |  |  |
|  | 1 | **Excavation** |  | 2026-10-03 | 2026-11-11 |  |  |  |  |  |  |  |  |  |
| SDR-ST-CON-P1-1850 |  | Excavation for PW HDPE Pipes 315 mm Section 1 | 17d | 2026-10-03 | 2026-10-22 | SDR-ST-CON-P1-1250 FS+8d | 10.1d | 0d | SIC- Cost [5079]; Plumbing Helper [129.56 h]; Labor [129.56 h]; Plumber [129.56 h]; Excavator [20 h]; Excavator Operator [129.56 h]; Un-Skilled Labor [38.39 h]; Skilled Labor [38.39 h] | 5,079 | 125 | B3.33 14 13.01 | M3 | P1-P.W |
| SDR-ST-CON-P1-2460 |  | Excavation for PW HDPE Pipes 315 mm Section 2 | 17d | 2026-10-22 | 2026-11-11 | SDR-ST-CON-P1-1850 | 13.1d | 0d | SIC- Cost [5079]; Plumbing Helper [129.56 h]; Labor [129.56 h]; Plumber [129.56 h]; Excavator [15 h]; Excavator Operator [129.56 h]; Un-Skilled Labor [129.56 h]; Skilled Labor [129.56 h] | 5,079 | 125 | B3.33 14 13.02 | M3 | P1-P.W |

| ID | WBS | Activity | Duration | Start | Finish | Predecessors | Total float | Free float | Resources | Cost | BOQ Qty | BOQ Line item | UOM | Activities Codes Sudair Station |
| --- | --- | --- | --- | --- | --- | --- | --- | --- | --- | --- | --- | --- | --- | --- |
|  | 8 | **bedding Works** |  | 2026-11-11 | 2026-11-25 |  |  |  |  |  |  |  |  |  |
| SDR-ST-CON-P1-3060 |  | Sand bedding for PW HDPE Pipes 315 mm | 12d | 2026-11-11 | 2026-11-25 | SDR-ST-CON-P1-2460 | 13.1d | 0d | SIC- Cost [2539.5]; Plumbing Helper [129.56 h]; Labor [129.56 h]; Plumber [129.56 h]; Excavator [30 h]; Excavator Operator [129.56 h]; Un-Skilled Labor [38.39 h]; Skilled Labor [38.39 h] | 2,539.5 | 410 | B3.33 14 13.03 | M | P1-P.W |
|  | 2 | **Pipes Laying** |  | 2026-11-25 | 2026-12-08 |  |  |  |  |  |  |  |  |  |
| SDR-ST-CON-P1-3570 |  | Install PW 315 mm HDPE Pipe | 11d | 2026-11-25 | 2026-12-08 | SDR-ST-CON-P1-3060 | 13.1d | 0d | SIC- Cost [22855.5]; Plumbing Helper [38.39 h]; Labor [38.39 h]; Plumber [38.39 h]; Excavator [15 h]; Excavator Operator [38.39 h]; Un-Skilled Labor [38.39 h]; Skilled Labor [38.39 h] | 22,855.52 | 410 | B3.33 14 13.04 | M | P1-P.W |
|  | 5 | **Testing** |  | 2026-12-08 | 2026-12-24 |  |  |  |  |  |  |  |  |  |
| SDR-ST-CON-P1-4060 |  | Testing of PW HDPE Pipe 315 mm. | 14d | 2026-12-08 | 2026-12-24 | SDR-ST-CON-P1-3570 | 13.1d | 0d | SIC- Cost [5079]; Plumbing Helper [100.77 h]; Labor [100.77 h]; Plumber [100.77 h]; Excavator [30 h]; Excavator Operator [100.77 h]; Un-Skilled Labor [100.77 h]; Skilled Labor [100.77 h] | 5,079 | 410 | B3.33 14 13.05 | M | P1-P.W |
|  | 9 | **Backfilling** |  | 2026-12-24 | 2027-01-18 |  |  |  |  |  |  |  |  |  |
| SDR-ST-CON-P1-4640 |  | Backfilling of PW HDPE Pipe 315 mm. | 21d | 2026-12-24 | 2027-01-18 | SDR-ST-CON-P1-4060 | 13.1d | 5.8d | SIC- Cost [10158]; Plumbing Helper [129.56 h]; Labor [129.56 h]; Plumber [129.56 h]; Excavator [162.43 h]; Excavator Operator [129.56 h]; Un-Skilled Labor [129.56 h]; Skilled Labor [129.56 h] | 10,158.01 | 410 | B3.33 14 13.06 | M | P1-P.W |
|  | 3 | **Valve Chambers & Valves & Fire Hydrant** |  | 2026-10-03 | 2027-02-18 |  |  |  |  |  |  |  |  |  |
|  | 3 | **Excavation** |  | 2026-10-03 | 2026-11-18 |  |  |  |  |  |  |  |  |  |
| SDR-ST-CON-P1-1860 |  | Excavation for Valve Chambers Section 1 | 20d | 2026-10-03 | 2026-10-26 | SDR-ST-CON-P1-1850 SS | 10.1d | 0d | SIC- Cost [1249.33]; Plumbing Helper [129.56 h]; Labor [129.56 h]; Plumber [129.56 h]; Excavator [20 h]; Excavator Operator [129.56 h]; Un-Skilled Labor [38.39 h]; Skilled Labor [38.39 h] | 1,249.33 | 125 | B3.33 14 19.01 | M3 | P1-P.W |
| SDR-ST-CON-P1-2550 |  | Excavation for Valve Chambers Section 2 | 20d | 2026-10-26 | 2026-11-18 | SDR-ST-CON-P1-1860, SDR-ST-PRO-MS-1010 | 10.1d | 0d | SIC- Cost [1249.33]; Plumbing Helper [129.56 h]; Labor [129.56 h]; Plumber [129.56 h]; Excavator [30 h]; Excavator Operator [129.56 h]; Un-Skilled Labor [38.39 h]; Skilled Labor [38.39 h] | 1,249.33 | 125 | B3.33 14 19.02 | M3 | P1-P.W |
|  | 1 | **bedding Works** |  | 2026-11-18 | 2026-12-12 |  |  |  |  |  |  |  |  |  |
| SDR-ST-CON-P1-3310 |  | Sand bedding for Valve Chambers | 20d | 2026-11-18 | 2026-12-12 | SDR-ST-CON-P1-2550 | 10.1d | 0d | SIC- Cost [624.67]; Plumbing Helper [38.39 h]; Labor [38.39 h]; Plumber [38.39 h]; Excavator [15 h]; Excavator Operator [38.39 h]; Un-Skilled Labor [38.39 h]; Skilled Labor [38.39 h] | 624.67 | 10 | B3.33 14 19.03 | M3 | P1-P.W |
|  | 4 | **Install Chambers & Valves & Fire Hydrant** |  | 2026-12-12 | 2027-01-04 |  |  |  |  |  |  |  |  |  |
| SDR-ST-CON-P1-4210 |  | Install Chambers & Valves | 20d | 2026-12-12 | 2027-01-04 | SDR-ST-CON-P1-3310 | 10.1d | 0d | SIC- Cost [5622]; Plumbing Helper [129.56 h]; Labor [129.56 h]; Plumber [129.56 h]; Excavator [30 h]; Excavator Operator [129.56 h]; Un-Skilled Labor [129.56 h]; Skilled Labor [129.56 h] | 5,622 | 2 | B3.33 14 19.04 | Number | P1-P.W |
|  | 2 | **Testing** |  | 2027-01-04 | 2027-01-20 |  |  |  |  |  |  |  |  |  |
| SDR-ST-CON-P1-4990 |  | Testing for Chambers & Valves | 14d | 2027-01-04 | 2027-01-20 | SDR-ST-CON-P1-4210, SDR-ST-CON-P1-4370 | 10.1d | 0.5d | SIC- Cost [1249.33]; Plumbing Helper [100.77 h]; Labor [100.77 h]; Plumber [100.77 h]; Excavator [30 h]; Excavator Operator [100.77 h]; Un-Skilled Labor [100.77 h]; Skilled Labor [100.77 h] | 1,249.33 | 2 | B3.33 14 19.05 | Number | P1-P.W |
|  | 6 | **Backfilling** |  | 2027-01-20 | 2027-02-18 |  |  |  |  |  |  |  |  |  |
| SDR-ST-CON-P1-5710 |  | Backfilling for Chambers & Valves | 21d | 2027-01-20 | 2027-02-18 | SDR-ST-CON-P1-4990, SDR-ST-CON-P1-4880 | 9.6d | 2.3d | SIC- Cost [2498.67]; Plumbing Helper [129.56 h]; Labor [129.56 h]; Plumber [129.56 h]; Excavator [15 h]; Excavator Operator [129.56 h]; Un-Skilled Labor [2879.19 h]; Skilled Labor [2879.19 h] | 2,498.67 | 10 | B3.33 14 19.06 | M3 | P1-P.W |
|  | 1 | **ROAD-01 From 900 to 1239 m (11)** |  | 2026-10-01 | 2027-02-15 |  |  |  |  |  |  |  |  |  |
|  | 7 | **Pipes Work** |  | 2026-10-01 | 2027-01-10 |  |  |  |  |  |  |  |  |  |
|  | 1 | **Excavation** |  | 2026-10-01 | 2026-11-08 |  |  |  |  |  |  |  |  |  |
| SDR-ST-CON-P1-2010 |  | Excavation for PW HDPE Pipes 315 mm Section 1 | 16d | 2026-10-01 | 2026-10-20 | SDR-ST-CON-P1-1350 | 1d | 0d | SIC- Cost [5079]; Plumbing Helper [38.39 h]; Labor [129.56 h]; Plumber [38.39 h]; Excavator [20 h]; Excavator Operator [129.56 h]; Un-Skilled Labor [129.56 h]; Skilled Labor [129.56 h] | 5,079 | 125 | B3.33 14 13.01 | M3 | P1-P.W |
| SDR-ST-CON-P1-2610 |  | Excavation for PW HDPE Pipes 315 mm Section 2 | 16d | 2026-10-20 | 2026-11-08 | SDR-ST-CON-P1-2010, SDR-ST-PRO-MS-1010 | 1d | 0d | SIC- Cost [5079]; Plumbing Helper [129.56 h]; Labor [129.56 h]; Plumber [129.56 h]; Excavator [30 h]; Excavator Operator [129.56 h]; Un-Skilled Labor [38.39 h]; Skilled Labor [38.39 h] | 5,079 | 125 | B3.33 14 13.02 | M3 | P1-P.W |

| ID | WBS | Activity | Duration | Start | Finish | Predecessors | Total float | Free float | Resources | Cost | BOQ Qty | BOQ Line item | UOM | Activities Codes Sudair Station |
| --- | --- | --- | --- | --- | --- | --- | --- | --- | --- | --- | --- | --- | --- | --- |
|  | 8 | **bedding Works** |  | 2026-11-08 | 2026-11-19 |  |  |  |  |  |  |  |  |  |
| SDR-ST-CON-P1-3220 |  | Sand bedding for PW HDPE Pipes 315 mm | 10d | 2026-11-08 | 2026-11-19 | SDR-ST-CON-P1-2610 | 1d | 0d | SIC- Cost [2539.5]; Plumbing Helper [38.39 h]; Labor [38.39 h]; Plumber [38.39 h]; Excavator [15 h]; Excavator Operator [38.39 h]; Un-Skilled Labor [38.39 h]; Skilled Labor [38.39 h] | 2,539.5 | 410 | B3.33 14 13.03 | M | P1-P.W |
|  | 2 | **Pipes Laying** |  | 2026-11-19 | 2026-12-01 |  |  |  |  |  |  |  |  |  |
| SDR-ST-CON-P1-3610 |  | Install PW 315 mm HDPE Pipe | 10d | 2026-11-19 | 2026-12-01 | SDR-ST-CON-P1-3220 | 1d | 0d | SIC- Cost [22855.5]; Plumbing Helper [38.39 h]; Labor [38.39 h]; Plumber [38.39 h]; Excavator [15 h]; Excavator Operator [38.39 h]; Un-Skilled Labor [38.39 h]; Skilled Labor [38.39 h] | 22,855.52 | 410 | B3.33 14 13.04 | M | P1-P.W |
|  | 5 | **Testing** |  | 2026-12-01 | 2026-12-17 |  |  |  |  |  |  |  |  |  |
| SDR-ST-CON-P1-4090 |  | Testing of PW HDPE Pipe 315 mm. | 14d | 2026-12-01 | 2026-12-17 | SDR-ST-CON-P1-3610 | 1d | 0d | SIC- Cost [5079]; Plumbing Helper [86.38 h]; Labor [86.38 h]; Plumber [86.38 h]; Excavator [53.35 h]; Excavator Operator [86.38 h]; Un-Skilled Labor [86.38 h]; Skilled Labor [86.38 h] | 5,079 | 410 | B3.33 14 13.05 | M | P1-P.W |
|  | 9 | **Backfilling** |  | 2026-12-17 | 2027-01-10 |  |  |  |  |  |  |  |  |  |
| SDR-ST-CON-P1-4660 |  | Backfilling of PW HDPE Pipe 315 mm. | 20d | 2026-12-17 | 2027-01-10 | SDR-ST-CON-P1-4090 | 1d |  | SIC- Cost [10158]; Plumbing Helper [129.56 h]; Labor [129.56 h]; Plumber [129.56 h]; Excavator [30 h]; Excavator Operator [129.56 h]; Un-Skilled Labor [129.56 h]; Skilled Labor [129.56 h] | 10,158.03 | 410 | B3.33 14 13.06 | M | P1-P.W |
|  | 3 | **Valve Chambers & Valves & Fire Hydrant** |  | 2026-10-01 | 2027-02-15 |  |  |  |  |  |  |  |  |  |
|  | 3 | **Excavation** |  | 2026-10-01 | 2026-11-17 |  |  |  |  |  |  |  |  |  |
| SDR-ST-CON-P1-2020 |  | Excavation for Valve Chambers Section 1 | 20d | 2026-10-01 | 2026-10-25 | SDR-ST-CON-P1-2010 SS, SDR-ST-ENG-AP-1090 | 10.7d | 0d | SIC- Cost [1249.33]; Plumbing Helper [129.56 h]; Labor [129.56 h]; Plumber [129.56 h]; Excavator [20 h]; Excavator Operator [129.56 h]; Un-Skilled Labor [129.56 h]; Skilled Labor [129.56 h] | 1,249.33 | 125 | B3.33 14 19.01 | M3 | P1-P.W |
| SDR-ST-CON-P1-2740 |  | Excavation for Valve Chambers Section 2 | 20d | 2026-10-25 | 2026-11-17 | SDR-ST-CON-P1-2020 | 10.7d | 0d | SIC- Cost [1249.33]; Plumbing Helper [129.56 h]; Labor [129.56 h]; Plumber [129.56 h]; Excavator [110.42 h]; Excavator Operator [129.56 h]; Un-Skilled Labor [129.56 h]; Skilled Labor [129.56 h] | 1,249.33 | 125 | B3.33 14 19.02 | M3 | P1-P.W |
|  | 1 | **bedding Works** |  | 2026-11-17 | 2026-12-10 |  |  |  |  |  |  |  |  |  |
| SDR-ST-CON-P1-3550 |  | Sand bedding for Valve Chambers | 20d | 2026-11-17 | 2026-12-10 | SDR-ST-CON-P1-2740 | 10.7d | 0d | SIC- Cost [624.67]; Plumbing Helper [129.56 h]; Labor [129.56 h]; Plumber [129.56 h]; Excavator [41.1 h]; Excavator Operator [129.56 h]; Un-Skilled Labor [129.56 h]; Skilled Labor [129.56 h] | 624.67 | 10 | B3.33 14 19.03 | M3 | P1-P.W |
|  | 4 | **Install Chambers & Valves & Fire Hydrant** |  | 2026-12-10 | 2027-01-03 |  |  |  |  |  |  |  |  |  |
| SDR-ST-CON-P1-4460 |  | Install Chambers & Valves | 20d | 2026-12-10 | 2027-01-03 | SDR-ST-CON-P1-3550 | 10.7d | 0d | SIC- Cost [5622]; Plumbing Helper [129.56 h]; Labor [129.56 h]; Plumber [129.56 h]; Excavator [69.35 h]; Excavator Operator [129.56 h]; Un-Skilled Labor [129.56 h]; Skilled Labor [129.56 h] | 5,622 | 2 | B3.33 14 19.04 | Number | P1-P.W |
|  | 2 | **Testing** |  | 2027-01-03 | 2027-01-19 |  |  |  |  |  |  |  |  |  |
| SDR-ST-CON-P1-5190 |  | Testing for Chambers & Valves | 14d | 2027-01-03 | 2027-01-19 | SDR-ST-CON-P1-4460, SDR-ST-CON-P1-4370 | 10.7d | 0d | SIC- Cost [1249.33]; Plumbing Helper [100.77 h]; Labor [100.77 h]; Plumber [100.77 h]; Excavator [38.13 h]; Excavator Operator [100.77 h]; Un-Skilled Labor [100.77 h]; Skilled Labor [100.77 h] | 1,249.33 | 2 | B3.33 14 19.05 | Number | P1-P.W |
|  | 6 | **Backfilling** |  | 2027-01-19 | 2027-02-15 |  |  |  |  |  |  |  |  |  |
| SDR-ST-CON-P1-5750 |  | Backfilling for Chambers & Valves | 21d | 2027-01-19 | 2027-02-15 | SDR-ST-CON-P1-5190, SDR-ST-CON-P1-4610 | 10.7d | 6.8d | SIC- Cost [2498.67]; Plumbing Helper [129.56 h]; Labor [129.56 h]; Plumber [129.56 h]; Excavator [18.12 h]; Excavator Operator [129.56 h]; Un-Skilled Labor [129.56 h]; Skilled Labor [129.56 h] | 2,498.67 | 10 | B3.33 14 19.06 | M3 | P1-P.W |
|  | 7 | **SEWARAGE NETWORK** |  | 2026-09-17 | 2027-03-14 |  |  |  |  |  |  |  |  |  |
|  | 6 | **ROAD - 01** |  | 2026-09-17 | 2027-02-24 |  |  |  |  |  |  |  |  |  |
|  | 2 | **ROAD-01 From 0 to 470 m (3) 110 mm HDPE** |  | 2026-09-17 | 2027-02-16 |  |  |  |  |  |  |  |  |  |
|  | 7 | **Pipes Work** |  | 2026-09-17 | 2027-02-08 |  |  |  |  |  |  |  |  |  |
|  | 1 | **Excavation** |  | 2026-09-17 | 2026-11-09 |  |  |  |  |  |  |  |  |  |
| SDR-ST-CON-P1-1540 |  | Excavation for GRP Pipe 200mm Diameter Section 1 | 21d | 2026-09-17 | 2026-10-13 | SDR-ST-CON-P1-1200 FS+15d | 4.2d | 0d | SIC- Cost [10614.3]; Surveyor [38.39 h]; Labor [38.39 h]; Plumber [38.39 h]; Excavator [15 h]; Excavator Operator [129.56 h] | 10,614.33 | 30 | B4.33 31 00.01 | M3 | P1-S.N |
| SDR-ST-CON-P1-2380 |  | Excavation for GRP Pipe 200mm Diameter Section 2 | 20d | 2026-10-17 | 2026-11-09 | SDR-ST-CON-P1-1540 FS+3d | 4.2d | 0d | SIC- Cost [10614.3]; Surveyor [38.39 h]; Labor [38.39 h]; Plumber [38.39 h]; Excavator [15 h]; Excavator Operator [129.56 h] | 10,614.33 | 30 | B4.33 31 00.02 | M3 | P1-S.N |

| ID | WBS | Activity | Duration | Start | Finish | Predecessors | Total float | Free float | Resources | Cost | BOQ Qty | BOQ Line item | UOM | Activities Codes Sudair Station |
| --- | --- | --- | --- | --- | --- | --- | --- | --- | --- | --- | --- | --- | --- | --- |
|  | 5 | **bedding Works** |  | 2026-11-09 | 2026-11-26 |  |  |  |  |  |  |  |  |  |
| SDR-ST-CON-P1-3050 |  | Sand bedding for GRP Pipe 200mm Diameter | 15d | 2026-11-09 | 2026-11-26 | SDR-ST-CON-P1-2380 | 4.2d | 0d | SIC- Cost [5307.16]; Surveyor [38.39 h]; Labor [38.39 h]; Plumber [38.39 h]; Excavator [33.52 h]; Excavator Operator [129.56 h] | 5,307.16 | 30 | B4.33 31 00.03 | M3 | P1-S.N |
|  | 2 | **Pipes Laying** |  | 2026-11-26 | 2026-12-21 |  |  |  |  |  |  |  |  |  |
| SDR-ST-CON-P1-3710 |  | 200 mm GRP Pipe Laying | 21d | 2026-11-26 | 2026-12-21 | SDR-ST-CON-P1-3050 | 4.2d | 0d | SIC- Cost [47764.5]; Surveyor [129.56 h]; Compactor [50 h]; Labor [129.56 h]; Plumber [129.56 h]; Excavator [15 h]; Excavator Operator [129.56 h] | 47,764.48 | 60 | B4.33 31 00.04 | M | P1-S.N |
|  | 3 | **Testing** |  | 2026-12-21 | 2027-01-14 |  |  |  |  |  |  |  |  |  |
| SDR-ST-CON-P1-4590 |  | Testing of 200 mm GRP Pipe. | 21d | 2026-12-21 | 2027-01-14 | SDR-ST-CON-P1-3710 | 4.2d | 0d | SIC- Cost [10614.3]; Surveyor [129.56 h]; Labor [129.56 h]; Plumber [129.56 h]; Excavator [30 h]; Excavator Operator [129.56 h] | 10,614.33 | 60 | B4.33 31 00.05 | M2 | P1-S.N |
|  | 6 | **Backfilling** |  | 2027-01-14 | 2027-02-08 |  |  |  |  |  |  |  |  |  |
| SDR-ST-CON-P1-5570 |  | Backfilling of 200 mm GRP Pipe. | 21d | 2027-01-14 | 2027-02-08 | SDR-ST-CON-P1-4590 | 4.2d | 0.1d | SIC- Cost [21228.7]; Surveyor [129.56 h]; Labor [129.56 h]; Plumber [129.56 h]; Excavator [15 h]; Excavator Operator [129.56 h] | 21,228.66 | 60 | B4.33 31 00.06 | M3 | P1-S.N |
|  | 4 | **Manholes** |  | 2026-09-17 | 2027-02-16 |  |  |  |  |  |  |  |  |  |
|  | 1 | **Excavation** |  | 2026-09-17 | 2026-11-07 |  |  |  |  |  |  |  |  |  |
| SDR-ST-CON-P1-1550 |  | Excavation for manhole. Section 1 | 21d | 2026-09-17 | 2026-10-13 | SDR-ST-CON-P1-1540 SS | 10.6d | 0d | SIC- Cost [1359.27]; Surveyor [38.39 h]; Labor [129.56 h]; Plumber [129.56 h]; Excavator [15 h]; Excavator Operator [129.56 h] | 1,359.27 | 10 | B4.33 14 19.01 | M3 | P1-S.N |
| SDR-ST-CON-P1-2210 |  | Excavation for manhole. Section 2 | 21d | 2026-10-13 | 2026-11-07 | SDR-ST-CON-P1-1550 | 10.6d | 0d | SIC- Cost [1359.27]; Surveyor [38.39 h]; Labor [129.56 h]; Plumber [129.56 h]; Excavator [15.19 h]; Excavator Operator [129.56 h] | 1,359.27 | 10 | B4.33 14 19.02 | M3 | P1-S.N |
|  | 2 | **bedding Works** |  | 2026-11-07 | 2026-12-01 |  |  |  |  |  |  |  |  |  |
| SDR-ST-CON-P1-2960 |  | Sand bedding for manhole. | 21d | 2026-11-07 | 2026-12-01 | SDR-ST-CON-P1-2210 | 10.6d | 0d | SIC- Cost [1812.36]; Surveyor [38.39 h]; Labor [129.56 h]; Plumber [129.56 h]; Excavator [30 h]; Excavator Operator [129.56 h] | 1,812.36 | 9 | B4.33 14 19.03 | M3 | P1-S.N |
|  | 3 | **Install Manholes** |  | 2026-12-01 | 2026-12-26 |  |  |  |  |  |  |  |  |  |
| SDR-ST-CON-P1-3840 |  | Manhole Installation | 21d | 2026-12-01 | 2026-12-26 | SDR-ST-CON-P1-2210, SDR-ST-CON-P1-2960 | 10.6d | 0d | SIC- Cost [8155.63]; Surveyor [129.56 h]; Compactor [92.9 h]; Labor [40.4 h]; Plumber [40.4 h]; Excavator [40 h]; Excavator Operator [40.4 h] | 8,155.63 | 2 | B4.33 14 19.014 | Number | P1-S.N |
|  | 4 | **Testing** |  | 2026-12-26 | 2027-01-19 |  |  |  |  |  |  |  |  |  |
| SDR-ST-CON-P1-4790 |  | Testing | 21d | 2026-12-26 | 2027-01-19 | SDR-ST-CON-P1-3840, SDR-ST-CON-P1-3840 FF | 10.6d | 0d | SIC- Cost [1812.36]; Surveyor [71.98 h]; Labor [129.56 h]; Plumber [129.56 h] | 1,812.36 | 2 | B4.33 14 19.05 | Number | P1-S.N |
|  | 5 | **Backfilling** |  | 2027-01-19 | 2027-02-16 |  |  |  |  |  |  |  |  |  |
| SDR-ST-CON-P1-5720 |  | Backfilling | 21d | 2027-01-19 | 2027-02-16 | SDR-ST-CON-P1-4790 | 10.6d | 3.3d | SIC- Cost [3624.72]; Surveyor [129.56 h]; Labor [129.56 h]; Plumber [129.56 h]; Excavator [22.69 h]; Excavator Operator [129.56 h] | 3,624.72 | 9.5 | B4.33 14 19.06 | M3 | P1-S.N |
|  | 1 | **ROAD-01 From 470 to 1125 m (6) 110 mm HDPE** |  | 2026-09-20 | 2027-02-21 |  |  |  |  |  |  |  |  |  |
|  | 7 | **Pipes Work** |  | 2026-09-20 | 2027-01-30 |  |  |  |  |  |  |  |  |  |
|  | 1 | **Excavation** |  | 2026-09-20 | 2026-11-03 |  |  |  |  |  |  |  |  |  |
| SDR-ST-CON-P1-1430 |  | Excavation for GRP Pipe 200mm Diameter Section 1 | 17d | 2026-09-20 | 2026-10-11 | SDR-ST-CON-P1-1190 | 1.3d | 0d | SIC- Cost [10614.3]; Surveyor [129.56 h]; Labor [129.56 h]; Plumber [129.56 h]; Excavator [15 h]; Excavator Operator [129.56 h] | 10,614.33 | 30 | B4.33 31 00.01 | M3 | P1-S.N |
| SDR-ST-CON-P1-2110 |  | Excavation for GRP Pipe 200mm Diameter Section 2 | 17d | 2026-10-14 | 2026-11-03 | SDR-ST-CON-P1-1430 FS+3d | 9d | 0d | SIC- Cost [10614.3]; Surveyor [129.56 h]; Labor [129.56 h]; Plumber [129.56 h]; Excavator [22.15 h]; Excavator Operator [129.56 h] | 10,614.33 | 30 | B4.33 31 00.02 | M3 | P1-S.N |

| ID | WBS | Activity | Duration | Start | Finish | Predecessors | Total float | Free float | Resources | Cost | BOQ Qty | BOQ Line item | UOM | Activities Codes Sudair Station |
| --- | --- | --- | --- | --- | --- | --- | --- | --- | --- | --- | --- | --- | --- | --- |
|  | 5 | **bedding Works** |  | 2026-11-03 | 2026-11-21 |  |  |  |  |  |  |  |  |  |
| SDR-ST-CON-P1-2720 |  | Sand bedding for GRP Pipe 200mm Diameter | 15d | 2026-11-03 | 2026-11-21 | SDR-ST-CON-P1-2110 | 9d | 0d | SIC- Cost [5307.16]; Surveyor [129.56 h]; Labor [129.56 h]; Plumber [129.56 h]; Excavator [30 h]; Excavator Operator [129.56 h] | 5,307.16 | 30 | B4.33 31 00.03 | M3 | P1-S.N |
|  | 2 | **Pipes Laying** |  | 2026-11-21 | 2026-12-12 |  |  |  |  |  |  |  |  |  |
| SDR-ST-CON-P1-3300 |  | 200 mm GRP Pipe Laying | 18d | 2026-11-21 | 2026-12-12 | SDR-ST-CON-P1-2110, SDR-ST-CON-P1-2720 | 9d | 0d | SIC- Cost [47764.5]; Surveyor [38.39 h]; Compactor [40 h]; Labor [38.39 h]; Plumber [38.39 h]; Excavator [15 h]; Excavator Operator [38.39 h] | 47,764.48 | 60 | B4.33 31 00.04 | M | P1-S.N |
|  | 3 | **Testing** |  | 2026-12-12 | 2027-01-05 |  |  |  |  |  |  |  |  |  |
| SDR-ST-CON-P1-4120 |  | Testing of 200 mm GRP Pipe. | 21d | 2026-12-12 | 2027-01-05 | SDR-ST-CON-P1-3300 | 9d | 0d | SIC- Cost [10614.3]; Surveyor [129.56 h]; Labor [129.56 h]; Plumber [129.56 h]; Excavator [30 h]; Excavator Operator [129.56 h] | 10,614.33 | 60 | B4.33 31 00.05 | M2 | P1-S.N |
|  | 6 | **Backfilling** |  | 2027-01-05 | 2027-01-30 |  |  |  |  |  |  |  |  |  |
| SDR-ST-CON-P1-4970 |  | Backfilling of 200 mm GRP Pipe. | 21d | 2027-01-05 | 2027-01-30 | SDR-ST-CON-P1-4120 | 9d | 8d | SIC- Cost [21228.7]; Surveyor [40.4 h]; Labor [40.4 h]; Plumber [40.4 h]; Excavator [30 h]; Excavator Operator [40.4 h] | 21,228.66 | 60 | B4.33 31 00.06 | M3 | P1-S.N |
|  | 4 | **Manholes** |  | 2026-09-20 | 2027-02-21 |  |  |  |  |  |  |  |  |  |
|  | 1 | **Excavation** |  | 2026-09-20 | 2026-11-09 |  |  |  |  |  |  |  |  |  |
| SDR-ST-CON-P1-1440 |  | Excavation for manhole. Section 1 | 21d | 2026-09-20 | 2026-10-15 | SDR-ST-CON-P1-1430 SS, SDR-ST-ENG-AP-1090 | 1.3d | 0d | SIC- Cost [1359.27]; Surveyor [38.39 h]; Labor [38.39 h]; Plumber [38.39 h]; Excavator [15 h]; Excavator Operator [38.39 h] | 1,359.27 | 10 | B4.33 14 19.01 | M3 | P1-S.N |
| SDR-ST-CON-P1-2120 |  | Excavation for manhole. Section 2 | 21d | 2026-10-15 | 2026-11-09 | SDR-ST-CON-P1-1440 | 1.3d | 0d | SIC- Cost [1359.27]; Surveyor [38.39 h]; Labor [38.39 h]; Plumber [38.39 h]; Excavator [40 h]; Excavator Operator [38.39 h] | 1,359.27 | 10 | B4.33 14 19.02 | M3 | P1-S.N |
|  | 2 | **bedding Works** |  | 2026-11-09 | 2026-12-03 |  |  |  |  |  |  |  |  |  |
| SDR-ST-CON-P1-2870 |  | Sand bedding for manhole. | 21d | 2026-11-09 | 2026-12-03 | SDR-ST-CON-P1-2120 | 1.3d | 0d | SIC- Cost [1812.36]; Surveyor [71.98 h]; Labor [38.39 h]; Plumber [38.39 h]; Excavator [35.82 h]; Excavator Operator [38.39 h] | 1,812.36 | 9 | B4.33 14 19.03 | M3 | P1-S.N |
|  | 3 | **Install Manholes** |  | 2026-12-03 | 2026-12-28 |  |  |  |  |  |  |  |  |  |
| SDR-ST-CON-P1-3790 |  | Manhole Installation | 21d | 2026-12-03 | 2026-12-28 | SDR-ST-CON-P1-2120, SDR-ST-CON-P1-2870 | 1.3d | 0d | SIC- Cost [8155.63]; Surveyor [71.98 h]; Compactor [100 h]; Labor [40.4 h]; Plumber [40.4 h]; Excavator [30 h]; Excavator Operator [40.4 h] | 8,155.63 | 2 | B4.33 14 19.014 | Number | P1-S.N |
|  | 4 | **Testing** |  | 2026-12-28 | 2027-01-21 |  |  |  |  |  |  |  |  |  |
| SDR-ST-CON-P1-4710 |  | Testing | 21d | 2026-12-28 | 2027-01-21 | SDR-ST-CON-P1-3790, SDR-ST-CON-P1-3790 FF | 1.3d | 0d | SIC- Cost [1812.36]; Surveyor [129.56 h]; Labor [129.56 h]; Plumber [129.56 h] | 1,812.36 | 2 | B4.33 14 19.05 | Number | P1-S.N |
|  | 5 | **Backfilling** |  | 2027-01-21 | 2027-02-21 |  |  |  |  |  |  |  |  |  |
| SDR-ST-CON-P1-5700 |  | Backfilling | 21d | 2027-01-21 | 2027-02-21 | SDR-ST-CON-P1-4710, SDR-ST-CON-P1-4880 | 1.3d |  | SIC- Cost [3624.72]; Surveyor [129.56 h]; Labor [129.56 h]; Plumber [129.56 h]; Excavator [15 h]; Excavator Operator [129.56 h] | 3,624.72 | 9.5 | B4.33 14 19.06 | M3 | P1-S.N |
|  | 3 | **ROAD-01 From 1125 to 1765 m (7) 110 mm HDPE** |  | 2026-09-21 | 2027-02-24 |  |  |  |  |  |  |  |  |  |
|  | 7 | **Pipes Work** |  | 2026-09-21 | 2027-01-28 |  |  |  |  |  |  |  |  |  |
|  | 1 | **Excavation** |  | 2026-09-21 | 2026-11-04 |  |  |  |  |  |  |  |  |  |
| SDR-ST-CON-P1-1650 |  | Excavation for GRP Pipe 200mm Diameter Section 1 | 17d | 2026-09-21 | 2026-10-12 | SDR-ST-CON-P1-1210 | 0d |  | SIC- Cost [10614.3]; Surveyor [38.39 h]; Labor [38.39 h]; Plumber [38.39 h]; Excavator [15 h]; Excavator Operator [129.56 h] | 10,614.33 | 30 | B4.33 31 00.01 | M3 | P1-S.N |
| SDR-ST-CON-P1-2240 |  | Excavation for GRP Pipe 200mm Diameter Section 2 | 17d | 2026-10-15 | 2026-11-04 | SDR-ST-CON-P1-1650 FS+3d | 4.2d | 0d | SIC- Cost [10614.3]; Surveyor [38.39 h]; Labor [129.56 h]; Plumber [129.56 h]; Excavator [15 h]; Excavator Operator [129.56 h] | 10,614.33 | 30 | B4.33 31 00.02 | M3 | P1-S.N |

| ID | WBS | Activity | Duration | Start | Finish | Predecessors | Total float | Free float | Resources | Cost | BOQ Qty | BOQ Line item | UOM | Activities Codes Sudair Station |
| --- | --- | --- | --- | --- | --- | --- | --- | --- | --- | --- | --- | --- | --- | --- |
|  | 5 | **bedding Works** |  | 2026-11-04 | 2026-11-21 |  |  |  |  |  |  |  |  |  |
| SDR-ST-CON-P1-2830 |  | Sand bedding for GRP Pipe 200mm Diameter | 14d | 2026-11-04 | 2026-11-21 | SDR-ST-CON-P1-2240 | 4.2d | 0d | SIC- Cost [5307.16]; Surveyor [38.39 h]; Labor [129.56 h]; Plumber [129.56 h]; Excavator [30 h]; Excavator Operator [129.56 h] | 5,307.16 | 30 | B4.33 31 00.03 | M3 | P1-S.N |
|  | 2 | **Pipes Laying** |  | 2026-11-21 | 2026-12-10 |  |  |  |  |  |  |  |  |  |
| SDR-ST-CON-P1-3420 |  | 200 mm GRP Pipe Laying | 17d | 2026-11-21 | 2026-12-10 | SDR-ST-CON-P1-2830 | 4.2d | 0d | SIC- Cost [47764.5]; Surveyor [38.39 h]; Compactor [40 h]; Labor [38.39 h]; Plumber [38.39 h]; Excavator; Excavator Operator [38.39 h] | 47,764.48 | 60 | B4.33 31 00.04 | M | P1-S.N |
|  | 3 | **Testing** |  | 2026-12-10 | 2027-01-04 |  |  |  |  |  |  |  |  |  |
| SDR-ST-CON-P1-4180 |  | Testing of 200 mm GRP Pipe. | 21d | 2026-12-10 | 2027-01-04 | SDR-ST-CON-P1-3420 | 4.2d | 0d | SIC- Cost [10614.3]; Surveyor [129.56 h]; Labor [129.56 h]; Plumber [129.56 h]; Excavator [30 h]; Excavator Operator [129.56 h] | 10,614.33 | 60 | B4.33 31 00.05 | M2 | P1-S.N |
|  | 6 | **Backfilling** |  | 2027-01-04 | 2027-01-28 |  |  |  |  |  |  |  |  |  |
| SDR-ST-CON-P1-5020 |  | Backfilling of 200 mm GRP Pipe. | 21d | 2027-01-04 | 2027-01-28 | SDR-ST-CON-P1-4180 | 4.2d | 4d | SIC- Cost [21228.7]; Surveyor [40.4 h]; Labor [40.4 h]; Plumber [40.4 h]; Excavator [30 h]; Excavator Operator [40.4 h] | 21,228.66 | 60 | B4.33 31 00.06 | M3 | P1-S.N |
|  | 4 | **Manholes** |  | 2026-09-21 | 2027-02-24 |  |  |  |  |  |  |  |  |  |
|  | 1 | **Excavation** |  | 2026-09-21 | 2026-11-10 |  |  |  |  |  |  |  |  |  |
| SDR-ST-CON-P1-1660 |  | Excavation for manhole. Section 1 | 21d | 2026-09-21 | 2026-10-17 | SDR-ST-CON-P1-1650 SS, SDR-ST-ENG-AP-1090 | 0d |  | SIC- Cost [1359.27]; Surveyor [38.39 h]; Labor [38.39 h]; Plumber [38.39 h]; Excavator [23.48 h]; Excavator Operator [129.56 h] | 1,359.27 | 10 | B4.33 14 19.01 | M3 | P1-S.N |
| SDR-ST-CON-P1-2310 |  | Excavation for manhole. Section 2 | 21d | 2026-10-17 | 2026-11-10 | SDR-ST-CON-P1-1660 | 0d |  | SIC- Cost [1359.27]; Surveyor [38.39 h]; Labor [38.39 h]; Plumber [38.39 h]; Excavator [15 h]; Excavator Operator [129.56 h] | 1,359.27 | 10 | B4.33 14 19.02 | M3 | P1-S.N |
|  | 2 | **bedding Works** |  | 2026-11-10 | 2026-12-05 |  |  |  |  |  |  |  |  |  |
| SDR-ST-CON-P1-3030 |  | Sand bedding for manhole. | 21d | 2026-11-10 | 2026-12-05 | SDR-ST-CON-P1-2310 | 0d |  | SIC- Cost [1812.36]; Surveyor [38.39 h]; Labor [38.39 h]; Plumber [38.39 h]; Excavator [30 h]; Excavator Operator [129.56 h] | 1,812.36 | 9 | B4.33 14 19.03 | M3 | P1-S.N |
|  | 3 | **Install Manholes** |  | 2026-12-05 | 2026-12-29 |  |  |  |  |  |  |  |  |  |
| SDR-ST-CON-P1-3910 |  | Manhole Installation | 21d | 2026-12-05 | 2026-12-29 | SDR-ST-CON-P1-2310, SDR-ST-CON-P1-3030 | 0d |  | SIC- Cost [8155.63]; Surveyor [129.56 h]; Compactor [200 h]; Labor [202.02 h]; Plumber [202.02 h]; Excavator [200 h]; Excavator Operator [202.02 h] | 8,155.63 | 2 | B4.33 14 19.014 | Number | P1-S.N |
|  | 4 | **Testing** |  | 2026-12-29 | 2027-01-23 |  |  |  |  |  |  |  |  |  |
| SDR-ST-CON-P1-4830 |  | Testing | 21d | 2026-12-29 | 2027-01-23 | SDR-ST-CON-P1-3910 | 0d |  | SIC- Cost [1812.36]; Surveyor [40.4 h]; Labor [40.4 h]; Plumber [40.4 h] | 1,812.36 | 2 | B4.33 14 19.05 | Number | P1-S.N |
|  | 5 | **Backfilling** |  | 2027-01-23 | 2027-02-24 |  |  |  |  |  |  |  |  |  |
| SDR-ST-CON-P1-5740 |  | Backfilling | 21.3d | 2027-01-23 | 2027-02-24 | SDR-ST-CON-P1-4830 | 0d |  | SIC- Cost [3624.72]; Surveyor [129.56 h]; Labor [129.56 h]; Plumber [129.56 h]; Excavator [50.39 h]; Excavator Operator [129.56 h] | 3,624.72 | 9.5 | B4.33 14 19.06 | M3 | P1-S.N |
|  | 1 | **ROAD - 02** |  | 2026-09-22 | 2027-03-14 |  |  |  |  |  |  |  |  |  |
|  | 1 | **ROAD-01 From 400 to 900 m (10) 110 mm HDPE** |  | 2026-09-22 | 2027-02-24 |  |  |  |  |  |  |  |  |  |
|  | 7 | **Pipes Work** |  | 2026-09-22 | 2027-01-31 |  |  |  |  |  |  |  |  |  |
|  | 1 | **Excavation** |  | 2026-09-22 | 2026-11-05 |  |  |  |  |  |  |  |  |  |
| SDR-ST-CON-P1-1810 |  | Excavation for GRP Pipe 200mm Diameter Section 1 | 17d | 2026-09-22 | 2026-10-13 | SDR-ST-CON-P1-1250 | 0.1d | 0d | SIC- Cost [10614.3]; Surveyor [38.39 h]; Labor [38.39 h]; Plumber [38.39 h]; Excavator [28.09 h]; Excavator Operator [129.56 h] | 10,614.33 | 30 | B4.33 31 00.01 | M3 | P1-S.N |
| SDR-ST-CON-P1-2530 |  | Excavation for GRP Pipe 200mm Diameter Section 2 | 17d | 2026-10-17 | 2026-11-05 | SDR-ST-CON-P1-1810 FS+3d | 3d | 0d | SIC- Cost [10614.3]; Surveyor [38.39 h]; Labor [129.56 h]; Plumber [129.56 h]; Excavator [20.79 h]; Excavator Operator [129.56 h] | 10,614.33 | 30 | B4.33 31 00.02 | M3 | P1-S.N |

| ID | WBS | Activity | Duration | Start | Finish | Predecessors | Total float | Free float | Resources | Cost | BOQ Qty | BOQ Line item | UOM | Activities Codes Sudair Station |
| --- | --- | --- | --- | --- | --- | --- | --- | --- | --- | --- | --- | --- | --- | --- |
|  | 5 | **bedding Works** |  | 2026-11-05 | 2026-11-22 |  |  |  |  |  |  |  |  |  |
| SDR-ST-CON-P1-3210 |  | Sand bedding for GRP Pipe 200mm Diameter | 14d | 2026-11-05 | 2026-11-22 | SDR-ST-CON-P1-2530 | 3d | 0d | SIC- Cost [5307.16]; Surveyor [38.39 h]; Labor [38.39 h]; Plumber [38.39 h]; Excavator [40 h]; Excavator Operator [38.39 h] | 5,307.16 | 30 | B4.33 31 00.03 | M3 | P1-S.N |
|  | 2 | **Pipes Laying** |  | 2026-11-22 | 2026-12-13 |  |  |  |  |  |  |  |  |  |
| SDR-ST-CON-P1-3800 |  | 200 mm GRP Pipe Laying | 18d | 2026-11-22 | 2026-12-13 | SDR-ST-CON-P1-3210 | 3d | 0d | SIC- Cost [47764.5]; Surveyor [38.39 h]; Compactor [336.57 h]; Labor [38.39 h]; Plumber [38.39 h]; Excavator [15 h]; Excavator Operator [38.39 h] | 47,764.48 | 60 | B4.33 31 00.04 | M | P1-S.N |
|  | 3 | **Testing** |  | 2026-12-13 | 2027-01-06 |  |  |  |  |  |  |  |  |  |
| SDR-ST-CON-P1-4580 |  | Testing of 200 mm GRP Pipe. | 21d | 2026-12-13 | 2027-01-06 | SDR-ST-CON-P1-3800 | 3d | 0d | SIC- Cost [10614.3]; Surveyor [129.56 h]; Labor [129.56 h]; Plumber [129.56 h]; Excavator [30.43 h]; Excavator Operator [129.56 h] | 10,614.33 | 60 | B4.33 31 00.05 | M2 | P1-S.N |
|  | 6 | **Backfilling** |  | 2027-01-06 | 2027-01-31 |  |  |  |  |  |  |  |  |  |
| SDR-ST-CON-P1-5500 |  | Backfilling of 200 mm GRP Pipe. | 21d | 2027-01-06 | 2027-01-31 | SDR-ST-CON-P1-4580 | 3d |  | SIC- Cost [21228.7]; Surveyor [40.4 h]; Labor [40.4 h]; Plumber [40.4 h]; Excavator [15 h]; Excavator Operator [40.4 h] | 21,228.66 | 60 | B4.33 31 00.06 | M3 | P1-S.N |
|  | 4 | **Manholes** |  | 2026-09-22 | 2027-02-24 |  |  |  |  |  |  |  |  |  |
|  | 1 | **Excavation** |  | 2026-09-22 | 2026-11-11 |  |  |  |  |  |  |  |  |  |
| SDR-ST-CON-P1-1820 |  | Excavation for manhole. Section 1 | 21d | 2026-09-22 | 2026-10-18 | SDR-ST-CON-P1-1810 SS, SDR-ST-ENG-AP-1090 | 0.1d | 0d | SIC- Cost [1359.27]; Surveyor [38.39 h]; Labor [38.39 h]; Plumber [38.39 h]; Excavator [40 h]; Excavator Operator [38.39 h] | 1,359.27 | 10 | B4.33 14 19.01 | M3 | P1-S.N |
| SDR-ST-CON-P1-2580 |  | Excavation for manhole. Section 2 | 21d | 2026-10-18 | 2026-11-11 | SDR-ST-CON-P1-1820 | 0.1d | 0d | SIC- Cost [1359.27]; Surveyor [38.39 h]; Labor [38.39 h]; Plumber [38.39 h]; Excavator [26.8 h]; Excavator Operator [38.39 h] | 1,359.27 | 10 | B4.33 14 19.02 | M3 | P1-S.N |
|  | 2 | **bedding Works** |  | 2026-11-11 | 2026-12-06 |  |  |  |  |  |  |  |  |  |
| SDR-ST-CON-P1-3410 |  | Sand bedding for manhole. | 21d | 2026-11-11 | 2026-12-06 | SDR-ST-CON-P1-2580 | 0.1d | 0d | SIC- Cost [1812.36]; Surveyor [38.39 h]; Labor [38.39 h]; Plumber [38.39 h]; Excavator [16.13 h]; Excavator Operator [38.39 h] | 1,812.36 | 9 | B4.33 14 19.03 | M3 | P1-S.N |
|  | 3 | **Install Manholes** |  | 2026-12-06 | 2026-12-30 |  |  |  |  |  |  |  |  |  |
| SDR-ST-CON-P1-4390 |  | Manhole Installation | 21d | 2026-12-06 | 2026-12-30 | SDR-ST-CON-P1-2580, SDR-ST-CON-P1-3410 | 0.1d | 0d | SIC- Cost [8155.63]; Surveyor [129.56 h]; Compactor [200 h]; Labor [202.02 h]; Plumber [202.02 h]; Excavator [200 h]; Excavator Operator [202.02 h] | 8,155.63 | 2 | B4.33 14 19.014 | Number | P1-S.N |
|  | 4 | **Testing** |  | 2026-12-30 | 2027-01-24 |  |  |  |  |  |  |  |  |  |
| SDR-ST-CON-P1-5120 |  | Testing | 21d | 2026-12-30 | 2027-01-24 | SDR-ST-CON-P1-4390, SDR-ST-CON-P1-4390 FF | 0.1d | 0d | SIC- Cost [1812.36]; Surveyor [28.79 h]; Labor [40.4 h]; Plumber [40.4 h] | 1,812.36 | 2 | B4.33 14 19.05 | Number | P1-S.N |
|  | 5 | **Backfilling** |  | 2027-01-24 | 2027-02-24 |  |  |  |  |  |  |  |  |  |
| SDR-ST-CON-P1-5770 |  | Backfilling | 21d | 2027-01-24 | 2027-02-24 | SDR-ST-CON-P1-5120, SDR-ST-CON-P1-5140 | 0.1d |  | SIC- Cost [3624.72]; Surveyor [71.98 h]; Labor [129.56 h]; Plumber [129.56 h]; Excavator [118.98 h]; Excavator Operator [129.56 h] | 3,624.72 | 9.5 | B4.33 14 19.06 | M3 | P1-S.N |
|  | 3 | **ROAD-01 From 900 to 1239 m (11) 110 mm HDPE** |  | 2026-10-01 | 2027-03-14 |  |  |  |  |  |  |  |  |  |
|  | 7 | **Pipes Work** |  | 2026-10-01 | 2027-02-04 |  |  |  |  |  |  |  |  |  |
|  | 1 | **Excavation** |  | 2026-10-01 | 2026-11-11 |  |  |  |  |  |  |  |  |  |
| SDR-ST-CON-P1-2030 |  | Excavation for GRP Pipe 200mm Diameter Section 1 | 16d | 2026-10-01 | 2026-10-20 | SDR-ST-CON-P1-1350 | 3d | 0d | SIC- Cost [10614.3]; Surveyor [38.39 h]; Labor [38.39 h]; Plumber [38.39 h]; Excavator [20 h]; Excavator Operator [129.56 h] | 10,614.33 | 30 | B4.33 31 00.01 | M3 | P1-S.N |
| SDR-ST-CON-P1-2700 |  | Excavation for GRP Pipe 200mm Diameter Section 2 | 16d | 2026-10-24 | 2026-11-11 | SDR-ST-CON-P1-2030 FS+3d | 14d | 0d | SIC- Cost [10614.3]; Surveyor [38.39 h]; Labor [38.39 h]; Plumber [38.39 h]; Excavator [30 h]; Excavator Operator [129.56 h] | 10,614.33 | 30 | B4.33 31 00.02 | M3 | P1-S.N |

| ID | WBS | Activity | Duration | Start | Finish | Predecessors | Total float | Free float | Resources | Cost | BOQ Qty | BOQ Line item | UOM | Activities Codes Sudair Station |
| --- | --- | --- | --- | --- | --- | --- | --- | --- | --- | --- | --- | --- | --- | --- |
|  | 5 | **bedding Works** |  | 2026-11-11 | 2026-11-23 |  |  |  |  |  |  |  |  |  |
| SDR-ST-CON-P1-3330 |  | Sand bedding for GRP Pipe 200mm Diameter | 10d | 2026-11-11 | 2026-11-23 | SDR-ST-CON-P1-2700 | 14d | 0d | SIC- Cost [5307.16]; Surveyor [38.39 h]; Labor [38.39 h]; Plumber [38.39 h]; Excavator [15 h]; Excavator Operator [38.39 h] | 5,307.16 | 30 | B4.33 31 00.03 | M3 | P1-S.N |
|  | 2 | **Pipes Laying** |  | 2026-11-23 | 2026-12-17 |  |  |  |  |  |  |  |  |  |
| SDR-ST-CON-P1-3750 |  | 200 mm GRP Pipe Laying | 21d | 2026-11-23 | 2026-12-17 | SDR-ST-CON-P1-2700, SDR-ST-CON-P1-3330 | 14d | 0d | SIC- Cost [47764.5]; Surveyor [35.99 h]; Compactor [50 h]; Labor [129.56 h]; Plumber [129.56 h]; Excavator [15 h]; Excavator Operator [129.56 h] | 47,764.48 | 60 | B4.33 31 00.04 | M | P1-S.N |
|  | 3 | **Testing** |  | 2026-12-17 | 2027-01-11 |  |  |  |  |  |  |  |  |  |
| SDR-ST-CON-P1-4670 |  | Testing of 200 mm GRP Pipe. | 21d | 2026-12-17 | 2027-01-11 | SDR-ST-CON-P1-3750 | 14d | 0d | SIC- Cost [10614.3]; Surveyor [21.59 h]; Labor [129.56 h]; Plumber [129.56 h] | 10,614.33 | 60 | B4.33 31 00.05 | M2 | P1-S.N |
|  | 6 | **Backfilling** |  | 2027-01-11 | 2027-02-04 |  |  |  |  |  |  |  |  |  |
| SDR-ST-CON-P1-5670 |  | Backfilling of 200 mm GRP Pipe. | 21d | 2027-01-11 | 2027-02-04 | SDR-ST-CON-P1-4670 | 14d | 0.9d | SIC- Cost [21228.7]; Surveyor [21.59 h]; Labor [129.56 h]; Plumber [129.56 h]; Excavator [15 h]; Excavator Operator [129.56 h] | 21,228.66 | 60 | B4.33 31 00.06 | M3 | P1-S.N |
|  | 4 | **Manholes** |  | 2026-10-01 | 2027-03-14 |  |  |  |  |  |  |  |  |  |
|  | 1 | **Excavation** |  | 2026-10-01 | 2026-11-19 |  |  |  |  |  |  |  |  |  |
| SDR-ST-CON-P1-2040 |  | Excavation for manhole. Section 1 | 21d | 2026-10-01 | 2026-10-26 | SDR-ST-CON-P1-2030 SS, SDR-ST-ENG-AP-1090 | 3d | 0d | SIC- Cost [1359.27]; Surveyor [38.39 h]; Labor [38.39 h]; Plumber [38.39 h]; Excavator [20 h]; Excavator Operator [129.56 h] | 1,359.27 | 10 | B4.33 14 19.01 | M3 | P1-S.N |
| SDR-ST-CON-P1-2760 |  | Excavation for manhole. Section 2 | 21d | 2026-10-26 | 2026-11-19 | SDR-ST-CON-P1-2040 | 3d | 0d | SIC- Cost [1359.27]; Surveyor [38.39 h]; Labor [38.39 h]; Plumber [38.39 h]; Excavator [18.83 h]; Excavator Operator [129.56 h] | 1,359.27 | 10 | B4.33 14 19.02 | M3 | P1-S.N |
|  | 2 | **bedding Works** |  | 2026-11-19 | 2026-12-14 |  |  |  |  |  |  |  |  |  |
| SDR-ST-CON-P1-3620 |  | Sand bedding for manhole. | 21d | 2026-11-19 | 2026-12-14 | SDR-ST-CON-P1-2760 | 3d | 0d | SIC- Cost [1812.36]; Surveyor [35.99 h]; Labor [129.56 h]; Plumber [129.56 h]; Excavator [30 h]; Excavator Operator [129.56 h] | 1,812.36 | 9 | B4.33 14 19.03 | M3 | P1-S.N |
|  | 3 | **Install Manholes** |  | 2026-12-14 | 2027-01-07 |  |  |  |  |  |  |  |  |  |
| SDR-ST-CON-P1-4560 |  | Manhole Installation | 21d | 2026-12-14 | 2027-01-07 | SDR-ST-CON-P1-2760, SDR-ST-CON-P1-3620 | 3d | 0d | SIC- Cost [8155.63]; Surveyor [35.99 h]; Compactor [65.68 h]; Labor [129.56 h]; Plumber [129.56 h]; Excavator [22.71 h]; Excavator Operator [129.56 h] | 8,155.63 | 2 | B4.33 14 19.014 | Number | P1-S.N |
|  | 4 | **Testing** |  | 2027-01-07 | 2027-02-01 |  |  |  |  |  |  |  |  |  |
| SDR-ST-CON-P1-5440 |  | Testing | 21d | 2027-01-07 | 2027-02-01 | SDR-ST-CON-P1-4560, SDR-ST-CON-P1-4560 FF | 3d | 0d | SIC- Cost [1812.36]; Surveyor [35.99 h]; Labor [40.4 h]; Plumber [40.4 h] | 1,812.36 | 2 | B4.33 14 19.05 | Number | P1-S.N |
|  | 5 | **Backfilling** |  | 2027-02-01 | 2027-03-14 |  |  |  |  |  |  |  |  |  |
| SDR-ST-CON-P1-5800 |  | Backfilling | 21d | 2027-02-01 | 2027-03-14 | SDR-ST-CON-P1-5440, SDR-ST-CON-P1-4240 | 3d | 0d | SIC- Cost [3624.72]; Surveyor [28.79 h]; Labor [129.56 h]; Plumber [129.56 h]; Excavator [30 h]; Excavator Operator [129.56 h] | 3,624.72 | 9.5 | B4.33 14 19.06 | M3 | P1-S.N |
|  | 11 | **STORM WATER** |  | 2026-08-31 | 2027-01-19 |  |  |  |  |  |  |  |  |  |
|  | 2 | **ROAD N...** |  | 2026-08-31 | 2027-01-19 |  |  |  |  |  |  |  |  |  |
|  | 8 | **Pipes Works** |  | 2026-08-31 | 2027-01-19 |  |  |  |  |  |  |  |  |  |
|  | 1 | **Excavation** |  | 2026-08-31 | 2026-09-26 |  |  |  |  |  |  |  |  |  |
| SDR-ST-CON-P1-1460 |  | Excavation for GRP Pipes Section 1 | 21d | 2026-08-31 | 2026-09-26 | SDR-ST-CON-P1-1200 | 3.5d | 0d | SIC- Cost [58808.1]; Labor [38.39 h]; Excavator [160.71 h]; Excavator Operator [38.39 h] | 58,808.05 | 110 |  | M3 | P1-S.W |

| ID | WBS | Activity | Duration | Start | Finish | Predecessors | Total float | Free float | Resources | Cost | BOQ Qty | UOM | Activities Codes Sudair Station | BOQ Line item |
| --- | --- | --- | --- | --- | --- | --- | --- | --- | --- | --- | --- | --- | --- | --- |
|  | 7 | **bedding Works** |  | 2026-09-26 | 2026-10-20 |  |  |  |  |  |  |  |  |  |
| SDR-ST-CON-P1-2170 |  | Sand bedding for GRP Pipes | 21d | 2026-09-26 | 2026-10-20 | SDR-ST-CON-P1-1460 | 3.5d | 0d | SIC- Cost [14702]; Labor [38.39 h]; Excavator [15.95 h]; Excavator Operator [38.39 h]; Loader [40 h] | 14,702.01 | 60 | M3 | P1-S.W |  |
|  | 2 | **Pipes Laying** |  | 2026-10-20 | 2026-11-14 |  |  |  |  |  |  |  |  |  |
| SDR-ST-CON-P1-2910 |  | Install ST GRP Pipes | 21d | 2026-10-20 | 2026-11-14 | SDR-ST-CON-P1-2170, SDR-ST-PRO-MS-1010 | 3.5d | 0d | Pipe Fitter [38.39 h]; SIC- Cost [132318]; Labor [38.39 h] | 132,318.11 | 230 | M | P1-S.W |  |
|  | 6 | **Testing** |  | 2026-11-14 | 2026-12-08 |  |  |  |  |  |  |  |  |  |
| SDR-ST-CON-P1-3830 |  | Testing ST GRP Pipes | 21d | 2026-11-14 | 2026-12-08 | SDR-ST-CON-P1-2910 | 3.5d | 0d | Pipe Fitter [129.56 h]; SIC- Cost [29404]; Labor [129.56 h] | 29,404.02 | 230 | M | P1-S.W |  |
|  | 3 | **Backfilling** |  | 2026-12-27 | 2027-01-19 |  |  |  |  |  |  |  |  |  |
| SDR-ST-CON-P1-4760 |  | Backfilling ST GRP Pipes | 20d | 2026-12-27 | 2027-01-19 | SDR-ST-CON-P1-3830, SDR-ST-CON-P3-1170 | 0d |  | SIC- Cost [58808.1]; Labor [129.56 h]; Excavator [410 h]; Excavator Operator [129.56 h] | 58,808.05 | 60 | M3 | P1-S.W |  |
|  | 3 | **Package-3** |  | 2026-07-08 | 2027-07-21 |  |  |  |  |  |  |  |  |  |
|  | 1 | **Site Works** |  | 2026-07-08 | 2026-08-18 |  |  |  |  |  |  |  |  |  |
|  | 1 | **Earthworks** |  | 2026-07-08 | 2026-08-18 |  |  |  |  |  |  |  |  |  |
|  | 2 | **Excavation** |  | 2026-07-08 | 2026-08-01 |  |  |  |  |  |  |  |  |  |
| SDR-ST-CON-P3-1000 |  | Excavation in all types of soil to the required depth includes removal of waste material | 20d | 2026-07-08 | 2026-08-01 | SDR-ST-MILS-1000, SDR-ST-CON-P1-6060 | 0d |  | SIC- Cost [13800]; Excavator [92 h]; Excavator Operator [143.96 h]; Grader [200 h]; Grader Operator [143.96 h]; Loader [200 h]; Loader Operator [143.96 h]; Un-Skilled Labor [287.92 h]; Supervisor [71.98 h]; Skilled Labor [287.92 h] | 13,800.01 | 575 | M3 | P3-P.W | B1.31 23 16.01 |
|  | 1 | **Fill** |  | 2026-08-01 | 2026-08-18 |  |  |  |  |  |  |  |  |  |
| SDR-ST-CON-P3-1010 |  | Backfilling with improved and select fill material from the site or imported | 15d | 2026-08-01 | 2026-08-18 | SDR-ST-CON-P3-1000, SDR-ST-MILS-1000 | 0d |  | SIC- Cost [7290.01]; Excavator [65 h]; Excavator Operator [143.96 h]; Grader [200 h]; Grader Operator [143.96 h]; Loader [200 h]; Loader Operator [143.96 h]; Un-Skilled Labor [143.96 h]; Supervisor [35.99 h]; Skilled Labor [143.96 h] | 7,290.01 | 405 | M3 | P3-P.W | B1.31 23 23.01 |
|  | 2 | **Platform Works** |  | 2026-08-18 | 2027-06-30 |  |  |  |  |  |  |  |  |  |
|  | 1 | **Platform** |  | 2026-08-18 | 2027-02-11 |  |  |  |  |  |  |  |  |  |
|  | 1 | **Earthworks** |  | 2026-08-18 | 2026-09-28 |  |  |  |  |  |  |  |  |  |
|  | 1 | **Excavation** |  | 2026-08-18 | 2026-09-06 |  |  |  |  |  |  |  |  |  |
| SDR-ST-CON-P3-1020 |  | Excavation in all types of soil to the required depth includes removal of waste material | 16d | 2026-08-18 | 2026-09-06 | SDR-ST-CON-P3-1010, SDR-ST-MILS-1000 | 0d |  | SIC- Cost [48000]; Mason [95.97 h]; Mason Helper [95.97 h]; Excavator [15 h]; Excavator Operator [95.97 h]; Dumper Operator [95.97 h]; Dumper Truck [100 h]; Loader [100 h]; Loader Operator [95.97 h]; Supervisor [38.39 h] | 48,000.04 | 2000 | M3 | P3-P.W | B4.31 23 16.01 |
|  | 2 | **Fill** |  | 2026-09-06 | 2026-09-28 |  |  |  |  |  |  |  |  |  |
| SDR-ST-CON-P3-1030 |  | Backfilling with improved and select fill material from the site or imported Part 1 | 18d | 2026-09-06 | 2026-09-28 | SDR-ST-CON-P3-1020, SDR-ST-ENG-AP-1090, SDR-ST-MILS-1000 | 0d |  | SIC- Cost [53100]; Mason [95.97 h]; Mason Helper [95.97 h]; Excavator [37.86 h]; Excavator Operator [95.97 h]; Dumper Operator [95.97 h]; Dumper Truck [100 h]; Loader [100 h]; Loader Operator [95.97 h]; Supervisor [38.39 h] | 53,100.04 | 2950 | M3 | P3-P.W | B4.31 23 23.02 |
| SDR-ST-CON-P3-1040 |  | Backfilling with improved and select fill material from the site or imported Part 2 | 16d | 2026-09-06 | 2026-09-26 | SDR-ST-CON-P3-1020, SDR-ST-MILS-1000 | 2d |  | SIC- Cost [53100]; Mason [95.97 h]; Mason Helper [95.97 h]; Excavator [16.25 h]; Excavator Operator [95.97 h]; Dumper Operator [95.97 h]; Dumper Truck [100 h]; Loader [100 h]; Loader Operator [95.97 h]; Supervisor [38.39 h] | 53,100.04 | 2950 | M3 | P3-P.W | B4.31 23 23.01 |
|  | 3 | **Concrete Works** |  | 2026-09-28 | 2027-02-11 |  |  |  |  |  |  |  |  |  |
|  | 1 | **Foundations** |  | 2026-09-28 | 2026-12-01 |  |  |  |  |  |  |  |  |  |
| SDR-ST-CON-P3-1060 |  | Pouring Concrete under Foundation 100 mm thickness lean | 10d | 2026-09-28 | 2026-10-10 | SDR-ST-CON-P3-1030, SDR-ST-MILS-1000, SDR-ST-CON-P3-1030 FF, SDR-ST-CON-P3-1040 | 0d |  | SIC- Cost [82000.1]; Supervisor [38.39 h]; Mason [95.97 h]; Mason Helper [95.97 h]; Helper [95.97 h]; Carpenter [95.97 h] | 82,000.07 | 2050 | M2 | P3-P.W | B4.03 30 00.01 |
| SDR-ST-CON-P3-1080 |  | Provide and lay 2 layers of waterproofing bitumenous membrane 4mm below footings | 8d | 2026-10-10 | 2026-10-19 | SDR-ST-CON-P3-1060, SDR-ST-MILS-1000 | 0d |  | SIC- Cost [135300]; Mason [95.97 h]; Mason Helper [95.97 h]; Plumbing Helper [95.97 h]; Plumber [95.97 h] | 135,300.11 | 2050 | M2 | P3-P.W | B4.07 13 13.01 |
| SDR-ST-CON-P3-1100 |  | Pouring Concrete for protecting waterproofing under the foundation 50 mm thickness | 10d | 2026-10-19 | 2026-10-31 | SDR-ST-CON-P3-1080, SDR-ST-MILS-1000, SDR-ST-PRO-MS-1260, SDR-ST-PRO-MS-1010, SDR-ST-PRO-MS-1010 FF | 0d |  | SIC- Cost [45100]; Supervisor [38.39 h]; Mason [38.39 h]; Mason Helper [38.39 h]; Helper [38.39 h]; Carpenter [38.39 h] | 45,100.04 | 4200 | M2 | P3-P.W | B4.03 53 00.01 |

| ID | WBS | Activity | Duration | Start | Finish | Predecessors | Total float | Free float | Resources | Cost | BOQ Qty | BOQ Line item | UOM | Activities Codes Sudair Station |
| --- | --- | --- | --- | --- | --- | --- | --- | --- | --- | --- | --- | --- | --- | --- |
|  | 1 | **Footings** |  | 2026-10-31 | 2026-12-01 |  |  |  |  |  |  |  |  |  |
| SDR-ST-CON-P3-1130 |  | Pouring concrete for footings Part 1 | 10d | 2026-10-31 | 2026-11-11 | SDR-ST-CON-P3-1100, SDR-ST-MILS-1000 | 0d |  | SIC- Cost [309753]; Supervisor [38.39 h]; Mason [38.39 h]; Mason Helper [38.39 h]; Helper [38.39 h]; Carpenter [38.39 h] | 309,753.25 | 323 | B4.03 30 00.02 | M3 | P3-P.W |
| SDR-ST-CON-P3-1150 |  | Pouring concrete for footings Part 2 | 10d | 2026-11-11 | 2026-11-23 | SDR-ST-CON-P3-1130, SDR-ST-MILS-1000 | 0d |  | SIC- Cost [309753]; Supervisor [129.56 h]; Mason [129.56 h]; Mason Helper [129.56 h]; Helper [129.56 h]; Carpenter [129.56 h] | 309,753.25 | 323 | B4.03 30 00.02 | M3 | P3-P.W |
| SDR-ST-CON-P3-1180 |  | Pouring concrete for footings Part 3 | 16.2d | 2026-11-11 | 2026-12-01 | SDR-ST-CON-P3-1150 SS, SDR-ST-ENG-AP-1090, SDR-ST-MILS-1000 | 0d |  | SIC- Cost [309754]; Supervisor [129.56 h]; Mason [129.56 h]; Mason Helper [129.56 h]; Helper [129.56 h]; Carpenter [129.56 h] | 309,754.25 | 324 | B4.03 30 00.02 | M3 | P3-P.W |
|  | 2 | **Substructure** |  | 2026-12-01 | 2026-12-28 |  |  |  |  |  |  |  |  |  |
|  | 1 | **Basement** |  | 2026-12-01 | 2026-12-16 |  |  |  |  |  |  |  |  |  |
| SDR-ST-CON-P3-1200 |  | Pouring concrete for Basement Part 1 | 10d | 2026-12-01 | 2026-12-13 | SDR-ST-CON-P3-1180, SDR-ST-MILS-1000 | 0d |  | SIC- Cost [214175]; Supervisor [202.02 h]; Mason [202.02 h]; Mason Helper [202.02 h]; Helper [202.02 h]; Carpenter [202.02 h] | 214,175.17 | 162.5 | B4.03 30 00.04 | M3 | P3-P.W |
| SDR-ST-CON-P3-1220 |  | Pouring concrete for Basement Part 2 | 8d | 2026-12-07 | 2026-12-16 | SDR-ST-CON-P3-1200 SS+5d, SDR-ST-ENG-AP-1090, SDR-ST-MILS-1000 | 4d |  | SIC- Cost [200]; Supervisor [129.56 h]; Mason [202.02 h]; Mason Helper [202.02 h]; Helper [202.02 h]; Carpenter [202.02 h] | 214,175.17 | 162.5 | B4.03 30 00.04 | M3 | P3-P.W |
|  | 2 | **Tank** |  | 2026-12-01 | 2026-12-15 |  |  |  |  |  |  |  |  |  |
| SDR-ST-CON-P3-1210 |  | Pouring concrete for Tank Part 1 | 6d | 2026-12-01 | 2026-12-08 | SDR-ST-CON-P3-1180, SDR-ST-MILS-1000 | 5d | 0.5d | SIC- Cost [214175]; Supervisor [202.02 h]; Mason [202.02 h]; Mason Helper [202.02 h]; Helper [202.02 h]; Carpenter [202.02 h] | 214,175.17 | 162.5 | B4.03 30 00.04 | M3 | P3-P.W |
| SDR-ST-CON-P3-1230 |  | Pouring concrete for Tank Part 2 | 6d | 2026-12-08 | 2026-12-15 | SDR-ST-CON-P3-1210, SDR-ST-MILS-1000, SDR-ST-CON-P1-3830 | 4.5d |  | SIC- Cost [214175]; Supervisor [202.02 h]; Mason [202.02 h]; Mason Helper [202.02 h]; Helper [202.02 h]; Carpenter [202.02 h] | 214,175.17 | 162.5 | B4.03 30 00.04 | M3 | P3-P.W |
|  | 3 | **Retaining Walls** |  | 2026-12-13 | 2026-12-28 |  |  |  |  |  |  |  |  |  |
| SDR-ST-CON-P3-1190 |  | Pouring concrete for Retaining Walls Part 1 | 7d | 2026-12-13 | 2026-12-21 | SDR-ST-CON-P3-1180, SDR-ST-MILS-1000, SDR-ST-CON-P3-1200, SDR-ST-CON-P1-3830 | 0d |  | SIC- Cost [214175]; Supervisor [40.4 h]; Mason [40.4 h]; Mason Helper [40.4 h]; Helper [40.4 h]; Carpenter [40.4 h] | 214,175.17 | 162.5 | B4.03 30 00.04 | M3 | P3-P.W |
| SDR-ST-CON-P3-1250 |  | Pouring concrete for Retaining Walls Part 2 | 6d | 2026-12-21 | 2026-12-28 | SDR-ST-CON-P3-1190, SDR-ST-MILS-1000 | 0d |  | SIC- Cost [214175]; Supervisor [202.02 h]; Mason [202.02 h]; Mason Helper [202.02 h]; Helper [202.02 h]; Carpenter [202.02 h] | 214,175.17 | 162.5 | B4.03 30 00.04 | M3 | P3-P.W |
|  | 3 | **Waterproofing Vertical** |  | 2026-12-28 | 2027-01-11 |  |  |  |  |  |  |  |  |  |
| SDR-ST-CON-P3-1300 |  | lay 2 layers of waterproofing bitumenous membrane 4mm including protection board for substructure vertical Part 1 | 4d | 2026-12-28 | 2027-01-02 | SDR-ST-CON-P3-1250, SDR-ST-MILS-1000 | 0d |  | SIC- Cost [263720]; Mason [151.16 h]; Mason Helper [151.16 h]; Plumbing Helper [1157.22 h]; Plumber [1157.22 h] | 263,720.22 | 2313 | B4.07 13 13.02 | M2 | P3-P.W |
| SDR-ST-CON-P3-1370 |  | lay 2 layers of waterproofing bitumenous membrane 4mm including protection board for substructure vertical Part 2 | 4d | 2027-01-02 | 2027-01-06 | SDR-ST-CON-P3-1300, SDR-ST-MILS-1000, SDR-ST-CON-P1-4310 | 0d |  | SIC- Cost [263720]; Mason [40.4 h]; Mason Helper [40.4 h]; Plumbing Helper [40.4 h]; Plumber [40.4 h] | 263,720.22 | 2313 | B4.07 13 13.02 | M2 | P3-P.W |
| SDR-ST-CON-P3-1430 |  | lay 2 layers of waterproofing bitumenous membrane 4mm including protection board for substructure vertical Part 3 | 4d | 2027-01-06 | 2027-01-11 | SDR-ST-CON-P3-1370, SDR-ST-MILS-1000 | 0d |  | SIC- Cost [263720]; Mason [129.56 h]; Mason Helper [129.56 h]; Plumbing Helper [129.56 h]; Plumber [129.56 h] | 263,720.22 | 2314 | B4.07 13 13.02 | M2 | P3-P.W |
|  | 4 | **Neck Walls** |  | 2027-01-11 | 2027-01-17 |  |  |  |  |  |  |  |  |  |
| SDR-ST-CON-P3-1270 |  | Pouring concrete for Neck Walls Part 1 | 5d | 2027-01-11 | 2027-01-17 | SDR-ST-CON-P3-1230, SDR-ST-CON-P3-1220, SDR-ST-CON-P1-4950, SDR-ST-MILS-1000, SDR-ST-CON-P3-1430, SDR-ST-CON-P1-4270 | 0d |  | SIC- Cost [214175]; Supervisor [40.4 h]; Mason [40.4 h]; Mason Helper [40.4 h]; Helper [40.4 h]; Carpenter [40.4 h] | 214,175.17 | 162.5 | B4.03 30 00.04 | M3 | P3-P.W |
| SDR-ST-CON-P3-1290 |  | Pouring concrete for Neck Walls Part 2 | 5d | 2027-01-11 | 2027-01-17 | SDR-ST-CON-P3-1270 SS, SDR-ST-CON-P1-4660, SDR-ST-MILS-1000 SS | 0d |  | SIC- Cost [214175]; Supervisor [2020.2 h]; Mason [4525.24 h]; Mason Helper [40.4 h]; Helper [40.4 h]; Carpenter [40.4 h] | 214,175.17 | 162.5 | B4.03 30 00.04 | M3 | P3-P.W |
|  | 5 | **Preparation for Slab** |  | 2027-01-17 | 2027-01-26 |  |  |  |  |  |  |  |  |  |
| SDR-ST-CON-P3-1320 |  | Pouring Concrete under slab on grade and gound beams 50 mm thickness lean | 4d | 2027-01-17 | 2027-01-21 | SDR-ST-CON-P3-1290, SDR-ST-MILS-1000, SDR-ST-CON-P1-4610 | 0d |  | SIC- Cost [79800.1]; Supervisor [129.56 h]; Mason [129.56 h]; Mason Helper [129.56 h]; Helper [129.56 h]; Carpenter [129.56 h] | 79,800.07 | 4200 | B4.03 30 00.02 | M2 | P3-P.W |
| SDR-ST-CON-P3-1360 |  | Supply and lay 250 micron thk polyethylene sheet below slab on grade and ground beams | 4d | 2027-01-21 | 2027-01-26 | SDR-ST-CON-P3-1320, SDR-ST-MILS-1000 | 0d |  | SIC- Cost [21000]; Mason [50.3 h]; Mason Helper [50.3 h]; Plumbing Helper [129.56 h]; Plumber [28.79 h] | 21,000.02 | 4200 | B4.07 26 16.01 | M2 | P3-P.W |

| ID | WBS | Activity | Duration | Start | Finish | Predecessors | Total float | Free float | Resources | Cost | BOQ Qty | BOQ Line item | UOM | Activities Codes Sudair Station |
| --- | --- | --- | --- | --- | --- | --- | --- | --- | --- | --- | --- | --- | --- | --- |
|  | 6 | **Slab on Grade** |  | 2027-01-26 | 2027-01-31 |  |  |  |  |  |  |  |  |  |
| SDR-ST-CON-P3-1380 |  | Pouring Concrete for Slab on grade | 4d | 2027-01-26 | 2027-01-31 | SDR-ST-CON-P3-1360, SDR-ST-MILS-1000, SDR-ST-CON-P1-4240 | 0d |  | SIC- Cost [44900]; Supervisor [129.56 h]; Mason [4510.73 h]; Mason Helper [4510.73 h]; Helper [129.56 h]; Carpenter [129.56 h] | 44,900.04 | 50 | B4.03 30 00.01 | M3 | P3-P.W |
|  | 7 | **Finishes** |  | 2027-01-31 | 2027-02-11 |  |  |  |  |  |  |  |  |  |
|  | 9 | **Troweled Finish** |  | 2027-01-31 | 2027-02-03 |  |  |  |  |  |  |  |  |  |
| SDR-ST-CON-P3-1400 |  | Pouring Concrete for Slab on grade with troweled finish Part 1 | 3d | 2027-01-31 | 2027-02-03 | SDR-ST-CON-P3-1380, SDR-ST-MILS-1000 | 0d |  | SIC- Cost [112030]; Supervisor [129.56 h]; Mason [90.55 h]; Mason Helper [90.55 h]; Helper [129.56 h]; Carpenter [129.56 h] | 112,030.09 | 85 | B4.03 30 00.01 | M3 | P3-P.W |
| SDR-ST-CON-P3-1500 |  | Pouring Concrete for Slab on grade with troweled finish Part 2 | 3d | 2027-01-31 | 2027-02-03 | SDR-ST-CON-P3-1400 SS, SDR-ST-MILS-1000, SDR-ST-CON-P1-4820 | 0d |  | SIC- Cost [112030]; Supervisor [129.56 h]; Mason [129.56 h]; Mason Helper [129.56 h]; Helper [129.56 h]; Carpenter [129.56 h] | 112,030.09 | 85 | B4.03 30 00.01 | M3 | P3-P.W |
|  | 8 | **Exposed Aggregate Finish** |  | 2027-02-03 | 2027-02-11 |  |  |  |  |  |  |  |  |  |
| SDR-ST-CON-P3-1420 |  | Pouring Concrete for Slab on grade with exposed aggregate finish Part 1 | 3d | 2027-02-03 | 2027-02-07 | SDR-ST-CON-P3-1380, SDR-ST-CON-P1-5500, SDR-ST-MILS-1000, SDR-ST-CON-P3-1500, SDR-ST-CON-P1-5020 | 0d |  | SIC- Cost [272386]; Supervisor [129.56 h]; Mason [2141.68 h]; Mason Helper [2141.68 h]; Helper [1135.62 h]; Carpenter [692.17 h] | 272,386.22 | 206 | B4.03 30 00.10 | M3 | P3-P.W |
| SDR-ST-CON-P3-1480 |  | Pouring Concrete for Slab on grade with exposed aggregate finish Part 2 | 3d | 2027-02-03 | 2027-02-07 | SDR-ST-CON-P3-1420 SS, SDR-ST-ENG-AP-1090, SDR-ST-MILS-1000 | 0d |  | SIC- Cost [272387]; Supervisor [129.56 h]; Mason [2141.68 h]; Mason Helper [2141.68 h]; Helper [1135.62 h]; Carpenter [129.56 h] | 272,387.22 | 207 | B4.03 30 00.10 | M3 | P3-P.W |
| SDR-ST-CON-P3-1490 |  | Pouring Concrete for Slab on grade with exposed aggregate finish Part 3 | 5.9d | 2027-02-03 | 2027-02-11 | SDR-ST-CON-P3-1480 SS, SDR-ST-MILS-1000 | 0d |  | SIC- Cost [272387]; Supervisor [28.79 h]; Mason [2141.68 h]; Mason Helper [2141.68 h]; Helper [129.56 h]; Carpenter [129.56 h] | 272,387.22 | 207 | B4.03 30 00.10 | M3 | P3-P.W |
|  | 3 | **Finishes & Architectural Works** |  | 2027-04-29 | 2027-06-30 |  |  |  |  |  |  |  |  |  |
| SDR-ST-CON-P3-1540 |  | Installation of metal steel 1200mm railing including all accessories Part 1 | 15d | 2027-04-29 | 2027-05-23 | SDR-ST-CON-P3-1400, SDR-ST-CON-P3-1490, SDR-ST-MILS-1000, SDR-ST-CON-P1-5430, SDR-ST-CON-P1-4070, SDR-ST-CON-P1-4320, SDR-ST-CON-P1-5460 | 17.7d | 0d | SIC- Cost [210906]; Mason [2150.25 h]; Mason Helper [2294.21 h]; Steel Structure Subcontractor [10182.6 h]; Metal Fabricator [4163.72 h] | 210,906.17 | 220 | B4.05 52 00.01 | M | P3-P.W |
| SDR-ST-CON-P3-1590 |  | Installation of metal steel 1200mm railing including all accessories Part 2 | 15d | 2027-05-23 | 2027-06-09 | SDR-ST-CON-P3-1540, SDR-ST-MILS-1000, SDR-ST-CON-P1-5460, SDR-ST-CON-P1-3980 | 17.7d | 0d | SIC- Cost [210907]; Mason [143.96 h]; Mason Helper [143.96 h]; Steel Structure Subcontractor [151.16 h]; Metal Fabricator [151.16 h] | 210,907.17 | 220 | B4.05 52 00.01 | M | P3-P.W |
| SDR-ST-CON-P3-1640 |  | Installation of metal steel 1200mm railing including all accessories Part3 | 8d | 2027-06-09 | 2027-06-19 | SDR-ST-CON-P3-1590, SDR-ST-MILS-1000 | 17.7d | 0d | SIC- Cost [210907]; Mason [143.96 h]; Mason Helper [143.96 h]; Steel Structure Subcontractor [151.16 h]; Metal Fabricator [151.16 h] | 210,907.17 | 220 | B4.05 52 00.01 | M | P3-P.W |
| SDR-ST-CON-P3-1710 |  | Platform Paving & warning tiles | 4d | 2027-06-19 | 2027-06-23 | SDR-ST-CON-P3-1590, SDR-ST-CON-P3-1640, SDR-ST-MILS-1000, SDR-ST-CON-P1-5920 | 17.7d | 0d | SIC- Cost [46200]; Mason [136.76 h]; Mason Helper [136.76 h] | 46,200.04 | 350 | B4.32 14 00.01 | M2 | P3-P.W |
| SDR-ST-CON-P3-1760 |  | Painting Part 1 | 6d | 2027-06-23 | 2027-06-30 | SDR-ST-CON-P3-1710, SDR-ST-MILS-1000 | 17.7d | 0d | SIC- Cost [143758]; Supervisor [151.16 h]; Helper [151.16 h]; Painter [151.16 h] | 143,758.44 | 1 | B3.05 12 00.01 | Number | P3-P.W |
| SDR-ST-CON-P3-1840 |  | Painting Part 2 | 6d | 2027-06-23 | 2027-06-30 | SDR-ST-CON-P3-1760 SS, SDR-ST-MILS-1000 | 17.7d |  | SIC- Cost [143758]; Supervisor [151.16 h]; Helper [151.16 h]; Painter [151.16 h] | 143,758.44 | 1 | B3.05 12 00.01 | Number | P3-P.W |
|  | 5 | **Platform Electrical Works** |  | 2027-01-17 | 2027-02-09 |  |  |  |  |  |  |  |  |  |
| SDR-ST-CON-P3-1310 |  | cable conduits | 20d | 2027-01-17 | 2027-02-09 | SDR-ST-CON-P3-1290, SDR-ST-MILS-1000 | 13.7d | 9d | SIC- Cost; Electrical Technician [201.21 h]; Electrical Helper [201.21 h] |  |  |  |  | P3-P.W |
|  | 3 | **Canopy works** |  | 2026-10-01 | 2027-07-20 |  |  |  |  |  |  |  |  |  |
|  | 1 | **Civil and Architectural Works** |  | 2026-10-01 | 2026-12-20 |  |  |  |  |  |  |  |  |  |
|  | 1 | **Concrete** |  | 2026-10-01 | 2026-12-20 |  |  |  |  |  |  |  |  |  |
| SDR-ST-CON-P3-1050 |  | Pouring Concrete under the foundation 100 mm thickness lean | 13d | 2026-10-01 | 2026-10-17 | SDR-ST-CON-P3-1060 SS+3d, SDR-ST-ENG-AP-1090, SDR-ST-MILS-1000 | 15.2d | 0d | charpenter [38.39 h]; SIC- Cost [11200]; Supervisor [38.39 h]; Civil Forman [38.39 h]; Mason [38.39 h]; Mason Helper [38.39 h]; Labor [38.39 h] | 11,200.01 | 280 | B3.03 30 00.01 | M2 | P3-C.W |
| SDR-ST-CON-P3-1090 |  | Pouring Concrete for protecting waterproofing under the foundation 50 mm thickness | 12d | 2026-11-07 | 2026-11-19 | SDR-ST-CON-P3-1050, SDR-ST-CON-P3-1070, SDR-ST-PRO-MS-1050, SDR-ST-MILS-1000, SDR-ST-PRO-MS-1030, SDR-ST-PRO-MS-1020, SDR-ST-PRO-MS-1040 | 3.1d | 3d | charpenter [38.39 h]; SIC- Cost [6720.01]; Supervisor [38.39 h]; Civil Forman [38.39 h]; Mason [38.39 h]; Mason Helper [38.39 h]; Labor [38.39 h] | 6,720.01 | 280 | B3.03 53 00.01 | M2 | P3-C.W |
| SDR-ST-CON-P3-1110 |  | Pouring Concrete for Footings | 12d | 2026-11-24 | 2026-12-07 | SDR-ST-CON-P3-1090, SDR-ST-PRO-MS-1110, SDR-ST-PRO-MS-1100, SDR-ST-PRO-MS-1080, SDR-ST-PRO-MS-1060, SDR-ST-PRO-MS-1120, SDR-ST-PRO-MS-1090, SDR-ST-PRO-MS-1070, SDR-ST-MILS-1000 | 0.1d | 0d | charpenter [38.39 h]; SIC- Cost [95800.1]; Supervisor [38.39 h]; Civil Forman [38.39 h]; Mason [38.39 h]; Mason Helper [38.39 h]; Labor [38.39 h] | 95,800.08 | 100 | B3.03 30 00.01 | M3 | P3-C.W |
| SDR-ST-CON-P3-1140 |  | Pouring Concrete for Coulumns necks | 8d | 2026-12-12 | 2026-12-20 | SDR-ST-CON-P3-1110, SDR-ST-PRO-MS-1110, SDR-ST-PRO-MS-1120, SDR-ST-MILS-1000, SDR-ST-CON-P1-3670 | 0.1d |  | charpenter [202.02 h]; SIC- Cost [52720]; Supervisor [129.56 h]; Civil Forman [202.02 h]; Mason [202.02 h]; Mason Helper [202.02 h]; Labor [202.02 h] | 52,720.04 | 40 | B3.03 30 00.02 | M3 | P3-C.W |

| ID | WBS | Activity | Duration | Start | Finish | Predecessors | Total float | Free float | Resources | Cost | BOQ Qty | BOQ Line item | UOM | Activities Codes Sudair Station |
| --- | --- | --- | --- | --- | --- | --- | --- | --- | --- | --- | --- | --- | --- | --- |
|  | 4 | **Metals** |  | 2026-10-17 | 2027-07-20 |  |  |  |  |  |  |  |  |  |
|  | 2 | **Structural Steel Framing** |  | 2026-11-24 | 2027-04-14 |  |  |  |  |  |  |  |  |  |
| SDR-ST-CON-P3-1120 |  | Anchor Bolt Verification | 16d | 2026-11-24 | 2026-12-12 | SDR-ST-CON-P3-1110 SS, SDR-ST-ENG-AP-1090, SDR-ST-MILS-1000 | 0.1d | 0d | SIC- Cost [17969.8]; Mason [100.77 h]; Mason Helper [100.77 h] | 17,969.8 | 1 | B3.05 12 00.01 | Number | P3-C.W |
| SDR-ST-CON-P3-1160 |  | Erection of Columns Part 1 | 20d | 2026-12-13 | 2027-01-04 | SDR-ST-CON-P3-1120, SDR-ST-PRO-MS-1140, SDR-ST-PRO-MS-1130, SDR-ST-PRO-MS-1110, SDR-ST-MILS-1000, SDR-ST-CON-P1-3670 | 0.1d | 0d | charpenter [136.76 h]; SIC- Cost [161728]; Supervisor [136.76 h]; Mason [136.76 h]; Mason Helper [136.76 h]; Surveyor [136.76 h]; Helper [136.76 h] | 161,728.24 | 1 | B3.05 12 00.01 | Number | P3-C.W |
| SDR-ST-CON-P3-1240 |  | Erection of Columns Part 2 | 11d | 2027-01-05 | 2027-01-17 | SDR-ST-CON-P3-1160, SDR-ST-MILS-1000, SDR-ST-CON-P1-5200, SDR-ST-CON-P1-5040 | 0.1d | 0d | charpenter [136.76 h]; SIC- Cost [161728]; Supervisor [136.76 h]; Mason [136.76 h]; Mason Helper [136.76 h]; Surveyor [136.76 h]; Helper [136.76 h] | 161,728.24 | 1 | B3.05 12 00.01 | Number | P3-C.W |
| SDR-ST-CON-P3-1260 |  | Erection of Rafters Part 1 | 16d | 2027-01-18 | 2027-02-04 | SDR-ST-CON-P3-1240, SDR-ST-MILS-1000, SDR-ST-PRO-MS-1160, SDR-ST-PRO-MS-1150 | 0.1d | 0d | charpenter [129.56 h]; SIC- Cost [125789]; Supervisor [129.56 h]; Mason [129.56 h]; Mason Helper [129.56 h]; Surveyor [129.56 h]; Helper [129.56 h] | 125,788.63 | 1 | B3.05 12 00.01 | Number | P3-C.W |
| SDR-ST-CON-P3-1280 |  | Erection of Rafters Part 2 | 16d | 2027-01-18 | 2027-02-04 | SDR-ST-CON-P3-1260 SS, SDR-ST-MILS-1000 | 0.1d | 0d | charpenter [107.97 h]; SIC- Cost [125789]; Supervisor [107.97 h]; Mason [107.97 h]; Mason Helper [107.97 h]; Surveyor [107.97 h]; Helper [107.97 h] | 125,788.63 | 1 | B3.05 12 00.01 | Number | P3-C.W |
| SDR-ST-CON-P3-1330 |  | Installation of Bracing System Part 1 | 15d | 2027-02-06 | 2027-03-06 | SDR-ST-CON-P3-1280, SDR-ST-MILS-1000, SDR-ST-CON-P1-5670, SDR-ST-CON-P1-5500, SDR-ST-CON-P1-5020, SDR-ST-CON-P1-4240 | 13.1d | 0d | charpenter [129.56 h]; SIC- Cost [107819]; Supervisor [129.56 h]; Mason [129.56 h]; Mason Helper [129.56 h]; Surveyor [129.56 h]; Helper [129.56 h] | 107,818.83 | 1 | B3.05 12 00.01 | Number | P3-C.W |
| SDR-ST-CON-P3-1340 |  | Installation of Beams Part 1 | 10d | 2027-02-06 | 2027-02-24 | SDR-ST-CON-P3-1280, SDR-ST-MILS-1000 | 0.2d |  | charpenter [115.17 h]; SIC- Cost [143758]; Supervisor [115.17 h]; Mason [2127.28 h]; Mason Helper [2127.28 h]; Surveyor [115.17 h]; Helper [115.17 h] | 143,758.44 | 1 | B3.05 12 00.01 | Number | P3-C.W |
| SDR-ST-CON-P3-1350 |  | Installation of Girders Part 1 | 20d | 2027-02-06 | 2027-03-17 | SDR-ST-CON-P3-1280, SDR-ST-MILS-1000, SDR-ST-TC-1010 | 0d |  | charpenter [100.77 h]; SIC- Cost [89849]; Supervisor [100.77 h]; Mason [100.77 h]; Mason Helper [100.77 h]; Surveyor [100.77 h]; Helper [100.77 h] | 89,849.02 | 1 | B3.05 12 00.01 | Number | P3-C.W |
| SDR-ST-CON-P3-1390 |  | Installation of Beams Part 2 | 12d | 2027-02-24 | 2027-03-20 | SDR-ST-CON-P3-1340, SDR-ST-PRO-MS-1220, SDR-ST-PRO-MS-1210, SDR-ST-MILS-1000, SDR-ST-CON-P1-5770, SDR-ST-CON-P1-5740, SDR-ST-CON-P1-5700 | 0d |  | charpenter [115.17 h]; SIC- Cost [143758]; Supervisor [115.17 h]; Mason [115.17 h]; Mason Helper [115.17 h]; Surveyor [115.17 h]; Helper [115.17 h] | 143,758.44 | 1 | B3.05 12 00.01 | Number | P3-C.W |
| SDR-ST-CON-P3-1410 |  | Installation of Bracing System Part 2 | 16d | 2027-03-06 | 2027-03-30 | SDR-ST-CON-P3-1330, SDR-ST-PRO-MS-1230, SDR-ST-MILS-1000 | 13.1d |  | charpenter [129.56 h]; SIC- Cost [107819]; Supervisor [129.56 h]; Mason [129.56 h]; Mason Helper [129.56 h]; Surveyor [129.56 h]; Helper [129.56 h] | 107,818.83 | 1 | B3.05 12 00.01 | Number | P3-C.W |
| SDR-ST-CON-P3-1440 |  | Installation of Girders Part 2 | 12d | 2027-03-17 | 2027-03-31 | SDR-ST-CON-P3-1350, SDR-ST-MILS-1000, SDR-ST-CON-P1-5800 | 0d |  | charpenter [100.77 h]; SIC- Cost [89849]; Supervisor [100.77 h]; Mason [100.77 h]; Mason Helper [100.77 h]; Surveyor [100.77 h]; Helper [100.77 h] | 89,849.02 | 1 | B3.05 12 00.01 | Number | P3-C.W |
| SDR-ST-CON-P3-1460 |  | Installation of Connections (Bolting) | 12d | 2027-03-20 | 2027-04-03 | SDR-ST-CON-P3-1390, SDR-ST-PRO-MS-1230, SDR-ST-MILS-1000 | 0d |  | charpenter [143.96 h]; SIC- Cost [53909.4]; Supervisor [143.96 h]; Mason [143.96 h]; Mason Helper [143.96 h]; Surveyor [143.96 h]; Helper [143.96 h] | 53,909.41 | 1 | B3.05 12 00.01 | Number | P3-C.W |
| SDR-ST-CON-P3-1450 |  | Installation of Joists Part 1 | 12d | 2027-03-31 | 2027-04-14 | SDR-ST-CON-P3-1390, SDR-ST-MILS-1000, SDR-ST-CON-P3-1440, SDR-ST-PRO-MS-1180, SDR-ST-PRO-MS-1170, SDR-ST-CON-P1-5070 | 0d |  | charpenter [115.17 h]; SIC- Cost [89849]; Supervisor [115.17 h]; Mason [115.17 h]; Mason Helper [115.17 h]; Surveyor [115.17 h]; Helper [115.17 h] | 89,849.02 | 1 | B3.05 12 00.01 | Number | P3-C.W |
| SDR-ST-CON-P3-1470 |  | Installation of Joists Part 2 | 12d | 2027-03-31 | 2027-04-14 | SDR-ST-CON-P3-1450 SS, SDR-ST-ENG-AP-1090, SDR-ST-MILS-1000 | 0d |  | charpenter [115.17 h]; SIC- Cost [89849]; Supervisor [115.17 h]; Mason [115.17 h]; Mason Helper [115.17 h]; Surveyor [115.17 h]; Helper [115.17 h] | 89,849.02 | 1 | B3.05 12 00.01 | Number | P3-C.W |
|  | 3 | **Aluminum Cladding Panels** |  | 2027-04-14 | 2027-07-20 |  |  |  |  |  |  |  |  |  |
|  | 1 | **Steel Subframe Installation** |  | 2027-04-14 | 2027-07-20 |  |  |  |  |  |  |  |  |  |
| SDR-ST-CON-P3-1530 |  | Survey & Setting Out for Cladding | 8d | 2027-04-14 | 2027-04-24 | SDR-ST-CON-P3-1470, SDR-ST-CON-P3-1410, SDR-ST-CON-P3-1430, SDR-ST-PRO-MS-1240, SDR-ST-MILS-1000, SDR-ST-TC-1020, SDR-ST-CON-P1-4040, SDR-ST-CON-P1-3880, SDR-ST-CON-P1-4250 | 0d |  | SIC- Cost [50280]; Surveyor [129.56 h] | 50,280.04 | 1 | B3.07 46 00.01 | Number | P3-C.W |
| SDR-ST-CON-P3-1560 |  | Install Steel Subframe Supports Part 1 | 18d | 2027-04-24 | 2027-05-15 | SDR-ST-CON-P3-1530, SDR-ST-MILS-1090, SDR-ST-MILS-1000, SDR-ST-PRO-MS-1250, SDR-ST-CON-P1-4070, SDR-ST-CON-P1-5280, SDR-ST-CON-P1-5490 | 0d |  | SIC- Cost [234640]; Supervisor [143.96 h]; Steel Structure Subcontractor [431.88 h]; Carpenter [143.96 h]; Metal Fabricator [143.96 h]; Carpenter Helper [143.96 h] | 234,640.19 | 1 | B3.07 46 00.01 | Number | P3-C.W |
| SDR-ST-CON-P3-1620 |  | Install Steel Subframe Supports Part 2 | 18d | 2027-05-15 | 2027-06-10 | SDR-ST-CON-P3-1560, SDR-ST-MILS-1000, SDR-ST-CON-P1-5460, SDR-ST-CON-P1-3980, SDR-ST-CON-P1-4050 | 0d |  | SIC- Cost [234640]; Supervisor [143.96 h]; Steel Structure Subcontractor [431.88 h]; Carpenter [143.96 h]; Metal Fabricator [143.96 h]; Carpenter Helper [143.96 h] | 234,640.19 | 1 | B3.07 46 00.01 | Number | P3-C.W |
| SDR-ST-CON-P3-1690 |  | Install Steel Subframe Supports Part 3 | 13d | 2027-06-10 | 2027-06-26 | SDR-ST-CON-P3-1620, SDR-ST-MILS-1000 | 0.7d | 0d | SIC- Cost [234640]; Supervisor [143.96 h]; Steel Structure Subcontractor [431.88 h]; Carpenter [143.96 h]; Metal Fabricator [143.96 h]; Carpenter Helper [143.96 h] | 234,640.19 | 1 | B3.07 46 00.01 | Number | P3-C.W |
| SDR-ST-CON-P3-1720 |  | Alignment & Leveling of Subframe Part 1 | 11d | 2027-06-10 | 2027-06-23 | SDR-ST-CON-P3-1690 SS, SDR-ST-MILS-1000 | 0.7d | 0d | SIC- Cost [125700]; Supervisor [143.96 h]; Steel Structure Subcontractor [431.88 h]; Carpenter [143.96 h]; Metal Fabricator [143.96 h]; Carpenter Helper [143.96 h] | 125,700.1 | 1 | B3.07 46 00.01 | Number | P3-C.W |
| SDR-ST-CON-P3-1770 |  | Alignment & Leveling of Subframe Part 2 | 8d | 2027-06-23 | 2027-07-03 | SDR-ST-CON-P3-1720, SDR-ST-MILS-1000 | 0.7d | 0d | SIC- Cost [125700]; Supervisor [143.96 h]; Steel Structure Subcontractor [431.88 h]; Carpenter [143.96 h]; Metal Fabricator [143.96 h]; Carpenter Helper [143.96 h] | 125,700.1 | 1 | B3.07 46 00.01 | Number | P3-C.W |
| SDR-ST-CON-P3-1830 |  | Fixing & Tightening of Subframe Connections Part 1 | 8d | 2027-07-03 | 2027-07-12 | SDR-ST-CON-P3-1770, SDR-ST-MILS-1000 | 0.7d | 0d | SIC- Cost [125700]; Supervisor [143.96 h]; Steel Structure Subcontractor [431.88 h]; Carpenter [143.96 h]; Metal Fabricator [143.96 h]; Carpenter Helper [143.96 h] | 125,700.1 | 1 | B3.07 46 00.01 | Number | P3-C.W |
| SDR-ST-CON-P3-1880 |  | Fixing & Tightening of Subframe Connections Part 2 | 7d | 2027-07-12 | 2027-07-20 | SDR-ST-CON-P3-1830, SDR-ST-MILS-1000 | 0.7d |  | SIC- Cost [125700]; Supervisor [143.96 h]; Steel Structure Subcontractor [431.88 h]; Carpenter [143.96 h]; Metal Fabricator [143.96 h]; Carpenter Helper [143.96 h] | 125,700.1 | 1 | B3.07 46 00.01 | Number | P3-C.W |

| ID | WBS | Activity | Duration | Start | Finish | Predecessors | Total float | Free float | Resources | Cost | BOQ Qty | BOQ Line item | UOM | Activities Codes Sudair Station |
| --- | --- | --- | --- | --- | --- | --- | --- | --- | --- | --- | --- | --- | --- | --- |
|  | 2 | **Aluminum Cladding Installation** |  | 2027-05-15 | 2027-07-20 |  |  |  |  |  |  |  |  |  |
| SDR-ST-CON-P3-1610 |  | Install Aluminum Panels (4mm Thick Part 1 | 17d | 2027-05-15 | 2027-06-09 | SDR-ST-CON-P3-1620 SS, SDR-ST-ENG-AP-1090, SDR-ST-MILS-1000, SDR-ST-CON-P1-4320, SDR-ST-CON-P1-4010 | 0d |  | SIC- Cost [139666]; Steel Structure Subcontractor [431.88 h]; Carpenter [143.96 h]; Metal Fabricator [143.96 h]; Carpenter Helper [143.96 h]; Aluminum Cladding Subcontractor [143.96 h] | 139,666.11 | 1 | B3.07 46 00.01 | Number | P3-C.W |
| SDR-ST-CON-P3-1660 |  | Install Aluminum Panels (4mm Thick Part 2 | 12d | 2027-06-09 | 2027-06-23 | SDR-ST-CON-P3-1610, SDR-ST-MILS-1000 | 0d |  | SIC- Cost [139667]; Steel Structure Subcontractor [431.88 h]; Carpenter [143.96 h]; Metal Fabricator [143.96 h]; Carpenter Helper [143.96 h]; Aluminum Cladding Subcontractor [143.96 h] | 139,667.11 | 1 | B3.07 46 00.01 | Number | P3-C.W |
| SDR-ST-CON-P3-1700 |  | Install Aluminum Panels (4mm Thick Part 3 | 7d | 2027-06-23 | 2027-07-01 | SDR-ST-CON-P3-1660, SDR-ST-MILS-1000 | 0d |  | SIC- Cost [139667]; Steel Structure Subcontractor [431.88 h]; Carpenter [143.96 h]; Metal Fabricator [143.96 h]; Carpenter Helper [143.96 h]; Aluminum Cladding Subcontractor [143.96 h] | 139,667.11 | 1 | B3.07 46 00.01 | Number | P3-C.W |
| SDR-ST-CON-P3-1730 |  | Fix Panels with Snap Hooks & Fasteners Part 1 | 6d | 2027-07-01 | 2027-07-08 | SDR-ST-CON-P3-1700, SDR-ST-MILS-1000 | 0d |  | SIC- Cost [41900]; Steel Structure Subcontractor [431.88 h]; Carpenter [143.96 h]; Metal Fabricator [143.96 h]; Carpenter Helper [143.96 h]; Aluminum Cladding Subcontractor [143.96 h] | 41,900.03 | 1 | B3.07 46 00.01 | Number | P3-C.W |
| SDR-ST-CON-P3-1750 |  | Fix Panels with Snap Hooks & Fasteners Part 2 | 5d | 2027-07-01 | 2027-07-07 | SDR-ST-CON-P3-1730 SS, SDR-ST-CON-P1-5920, SDR-ST-MILS-1000 | 0d |  | SIC- Cost [41900]; Steel Structure Subcontractor [431.88 h]; Carpenter [143.96 h]; Metal Fabricator [143.96 h]; Carpenter Helper [143.96 h]; Aluminum Cladding Subcontractor [143.96 h] | 41,900.03 | 1 | B3.07 46 00.01 | Number | P3-C.W |
| SDR-ST-CON-P3-1810 |  | Install Drainage System Part 1 | 4d | 2027-07-07 | 2027-07-12 | SDR-ST-CON-P3-1750, SDR-ST-MILS-1000 | 0d |  | SIC- Cost [41900]; Steel Structure Subcontractor [431.88 h]; Carpenter [143.96 h]; Metal Fabricator [143.96 h]; Carpenter Helper [143.96 h]; Aluminum Cladding Subcontractor [143.96 h] | 41,900.03 | 1 | B3.07 46 00.01 | Number | P3-C.W |
| SDR-ST-CON-P3-1820 |  | Install Drainage System Part 2 | 4.1d | 2027-07-07 | 2027-07-12 | SDR-ST-CON-P3-1810 SS, SDR-ST-ENG-AP-1090, SDR-ST-MILS-1000 | 0d |  | SIC- Cost [41900]; Steel Structure Subcontractor [431.88 h]; Carpenter [143.96 h]; Metal Fabricator [143.96 h]; Carpenter Helper [143.96 h]; Aluminum Cladding Subcontractor [143.96 h] | 41,900.03 | 1 | B3.07 46 00.01 | Number | P3-C.W |
| SDR-ST-CON-P3-1850 |  | Adjustment & Alignment of Panels Part 1 | 3d | 2027-07-12 | 2027-07-15 | SDR-ST-CON-P3-1820, SDR-ST-CON-P1-6000, SDR-ST-MILS-1000 | 0d |  | SIC- Cost [83800.1]; Steel Structure Subcontractor [431.88 h]; Carpenter [143.96 h]; Metal Fabricator [143.96 h]; Carpenter Helper [143.96 h]; Aluminum Cladding Subcontractor [143.96 h] | 83,800.07 | 1 | B3.07 46 00.01 | Number | P3-C.W |
| SDR-ST-CON-P3-1860 |  | Adjustment & Alignment of Panels Part 2 | 3d | 2027-07-12 | 2027-07-15 | SDR-ST-CON-P3-1850 SS, SDR-ST-MILS-1000 | 0d |  | SIC- Cost [83800.1]; Steel Structure Subcontractor [431.88 h]; Carpenter [143.96 h]; Metal Fabricator [143.96 h]; Carpenter Helper [143.96 h]; Aluminum Cladding Subcontractor [143.96 h] | 83,800.07 | 1 | B3.07 46 00.01 | Number | P3-C.W |
| SDR-ST-CON-P3-1890 |  | Sealant & Finishing Works | 4.6d | 2027-07-15 | 2027-07-20 | SDR-ST-CON-P3-1860, SDR-ST-MILS-1000 | 0d |  | SIC- Cost [83800.1]; Steel Structure Subcontractor [431.88 h]; Carpenter [143.96 h]; Metal Fabricator [143.96 h]; Carpenter Helper [143.96 h]; Aluminum Cladding Subcontractor [143.96 h] | 83,800.07 | 1 | B3.07 46 00.01 | Number | P3-C.W |
|  | 1 | **THERMAL & MOISTURE PROTECTION** |  | 2026-10-17 | 2026-12-27 |  |  |  |  |  |  |  |  |  |
|  | 1 | **Bituminous Sheet Waterproofing** |  | 2026-10-17 | 2026-12-27 |  |  |  |  |  |  |  |  |  |
| SDR-ST-CON-P3-1070 |  | Provide and lay 2 layers of waterproofing bitumenous membrane 4mm below footings | 5d | 2026-10-17 | 2026-10-22 | SDR-ST-CON-P3-1050, SDR-ST-MILS-1000 | 15.2d | 12.1d | SIC- Cost [15180]; Plumbing Helper [100.77 h]; Plumber [100.77 h] | 15,180.01 | 230 | B3.07 13 13.01 | M2 | P3-C.W |
| SDR-ST-CON-P3-1170 |  | Provide and lay 2 layers of waterproofing bitumenous membrane 4mm in contact with soil | 5d | 2026-12-21 | 2026-12-27 | SDR-ST-CON-P3-1140, SDR-ST-CON-P1-3480, SDR-ST-CON-P1-3360, SDR-ST-CON-P1-3700, SDR-ST-CON-P1-3930, SDR-ST-CON-P1-3760, SDR-ST-CON-P1-3670, SDR-ST-CON-P1-3810, SDR-ST-MILS-1000, SDR-ST-CON-P3-1190, SDR-ST-CON-P3-1230, SDR-ST-CON-P3-1220 | 0d |  | SIC- Cost [77520.1]; Plumbing Helper [202.02 h]; Plumber [202.02 h] | 77,520.06 | 680 | B3.07 13 13.02 | M2 | P3-C.W |
|  | 4 | **Electrical Works** |  | 2027-03-31 | 2027-07-21 |  |  |  |  |  |  |  |  |  |
|  | 1 | **Low-Voltage Electrical Power Conductors and Cables** |  | 2027-03-31 | 2027-04-24 |  |  |  |  |  |  |  |  |  |
| SDR-ST-CON-P3-1510 |  | Installtion and test low voltage cable including pulling of cable 600/1000V . | 20d | 2027-03-31 | 2027-04-24 | SDR-ST-CON-P3-1440, SDR-ST-MILS-1000 | 0.7d | 0d | SIC- Cost [36000]; Electrical Forman [71.98 h]; Electrical Technician [201.21 h]; Electrical Helper [201.21 h]; Labor [201.21 h] | 36,000.03 | 1500 | B2.26 05 19.01 | M | P3-El.W |
|  | 2 | **Ondoor Lighting Points** |  | 2027-04-24 | 2027-05-24 |  |  |  |  |  |  |  |  |  |
| SDR-ST-CON-P3-1580 |  | Install, test, and commission all necessary components for outdoor lighting points. | 21d | 2027-04-24 | 2027-05-24 | SDR-ST-CON-P3-1510, SDR-ST-PRO-MS-1250, SDR-ST-MILS-1000 | 0.7d | 0d | SIC- Cost [62010.1]; Electrical Forman [97.38 h]; Electrical Technician [97.38 h]; Electrical Helper [97.38 h]; Labor [97.38 h] | 62,010.05 | 390 | B2.26 56 00.01 | Number | P3-El.W |
|  | 3 | **Outdoor Lighting Fixtures** |  | 2027-05-24 | 2027-06-23 |  |  |  |  |  |  |  |  |  |
| SDR-ST-CON-P3-1630 |  | Install of L10 recessed in ceiling light, lenght1535mmxwidth75mmxhieght105mm, LED 53.2w Part 1 | 20d | 2027-05-24 | 2027-06-16 | SDR-ST-CON-P3-1580, SDR-ST-MILS-1000, SDR-ST-CON-P1-4050 | 0.7d |  | SIC- Cost [76245.1]; Electrical Forman [71.98 h]; Electrical Technician [5278.52 h]; Electrical Helper [5278.52 h]; Labor [5278.52 h] | 76,245.06 | 195 | B2.26 56 00.02 | Number | P3-El.W |
| SDR-ST-CON-P3-1650 |  | Install of L10 recessed in ceiling light, lenght1535mmxwidth75mmxhieght105mm, LED 53.2w Part 2 | 20d | 2027-06-01 | 2027-06-23 | SDR-ST-CON-P3-1630 SS+6d, SDR-ST-ENG-AP-1090, SDR-ST-MILS-1000, SDR-ST-TC-1000 | 0d |  | SIC- Cost [76245.1]; Electrical Forman [71.98 h]; Electrical Technician [143.96 h]; Electrical Helper [143.96 h]; Labor [143.96 h] | 76,245.06 | 195 | B2.26 56 00.02 | Number | P3-El.W |
|  | 4 | **CCTV** |  | 2027-03-31 | 2027-07-21 |  |  |  |  |  |  |  |  |  |
| SDR-ST-CON-P3-1520 |  | Install of Handhole (600x600x730mm) | 8d | 2027-03-31 | 2027-04-10 | SDR-ST-CON-P3-1440, SDR-ST-CON-P1-5790, SDR-ST-MILS-1000 | 0.7d | 0d | SIC- Cost [2418]; Electrical Forman [57.58 h]; Electrical Technician [57.58 h]; Electrical Helper [57.58 h]; Labor [57.58 h] | 2,418 | 2 | B2.28.20.00.08 | Number | P3-E. W |
| SDR-ST-CON-P3-1550 |  | Install of 2 core 9/125um indoor -outdoor central tube | 11d | 2027-04-10 | 2027-04-22 | SDR-ST-CON-P3-1520, SDR-ST-CO-1030, SDR-ST-MILS-1000 | 0.7d | 0d | SIC- Cost [11760]; Electrical Forman [79.18 h]; Electrical Technician [79.18 h]; Electrical Helper [79.18 h]; Labor [79.18 h] | 11,760.01 | 980 | B2.28.20.00.07 | Number | P3-E. W |
| SDR-ST-CON-P3-1570 |  | Install of 4 Port (2 duplex) LC/UPC OS2 fiber patch panel | 12d | 2027-04-22 | 2027-05-06 | SDR-ST-CON-P3-1550, SDR-ST-MILS-1000 | 0.7d | 0d | SIC- Cost [16004]; Electrical Forman [86.38 h]; Electrical Technician [120.73 h]; Electrical Helper [120.73 h]; Labor [120.73 h] | 16,004.01 | 4 | B2.28.20.00.06 | Number | P3-E. W |
| SDR-ST-CON-P3-1600 |  | Install of Pole mounted Filed Equipment cabinet (FEC) , with fan and ventilation | 20d | 2027-05-06 | 2027-06-05 | SDR-ST-CON-P3-1570, SDR-ST-MILS-1000, SDR-ST-CON-P1-5430 | 0.7d | 0d | SIC- Cost [29768]; Electrical Forman [143.96 h]; Electrical Technician [143.96 h]; Electrical Helper [143.96 h]; Labor [143.96 h] | 29,768.02 | 4 | B2.28.20.00.02 | Number | P3-E. W |
| SDR-ST-CON-P3-1670 |  | Install of 8 Port Industrial PoE Switch 10/1000BaseT | 16d | 2027-06-05 | 2027-06-23 | SDR-ST-CON-P3-1600, SDR-ST-CON-P1-5850, SDR-ST-MILS-1000 | 0.7d |  | SIC- Cost [20488]; Electrical Forman [143.96 h]; Electrical Technician [143.96 h]; Electrical Helper [143.96 h]; Labor [143.96 h] | 20,488.02 | 4 | B2.28.20.00.03 | Number | P3-E. W |
| SDR-ST-CON-P3-1680 |  | Install of 1.2KVA Industrial type UPS located at FEC | 16d | 2027-06-05 | 2027-06-23 | SDR-ST-CON-P3-1600, SDR-ST-MILS-1000, SDR-ST-CO-1010 | 0.7d |  | SIC- Cost [32012]; Electrical Forman [100.77 h]; Electrical Technician [100.77 h]; Electrical Helper [100.77 h]; Labor [100.77 h] | 32,012.03 | 4 | B2.28.20.00.05 | Number | P3-E. W |
| SDR-ST-CON-P3-1740 |  | Install of UTP CAT6 Patch Cord , connect the industrial switch with the cameras | 10d | 2027-06-24 | 2027-07-05 | SDR-ST-CON-P3-1680, SDR-ST-CON-P3-1670, SDR-ST-CON-P3-1650, SDR-ST-MILS-1000, SDR-ST-CON-P1-5920 | 0d |  | SIC- Cost [896]; Electrical Forman [71.98 h]; Electrical Technician [100.61 h]; Electrical Helper [100.61 h]; Labor [100.61 h] | 896 | 16 | B2.28.20.00.04 | Number | P3-E. W |
| SDR-ST-CON-P3-1780 |  | Install of 5MP IP PoE Bullet Camera, outdoor mounted on canopy ceiling Part 1. | 12d | 2027-07-06 | 2027-07-19 | SDR-ST-CON-P3-1740, SDR-ST-MILS-1000 | 1.1d |  | SIC- Cost [106936]; Electrical Forman [143.96 h]; Electrical Technician [143.96 h]; Electrical Helper [143.96 h]; Labor [143.96 h] | 106,936.09 | 8 | B2.28.20.00.01 | Number | P3-E. W |
| SDR-ST-CON-P3-1790 |  | Install of 5MP IP PoE Bullet Camera, outdoor mounted on canopy ceiling Part 2. | 14d | 2027-07-06 | 2027-07-21 | SDR-ST-CON-P3-1740, SDR-ST-MILS-1000 | 0d |  | SIC- Cost [106936]; Electrical Forman [143.96 h]; Electrical Technician [143.96 h]; Electrical Helper [143.96 h]; Labor [143.96 h] | 106,936.09 | 8 | B2.28.20.00.01 | Number | P3-E. W |

| ID | WBS | Activity | Duration | Start | Finish | Predecessors | Total float | Free float | Resources | Cost | BOQ Qty | BOQ Line item | UOM | Activities Codes Sudair Station |
| --- | --- | --- | --- | --- | --- | --- | --- | --- | --- | --- | --- | --- | --- | --- |
|  | 5 | **Voice Evacuation System** |  | 2027-07-07 | 2027-07-17 |  |  |  |  |  |  |  |  |  |
| SDR-ST-CON-P3-1800 |  | install, test of Suspended ceiling outdoor projector speaker, bi-directional, 20w Part 1 | 8d | 2027-07-07 | 2027-07-17 | SDR-ST-CON-P3-1740, SDR-ST-CON-P1-5910, SDR-ST-CON-P1-5980 SS, SDR-ST-CON-P1-5970, SDR-ST-MILS-1000 | 0d |  | SIC- Cost [61312.1]; Electrical Forman [143.96 h]; Electrical Technician [2207.38 h]; Electrical Helper [2207.38 h]; Labor [2207.38 h] | 61,312.05 | 16 | B2.28.20.00.08 | Number | P3-E. W |
| SDR-ST-CON-P3-1870 |  | install, test of Suspended ceiling outdoor projector speaker, bi-directional, 20w Part 2 | 8d | 2027-07-07 | 2027-07-17 | SDR-ST-CON-P3-1800 SS, SDR-ST-CON-P3-1780 SS, SDR-ST-CON-P3-1650, SDR-ST-MILS-1000 | 0d |  | SIC- Cost [61312.1]; Electrical Forman [143.96 h]; Electrical Technician [143.96 h]; Electrical Helper [143.96 h]; Labor [143.96 h] | 61,312.05 | 16 | B2.28.20.00.08 | Number | P3-E. W |
|  | 6 | **Testing and Comissioning** |  | 2027-01-19 | 2027-08-06 |  |  |  |  |  |  |  |  |  |
|  | 1 | **Civil Works** |  | 2027-05-09 | 2027-05-31 |  |  |  |  |  |  |  |  |  |
| SDR-ST-TC-1000 |  | Testing & Commissioning of road works | 15d | 2027-05-09 | 2027-05-31 | SDR-ST-CON-P1-5530 | 0d |  | SIC- Cost; Civil Engineer [1061.45 h]; Civil Forman [1061.45 h] |  |  |  |  |  |
|  | 2 | **Storm Water Drainage Network** |  | 2027-01-19 | 2027-02-06 |  |  |  |  |  |  |  |  |  |
| SDR-ST-TC-1010 |  | Testing & Commissioning of network work | 15d | 2027-01-19 | 2027-02-06 | SDR-ST-CON-P1-4760, SDR-ST-CON-P1-4760 FF | 0d |  | SIC- Cost; Mechanical Forman [1061.45 h]; Mechanical Engineer [1061.45 h] |  |  |  |  |  |
|  | 3 | **Sewerage Network** |  | 2027-03-14 | 2027-03-31 |  |  |  |  |  |  |  |  |  |
| SDR-ST-TC-1030 |  | Testing & Commissioning of Sewage Network | 15d | 2027-03-14 | 2027-03-31 | SDR-ST-CON-P1-5700, SDR-ST-CON-P1-5800 | 3d | 0d | SIC- Cost; Civil Forman [1061.45 h]; Architecture [1061.45 h] |  |  |  |  |  |
|  | 5 | **Portable Water** |  | 2027-03-22 | 2027-04-08 |  |  |  |  |  |  |  |  |  |
| SDR-ST-TC-1020 |  | Testing & Commissioning of Potable Network | 15d | 2027-03-22 | 2027-04-08 | SDR-ST-CON-P1-5030, SDR-ST-CON-P1-5070 | 5.2d |  | SIC- Cost; Mechanical Forman [1061.45 h]; Mechanical Engineer [1061.45 h] |  |  |  |  |  |
|  | 6 | **Electrical Works** |  | 2027-07-18 | 2027-08-03 |  |  |  |  |  |  |  |  |  |
| SDR-ST-TC-1050 |  | Testing & Commissioning of Electrical Network | 15d | 2027-07-18 | 2027-08-03 | SDR-ST-CON-P1-6050 | 3d |  | SIC- Cost; Electrical Engineer [2122.91 h] |  |  |  |  |  |
|  | 8 | **CCTV Works** |  | 2027-07-22 | 2027-08-06 |  |  |  |  |  |  |  |  |  |
| SDR-ST-TC-1040 |  | Testing & Commissioning of medium voltage works | 14d | 2027-07-22 | 2027-08-06 | SDR-ST-CON-P3-1790 | 0d |  | SIC- Cost; Electrical Forman [2122.91 h] |  |  |  |  |  |
|  | 7 | **Close Out** |  | 2027-03-22 | 2027-08-06 |  |  |  |  |  |  |  |  |  |
|  | 1 | **As Built Drawings** |  | 2027-03-22 | 2027-08-03 |  |  |  |  |  |  |  |  |  |
|  | 1 | **Civil** |  | 2027-05-09 | 2027-05-27 |  |  |  |  |  |  |  |  |  |
| SDR-ST-CO-1000 |  | Civil As-Built Drawing Submission | 7d | 2027-05-09 | 2027-05-22 | SDR-ST-CON-P1-5530 | 3d | 0d | Civil Engineer [291.67 h]; Civil Drafman [291.67 h] |  |  |  |  |  |
| SDR-ST-CO-1010 |  | Civil As-Built Drawing Approvals | 5d | 2027-05-23 | 2027-05-27 | SDR-ST-CO-1000 | 3d | 0d | Civil Engineer [291.67 h]; Civil Forman [291.67 h] |  |  |  |  |  |
|  | 2 | **Mechanical** |  | 2027-03-22 | 2027-04-08 |  |  |  |  |  |  |  |  |  |
| SDR-ST-CO-1020 |  | Mechanical As-Built Drawing Submission | 7.9d | 2027-03-22 | 2027-03-30 | SDR-ST-CON-P1-5800, SDR-ST-CON-P1-5070 | 1d | 0d | Mechanical Drafman [291.65 h]; Mechanical Engineer [291.65 h] |  |  |  |  |  |
| SDR-ST-CO-1030 |  | Mechanical As-Built Drawing Approvals | 8d | 2027-03-31 | 2027-04-08 | SDR-ST-CO-1020 | 1d | 0.3d | Mechanical Forman [291.65 h]; Mechanical Engineer [291.65 h] |  |  |  |  |  |

| ID | WBS | Activity | Duration | Start | Finish | Predecessors | Total float | Free float | Resources |
| --- | --- | --- | --- | --- | --- | --- | --- | --- | --- |
|  | 3 | **Electrical** |  | 2027-07-12 | 2027-08-03 |  |  |  |  |
| SDR-ST-CO-1040 |  | Electrical As-Built Drawing Submission | 10d | 2027-07-12 | 2027-07-22 | SDR-ST-CON-P1-6050 SS, SDR-ST-CO-1010 | 3d | 0d | Electrical Drafman [583.33 h] |
| SDR-ST-CO-1100 |  | Electrical As-Built Drawing Approvals | 10d | 2027-07-24 | 2027-08-03 | SDR-ST-CO-1040 | 3d |  | Electrical Engineer [291.67 h]; Electrical Forman [291.67 h] |
|  | 2 | **Training and Manuals** |  | 2027-07-07 | 2027-08-06 |  |  |  |  |
| SDR-ST-CO-1050 |  | Training and Manuals | 26.8d | 2027-07-07 | 2027-08-06 | SDR-ST-CON-P3-1870 SS, SDR-ST-CON-P3-1630 | 0d |  | Civil Engineer [194.44 h]; Mechanical Engineer [194.44 h]; Architecture [194.44 h] |
|  | 3 | **Demobilize Manpower** |  | 2027-07-07 | 2027-08-06 |  |  |  |  |
| SDR-ST-CO-1060 |  | Manpower Demobilize | 26.8d | 2027-07-07 | 2027-08-06 | SDR-ST-CO-1050 SS, SDR-ST-CO-1020 | 0d |  | Labor [291.67 h]; Architecture [291.67 h] |
|  | 4 | **Demobilize Equipment** |  | 2027-07-07 | 2027-08-06 |  |  |  |  |
| SDR-ST-CO-1070 |  | Equipments Demobilize | 26.8d | 2027-07-07 | 2027-08-06 | SDR-ST-CO-1060 SS, SDR-ST-CO-1020 | 0d |  | Mechanical Forman [291.67 h]; Helper [291.67 h] |
|  | 5 | **Removal of Site Offices and Structures** |  | 2027-07-07 | 2027-08-06 |  |  |  |  |
| SDR-ST-CO-1090 |  | Site Office Removal | 26.8d | 2027-07-07 | 2027-08-06 | SDR-ST-CO-1070 SS+0.1d, SDR-ST-CO-1020 | 0d |  | Helper [291.67 h]; Labor [291.67 h] |
|  | 6 | **Handover** |  | 2027-07-21 | 2027-08-06 |  |  |  |  |
| SDR-ST-CO-1080 |  | Project Handover | 15d | 2027-07-21 | 2027-08-06 | SDR-ST-CO-1070 SS, SDR-ST-CO-1090 FF, SDR-ST-CON-P3-1890, SDR-ST-CON-P3-1880, SDR-ST-CON-P3-1840, SDR-ST-CON-P1-6030, SDR-ST-CON-P1-6040 SS, SDR-ST-CON-P1-6000, SDR-ST-CO-1100 FF, SDR-ST-TC-1050 FF, SDR-ST-MILS-1100, SDR-ST-MILS-1120 FF, SDR-ST-TC-1000 FF, SDR-ST-TC-1040 FF, SDR-ST-CON-P1-5980, SDR-ST-CON-P1-6040 | 0d |  | Civil Engineer [83.33 h]; Civil Forman [83.33 h]; Electrical Forman [83.33 h]; Mechanical Forman [83.33 h]; Helper [83.33 h]; Labor [83.33 h]; Mechanical Engineer [83.33 h] |

## Activity codes

| Code | Value | Meaning |
| --- | --- | --- |
| Activities Codes Sudair Station | P1-L.V | Low Voltage |
| Activities Codes Sudair Station | P1-M.V | Medium Voltage |
| Activities Codes Sudair Station | P1-P.W | Portable Water |
| Activities Codes Sudair Station | P1-R.W | Road WORKS |
| Activities Codes Sudair Station | P1-S.L | Street Lighting |
| Activities Codes Sudair Station | P1-S.N | Sewarage Network |
| Activities Codes Sudair Station | P1-S.W | Storm Water |
| Activities Codes Sudair Station | P1-Tele | Telecommunication |
| Activities Codes Sudair Station | P3-C.W | Canopy Works |
| Activities Codes Sudair Station | P3-E. W | Electrical Works |
| Activities Codes Sudair Station | P3-El.W | Electrical Works |
| Activities Codes Sudair Station | P3-P.W | Platform Works |
| UOM | M | Meter |
| UOM | M2 | Meter sq |
| UOM | M3 | cubic mtr |
| UOM | Number | Numbers |
| UOM | lm | Linear Meter |
