# Project:PASSENGER STATION FOR SAR RAILWAY - PACKAGE 1 SUDAIR - Update 16/11/2026.-R1

Schedule from Primavera P6, 2026-04-07 to 2027-12-22, data date 2026-11-16, costs in SAR, A marks actual dates.
Must finish by 2027-08-06

## Calendars

- 6x10 Sudair Infra: Mon-Thu 07:00-12:00, 13:00-18:00; Fri off; Sat-Sun 07:00-12:00, 13:00-18:00. Exceptions (off unless hours are given): 2026-05-27 to 2026-05-28, 2026-05-30 to 2026-05-31, 2026-09-23, 2027-02-22, 2027-03-09 to 2027-03-11, 2027-03-13, 2027-05-16 to 2027-05-20, 2027-08-06 07:00-12:00, 13:00-18:00.
- 7x10 Sudair Infra: Mon-Sun 07:00-12:00, 13:00-18:00. Exceptions (off unless hours are given): 2026-05-27 to 2026-05-30, 2026-09-01 07:00-12:00, 13:00-18:00, 2026-09-06 07:00-12:00, 13:00-18:00, 2026-09-13 07:00-12:00, 13:00-18:00, 2026-09-20 07:00-12:00, 13:00-18:00, 2026-09-23, 2026-09-27 07:00-12:00, 13:00-18:00, 2026-10-04 07:00-12:00, 13:00-18:00, 2026-10-11 07:00-12:00, 13:00-18:00, 2026-10-18 07:00-12:00, 13:00-18:00, 2026-10-25 07:00-12:00, 13:00-18:00, 2026-11-01 07:00-12:00, 13:00-18:00, 2026-11-08 07:00-12:00, 13:00-18:00, 2026-11-15 07:00-12:00, 13:00-18:00, 2026-11-22 07:00-12:00, 13:00-18:00, 2026-11-29 07:00-12:00, 13:00-18:00, 2026-12-06 07:00-12:00, 13:00-18:00, 2026-12-13 07:00-12:00, 13:00-18:00, 2026-12-20 07:00-12:00, 13:00-18:00, 2026-12-27 07:00-12:00, 13:00-18:00, 2027-01-03 07:00-12:00, 13:00-18:00, 2027-01-10 07:00-12:00, 13:00-18:00, 2027-01-17 07:00-12:00, 13:00-18:00, 2027-01-24 07:00-12:00, 13:00-18:00, 2027-01-31 07:00-12:00, 13:00-18:00, 2027-02-07 07:00-12:00, 13:00-18:00, 2027-02-14 07:00-12:00, 13:00-18:00, 2027-02-21 07:00-12:00, 13:00-18:00, 2027-02-22, 2027-02-28 07:00-12:00, 13:00-18:00, 2027-03-07 07:00-12:00, 13:00-18:00, 2027-03-09 to 2027-03-13, 2027-03-14 07:00-12:00, 13:00-18:00, 2027-03-21 07:00-12:00, 13:00-18:00, 2027-03-28 07:00-12:00, 13:00-18:00, 2027-04-04 07:00-12:00, 13:00-18:00, 2027-04-11 07:00-12:00, 13:00-18:00, 2027-04-18 07:00-12:00, 13:00-18:00, 2027-04-25 07:00-12:00, 13:00-18:00, 2027-05-02 07:00-12:00, 13:00-18:00, 2027-05-09 07:00-12:00, 13:00-18:00, 2027-05-16 to 2027-05-20, 2027-05-23 07:00-12:00, 13:00-18:00, 2027-05-30 07:00-12:00, 13:00-18:00, 2027-06-06 07:00-12:00, 13:00-18:00, 2027-06-13 07:00-12:00, 13:00-18:00, 2027-06-20 07:00-12:00, 13:00-18:00, 2027-06-27 07:00-12:00, 13:00-18:00, 2027-07-04 07:00-12:00, 13:00-18:00, 2027-07-11 07:00-12:00, 13:00-18:00, 2027-07-18 07:00-12:00, 13:00-18:00, 2027-07-25 07:00-12:00, 13:00-18:00, 2027-08-01 07:00-12:00, 13:00-18:00, 2027-08-08 07:00-12:00, 13:00-18:00, 2027-08-15 07:00-12:00, 13:00-18:00, 2027-08-22 07:00-12:00, 13:00-18:00, 2027-08-29 07:00-12:00, 13:00-18:00.

## Resources

| Resource | Group | Rate | Notes |
| --- | --- | --- | --- |
| SIC- Cost | material | 23 |  |
| Surveyor | labor |  |  |
| Helper | labor |  |  |
| charpenter | labor |  |  |
| Supervisor | labor |  |  |
| Mason | labor |  |  |
| Mason Helper | labor |  |  |
| Painter | labor |  |  |
| Electrical Technician | labor |  |  |
| Electrical Helper | labor |  |  |
| Steel Structure Subcontractor | labor |  |  |
| Metal Fabricator | labor |  |  |
| Mobilzation Team | labor |  |  |
| Safety Engineer | labor |  |  |
| QA/QC Engineer | labor |  |  |
| Project Controls Manager | labor |  |  |
| Project Manager | labor |  |  |
| Planning Engineer | labor |  |  |
| Mechanical Drafman | labor |  |  |
| Design Engineer | labor |  |  |
| Project Coordinator | labor |  |  |
| Pipe Fitter | labor |  |  |
| Labor | labor |  |  |
| Excavator | equipment |  |  |
| Excavator Operator | labor |  |  |
| Loader | equipment |  |  |
| Dumper Operator | labor |  |  |
| Dumper Truck | equipment |  |  |
| Grader | equipment |  |  |
| Grader Operator | labor |  |  |
| Loader Operator | labor |  |  |
| Un-Skilled Labor | labor |  |  |
| Supervisor | labor |  |  |
| Skilled Labor | labor |  |  |
| Surveyor | labor |  |  |
| Painter | labor |  |  |
| Painter Helper | labor |  |  |
| Compactor | equipment |  |  |
| Sweeper Machine | equipment |  |  |
| Sweeper Machine Operator | labor |  |  |
| Pneumatic Tire Roller | equipment |  |  |
| Pneumatic Roller Operator | labor |  |  |
| Asphalt Paver | equipment |  |  |
| Asphalt Paver Operator | labor |  |  |
| Water Tanker | equipment |  |  |
| Water Tanker Operator | labor |  |  |
| Electrical Forman | labor |  |  |
| Plumber | labor |  |  |
| Plumbing Helper | labor |  |  |
| Civil Forman | labor |  |  |
| Carpenter | labor |  |  |
| Carpenter Helper | labor |  |  |
| Aluminum Cladding Subcontractor | labor |  |  |
| Suppliers | labor |  | ï»¿ |
| Delivery Team | labor |  |  |
| Mechanical Engineer | labor |  |  |
| Civil Drafman | labor |  |  |
| Electrical Engineer | labor |  |  |
| Mechanical Forman | labor |  |  |
| Architecture | labor |  |  |
| Electrical Drafman | labor |  |  |

## Schedule

| ID | WBS | Activity | Type | Duration | Start | Finish | Predecessors | Complete | Planned start | Planned finish | Total float | Free float | Resources | Variance |
| --- | --- | --- | --- | --- | --- | --- | --- | --- | --- | --- | --- | --- | --- | --- |
|  | 1 | **Milestone** |  |  | 2026-04-07 | 2027-12-22 |  |  |  |  |  |  |  |  |
| SDR-ST-MILS-1000 |  | Project Start | milestone | 0d | 2026-04-07 A | 2026-04-07 A |  | 100% |  |  |  |  |  | 0 |
| SDR-ST-MILS-1070 |  | Completion of road and paving works | milestone | 0d | 2027-03-01 | 2027-03-01 | SDR-ST-CON-P1-4770 |  |  |  | -61d | 0d |  | 0 |
| SDR-ST-MILS-1100 |  | Completion of site and platform works | milestone | 0d | 2027-07-11 | 2027-07-11 | SDR-ST-CON-P3-1490, SDR-ST-CON-P3-1420, SDR-ST-CON-P3-1480 |  |  |  | 11d | 129d |  | 0 |
| SDR-ST-MILS-1140 |  | Project Finish | milestone | 0d | 2027-12-22 | 2027-12-22 | SDR-ST-MILS-1110 FF, SDR-ST-TC-1040, SDR-ST-CO-1050, SDR-ST-CO-1070, SDR-ST-TC-1050, SDR-ST-CON-P3-1780, SDR-ST-CO-1080, SDR-ST-CO-1090, SDR-ST-CON-P1-4790, SDR-ST-CON-P1-4710, SDR-ST-CON-P1-4830, SDR-ST-CON-P1-5120, SDR-ST-CON-P1-5440, SDR-ST-CON-P3-1890 |  |  |  | -119d | 0d |  | 0 |
|  | 1 | **Major Milestone** |  |  | 2026-04-07 | 2027-12-19 |  |  |  |  |  |  |  |  |
| SDR-ST-MILS-1010 |  | Project Start Milstone | milestone | 0d | 2026-04-07 A | 2026-04-07 A | SDR-ST-MILS-1000 SS | 100% |  |  |  |  |  | 0 |
| SDR-ST-MILS-1120 |  | Project Finish Milstone | milestone | 0d | 2027-12-19 | 2027-12-19 | SDR-ST-CO-1060, SDR-ST-MILS-1130 |  |  |  | -116d | 2d |  | 0 |
|  | 3 | **Contractual Milestone** |  |  | 2026-05-06 | 2027-12-12 |  |  |  |  |  |  |  |  |
| SDR-ST-MILS-1040 |  | Submission and approval of plans and materials Finish Milestone | milestone | 0d | 2026-05-06 A | 2026-05-06 A | SDR-ST-ENG-AP-1230 | 100% |  |  |  |  |  | 0 |
| SDR-ST-MILS-1020 |  | Mobilization Finish Milestone | milestone | 0d | 2026-05-06 A | 2026-05-06 A | SDR-ST-MOBL-1060 | 100% |  |  |  |  |  | 0 |
| SDR-ST-MILS-1030 |  | Execution Plan and Baseline Submission Finish Milestone | milestone | 0d | 2026-08-15 A | 2026-08-15 A | SDR-ST-PREL-1110 | 100% | 2026-05-06 | 2026-05-06 |  |  |  | 0 |
| SDR-ST-MILS-1080 |  | Completion of road works | milestone | 0d | 2027-03-01 | 2027-03-01 | SDR-ST-CON-P1-4770 FF, SDR-ST-CON-P1-4410 FF, SDR-ST-CON-P1-4430 FF, SDR-ST-CON-P1-4730 FF, SDR-ST-CON-P1-4750 FF, SDR-ST-CON-P1-5010 FF, SDR-ST-CON-P1-4540 FF, SDR-ST-CON-P1-4890 FF, SDR-ST-CON-P1-4600 FF, SDR-ST-CON-P1-4930 FF, SDR-ST-CON-P1-4650 FF, SDR-ST-CON-P1-4980 FF |  |  |  | -20d | 0d |  | 0 |
| SDR-ST-MILS-1060 |  | Completion of medium voltage works | milestone | 0d | 2027-08-25 | 2027-08-25 | SDR-ST-CON-P1-3900 FF, SDR-ST-CON-P1-4000 FF, SDR-ST-CON-P1-4250 FF, SDR-ST-CON-P1-4010 FF, SDR-ST-CON-P1-4320 FF, SDR-ST-CON-P1-4050 FF, SDR-ST-CON-P1-3980 FF |  |  |  | -90d | 0d |  | 0 |
| SDR-ST-MILS-1130 |  | Completion of finishing works in the project | milestone | 0d | 2027-12-12 | 2027-12-12 | SDR-ST-CON-P1-5490 FF, SDR-ST-CON-P1-5280 FF, SDR-ST-CON-P1-5460 FF, SDR-ST-CON-P1-5390 FF, SDR-ST-CON-P1-5430 FF, SDR-ST-CON-P1-5530 FF, SDR-ST-CON-P1-3900 FF, SDR-ST-CON-P1-4000 FF, SDR-ST-CON-P1-4250 FF, SDR-ST-CON-P1-4010 FF, SDR-ST-CON-P1-4320 FF, SDR-ST-CON-P1-4050 FF, SDR-ST-CON-P1-3980 FF, SDR-ST-CON-P1-5170 FF, SDR-ST-CON-P1-5760 FF, SDR-ST-CON-P1-6080 FF, SDR-ST-CON-P1-5790 FF, SDR-ST-CON-P1-3810 FF, SDR-ST-CON-P1-3670 FF, SDR-ST-CON-P1-3760 FF, SDR-ST-CON-P1-3930 FF, SDR-ST-CON-P1-5920 FF, SDR-ST-CON-P1-6000 FF, SDR-ST-CON-P1-6040 FF, SDR-ST-CON-P1-6050 FF, SDR-ST-CON-P1-4570 FF, SDR-ST-CON-P1-4400 FF, SDR-ST-CON-P1-4610 FF, SDR-ST-CON-P1-3700 FF, SDR-ST-CON-P1-3360 FF, SDR-ST-CON-P1-3480 FF, SDR-ST-CON-P1-5970 FF, SDR-ST-CON-P1-5980 FF, SDR-ST-CON-P1-5910 FF, SDR-ST-CON-P1-6030 FF, SDR-ST-CON-P1-4310 FF, SDR-ST-CON-P1-4880 FF, SDR-ST-CON-P1-4370 FF, SDR-ST-CON-P1-5140 FF, SDR-ST-CON-P1-4020 FF, SDR-ST-CON-P1-4740 FF, SDR-ST-CON-P1-4240 FF, SDR-ST-CON-P1-5240 FF, SDR-ST-CON-P1-4270 FF, SDR-ST-CON-P1-4900 FF, SDR-ST-CON-P1-4160 FF, SDR-ST-CON-P1-4820 FF, SDR-ST-CON-P1-4170 FF, SDR-ST-CON-P1-5000 FF, SDR-ST-CON-P1-3880 FF, SDR-ST-CON-P1-4040 FF, SDR-ST-CON-P1-4070 FF, SDR-ST-CON-P1-4800 FF, SDR-ST-CON-P1-5030 FF, SDR-ST-CON-P1-4700 FF, SDR-ST-CON-P1-5100 FF, SDR-ST-CON-P1-4520 FF, SDR-ST-CON-P1-5070 FF, SDR-ST-CON-P1-4910 FF, SDR-ST-CON-P1-5730 FF, SDR-ST-CON-P1-4640 FF, SDR-ST-CON-P1-5710 FF, SDR-ST-CON-P1-4660 FF, SDR-ST-CON-P1-5750 FF, SDR-ST-CON-P1-5570 FF, SDR-ST-CON-P1-5720 FF, SDR-ST-CON-P1-4970 FF, SDR-ST-CON-P1-5700 FF, SDR-ST-CON-P1-5020 FF, SDR-ST-CON-P1-5740 FF, SDR-ST-CON-P1-5500 FF, SDR-ST-CON-P1-5770 FF, SDR-ST-CON-P1-5670 FF, SDR-ST-CON-P1-5800 FF, SDR-ST-CON-P1-4760 FF, SDR-ST-CON-P3-1840 FF, SDR-ST-CON-P3-1140 FF, SDR-ST-CON-P3-1450 FF, SDR-ST-CON-P3-1880 FF, SDR-ST-CON-P3-1890 FF, SDR-ST-CON-P3-1170 FF, SDR-ST-CON-P3-1790 FF, SDR-ST-CON-P3-1870 FF |  |  |  | -110d | 6d |  | 0 |
|  | 2 | **Phases Milestone** |  |  | 2026-11-28 | 2027-12-12 |  |  |  |  |  |  |  |  |
| SDR-ST-MILS-1050 |  | Engineering Phase Finish Milestone | milestone | 0d | 2026-11-28 | 2026-11-28 | SDR-ST-ENG-AP-1080 FF, SDR-ST-ENG-AP-1090 FF, SDR-ST-ENG-AP-1100 FF, SDR-ST-ENG-AP-1110 FF, SDR-ST-ENG-AP-1120 FF, SDR-ST-ENG-AP-1000 FF, SDR-ST-ENG-AP-1010 FF, SDR-ST-ENG-AP-1020 FF, SDR-ST-ENG-AP-1030 FF, SDR-ST-ENG-AP-1040 FF, SDR-ST-ENG-AP-1050 FF, SDR-ST-ENG-AP-1060 FF, SDR-ST-ENG-AP-1070 FF, SDR-ST-ENG-AP-1130 FF, SDR-ST-ENG-AP-1140 FF, SDR-ST-ENG-AP-1150 FF, SDR-ST-ENG-AP-1160 FF, SDR-ST-ENG-AP-1170 FF, SDR-ST-ENG-AP-1180 FF, SDR-ST-ENG-AP-1190 FF, SDR-ST-ENG-AP-1200 FF, SDR-ST-ENG-AP-1210 FF, SDR-ST-ENG-AP-1220 FF, SDR-ST-ENG-AP-1230 FF |  |  |  | -119d | 0d |  | -100 |
| SDR-ST-MILS-1090 |  | Procurment Phase Finish Milestone | milestone | 0d | 2027-04-27 | 2027-04-27 | SDR-ST-PRO-MS-1260 FF, SDR-ST-PRO-MS-1100 FF, SDR-ST-PRO-MS-1080 FF, SDR-ST-PRO-MS-1270 FF, SDR-ST-PRO-MS-1070 FF, SDR-ST-PRO-MS-1000 FF, SDR-ST-PRO-MS-1010 FF, SDR-ST-PRO-MS-1030 FF, SDR-ST-PRO-MS-1020 FF, SDR-ST-PRO-MS-1040 FF, SDR-ST-PRO-MS-1090 FF, SDR-ST-PRO-MS-1120 FF, SDR-ST-PRO-MS-1150 FF, SDR-ST-PRO-MS-1160 FF, SDR-ST-PRO-MS-1050 FF, SDR-ST-PRO-MS-1060 FF, SDR-ST-PRO-MS-1110 FF, SDR-ST-PRO-MS-1140 FF, SDR-ST-PRO-MS-1130 FF, SDR-ST-PRO-MS-1200 FF, SDR-ST-PRO-MS-1240 FF, SDR-ST-PRO-MS-1180 FF, SDR-ST-PRO-MS-1230 FF, SDR-ST-PRO-MS-1220 FF, SDR-ST-PRO-MS-1210 FF, SDR-ST-PRO-MS-1170 FF, SDR-ST-PRO-MS-1250 FF, SDR-ST-PRO-MS-1190 FF |  |  |  | -14d | 70d |  | 0 |
| SDR-ST-MILS-1110 |  | Construction Phase Finish Milestone | milestone | 0d | 2027-12-12 | 2027-12-12 | SDR-ST-CON-P3-1890 FF, SDR-ST-CON-P3-1790, SDR-ST-CON-P1-6050, SDR-ST-CON-P1-6040 |  |  |  | -110d | 9d |  | 0 |
|  | 9 | **Mobilization** |  |  | 2026-04-07 | 2026-08-17 |  |  |  |  |  |  |  |  |
|  | 6 | **Office Site Prepare** |  |  | 2026-04-07 | 2026-04-12 |  |  |  |  |  |  |  |  |
| SDR-ST-MOBL-1000 |  | Office Area Grading and Prepare |  | 4d | 2026-04-07 A | 2026-04-12 A | SDR-ST-MILS-1000 SS | 100% | 2026-04-07 | 2026-04-11 |  |  | Mobilzation Team [2827.55 h] | 0 |
|  | 3 | **Access Roads** |  |  | 2026-04-12 | 2026-04-16 |  |  |  |  |  |  |  |  |
| SDR-ST-MOBL-1010 |  | Office Area Access Roads Prepare |  | 4d | 2026-04-12 A | 2026-04-16 A | SDR-ST-MOBL-1000, SDR-ST-MILS-1010 | 100% | 2026-04-12 | 2026-04-15 |  |  | Mobilzation Team [2827.55 h] | 0 |

| ID | WBS | Activity | Duration | Start | Finish | Predecessors | Complete | Planned start | Planned finish | Resources | Variance |
| --- | --- | --- | --- | --- | --- | --- | --- | --- | --- | --- | --- |
|  | 5 | **Offices Installation** |  | 2026-04-16 | 2026-04-22 |  |  |  |  |  |  |
| SDR-ST-MOBL-1020 |  | Offices Cabins Installation | 5d | 2026-04-16 A | 2026-04-22 A | SDR-ST-MILS-1010, SDR-ST-MOBL-1010 | 100% | 2026-04-16 | 2026-04-21 | Mobilzation Team [2827.55 h] | 0 |
|  | 10 | **Offices MEP Works** |  | 2026-04-16 | 2026-04-22 |  |  |  |  |  |  |
| SDR-ST-MOBL-1030 |  | Office Cabins MEP Works | 5d | 2026-04-16 A | 2026-04-22 A | SDR-ST-MILS-1000, SDR-ST-MOBL-1020 FF | 100% | 2026-04-16 | 2026-04-21 | Mobilzation Team [2827.55 h] | 0 |
|  | 4 | **Manpower Mobilization** |  | 2026-04-22 | 2026-04-30 |  |  |  |  |  |  |
| SDR-ST-MOBL-1040 |  | Manpower Arrive | 4d | 2026-04-22 A | 2026-04-30 A | SDR-ST-MOBL-1030 | 100% | 2026-04-22 | 2026-04-26 | Mobilzation Team [2827.54 h] | 0 |
|  | 7 | **Equipment Mobilization** |  | 2026-04-13 | 2026-05-04 |  |  |  |  |  |  |
| SDR-ST-MOBL-1050 |  | Equipment Arrive | 3d | 2026-04-13 A | 2026-05-04 A | SDR-ST-MOBL-1040 | 100% | 2026-04-27 | 2026-04-29 | Mobilzation Team [2827.53 h] | 0 |
|  | 1 | **Project Signage** |  | 2026-04-30 | 2026-05-06 |  |  |  |  |  |  |
| SDR-ST-MOBL-1060 |  | Project Sign Installation | 6d | 2026-04-30 A | 2026-05-06 A | SDR-ST-MOBL-1050 | 100% |  |  | Mobilzation Team [2827.55 h] | 0 |
|  | 2 | **Preliminary Submittals** |  | 2026-04-30 | 2026-08-17 |  |  |  |  |  |  |
|  | 1 | **HSSE Plan** |  | 2026-04-30 | 2026-05-06 |  |  |  |  |  |  |
| SDR-ST-PREL-1000 |  | Project HSSE Plan Submission | 3d | 2026-04-30 A | 2026-05-04 A | SDR-ST-MOBL-1050, SDR-ST-MOBL-1020 | 100% | 2026-04-30 | 2026-05-03 | Safety Engineer | 0 |
| SDR-ST-PREL-1060 |  | Project HSSE Plan Approval | 2d | 2026-05-04 A | 2026-05-06 A | SDR-ST-PREL-1000 | 100% | 2026-05-04 | 2026-05-05 | Safety Engineer | 0 |
|  | 2 | **Quality Control Plan** |  | 2026-04-30 | 2026-05-06 |  |  |  |  |  |  |
| SDR-ST-PREL-1010 |  | Project Quality Plan Submission | 3d | 2026-04-30 A | 2026-05-04 A | SDR-ST-PREL-1000 SS | 100% | 2026-04-30 | 2026-05-03 | QA/QC Engineer | 0 |
| SDR-ST-PREL-1070 |  | Project Quality Plan Approval | 2d | 2026-05-04 A | 2026-05-06 A | SDR-ST-PREL-1010 | 100% | 2026-05-04 | 2026-05-05 | QA/QC Engineer | 0 |
|  | 3 | **Communications Plan** |  | 2026-04-30 | 2026-06-22 |  |  |  |  |  |  |
| SDR-ST-PREL-1020 |  | Project Communication Plan Submission | 3d | 2026-04-30 A | 2026-05-04 A | SDR-ST-PREL-1010 SS | 100% | 2026-04-30 | 2026-05-03 | Project Controls Manager | 0 |
| SDR-ST-PREL-1080 |  | Project Communication Plan Approval | 2d | 2026-05-04 A | 2026-06-22 A | SDR-ST-PREL-1020 | 100% | 2026-05-04 | 2026-05-05 | Project Controls Manager | 0 |
|  | 4 | **Risk Managment Plan** |  | 2026-04-30 | 2026-05-06 |  |  |  |  |  |  |
| SDR-ST-PREL-1030 |  | Project Risk Managment Plan Submission | 3d | 2026-04-30 A | 2026-05-04 A | SDR-ST-PREL-1020 SS | 100% | 2026-04-30 | 2026-05-03 | Project Manager | 0 |
| SDR-ST-PREL-1090 |  | Project Risk Managment Plan Approvals | 2d | 2026-05-04 A | 2026-05-06 A | SDR-ST-PREL-1030 | 100% | 2026-05-04 | 2026-05-05 | Project Manager | 0 |
|  | 5 | **Project Execution Plan** |  | 2026-04-30 | 2026-08-17 |  |  |  |  |  |  |
| SDR-ST-PREL-1040 |  | Project Execution Plan Submission | 3d | 2026-04-30 A | 2026-08-15 A | SDR-ST-PREL-1030 SS | 100% | 2026-04-30 | 2026-05-03 | Project Manager | 0 |
| SDR-ST-PREL-1100 |  | Project Execution Plan Approvals | 2d | 2026-05-04 A | 2026-08-17 A | SDR-ST-PREL-1040 | 100% | 2026-05-04 | 2026-05-05 | Project Manager | 0 |

| ID | WBS | Activity | Duration | Start | Finish | Predecessors | Complete | Planned start | Planned finish | Resources | Variance |
| --- | --- | --- | --- | --- | --- | --- | --- | --- | --- | --- | --- |
|  | 6 | **Project Schedule** |  | 2026-04-30 | 2026-08-02 |  |  |  |  |  |  |
| SDR-ST-PREL-1050 |  | Project Schedule Submission | 3d | 2026-04-30 A | 2026-05-04 A | SDR-ST-PREL-1000 SS | 100% | 2026-04-30 | 2026-05-03 | Planning Engineer | 0 |
| SDR-ST-PREL-1110 |  | Project Schedule Approvals | 3d | 2026-05-04 A | 2026-08-02 A | SDR-ST-PREL-1050 | 100% | 2026-05-04 | 2026-05-06 | Planning Engineer | 0 |
|  | 3 | **Engineering** |  | 2026-04-07 | 2026-12-07 |  |  |  |  |  |  |
|  | 5 | **Shop Drawings Stage** |  | 2026-04-07 | 2026-11-28 |  |  |  |  |  |  |
|  | 1 | **Submission** |  | 2026-04-07 | 2026-07-08 |  |  |  |  |  |  |
|  | 4 | **Civil** |  | 2026-04-07 | 2026-06-29 |  |  |  |  |  |  |
| SDR-ST-ENG-SUB-1080 |  | STRUCTURAL STEEL GENERAL NOTES Submission | 7d | 2026-04-07 A | 2026-05-31 A | SDR-ST-MILS-1000 SS | 100% | 2026-04-07 | 2026-04-14 | Suppliers [274.9 h]; Civil Drafman [274.9 h] | 0 |
| SDR-ST-ENG-SUB-1090 |  | REINFORCED CONCRETE GENERAL NOTES - 01 Submission | 7d | 2026-04-07 A | 2026-05-31 A | SDR-ST-MILS-1000 SS | 100% | 2026-04-07 | 2026-04-14 | Suppliers [274.9 h]; Civil Drafman [274.9 h] | 0 |
| SDR-ST-ENG-SUB-1100 |  | EXTERNAL CANOPY PLANS Submission | 7d | 2026-04-07 A | 2026-05-24 A | SDR-ST-MILS-1000 SS | 100% | 2026-04-07 | 2026-04-14 | Suppliers [274.9 h]; Civil Drafman [274.9 h] | 0 |
| SDR-ST-ENG-SUB-1110 |  | CANOPY FRAMING Submission | 7d | 2026-04-07 A | 2026-06-29 A | SDR-ST-MILS-1000 SS | 100% | 2026-04-07 | 2026-04-14 | Suppliers [274.9 h]; Civil Drafman [274.9 h] | 0 |
| SDR-ST-ENG-SUB-1120 |  | RC DETAILS Submission | 7d | 2026-04-07 A | 2026-05-31 A | SDR-ST-MILS-1000 SS | 100% | 2026-04-07 | 2026-04-14 | Suppliers [274.9 h]; Civil Drafman [274.9 h] | 0 |
|  | 6 | **Sewerage Network** |  | 2026-04-07 | 2026-05-31 |  |  |  |  |  |  |
| SDR-ST-ENG-SUB-1000 |  | Sewage Layout Master Plan Submission | 7d | 2026-04-07 A | 2026-05-01 A | SDR-ST-MILS-1000 SS | 100% | 2026-04-07 | 2026-04-14 | SIC- Cost; Mechanical Drafman [274.9 h]; Design Engineer [274.9 h] | 0 |
| SDR-ST-ENG-SUB-1010 |  | Sewage Network Profile Submission | 7d | 2026-04-07 A | 2026-05-01 A | SDR-ST-MILS-1000 SS | 100% | 2026-04-07 | 2026-04-14 | SIC- Cost; Mechanical Drafman [274.9 h]; Design Engineer [274.9 h] | 0 |
| SDR-ST-ENG-SUB-1020 |  | Sewage Network Standard Details Submission | 7d | 2026-04-07 A | 2026-05-31 A | SDR-ST-MILS-1000 SS | 100% | 2026-04-07 | 2026-04-14 | SIC- Cost; Mechanical Drafman [274.92 h]; Design Engineer [274.92 h] | 0 |
| SDR-ST-ENG-SUB-1030 |  | Sewage Network Section Submission | 7d | 2026-04-07 A | 2026-05-31 A | SDR-ST-MILS-1000 SS | 100% | 2026-04-07 | 2026-04-14 | SIC- Cost; Mechanical Drafman [274.9 h]; Design Engineer [274.9 h] | 0 |
|  | 8 | **Portable Water** |  | 2026-04-07 | 2026-05-31 |  |  |  |  |  |  |
| SDR-ST-ENG-SUB-1040 |  | Potable Water Piping Layout Master Plan Submission | 7d | 2026-04-07 A | 2026-05-01 A | SDR-ST-MILS-1000 SS | 100% | 2026-04-07 | 2026-04-14 | SIC- Cost; Mechanical Drafman [274.9 h]; Design Engineer [274.9 h] | 0 |
| SDR-ST-ENG-SUB-1050 |  | Potable Water Piping Layout Submission | 7d | 2026-04-07 A | 2026-05-01 A | SDR-ST-MILS-1000 SS | 100% | 2026-04-07 | 2026-04-14 | SIC- Cost; Mechanical Drafman [274.9 h]; Design Engineer [274.9 h] | 0 |
| SDR-ST-ENG-SUB-1060 |  | Potable Water Standard Details Submission | 7d | 2026-04-07 A | 2026-05-31 A | SDR-ST-MILS-1000 SS | 100% | 2026-04-07 | 2026-04-14 | SIC- Cost; Mechanical Drafman [274.9 h]; Design Engineer [274.9 h] | 0 |
| SDR-ST-ENG-SUB-1070 |  | Potable Water Section Submission | 7d | 2026-04-07 A | 2026-05-31 A | SDR-ST-MILS-1000 SS | 100% | 2026-04-07 | 2026-04-14 | SIC- Cost; Mechanical Drafman [274.9 h]; Design Engineer [274.9 h] | 0 |
|  | 9 | **Electrical** |  | 2026-04-07 | 2026-07-08 |  |  |  |  |  |  |
| SDR-ST-ENG-SUB-1130 |  | Medium Voltage Network Submission | 7d | 2026-04-07 A | 2026-07-08 A | SDR-ST-MILS-1000 SS | 100% | 2026-04-07 | 2026-04-14 | Electrical Engineer [274.9 h]; Electrical Forman [274.9 h] | 0 |
| SDR-ST-ENG-SUB-1140 |  | Standard Details Medium Voltage Submission | 7d | 2026-04-07 A | 2026-07-08 A | SDR-ST-MILS-1000 SS | 100% | 2026-04-07 | 2026-04-14 | Electrical Engineer [274.9 h]; Electrical Forman [274.9 h] | 0 |
| SDR-ST-ENG-SUB-1150 |  | Low Voltage Network Submission | 7d | 2026-04-07 A | 2026-05-01 A | SDR-ST-MILS-1000 SS | 100% | 2026-04-07 | 2026-04-14 | Electrical Engineer [274.9 h]; Electrical Forman [274.9 h] | 0 |
| SDR-ST-ENG-SUB-1160 |  | Standard Details_Low Voltage Submission | 7d | 2026-04-07 A | 2026-05-01 A | SDR-ST-ENG-SUB-1130 SS | 100% | 2026-04-07 | 2026-04-14 | Electrical Engineer [274.9 h]; Electrical Forman [274.9 h] | 0 |
| SDR-ST-ENG-SUB-1170 |  | Street Lighting Network Submission | 7d | 2026-04-07 A | 2026-05-01 A | SDR-ST-ENG-SUB-1130 SS | 100% | 2026-04-07 | 2026-04-14 | Electrical Engineer [274.9 h]; Electrical Forman [274.9 h] | 0 |
| SDR-ST-ENG-SUB-1180 |  | Standard Details_Street Lighting Submission | 7d | 2026-04-07 A | 2026-05-01 A | SDR-ST-ENG-SUB-1130 SS | 100% | 2026-04-07 | 2026-04-14 | Electrical Engineer [274.9 h]; Electrical Forman [274.9 h] | 0 |
| SDR-ST-ENG-SUB-1190 |  | Telecommunication Network Submission | 7d | 2026-04-07 A | 2026-05-01 A | SDR-ST-ENG-SUB-1130 SS | 100% | 2026-04-07 | 2026-04-14 | Electrical Engineer [274.9 h]; Electrical Forman [274.9 h] | 0 |
| SDR-ST-ENG-SUB-1200 |  | Telecommunication Standard Details Submission | 7d | 2026-04-07 A | 2026-05-01 A | SDR-ST-ENG-SUB-1130 SS | 100% | 2026-04-07 | 2026-04-14 | Electrical Engineer [274.9 h]; Electrical Forman [274.9 h] | 0 |
| SDR-ST-ENG-SUB-1210 |  | Canopy:Ground Floor Lighting Plan Submission | 7d | 2026-04-07 A | 2026-05-01 A | SDR-ST-ENG-SUB-1130 SS | 100% | 2026-04-07 | 2026-04-14 | Electrical Engineer [274.9 h]; Electrical Forman [274.9 h] | 0 |
| SDR-ST-ENG-SUB-1220 |  | Canopy:Ground Floor CCTV Plan Submission | 7d | 2026-04-07 A | 2026-05-01 A | SDR-ST-ENG-SUB-1130 SS | 100% | 2026-04-07 | 2026-04-14 | Electrical Engineer [274.9 h]; Electrical Forman [274.9 h] | 0 |
| SDR-ST-ENG-SUB-1230 |  | Canopy:Ground Floor Voice Evacuation Plan Submission | 7d | 2026-04-07 A | 2026-05-01 A | SDR-ST-ENG-SUB-1130 SS | 100% | 2026-04-07 | 2026-04-14 | Electrical Engineer [274.9 h]; Electrical Forman [274.9 h] | 0 |

| ID | WBS | Activity | Duration | Start | Finish | Predecessors | Complete | Planned start | Planned finish | Total float | Free float | Resources | Variance |
| --- | --- | --- | --- | --- | --- | --- | --- | --- | --- | --- | --- | --- | --- |
|  | 4 | **Approvals** |  | 2026-04-15 | 2026-11-28 |  |  |  |  |  |  |  |  |
|  | 4 | **Civil** |  | 2026-04-15 | 2026-07-12 |  |  |  |  |  |  |  |  |
| SDR-ST-ENG-AP-1100 |  | EXTERNAL CANOPY PLANS Approval | 11d | 2026-04-15 A | 2026-06-15 A | SDR-ST-ENG-SUB-1100 | 100% | 2026-04-15 | 2026-04-27 |  |  | Suppliers [412.35 h]; Civil Forman [412.35 h] | 0 |
| SDR-ST-ENG-AP-1110 |  | CANOPY FRAMING Approval | 11d | 2026-04-15 A | 2026-07-12 A | SDR-ST-ENG-SUB-1110 | 100% | 2026-04-15 | 2026-04-27 |  |  | Suppliers [412.35 h]; Civil Forman [412.35 h] | 0 |
| SDR-ST-ENG-AP-1080 |  | STRUCTURAL STEEL GENERAL NOTES Approval | 11d | 2026-04-25 A | 2026-06-08 A | SDR-ST-ENG-SUB-1080 | 100% | 2026-04-15 | 2026-04-27 |  |  | Suppliers [412.35 h]; Civil Forman [412.35 h] | 0 |
| SDR-ST-ENG-AP-1090 |  | REINFORCED CONCRETE GENERAL NOTES - 01 Approval | 11d | 2026-04-25 A | 2026-06-08 A | SDR-ST-ENG-SUB-1090 | 100% | 2026-04-15 | 2026-04-27 |  |  | Suppliers [412.35 h]; Civil Forman [412.35 h] | 0 |
| SDR-ST-ENG-AP-1120 |  | RC DETAILS Approval | 11d | 2026-04-25 A | 2026-06-08 A | SDR-ST-ENG-SUB-1120 | 100% | 2026-04-15 | 2026-04-27 |  |  | Suppliers [412.35 h]; Civil Forman [412.35 h] | 0 |
|  | 6 | **Sewerage Network** |  | 2026-04-15 | 2026-06-10 |  |  |  |  |  |  |  |  |
| SDR-ST-ENG-AP-1000 |  | Sewage Layout Master Plan Approval | 11d | 2026-04-15 A | 2026-05-06 A | SDR-ST-ENG-SUB-1000 | 100% | 2026-04-15 | 2026-04-27 |  |  | SIC- Cost; Project Coordinator [824.7 h] | 0 |
| SDR-ST-ENG-AP-1010 |  | Sewage Network Profile Approval | 11d | 2026-04-25 A | 2026-06-10 A | SDR-ST-ENG-SUB-1010 | 100% | 2026-04-15 | 2026-04-27 |  |  | SIC- Cost; Project Coordinator [824.7 h] | 0 |
| SDR-ST-ENG-AP-1020 |  | Sewage Network Standard Details Approval | 11d | 2026-04-25 A | 2026-06-08 A | SDR-ST-ENG-SUB-1020 | 100% | 2026-04-15 | 2026-04-27 |  |  | SIC- Cost; Project Coordinator [824.7 h] | 0 |
| SDR-ST-ENG-AP-1030 |  | Sewage Network Section Approval | 11d | 2026-04-25 A | 2026-06-08 A | SDR-ST-ENG-SUB-1030 | 100% | 2026-04-15 | 2026-04-27 |  |  | SIC- Cost; Project Coordinator [824.7 h] | 0 |
|  | 8 | **Portable Water** |  | 2026-04-15 | 2026-06-08 |  |  |  |  |  |  |  |  |
| SDR-ST-ENG-AP-1040 |  | Potable Water Piping Layout Master Plan Approval | 11d | 2026-04-15 A | 2026-05-06 A | SDR-ST-ENG-SUB-1040 | 100% | 2026-04-15 | 2026-04-27 |  |  | SIC- Cost; Project Coordinator [824.7 h] | 0 |
| SDR-ST-ENG-AP-1050 |  | Potable Water Piping Layout Approval | 11d | 2026-04-15 A | 2026-05-06 A | SDR-ST-ENG-SUB-1050 | 100% | 2026-04-15 | 2026-04-27 |  |  | SIC- Cost; Project Coordinator [824.7 h] | 0 |
| SDR-ST-ENG-AP-1060 |  | Potable Water Standard Details Approval | 11d | 2026-04-25 A | 2026-06-08 A | SDR-ST-ENG-SUB-1060 | 100% | 2026-04-15 | 2026-04-27 |  |  | SIC- Cost; Project Coordinator [824.7 h] | 0 |
| SDR-ST-ENG-AP-1070 |  | Potable Water Section Approval | 11d | 2026-04-25 A | 2026-06-08 A | SDR-ST-ENG-SUB-1070 | 100% | 2026-04-15 | 2026-04-27 |  |  | SIC- Cost; Project Coordinator [824.7 h] | 0 |
|  | 9 | **Electrical** |  | 2026-04-15 | 2026-11-28 |  |  |  |  |  |  |  |  |
| SDR-ST-ENG-AP-1150 |  | Low Voltage Network Approval | 11d | 2026-04-15 A | 2026-05-06 A | SDR-ST-ENG-SUB-1150 | 100% | 2026-04-15 | 2026-04-27 |  |  | Electrical Engineer [412.35 h]; Electrical Forman [412.35 h] | 0 |
| SDR-ST-ENG-AP-1170 |  | Street Lighting Network Approval | 11d | 2026-04-15 A | 2026-05-06 A | SDR-ST-ENG-SUB-1170 | 100% | 2026-04-15 | 2026-04-27 |  |  | Electrical Engineer [412.35 h]; Electrical Forman [412.35 h] | 0 |
| SDR-ST-ENG-AP-1180 |  | Standard Details_Street Lighting Approval | 11d | 2026-04-15 A | 2026-05-06 A | SDR-ST-ENG-SUB-1180 | 100% | 2026-04-15 | 2026-04-27 |  |  | Electrical Engineer [412.35 h]; Electrical Forman [412.35 h] | 0 |
| SDR-ST-ENG-AP-1190 |  | Telecommunication Network Approval | 11d | 2026-04-15 A | 2026-05-06 A | SDR-ST-ENG-SUB-1190 | 100% | 2026-04-15 | 2026-04-27 |  |  | Electrical Engineer [412.35 h]; Electrical Forman [412.35 h] | 0 |
| SDR-ST-ENG-AP-1200 |  | Telecommunication Standard Details Approval | 11d | 2026-04-15 A | 2026-05-06 A | SDR-ST-ENG-SUB-1200 | 100% | 2026-04-15 | 2026-04-27 |  |  | Electrical Engineer [412.35 h]; Electrical Forman [412.35 h] | 0 |
| SDR-ST-ENG-AP-1210 |  | Canopy:Ground Floor Lighting Plan Approval | 11d | 2026-04-15 A | 2026-05-06 A | SDR-ST-ENG-SUB-1210 | 100% | 2026-04-15 | 2026-04-27 |  |  | Electrical Engineer [412.35 h]; Electrical Forman [412.35 h] | 0 |
| SDR-ST-ENG-AP-1220 |  | Canopy:Ground Floor CCTV Plan Approval | 11d | 2026-04-15 A | 2026-05-06 A | SDR-ST-ENG-SUB-1220 | 100% | 2026-04-15 | 2026-04-27 |  |  | Electrical Engineer [412.35 h]; Electrical Forman [412.35 h] | 0 |
| SDR-ST-ENG-AP-1160 |  | Standard Details_Low Voltage Approval | 11d | 2026-04-25 A | 2026-06-10 A | SDR-ST-ENG-SUB-1160 | 100% | 2026-04-15 | 2026-04-27 |  |  | Electrical Engineer [412.35 h]; Electrical Forman [412.35 h] | 0 |
| SDR-ST-ENG-AP-1230 |  | Canopy:Ground Floor Voice Evacuation Plan Approval | 11d | 2026-05-02 A | 2026-05-06 A | SDR-ST-ENG-SUB-1230 FS+8d | 100% | 2026-04-25 | 2026-05-06 |  |  | Electrical Engineer [412.35 h]; Electrical Forman [412.35 h] | 0 |
| SDR-ST-ENG-AP-1130 |  | Medium Voltage Network Approval | 11d | 2026-11-16 | 2026-11-28 | SDR-ST-ENG-SUB-1130 |  |  |  | -119d | 0d | Electrical Engineer [412.35 h]; Electrical Forman [412.35 h] | -100 |
| SDR-ST-ENG-AP-1140 |  | Standard Details Medium Voltage Approval | 11d | 2026-11-16 | 2026-11-28 | SDR-ST-ENG-SUB-1140 |  |  |  | -119d | 0d | Electrical Engineer [412.35 h]; Electrical Forman [412.35 h] | -100 |

| ID | WBS | Activity | Duration | Start | Finish | Predecessors | Complete | Planned start | Planned finish | Resources | Variance | BOQ Qty | UOM |
| --- | --- | --- | --- | --- | --- | --- | --- | --- | --- | --- | --- | --- | --- |
|  | 6 | **Materials** |  | 2026-04-16 | 2026-12-07 |  |  |  |  |  |  |  |  |
|  | 5 | **Materials Submission** |  | 2026-04-16 | 2026-11-24 |  |  |  |  |  |  |  |  |
|  | 2 | **Short Lead Items** |  | 2026-04-16 | 2026-06-30 |  |  |  |  |  |  |  |  |
|  | 2 | **Civil** |  | 2026-04-16 | 2026-06-07 |  |  |  |  |  |  |  |  |
| SDR-ST-PRO-S-1010 |  | Waterproofing (Thermal & moisture Protection) | 7d | 2026-04-16 A | 2026-06-07 A | SDR-ST-ENG-AP-1120 SS+1d, SDR-ST-MILS-1000 SS | 100% | 2026-04-16 | 2026-04-23 | Suppliers; SIC- Cost | 0 |  |  |
| SDR-ST-PRO-S-1030 |  | Interlock | 7d | 2026-04-16 A | 2026-05-01 A | SDR-ST-ENG-AP-1090 SS+1d, SDR-ST-MILS-1000 SS | 100% | 2026-04-16 | 2026-04-23 | Suppliers; SIC- Cost | 0 |  |  |
| SDR-ST-PRO-S-1060 |  | Kerbstone | 7d | 2026-04-16 A | 2026-05-01 A | SDR-ST-ENG-AP-1090 SS+1d, SDR-ST-MILS-1000 | 100% | 2026-04-16 | 2026-04-23 | Suppliers; SIC- Cost | 0 |  |  |
| SDR-ST-PRO-S-1260 |  | Steel Bars | 7d | 2026-04-16 A | 2026-05-01 A | SDR-ST-ENG-AP-1080 SS+1d, SDR-ST-MILS-1000 SS | 100% | 2026-04-16 | 2026-04-23 | Suppliers; SIC- Cost | 0 |  |  |
| SDR-ST-PRO-S-1270 |  | Asphalt | 7d | 2026-04-16 A | 2026-06-03 A | SDR-ST-ENG-AP-1090 SS+1d, SDR-ST-MILS-1000 | 100% | 2026-04-16 | 2026-04-23 | Suppliers; SIC- Cost | 0 |  |  |
|  | 4 | **Electrical** |  | 2026-04-16 | 2026-06-30 |  |  |  |  |  |  |  |  |
| SDR-ST-PRO-S-1140 |  | LOW VOLTAGE CABLES | 7d | 2026-04-16 A | 2026-05-01 A | SDR-ST-ENG-AP-1150 SS+1d, SDR-ST-ENG-AP-1160 SS, SDR-ST-MILS-1000 FS+8d | 100% | 2026-04-16 | 2026-04-23 | SIC- Cost; Electrical Engineer | 0 | 695 | M |
| SDR-ST-PRO-S-1150 |  | LOW VOLTAGE DISTRIBUTION Panel | 7d | 2026-04-16 A | 2026-06-23 A | SDR-ST-ENG-AP-1150 SS+1d, SDR-ST-MILS-1000 | 100% | 2026-04-16 | 2026-04-23 | SIC- Cost; Electrical Engineer | 0 | 1 | Number |
| SDR-ST-PRO-S-1160 |  | STREET LIGHTING FEEDER Panel | 7d | 2026-04-16 A | 2026-06-22 A | SDR-ST-ENG-AP-1170 SS+1d, SDR-ST-MILS-1000 | 100% | 2026-04-16 | 2026-04-23 | SIC- Cost; Electrical Engineer | 0 | 2 | Number |
| SDR-ST-PRO-S-1170 |  | STREET LIGHTING CABLES | 7d | 2026-04-16 A | 2026-06-04 A | SDR-ST-ENG-AP-1170 SS+1d, SDR-ST-ENG-AP-1180 SS, SDR-ST-MILS-1000 | 100% | 2026-04-16 | 2026-04-23 | SIC- Cost; Electrical Engineer | 0 | 6800 | M |
| SDR-ST-PRO-S-1200 |  | ROAD CROSSING DUCTS Ø110mm | 7d | 2026-04-16 A | 2026-06-15 A | SDR-ST-ENG-AP-1010 SS+1d, SDR-ST-MILS-1000 | 100% | 2026-04-16 | 2026-04-23 | SIC- Cost; Electrical Engineer | 0 | 140 | M |
| SDR-ST-PRO-S-1210 |  | Drawpits | 7d | 2026-04-16 A | 2026-06-24 A | SDR-ST-ENG-AP-1090 SS+1d, SDR-ST-MILS-1000 | 100% | 2026-04-16 | 2026-04-23 | SIC- Cost; Electrical Engineer | 0 | 16 | Number |
| SDR-ST-PRO-S-1230 |  | CCTV :5MP IP PoE Bullet Camera | 7d | 2026-04-16 A | 2026-06-30 A | SDR-ST-ENG-AP-1190 SS+1d, SDR-ST-MILS-1000 | 100% | 2026-04-16 | 2026-04-23 | SIC- Cost; Electrical Engineer | 0 | 16 | Number |
| SDR-ST-PRO-S-1240 |  | CCTV :Pole mounted Filed Equipment cabinet (FE | 7d | 2026-04-16 A | 2026-06-22 A | SDR-ST-ENG-AP-1200 SS+1d, SDR-ST-MILS-1000 | 100% | 2026-04-16 | 2026-04-23 | SIC- Cost; Electrical Engineer | 0 | 4 | Number |
| SDR-ST-PRO-S-1250 |  | VOICE EVACUATION SYSTEM | 7d | 2026-04-16 A | 2026-06-23 A | SDR-ST-ENG-AP-1200 SS+1d, SDR-ST-MILS-1000 | 100% | 2026-04-16 | 2026-04-23 | SIC- Cost; Electrical Engineer | 0 | 32 | Number |
|  | 1 | **Mechanical** |  | 2026-04-16 | 2026-06-08 |  |  |  |  |  |  |  |  |
| SDR-ST-PRO-S-1040 |  | HDPE PIPES & FITTINGS | 7d | 2026-04-16 A | 2026-05-01 A | SDR-ST-ENG-AP-1000 SS+1d, SDR-ST-ENG-AP-1020 SS, SDR-ST-ENG-AP-1040 SS, SDR-ST-ENG-AP-1060 SS, SDR-ST-MILS-1000 | 100% | 2026-04-16 | 2026-04-23 | SIC- Cost; Mechanical Engineer | 0 |  |  |
| SDR-ST-PRO-S-1050 |  | CONCRETE PIPES AND FITTINGS | 7d | 2026-04-16 A | 2026-05-21 A | SDR-ST-ENG-AP-1090 SS+1d, SDR-ST-MILS-1000 | 100% | 2026-04-16 | 2026-04-23 | SIC- Cost; Mechanical Engineer | 0 |  |  |
| SDR-ST-PRO-S-1070 |  | GI GOOSENECK & VENT | 7d | 2026-04-16 A | 2026-06-08 A | SDR-ST-ENG-AP-1010 SS+1d, SDR-ST-MILS-1000 | 100% | 2026-04-16 | 2026-04-23 | SIC- Cost; Mechanical Engineer | 0 |  |  |
| SDR-ST-PRO-S-1080 |  | WARNING TAPE | 7d | 2026-04-16 A | 2026-05-01 A | SDR-ST-ENG-AP-1000 SS+1d, SDR-ST-ENG-AP-1050 SS+1d, SDR-ST-MILS-1000 | 100% | 2026-04-16 | 2026-04-23 | SIC- Cost; Mechanical Engineer | 0 |  |  |
| SDR-ST-PRO-S-1090 |  | MANHOLE, CATCH BASIN & VALVE BOX COVER | 7d | 2026-04-16 A | 2026-05-02 A | SDR-ST-ENG-AP-1030 SS+1d, SDR-ST-ENG-AP-1070 SS+1d, SDR-ST-MILS-1000 | 100% | 2026-04-16 | 2026-04-23 | SIC- Cost; Mechanical Engineer | 0 |  |  |

| ID | WBS | Activity | Duration | Start | Finish | Predecessors | Complete | Remaining | Planned start | Planned finish | Total float | Free float | Resources | Variance | BOQ Qty | UOM |
| --- | --- | --- | --- | --- | --- | --- | --- | --- | --- | --- | --- | --- | --- | --- | --- | --- |
|  | 1 | **Long Lead Items** |  | 2026-04-16 | 2026-11-24 |  |  |  |  |  |  |  |  |  |  |  |
|  | 1 | **Civil** |  | 2026-04-16 | 2026-06-21 |  |  |  |  |  |  |  |  |  |  |  |
| SDR-ST-PRO-S-1000 |  | Metal railing for platform | 7d | 2026-04-16 A | 2026-06-21 A | SDR-ST-ENG-AP-1110 SS+1d, SDR-ST-MILS-1000 | 100% |  | 2026-04-16 | 2026-04-23 |  |  | Suppliers; SIC- Cost | 0 |  |  |
| SDR-ST-PRO-S-1020 |  | Canopy | 7d | 2026-04-16 A | 2026-05-01 A | SDR-ST-ENG-AP-1100 SS+1d, SDR-ST-MILS-1000 | 100% |  | 2026-04-16 | 2026-04-23 |  |  | Suppliers; SIC- Cost | 0 |  |  |
|  | 3 | **Electrical** |  | 2026-04-16 | 2026-11-24 |  |  |  |  |  |  |  |  |  |  |  |
| SDR-ST-PRO-S-1180 |  | LIGHTING POLES | 7d | 2026-04-16 A | 2026-05-01 A | SDR-ST-ENG-AP-1170 SS+1d, SDR-ST-MILS-1000 | 100% |  | 2026-04-16 | 2026-04-23 |  |  | SIC- Cost; Electrical Engineer | 0 | 143 | Number |
| SDR-ST-PRO-S-1190 |  | STREET LIGHTING LUMINAIRE | 7d | 2026-04-16 A | 2026-06-01 A | SDR-ST-ENG-AP-1170 SS+1d, SDR-ST-ENG-AP-1210 SS, SDR-ST-MILS-1000 | 100% |  | 2026-04-16 | 2026-04-23 |  |  | SIC- Cost; Electrical Engineer | 0 | 276 | Number |
| SDR-ST-PRO-S-1220 |  | Outdoor Lighting Fixtures | 7d | 2026-04-16 A | 2026-06-08 A | SDR-ST-ENG-AP-1170 SS+1d, SDR-ST-ENG-AP-1220 SS, SDR-ST-MILS-1000 | 100% |  | 2026-04-16 | 2026-04-23 |  |  | SIC- Cost; Electrical Engineer | 0 | 390 | Number |
| SDR-ST-PRO-S-1110 |  | MEDIUM VOLTAGE CABLES DUCT BANKS | 7d | 2026-11-17 | 2026-11-24 | SDR-ST-ENG-AP-1130 SS+1d, SDR-ST-MILS-1000 |  |  |  |  | -72d | 0d | SIC- Cost; Electrical Engineer | -100 | 105 | M |
| SDR-ST-PRO-S-1120 |  | MEDIUM VOLTAGE CABLES | 7d | 2026-11-17 | 2026-11-24 | SDR-ST-ENG-AP-1140 SS+1d, SDR-ST-ENG-AP-1130 SS+1d, SDR-ST-MILS-1000 |  |  |  |  | -33d | 0d | SIC- Cost; Electrical Engineer | -100 | 7120 | M |
| SDR-ST-PRO-S-1130 |  | SUB-STATION | 7d | 2026-11-17 | 2026-11-24 | SDR-ST-ENG-AP-1130 SS+1d, SDR-ST-ENG-AP-1190 SS+1d, SDR-ST-ENG-AP-1170 SS+1d, SDR-ST-MILS-1000 |  |  |  |  | -14d | 0d | SIC- Cost; Electrical Engineer | -100 | 2 | Number |
|  | 2 | **Mechanical** |  | 2026-04-16 | 2026-05-01 |  |  |  |  |  |  |  |  |  |  |  |
| SDR-ST-PRO-S-1100 |  | WASHOUT & AIR VALVE, GATE VALVE, BUTTERFLY VALVE | 7d | 2026-04-16 A | 2026-05-01 A | SDR-ST-ENG-AP-1010 SS+1d, SDR-ST-MILS-1000 | 100% |  | 2026-04-16 | 2026-04-23 |  |  | SIC- Cost; Mechanical Engineer | 0 |  |  |
|  | 6 | **Materials Approval** |  | 2026-04-16 | 2026-12-07 |  |  |  |  |  |  |  |  |  |  |  |
|  | 2 | **Short Lead Items** |  | 2026-04-16 | 2026-11-22 |  |  |  |  |  |  |  |  |  |  |  |
|  | 1 | **Civil** |  | 2026-04-25 | 2026-07-07 |  |  |  |  |  |  |  |  |  |  |  |
| SDR-ST-PRO-A-1010 |  | Waterproofing (Thermal & moisture Protection) | 11d | 2026-04-25 A | 2026-06-15 A | SDR-ST-PRO-S-1010 | 100% |  | 2026-04-25 | 2026-05-06 |  |  | Suppliers; SIC- Cost | 0 |  |  |
| SDR-ST-PRO-A-1270 |  | Asphalt | 11d | 2026-04-25 A | 2026-07-07 A | SDR-ST-PRO-S-1270 | 100% |  | 2026-04-25 | 2026-05-06 |  |  | Suppliers; SIC- Cost | 0 |  |  |
| SDR-ST-PRO-A-1030 |  | Interlock | 11d | 2026-05-02 A | 2026-05-06 A | SDR-ST-PRO-S-1030 | 100% |  | 2026-04-25 | 2026-05-06 |  |  | Suppliers; SIC- Cost | 0 |  |  |
| SDR-ST-PRO-A-1060 |  | Kerbstone | 11d | 2026-05-02 A | 2026-05-06 A | SDR-ST-PRO-S-1060 | 100% |  | 2026-04-25 | 2026-05-06 |  |  | Suppliers; SIC- Cost | 0 |  |  |
| SDR-ST-PRO-A-1260 |  | Steel Bars | 11d | 2026-05-02 A | 2026-05-06 A | SDR-ST-PRO-S-1260 | 100% |  | 2026-04-25 | 2026-05-06 |  |  | Suppliers; SIC- Cost | 0 |  |  |
|  | 3 | **Electrical** |  | 2026-04-16 | 2026-11-22 |  |  |  |  |  |  |  |  |  |  |  |
| SDR-ST-PRO-A-1110 |  | LOW VOLTAGE CABLES | 11d | 2026-04-16 A | 2026-05-06 A | SDR-ST-PRO-S-1140 SS | 100% |  | 2026-04-16 | 2026-04-28 |  |  | SIC- Cost; Electrical Engineer | 0 | 695 | M |
| SDR-ST-PRO-A-1130 |  | STREET LIGHTING FEEDER Panel | 11d | 2026-04-22 A | 2026-07-12 A | SDR-ST-PRO-S-1160 | 100% |  | 2026-04-25 | 2026-05-06 |  |  | SIC- Cost; Electrical Engineer | 0 | 2 | Number |
| SDR-ST-PRO-A-1120 |  | LOW VOLTAGE DISTRIBUTION Panel | 11d | 2026-04-25 A | 2026-07-12 A | SDR-ST-PRO-S-1150 | 100% |  | 2026-04-25 | 2026-05-06 |  |  | SIC- Cost; Electrical Engineer | 0 | 1 | Number |
| SDR-ST-PRO-A-1140 |  | STREET LIGHTING CABLES | 11d | 2026-04-25 A | 2026-06-20 A | SDR-ST-PRO-S-1170 | 100% |  | 2026-04-25 | 2026-05-06 |  |  | SIC- Cost; Electrical Engineer | 0 | 6800 | M |
| SDR-ST-PRO-A-1150 |  | ROAD CROSSING DUCTS Ø110mm | 11d | 2026-04-25 A | 2026-06-20 A | SDR-ST-PRO-S-1200 | 100% |  | 2026-04-25 | 2026-05-06 |  |  | SIC- Cost; Electrical Engineer | 0 | 140 | M |
| SDR-ST-PRO-A-1160 |  | Drawpits | 11d | 2026-04-25 A | 2026-07-19 A | SDR-ST-PRO-S-1210 | 100% |  | 2026-04-25 | 2026-05-06 |  |  | SIC- Cost; Electrical Engineer | 0 | 16 | Number |
| SDR-ST-PRO-A-1190 |  | VOICE EVACUATION SYSTEM | 11d | 2026-04-25 A | 2026-07-21 A | SDR-ST-PRO-S-1250 | 100% |  | 2026-04-25 | 2026-05-06 |  |  | SIC- Cost; Electrical Engineer | 0 | 32 | Number |
| SDR-ST-PRO-A-1170 |  | CCTV :5MP IP PoE Bullet Camera | 11d | 2026-07-26 A | 2026-11-22 | SDR-ST-PRO-S-1230 | 60% | 6d | 2026-04-25 | 2026-05-06 | 49d | 0d | SIC- Cost; Electrical Engineer | -40 | 16 | Number |
| SDR-ST-PRO-A-1180 |  | CCTV :Pole mounted Filed Equipment cabinet (FE | 11d | 2026-07-26 A | 2026-11-22 | SDR-ST-PRO-S-1240 | 60% | 6d | 2026-04-25 | 2026-05-06 | 51d | 0d | SIC- Cost; Electrical Engineer | -40 | 4 | Number |

| ID | WBS | Activity | Duration | Start | Finish | Predecessors | Complete | Remaining | Planned start | Planned finish | Total float | Free float | Resources | Variance | BOQ Qty | UOM |
| --- | --- | --- | --- | --- | --- | --- | --- | --- | --- | --- | --- | --- | --- | --- | --- | --- |
|  | 2 | **Mechanical** |  | 2026-04-25 | 2026-07-01 |  |  |  |  |  |  |  |  |  |  |  |
| SDR-ST-PRO-A-1050 |  | CONCRETE PIPES AND FITTINGS | 11d | 2026-04-25 A | 2026-05-31 A | SDR-ST-PRO-S-1050 | 100% |  | 2026-04-25 | 2026-05-06 |  |  | SIC- Cost; Mechanical Engineer | 0 |  |  |
| SDR-ST-PRO-A-1070 |  | GI GOOSENECK & VENT | 11d | 2026-04-25 A | 2026-07-01 A | SDR-ST-PRO-S-1070 | 100% |  | 2026-04-25 | 2026-05-06 |  |  | SIC- Cost; Mechanical Engineer | 0 |  |  |
| SDR-ST-PRO-A-1080 |  | WARNING TAPE | 11d | 2026-04-25 A | 2026-05-24 A | SDR-ST-PRO-S-1080 | 100% |  | 2026-04-25 | 2026-05-06 |  |  | SIC- Cost; Mechanical Engineer | 0 |  |  |
| SDR-ST-PRO-A-1040 |  | HDPE PIPES & FITTINGS | 11d | 2026-05-02 A | 2026-05-06 A | SDR-ST-PRO-S-1040 | 100% |  | 2026-04-25 | 2026-05-06 |  |  | SIC- Cost; Mechanical Engineer | 0 |  |  |
| SDR-ST-PRO-A-1090 |  | MANHOLE, CATCH BASIN & VALVE BOX COVER | 11d | 2026-05-02 A | 2026-06-24 A | SDR-ST-PRO-S-1090 | 100% |  | 2026-04-25 | 2026-05-06 |  |  | SIC- Cost; Mechanical Engineer | 0 |  |  |
|  | 1 | **Long Lead Items** |  | 2026-04-25 | 2026-12-07 |  |  |  |  |  |  |  |  |  |  |  |
|  | 1 | **Civil** |  | 2026-04-25 | 2026-07-13 |  |  |  |  |  |  |  |  |  |  |  |
| SDR-ST-PRO-A-1000 |  | Metal railing for platform | 11d | 2026-04-25 A | 2026-07-13 A | SDR-ST-PRO-S-1000 | 100% |  | 2026-04-25 | 2026-05-06 |  |  | Suppliers; SIC- Cost | 0 |  |  |
| SDR-ST-PRO-A-1020 |  | Canopy | 11d | 2026-05-02 A | 2026-05-06 A | SDR-ST-PRO-S-1020 | 100% |  | 2026-04-25 | 2026-05-06 |  |  | Suppliers; SIC- Cost | 0 |  |  |
|  | 3 | **Electrical** |  | 2026-04-25 | 2026-12-07 |  |  |  |  |  |  |  |  |  |  |  |
| SDR-ST-PRO-A-1240 |  | STREET LIGHTING LUMINAIRE | 11d | 2026-04-25 A | 2026-06-09 A | SDR-ST-PRO-S-1190 | 100% |  | 2026-04-25 | 2026-05-06 |  |  | SIC- Cost; Electrical Engineer | 0 | 276 | Number |
| SDR-ST-PRO-A-1250 |  | Outdoor Lighting Fixtures | 11d | 2026-04-25 A | 2026-06-15 A | SDR-ST-PRO-S-1220 | 100% |  | 2026-04-25 | 2026-05-06 |  |  | SIC- Cost; Electrical Engineer | 0 | 390 | Number |
| SDR-ST-PRO-A-1230 |  | LIGHTING POLES | 11d | 2026-05-02 A | 2026-05-06 A | SDR-ST-PRO-S-1180 | 100% |  | 2026-04-25 | 2026-05-06 |  |  | SIC- Cost; Electrical Engineer | 0 | 143 | Number |
| SDR-ST-PRO-A-1200 |  | MEDIUM VOLTAGE CABLES DUCT BANKS | 11d | 2026-11-25 | 2026-12-07 | SDR-ST-PRO-S-1110 |  |  |  |  | -72d | 0d | SIC- Cost; Electrical Engineer | -100 | 105 | M |
| SDR-ST-PRO-A-1210 |  | MEDIUM VOLTAGE CABLES | 11d | 2026-11-25 | 2026-12-07 | SDR-ST-PRO-S-1120 |  |  |  |  | -33d | 0d | SIC- Cost; Electrical Engineer | -100 | 7120 | M |
| SDR-ST-PRO-A-1220 |  | SUB-STATION | 11d | 2026-11-25 | 2026-12-07 | SDR-ST-PRO-S-1130 |  |  |  |  | -14d | 0d | SIC- Cost; Electrical Engineer | -100 | 2 | Number |
|  | 2 | **Mechanical** |  | 2026-05-02 | 2026-05-06 |  |  |  |  |  |  |  |  |  |  |  |
| SDR-ST-PRO-A-1100 |  | WASHOUT & AIR VALVE, GATE VALVE, BUTTERFLY VALVE | 11d | 2026-05-02 A | 2026-05-06 A | SDR-ST-PRO-S-1100 | 100% |  | 2026-04-25 | 2026-05-06 |  |  | SIC- Cost; Mechanical Engineer | 0 |  |  |
|  | 4 | **Procurement** |  | 2026-06-09 | 2027-04-27 |  |  |  |  |  |  |  |  |  |  |  |
|  | 5 | **Purchase Order** |  | 2026-06-09 | 2026-12-24 |  |  |  |  |  |  |  |  |  |  |  |
|  | 4 | **Short Lead Items** |  | 2026-06-09 | 2026-11-30 |  |  |  |  |  |  |  |  |  |  |  |
|  | 1 | **Civil** |  | 2026-07-22 | 2026-11-21 |  |  |  |  |  |  |  |  |  |  |  |
| SDR-ST-PRO-PO-1060 |  | Kerbstone | 10d | 2026-07-22 A | 2026-10-29 A | SDR-ST-MILS-1000 SS+87d, SDR-ST-PRO-A-1060 | 100% |  | 2026-07-22 | 2026-08-02 |  |  | Suppliers [471.26 h] | 0 |  |  |
| SDR-ST-PRO-PO-1030 |  | Waterproofing (Thermal & moisture Protection) | 20d | 2026-08-10 A | 2026-11-08 A | SDR-ST-MILS-1000 SS+103d, SDR-ST-PRO-A-1010 | 100% |  | 2026-08-10 | 2026-09-01 |  |  | Suppliers [471.26 h] | 0 |  |  |
| SDR-ST-PRO-PO-1270 |  | Asphalt | 10d | 2026-09-06 A | 2026-10-29 A | SDR-ST-MILS-1000 SS+126d, SDR-ST-PRO-A-1270 | 100% |  | 2026-09-06 | 2026-09-16 |  |  | Suppliers [471.26 h] | 0 |  |  |
| SDR-ST-PRO-PO-1260 |  | Steel Bars | 10d | 2026-09-28 A | 2026-11-21 | SDR-ST-PREL-1110, SDR-ST-PRO-A-1260 | 50% | 5d | 2026-05-07 | 2026-05-18 | -62d | 0d | Suppliers [471.26 h] | -50 |  |  |
| SDR-ST-PRO-PO-1040 |  | Interlock | 12d | 2026-10-25 A | 2026-11-19 | SDR-ST-MILS-1000 SS+86d, SDR-ST-PRO-A-1030 | 80% | 4d | 2026-07-21 | 2026-08-03 | -9d | 0d | Suppliers [471.26 h] | -20 |  |  |

| ID | WBS | Activity | Duration | Start | Finish | Predecessors | Complete | Remaining | Planned start | Planned finish | Total float | Free float | Resources | BOQ Qty | Variance | UOM |
| --- | --- | --- | --- | --- | --- | --- | --- | --- | --- | --- | --- | --- | --- | --- | --- | --- |
|  | 3 | **Electrical** |  | 2026-06-18 | 2026-11-30 |  |  |  |  |  |  |  |  |  |  |  |
| SDR-ST-PRO-PO-1100 |  | LOW VOLTAGE CABLES | 20d | 2026-06-18 A | 2026-07-13 A | SDR-ST-MILS-1000 SS+98d, SDR-ST-PRO-A-1110 | 100% |  | 2026-08-04 | 2026-08-26 |  |  | Electrical Engineer [471.26 h] | 695 | 0 | M |
| SDR-ST-PRO-PO-1010 |  | ROAD CROSSING DUCTS Ø110mm | 10d | 2026-07-01 A | 2026-07-21 A | SDR-ST-MILS-1000 SS+81d, SDR-ST-PRO-A-1150 | 100% |  | 2026-07-15 | 2026-07-26 |  |  | Electrical Engineer [471.26 h] | 140 | 0 | M |
| SDR-ST-PRO-PO-1070 |  | STREET LIGHTING FEEDER Panel | 10d | 2026-07-01 A | 2026-11-21 | SDR-ST-MILS-1000 SS+86d, SDR-ST-PRO-A-1130 | 50% | 5d | 2026-07-21 | 2026-08-01 | -18d | 0d | Electrical Engineer [471.26 h] | 2 | -50 | Number |
| SDR-ST-PRO-PO-1130 |  | LOW VOLTAGE DISTRIBUTION Panel | 10d | 2026-07-01 A | 2026-11-21 | SDR-ST-MILS-1000 SS+94d, SDR-ST-PRO-A-1120 | 50% | 5d | 2026-07-30 | 2026-08-10 | 75d | 0d | Electrical Engineer [471.2 h] | 1 | -50 | Number |
| SDR-ST-PRO-PO-1110 |  | STREET LIGHTING CABLES | 11d | 2026-08-25 A | 2026-11-19 | SDR-ST-MILS-1000 SS+98d, SDR-ST-PRO-A-1140 | 70% | 3.3d | 2026-08-04 | 2026-08-16 | 20.7d | 0d | Electrical Engineer [471.23 h] | 6800 | -30 | M |
| SDR-ST-PRO-PO-1050 |  | CCTV :Pole mounted Filed Equipment cabinet | 10d | 2026-10-29 A | 2026-11-30 | SDR-ST-MILS-1000 SS+86d, SDR-ST-PRO-A-1180 | 25% | 7d | 2026-07-21 | 2026-08-01 | 51d | 0d | Electrical Engineer [471.26 h] | 4 | -75 | Number |
| SDR-ST-PRO-PO-1230 |  | CCTV :5MP IP PoE Bullet Camera | 10d | 2026-10-29 A | 2026-11-30 | SDR-ST-MILS-1000 SS+131d, SDR-ST-PRO-A-1170 | 25% | 7d | 2026-09-12 | 2026-09-22 | 49d | 0d | Electrical Engineer [471.21 h] | 16 | -75 | Number |
| SDR-ST-PRO-PO-1020 |  | Drawpits | 10d | 2026-10-31 A | 2026-11-23 | SDR-ST-MILS-1000 SS+81d, SDR-ST-PRO-A-1160 | 25% | 7d | 2026-07-15 | 2026-07-26 | -57d | 0d | Electrical Engineer [471.23 h] | 16 | -75 | Number |
| SDR-ST-PRO-PO-1220 |  | VOICE EVACUATION SYSTEM | 10d | 2026-10-31 A | 2026-11-22 | SDR-ST-MILS-1000 SS+126d, SDR-ST-PRO-A-1190 | 25% | 6d | 2026-09-06 | 2026-09-16 | 56d | 0d | Electrical Engineer [471.26 h] | 32 | -75 | Number |
|  | 2 | **Mechanical** |  | 2026-06-09 | 2026-11-22 |  |  |  |  |  |  |  |  |  |  |  |
| SDR-ST-PRO-PO-1000 |  | WARNING TAPE | 10d | 2026-06-09 A | 2026-07-06 A | SDR-ST-MILS-1000 SS+76d, SDR-ST-PRO-A-1080, SDR-ST-MILS-1050, SDR-ST-MILS-1040, SDR-ST-MILS-1030, SDR-ST-MILS-1020, SDR-ST-PREL-1100, SDR-ST-PREL-1090, SDR-ST-PREL-1080, SDR-ST-PREL-1060, SDR-ST-PREL-1070 | 100% |  | 2026-07-09 | 2026-07-20 |  |  | Mechanical Engineer [471.26 h] |  | 0 |  |
| SDR-ST-PRO-PO-1080 |  | HDPE PIPES & FITTINGS | 10d | 2026-06-09 A | 2026-06-23 A | SDR-ST-MILS-1000 SS+98d, SDR-ST-PRO-A-1040 | 100% |  | 2026-08-04 | 2026-08-15 |  |  | Mechanical Engineer [471.26 h] |  | 0 |  |
| SDR-ST-PRO-PO-1120 |  | CONCRETE PIPES AND FITTINGS | 10d | 2026-06-09 A | 2026-06-22 A | SDR-ST-MILS-1000 SS+89d, SDR-ST-PRO-A-1050 | 100% |  | 2026-07-25 | 2026-08-04 |  |  | Mechanical Engineer [471.26 h] |  | 0 |  |
| SDR-ST-PRO-PO-1140 |  | MANHOLE, CATCH BASIN & VALVE BOX COVER | 10d | 2026-10-27 A | 2026-11-22 | SDR-ST-MILS-1000 SS+96d, SDR-ST-PRO-A-1090 | 50% | 6d | 2026-08-02 | 2026-08-12 | -54d | 0d | Mechanical Engineer [471.26 h] |  | -50 |  |
| SDR-ST-PRO-PO-1090 |  | GI GOOSENECK & VENT | 10d | 2026-10-31 A | 2026-11-22 | SDR-ST-MILS-1000 SS+88d, SDR-ST-PRO-A-1070 | 25% | 6d | 2026-07-23 | 2026-08-03 | 61d | 0d | Mechanical Engineer [471.26 h] |  | -75 |  |
|  | 5 | **Long Lead Items** |  | 2026-07-01 | 2026-12-24 |  |  |  |  |  |  |  |  |  |  |  |
|  | 1 | **Civil** |  | 2026-11-16 | 2026-12-15 |  |  |  |  |  |  |  |  |  |  |  |
| SDR-ST-PRO-PO-1150 |  | Metal railing for platform | 26d | 2026-11-16 | 2026-12-15 | SDR-ST-MILS-1000 SS+106d, SDR-ST-PRO-A-1000 |  |  |  |  | 8d | 0d | Suppliers [471.26 h] |  | -100 |  |
| SDR-ST-PRO-PO-1240 |  | Canopy | 14d | 2026-11-16 | 2026-12-01 | SDR-ST-MILS-1000 SS+146d, SDR-ST-PRO-A-1020 |  |  |  |  | -38d | 0d | Suppliers [471.26 h] |  | -100 |  |
|  | 3 | **Electrical** |  | 2026-07-01 | 2026-12-24 |  |  |  |  |  |  |  |  |  |  |  |
| SDR-ST-PRO-PO-1200 |  | LIGHTING POLES | 14d | 2026-07-01 A | 2026-11-22 | SDR-ST-MILS-1000 SS+122d, SDR-ST-PRO-A-1230 | 60% | 5.6d | 2026-09-01 | 2026-09-16 | -55.6d | 0d | Electrical Engineer [471.26 h] | 143 | -40 | Number |
| SDR-ST-PRO-PO-1180 |  | Outdoor Lighting Fixtures | 14d | 2026-11-16 | 2026-12-01 | SDR-ST-MILS-1000 SS+131d, SDR-ST-PRO-A-1250 |  |  |  |  | 26d | 0d | Electrical Engineer [471.26 h] | 390 | -100 | Number |
| SDR-ST-PRO-PO-1210 |  | STREET LIGHTING LUMINAIRE | 14d | 2026-11-16 | 2026-12-01 | SDR-ST-MILS-1000 SS+133d, SDR-ST-PRO-A-1240 |  |  |  |  | 15d | 0d | Electrical Engineer [471.26 h] | 276 | -100 | Number |
| SDR-ST-PRO-PO-1160 |  | MEDIUM VOLTAGE CABLES DUCT BANKS | 14d | 2026-12-08 | 2026-12-23 | SDR-ST-MILS-1000 SS+116d, SDR-ST-PRO-A-1200 |  |  |  |  | -72d | 0d | Electrical Engineer [471.26 h] | 105 | -100 | M |
| SDR-ST-PRO-PO-1170 |  | MEDIUM VOLTAGE CABLES | 15d | 2026-12-08 | 2026-12-24 | SDR-ST-MILS-1000 SS+116d, SDR-ST-PRO-A-1210 |  |  |  |  | -33d | 0d | Electrical Engineer [471.26 h] | 7120 | -100 | M |
| SDR-ST-PRO-PO-1250 |  | SUB-STATION | 14d | 2026-12-08 | 2026-12-23 | SDR-ST-MILS-1000 SS+151d, SDR-ST-PRO-A-1220 |  |  |  |  | -14d | 0d | Electrical Engineer [471.26 h] | 2 | -100 | Number |

| ID | WBS | Activity | Duration | Start | Finish | Predecessors | Complete | Remaining | Planned start | Planned finish | Total float | Free float | Calendar | Resources | Variance | BOQ Qty | UOM |
| --- | --- | --- | --- | --- | --- | --- | --- | --- | --- | --- | --- | --- | --- | --- | --- | --- | --- |
|  | 2 | **Mechanical** |  | 2026-11-16 | 2026-12-01 |  |  |  |  |  |  |  |  |  |  |  |  |
| SDR-ST-PRO-PO-1190 |  | WASHOUT & AIR VALVE, GATE VALVE, BUTTERFLY VALVE | 14d | 2026-11-16 | 2026-12-01 | SDR-ST-MILS-1000 SS+122d, SDR-ST-PRO-A-1100 |  |  |  |  | -29d | 0d |  | Mechanical Engineer [471.26 h] | -100 |  |  |
|  | 6 | **Delivery to Site** |  | 2026-07-13 | 2027-04-23 |  |  |  |  |  |  |  |  |  |  |  |  |
|  | 2 | **Short Lead Items Delivery** |  | 2026-07-13 | 2027-02-13 |  |  |  |  |  |  |  |  |  |  |  |  |
|  | 1 | **Civil** |  | 2026-10-19 | 2027-02-13 |  |  |  |  |  |  |  |  |  |  |  |  |
| SDR-ST-PRO-DL-1030 |  | Waterproofing (Thermal & moisture Protection) | 61d | 2026-10-19 A | 2027-01-14 | SDR-ST-PRO-PO-1030 | 85% | 60d | 2026-09-02 | 2026-11-02 | 18d | 0d | 7x10 Sudair Infra | SIC- Cost; Delivery Team [2827.55 h] | -15 |  |  |
| SDR-ST-PRO-DL-1260 |  | Steel Bars | 60d | 2026-10-19 A | 2026-12-31 | SDR-ST-MILS-1000 SS+64d, SDR-ST-PRO-PO-1260 | 30% | 40d | 2026-06-25 | 2026-08-23 | -73d | 0d | 7x10 Sudair Infra | SIC- Cost; Delivery Team [2827.55 h] | -70 |  |  |
| SDR-ST-PRO-DL-1270 |  | Asphalt | 19d | 2026-10-19 A | 2027-02-13 | SDR-ST-PRO-PO-1270 FS+1d | 15% | 90d | 2026-09-18 | 2026-10-07 | -67d | 0d | 7x10 Sudair Infra | SIC- Cost; Delivery Team [2827.55 h] | -85 |  |  |
| SDR-ST-PRO-DL-1060 |  | Kerbstone | 52d | 2026-10-25 A | 2027-01-14 | SDR-ST-PRO-PO-1060 FS+1d | 25% | 60d | 2026-08-04 | 2026-09-25 | -58d | 0d | 7x10 Sudair Infra | SIC- Cost; Delivery Team [2827.55 h] | -75 |  |  |
| SDR-ST-PRO-DL-1040 |  | Interlock | 55d | 2026-10-31 A | 2027-01-17 | SDR-ST-PRO-PO-1040 FS+6d | 15% | 52d | 2026-08-11 | 2026-10-05 | -10d | 0d | 7x10 Sudair Infra | SIC- Cost; Delivery Team [2827.55 h] | -85 |  |  |
|  | 3 | **Electrical** |  | 2026-08-02 | 2027-02-01 |  |  |  |  |  |  |  |  |  |  |  |  |
| SDR-ST-PRO-DL-1100 |  | LOW VOLTAGE CABLES | 62d | 2026-08-02 A | 2027-01-05 | SDR-ST-PRO-PO-1100 | 50% | 51d | 2026-08-27 | 2026-10-28 | 66d | 0d | 7x10 Sudair Infra | SIC- Cost; Delivery Team [2827.55 h] | -50 | 695 | M |
| SDR-ST-PRO-DL-1010 |  | ROAD CROSSING DUCTS Ø110mm | 17d | 2026-10-25 A | 2026-12-14 | SDR-ST-PRO-PO-1010 | 25% | 29d | 2026-07-27 | 2026-08-12 | -3d | 0d | 7x10 Sudair Infra | SIC- Cost; Delivery Team [2827.55 h] | -75 | 140 | M |
| SDR-ST-PRO-DL-1070 |  | STREET LIGHTING FEEDER Panel | 41d | 2026-10-25 A | 2027-01-07 | SDR-ST-PRO-PO-1070 FS+6d | 15% | 40d | 2026-08-09 | 2026-09-18 | -21d | 0d | 7x10 Sudair Infra | SIC- Cost; Delivery Team [2827.55 h] | -85 | 2 | Number |
| SDR-ST-PRO-DL-1110 |  | STREET LIGHTING CABLES | 26d | 2026-10-25 A | 2026-12-28 | SDR-ST-PRO-PO-1110 FS+3d | 15% | 35d | 2026-08-20 | 2026-09-14 | 23.7d | 0d | 7x10 Sudair Infra | SIC- Cost; Delivery Team [2827.55 h] | -85 | 6800 | M |
| SDR-ST-PRO-DL-1130 |  | LOW VOLTAGE DISTRIBUTION Panel | 42d | 2026-10-25 A | 2027-01-03 | SDR-ST-PRO-PO-1130 FS+3d | 15% | 40d | 2026-08-14 | 2026-09-25 | 88d | 0d | 7x10 Sudair Infra | SIC- Cost; Delivery Team [2827.55 h] | -85 | 1 | Number |
| SDR-ST-PRO-DL-1200 |  | VOICE EVACUATION SYSTEM | 63d | 2026-11-23 | 2027-01-24 | SDR-ST-PRO-PO-1220 |  |  |  |  | 65d | 0d | 7x10 Sudair Infra | SIC- Cost; Delivery Team [2827.55 h] | -93.6507936507937 | 32 | Number |
| SDR-ST-PRO-DL-1020 |  | Drawpits | 32d | 2026-11-24 | 2026-12-25 | SDR-ST-PRO-PO-1020 |  |  |  |  | -67d | 0d | 7x10 Sudair Infra | SIC- Cost; Delivery Team [2827.55 h] | -100 | 16 | Number |
| SDR-ST-PRO-DL-1050 |  | CCTV :Pole mounted Filed Equipment cabinet | 63d | 2026-12-01 | 2027-02-01 | SDR-ST-PRO-PO-1050 |  |  |  |  | 59d | 0d | 7x10 Sudair Infra | SIC- Cost; Delivery Team [2827.55 h] | -100 | 4 | Number |
| SDR-ST-PRO-DL-1230 |  | CCTV :5MP IP PoE Bullet Camera | 63d | 2026-12-01 | 2027-02-01 | SDR-ST-PRO-PO-1230 |  |  |  |  | 57d | 0d | 7x10 Sudair Infra | SIC- Cost; Delivery Team [2827.55 h] | -84.1269841269841 | 16 | Number |
|  | 2 | **Mechanical** |  | 2026-07-13 | 2027-01-20 |  |  |  |  |  |  |  |  |  |  |  |  |
| SDR-ST-PRO-DL-1080 |  | HDPE PIPES & FITTINGS | 60d | 2026-07-13 A | 2026-07-20 A | SDR-ST-PRO-PO-1080 | 100% |  | 2026-08-16 | 2026-10-15 |  |  | 7x10 Sudair Infra | SIC- Cost; Delivery Team [2827.55 h] | 0 |  |  |
| SDR-ST-PRO-DL-1000 |  | WARNING TAPE | 55d | 2026-08-11 A | 2026-08-25 A | SDR-ST-PRO-PO-1000 | 100% |  | 2026-07-21 | 2026-09-13 |  |  | 7x10 Sudair Infra | SIC- Cost; Delivery Team [2827.55 h] | 0 |  |  |
| SDR-ST-PRO-DL-1120 |  | CONCRETE PIPES AND FITTINGS | 80d | 2026-08-18 A | 2026-08-31 A | SDR-ST-PRO-PO-1120 | 100% |  | 2026-08-05 | 2026-10-24 |  |  | 7x10 Sudair Infra | SIC- Cost; Delivery Team [2827.55 h] | 0 |  |  |
| SDR-ST-PRO-DL-2000 |  | MANHOLE, CATCH BASIN & VALVE BOX COVER | 60d | 2026-10-31 A | 2027-01-20 | SDR-ST-PRO-PO-1140 | 15% | 51d | 2026-08-13 | 2026-10-22 | -54d | 0d |  |  | -85 |  |  |
| SDR-ST-PRO-DL-1090 |  | GI GOOSENECK & VENT | 59d | 2026-11-23 | 2027-01-20 | SDR-ST-PRO-PO-1090 |  |  |  |  | 71d | 0d | 7x10 Sudair Infra | SIC- Cost; Delivery Team [2827.55 h] | -100 |  |  |

| ID | WBS | Activity | Duration | Start | Finish | Predecessors | Total float | Free float | Calendar | Resources | Variance | BOQ Qty | UOM |
| --- | --- | --- | --- | --- | --- | --- | --- | --- | --- | --- | --- | --- | --- |
|  | 5 | **Long Lead Items Delivery** |  | 2026-11-22 | 2027-04-23 |  |  |  |  |  |  |  |  |
|  | 1 | **Civil** |  | 2026-12-14 | 2027-03-29 |  |  |  |  |  |  |  |  |
| SDR-ST-PRO-DL-1240 |  | Canopy | 100d | 2026-12-14 | 2027-03-29 | SDR-ST-PRO-PO-1240 FS+10d | -45d | 0d | 7x10 Sudair Infra | SIC- Cost; Delivery Team [2827.55 h] | -19 |  |  |
| SDR-ST-PRO-DL-1150 |  | Metal railing for platform | 98d | 2026-12-16 | 2027-03-29 | SDR-ST-MILS-1000 SS+152d, SDR-ST-PRO-PO-1150 | 9d | 0d | 7x10 Sudair Infra | SIC- Cost; Delivery Team [2827.55 h] | -40.8163265306122 |  |  |
|  | 3 | **Electrical** |  | 2026-11-22 | 2027-04-23 |  |  |  |  |  |  |  |  |
| SDR-ST-PRO-DL-1210 |  | LIGHTING POLES | 91d | 2026-11-22 | 2027-02-21 | SDR-ST-PRO-PO-1200 | -65.6d | 0d | 7x10 Sudair Infra | SIC- Cost; Delivery Team [2827.55 h] | -64.8351648351648 | 143 | Number |
| SDR-ST-PRO-DL-1180 |  | Outdoor Lighting Fixtures | 80d | 2026-12-02 | 2027-02-19 | SDR-ST-MILS-1000 SS+165d, SDR-ST-PRO-PO-1180 | 30d | 0d | 7x10 Sudair Infra | SIC- Cost; Delivery Team [2827.55 h] | -31.25 | 390 | Number |
| SDR-ST-PRO-DL-1220 |  | STREET LIGHTING LUMINAIRE | 52d | 2026-12-02 | 2027-01-22 | SDR-ST-MILS-1000 SS+162d, SDR-ST-PRO-PO-1210 | 18d | 0d | 7x10 Sudair Infra | SIC- Cost; Delivery Team [2827.55 h] | -53.8461538461538 | 276 | Number |
| SDR-ST-PRO-DL-1160 |  | MEDIUM VOLTAGE CABLES DUCT BANKS | 102d | 2026-12-24 | 2027-04-10 | SDR-ST-PRO-PO-1160 | -84d | 0d | 7x10 Sudair Infra | SIC- Cost; Delivery Team [2827.55 h] | -64.7058823529412 | 105 | M |
| SDR-ST-PRO-DL-1250 |  | SUB-STATION | 115d | 2026-12-24 | 2027-04-23 | SDR-ST-PRO-PO-1250 | -16d | 0d | 7x10 Sudair Infra | SIC- Cost; Delivery Team [2827.55 h] | -21.7391304347826 | 2 | Number |
| SDR-ST-PRO-DL-1170 |  | MEDIUM VOLTAGE CABLES | 105d | 2026-12-25 | 2027-04-14 | SDR-ST-PRO-PO-1170 | -38d | 0d | 7x10 Sudair Infra | SIC- Cost; Delivery Team [2827.55 h] | -61.9047619047619 | 7120 | M |
|  | 2 | **Mechanical** |  | 2026-12-07 | 2026-12-23 |  |  |  |  |  |  |  |  |
| SDR-ST-PRO-DL-1190 |  | WASHOUT & AIR VALVE, GATE VALVE, BUTTERFLY VALVE | 17d | 2026-12-07 | 2026-12-23 | SDR-ST-PRO-PO-1190 FS+4d | -34d | 0d | 7x10 Sudair Infra | SIC- Cost; Delivery Team [2827.55 h] | -100 |  |  |
|  | 4 | **Materials Staging Time** |  | 2026-11-16 | 2027-04-27 |  |  |  |  |  |  |  |  |
|  | 4 | **Short Lead Items Delivery** |  | 2026-11-16 | 2027-02-17 |  |  |  |  |  |  |  |  |
|  | 1 | **Civil** |  | 2027-01-01 | 2027-02-17 |  |  |  |  |  |  |  |  |
| SDR-ST-PRO-MS-1260 |  | Steel Bars | 4d | 2027-01-01 | 2027-01-04 | SDR-ST-PRO-DL-1260 | -73d | 0d | 7x10 Sudair Infra | Delivery Team | -100 |  |  |
| SDR-ST-PRO-MS-1070 |  | Waterproofing (Thermal & moisture Protection) | 4d | 2027-01-15 | 2027-01-18 | SDR-ST-PRO-DL-1030 | 18d | 93d | 7x10 Sudair Infra | Delivery Team | -100 |  |  |
| SDR-ST-PRO-MS-1100 |  | Kerbstone | 5d | 2027-01-15 | 2027-01-19 | SDR-ST-PRO-DL-1060 | -58d | 0d | 7x10 Sudair Infra | Delivery Team | -100 |  |  |
| SDR-ST-PRO-MS-1080 |  | Interlock | 4d | 2027-01-18 | 2027-01-21 | SDR-ST-PRO-DL-1040 | -10d | 1d | 7x10 Sudair Infra | Delivery Team | -100 |  |  |
| SDR-ST-PRO-MS-1270 |  | Asphalt | 4d | 2027-02-14 | 2027-02-17 | SDR-ST-PRO-DL-1270 | -67d | 0d | 7x10 Sudair Infra | Delivery Team | -100 |  |  |
|  | 3 | **Electrical** |  | 2026-12-15 | 2027-02-07 |  |  |  |  |  |  |  |  |
| SDR-ST-PRO-MS-1000 |  | ROAD CROSSING DUCTS Ø110mm | 4d | 2026-12-15 | 2026-12-18 | SDR-ST-PRO-DL-1010 | -3d | 0d | 7x10 Sudair Infra | Delivery Team | -100 | 140 | M |
| SDR-ST-PRO-MS-1010 |  | Drawpits | 4d | 2026-12-26 | 2026-12-29 | SDR-ST-PRO-DL-1020 | -67d | 0d | 7x10 Sudair Infra | Delivery Team | -100 | 16 | Number |
| SDR-ST-PRO-MS-1030 |  | STREET LIGHTING CABLES | 4d | 2026-12-28 | 2027-01-01 | SDR-ST-PRO-DL-1110 | 23.7d | 110.7d | 7x10 Sudair Infra | Delivery Team | -100 | 6800 | M |
| SDR-ST-PRO-MS-1040 |  | LOW VOLTAGE DISTRIBUTION Panel | 4d | 2027-01-04 | 2027-01-07 | SDR-ST-PRO-DL-1130 | 88d | 104d | 7x10 Sudair Infra | Delivery Team | -100 | 1 | Number |
| SDR-ST-PRO-MS-1120 |  | LOW VOLTAGE CABLES | 4d | 2027-01-06 | 2027-01-09 | SDR-ST-PRO-DL-1100 | 66d | 93d | 7x10 Sudair Infra | Delivery Team | -100 | 695 | M |
| SDR-ST-PRO-MS-1020 |  | STREET LIGHTING FEEDER Panel | 4d | 2027-01-08 | 2027-01-11 | SDR-ST-PRO-DL-1070 | -21d | 45d | 7x10 Sudair Infra | Delivery Team | -100 | 2 | Number |
| SDR-ST-PRO-MS-1150 |  | VOICE EVACUATION SYSTEM | 6d | 2027-01-25 | 2027-01-30 | SDR-ST-PRO-DL-1200 | 65d | 81d | 7x10 Sudair Infra | Delivery Team | 0 | 32 | Number |
| SDR-ST-PRO-MS-1090 |  | CCTV :Pole mounted Filed Equipment cabinet | 4d | 2027-02-02 | 2027-02-05 | SDR-ST-PRO-DL-1050 | 59d | 75d | 7x10 Sudair Infra | Delivery Team | -100 | 4 | Number |
| SDR-ST-PRO-MS-1160 |  | CCTV :5MP IP PoE Bullet Camera | 6d | 2027-02-02 | 2027-02-07 | SDR-ST-PRO-DL-1230 | 57d | 73d | 7x10 Sudair Infra | Delivery Team | 0 | 16 | Number |

| ID | WBS | Activity | Duration | Start | Finish | Predecessors | Complete | Planned start | Planned finish | Total float | Free float | Calendar | Resources | Cost | Actual cost | Variance | BOQ Qty | UOM | BOQ Line item | Activities Codes Sudair Station |
| --- | --- | --- | --- | --- | --- | --- | --- | --- | --- | --- | --- | --- | --- | --- | --- | --- | --- | --- | --- | --- |
|  | 2 | **Mechanical** |  | 2026-11-16 | 2027-01-24 |  |  |  |  |  |  |  |  |  |  |  |  |  |  |  |
| SDR-ST-PRO-MS-1110 |  | HDPE PIPES & FITTINGS | 4d | 2026-11-16 | 2026-11-19 | SDR-ST-PRO-DL-1080 |  |  |  | 20d | 9d | 7x10 Sudair Infra | Delivery Team |  |  | -100 |  |  |  |  |
| SDR-ST-PRO-MS-1130 |  | CONCRETE PIPES AND FITTINGS | 4d | 2026-11-16 | 2026-11-19 | SDR-ST-PRO-DL-1120 |  |  |  | -6d | 9d | 7x10 Sudair Infra | Delivery Team |  |  | -100 |  |  |  |  |
| SDR-ST-PRO-MS-1050 |  | WARNING TAPE | 4d | 2026-11-29 | 2026-12-02 | SDR-ST-PRO-DL-1000 |  |  |  | 14d | 5d | 7x10 Sudair Infra | Delivery Team |  |  | -100 |  |  |  |  |
| SDR-ST-PRO-MS-1060 |  | GI GOOSENECK & VENT | 4d | 2027-01-21 | 2027-01-24 | SDR-ST-PRO-DL-1090 |  |  |  | 71d | 87d | 7x10 Sudair Infra | Delivery Team |  |  | -100 |  |  |  |  |
| SDR-ST-PRO-MS-1140 |  | MANHOLE, CATCH BASIN & VALVE BOX COVER | 4d | 2027-01-21 | 2027-01-24 | SDR-ST-PRO-DL-2000 |  |  |  | -63d | 0d | 7x10 Sudair Infra | Delivery Team |  |  | -100 |  |  |  |  |
|  | 5 | **Long Lead Items Delivery** |  | 2026-12-24 | 2027-04-27 |  |  |  |  |  |  |  |  |  |  |  |  |  |  |  |
|  | 1 | **Civil** |  | 2027-03-30 | 2027-04-02 |  |  |  |  |  |  |  |  |  |  |  |  |  |  |  |
| SDR-ST-PRO-MS-1200 |  | Metal railing for platform | 4d | 2027-03-30 | 2027-04-02 | SDR-ST-PRO-DL-1150 |  |  |  | 9d | 25d | 7x10 Sudair Infra | Delivery Team |  |  | 0 |  |  |  |  |
| SDR-ST-PRO-MS-1240 |  | Canopy | 4d | 2027-03-30 | 2027-04-02 | SDR-ST-PRO-DL-1240 |  |  |  | -45d | 25d | 7x10 Sudair Infra | Delivery Team |  |  | 0 |  |  |  |  |
|  | 3 | **Electrical** |  | 2027-01-23 | 2027-04-27 |  |  |  |  |  |  |  |  |  |  |  |  |  |  |  |
| SDR-ST-PRO-MS-1180 |  | STREET LIGHTING LUMINAIRE | 5d | 2027-01-23 | 2027-01-27 | SDR-ST-PRO-DL-1220 |  |  |  | 18d | 84d | 7x10 Sudair Infra | Delivery Team |  |  | 0 | 276 | Number |  |  |
| SDR-ST-PRO-MS-1230 |  | LIGHTING POLES | 4d | 2027-02-21 | 2027-02-26 | SDR-ST-PRO-DL-1210 |  |  |  | -65.6d | 0.4d | 7x10 Sudair Infra | Delivery Team |  |  | 0 | 143 | Number |  |  |
| SDR-ST-PRO-MS-1170 |  | Outdoor Lighting Fixtures | 7d | 2027-03-01 | 2027-03-07 | SDR-ST-PRO-DL-1180 FS+8d |  |  |  | 30d | 46d | 7x10 Sudair Infra | Delivery Team |  |  | 0 | 390 | Number |  |  |
| SDR-ST-PRO-MS-1210 |  | MEDIUM VOLTAGE CABLES DUCT BANKS | 6d | 2027-04-11 | 2027-04-16 | SDR-ST-CON-P1-5570, SDR-ST-PRO-DL-1160 |  |  |  | -84d | 0d | 7x10 Sudair Infra | Delivery Team |  |  | 0 | 105 | M |  |  |
| SDR-ST-PRO-MS-1220 |  | MEDIUM VOLTAGE CABLES | 4d | 2027-04-15 | 2027-04-18 | SDR-ST-PRO-DL-1170 |  |  |  | -38d | 9d | 7x10 Sudair Infra | Delivery Team |  |  | 0 | 7120 | M |  |  |
| SDR-ST-PRO-MS-1250 |  | SUB-STATION | 4d | 2027-04-24 | 2027-04-27 | SDR-ST-PRO-DL-1250 |  |  |  | -16d | 0d | 7x10 Sudair Infra | Delivery Team |  |  | 0 | 2 | Number |  |  |
|  | 2 | **Mechanical** |  | 2026-12-24 | 2026-12-28 |  |  |  |  |  |  |  |  |  |  |  |  |  |  |  |
| SDR-ST-PRO-MS-1190 |  | WASHOUT & AIR VALVE, GATE VALVE, BUTTERFLY VALVE | 5d | 2026-12-24 | 2026-12-28 | SDR-ST-PRO-DL-1190 |  |  |  | -34d | 40d | 7x10 Sudair Infra | Delivery Team |  |  | -100 |  |  |  |  |
|  | 5 | **Construction** |  | 2026-04-23 | 2027-12-12 |  |  |  |  |  |  |  |  |  |  |  |  |  |  |  |
|  | 1 | **Package-1** |  | 2026-04-23 | 2027-11-28 |  |  |  |  |  |  |  |  |  |  |  |  |  |  |  |
|  | 15 | **ROAD WORKS 1** |  | 2026-04-23 | 2027-09-30 |  |  |  |  |  |  |  |  |  |  |  |  |  |  |  |
|  | 8 | **ROAD - 01** |  | 2026-04-23 | 2027-09-12 |  |  |  |  |  |  |  |  |  |  |  |  |  |  |  |
|  | 6 | **ROAD-01 From 0 to 470 m (3)** |  | 2026-04-23 | 2027-08-07 |  |  |  |  |  |  |  |  |  |  |  |  |  |  |  |
|  | 14 | **GENERAL WORKS** |  | 2026-04-23 | 2026-05-22 |  |  |  |  |  |  |  |  |  |  |  |  |  |  |  |
|  | 10 | **Cleaning and removal of organic materials in Zone A** |  | 2026-04-23 | 2026-05-21 |  |  |  |  |  |  |  |  |  |  |  |  |  |  |  |
| SDR-ST-CON-P1-1000 |  | Cleaning and removal of organic materials Part 1 | 16d | 2026-04-23 A | 2026-04-30 A | SDR-ST-MOBL-1060 | 100% | 2026-05-07 | 2026-05-25 |  |  |  | SIC- Cost [2153.77]; Excavator [200 h]; Excavator Operator [142.43 h]; Dumper Operator [142.43 h]; Dumper Truck [1040 h]; Grader [200 h]; Grader Operator [142.43 h]; Loader [200 h]; Loader Operator [142.43 h]; Un-Skilled Labor [7859.41 h]; Supervisor [71.21 h]; Skilled Labor [142.43 h] | 2,153.77 | 2,153.77 | 0 | 4150 | M2 | B1.31 23 16.01 | P1-R.W |
| SDR-ST-CON-P1-1050 |  | Cleaning and removal of organic materials Part 2 | 18d | 2026-04-30 A | 2026-05-09 A | SDR-ST-CON-P1-1000, SDR-ST-MILS-1040, SDR-ST-MILS-1030, SDR-ST-MILS-1020, SDR-ST-MILS-1050, SDR-ST-PREL-1060, SDR-ST-PREL-1070, SDR-ST-PREL-1010, SDR-ST-PREL-1080, SDR-ST-PREL-1020, SDR-ST-PREL-1090, SDR-ST-PREL-1030, SDR-ST-PREL-1100, SDR-ST-PREL-1040 | 100% | 2026-05-26 | 2026-06-20 |  |  |  | SIC- Cost [2153.77]; Excavator [100 h]; Excavator Operator [142.43 h]; Dumper Operator [142.43 h]; Dumper Truck [520 h]; Grader [100 h]; Grader Operator [142.43 h]; Loader [100 h]; Loader Operator [142.43 h]; Un-Skilled Labor [8835.74 h]; Supervisor [71.21 h]; Skilled Labor [4139.82 h] | 2,153.77 | 2,153.77 | 0 | 4150 | M2 | B1.31 23 16.01 | P1-R.W |
| SDR-ST-CON-P1-6060 |  | Cleaning and removal of organic materials Part 3 | 14d | 2026-05-09 A | 2026-05-21 A | SDR-ST-CON-P1-1050 | 100% | 2026-06-21 | 2026-07-06 |  |  |  | SIC- Cost [2155.52]; Excavator [100 h]; Excavator Operator [99.54 h]; Grader [100 h]; Grader Operator [99.54 h]; Loader [100 h]; Loader Operator [99.54 h] | 2,155.52 | 2,155.52 | 0 |  |  |  | P1-R.W |

| ID | WBS | Activity | Duration | Start | Finish | Predecessors | Complete | Remaining | Planned start | Planned finish | Total float | Free float | Resources | Cost | Actual cost | BOQ Qty | Variance | BOQ Line item | UOM | Activities Codes Sudair Station |
| --- | --- | --- | --- | --- | --- | --- | --- | --- | --- | --- | --- | --- | --- | --- | --- | --- | --- | --- | --- | --- |
|  | 12 | **Surveying works Zone A** |  | 2026-05-12 | 2026-05-22 |  |  |  |  |  |  |  |  |  |  |  |  |  |  |  |
| SDR-ST-CON-P1-1090 |  | Surveying works Zone A | 14d | 2026-05-12 A | 2026-05-22 A | SDR-ST-CON-P1-1050, SDR-ST-CON-P1-6060 | 100% |  | 2026-07-07 | 2026-07-22 |  |  | SIC- Cost [3877.83]; Un-Skilled Labor [113.94 h]; Surveyor [113.94 h]; Supervisor [56.97 h] | 3,877.83 | 3,877.83 | 8300 | 0 | B1.31 23 16.02 | M2 | P1-R.W |
|  | 1 | **Earth Works Road** |  | 2026-06-18 | 2026-06-25 |  |  |  |  |  |  |  |  |  |  |  |  |  |  |  |
| SDR-ST-CON-P1-1150 |  | Roadway Excavation and cuttings | 12d | 2026-06-18 A | 2026-06-25 A | SDR-ST-CON-P1-1090 | 100% |  | 2026-07-23 | 2026-08-05 |  |  | SIC- Cost [15511.3]; Excavator [46 h]; Excavator Operator [142.43 h]; Dumper Operator [142.43 h]; Dumper Truck [2180 h]; Grader [200 h]; Grader Operator [142.43 h]; Loader [200 h]; Loader Operator [142.43 h]; Un-Skilled Labor [142.43 h]; Supervisor [71.21 h]; Skilled Labor [142.43 h] | 15,511.33 | 15,511.33 | 917 | 0 | B1.31 23 16.03 | M3 | P1-R.W |
|  | 10 | **Backfilling Works** |  | 2026-05-23 | 2026-08-16 |  |  |  |  |  |  |  |  |  |  |  |  |  |  |  |
| SDR-ST-CON-P1-1200 |  | Embankments to the Road 1 Layer | 18d | 2026-05-23 A | 2026-06-06 A | SDR-ST-CON-P1-1150 | 100% |  | 2026-08-06 | 2026-08-26 |  |  | SIC- Cost [252647]; Excavator [65 h]; Excavator Operator [142.43 h]; Dumper Operator [142.43 h]; Dumper Truck [200 h]; Grader [200 h]; Grader Operator [142.43 h]; Loader [200 h]; Loader Operator [142.43 h]; Un-Skilled Labor [142.43 h]; Supervisor [71.21 h]; Skilled Labor [142.43 h]; Water Tanker [200 h] | 252,646.68 | 252,646.68 | 8958.25 | 0 | B1.31 23 23.01 | M3 | P1-R.W |
| SDR-ST-CON-P1-1470 |  | Embankments to the Road 2 Layer | 20d | 2026-06-09 A | 2026-06-15 A | SDR-ST-CON-P1-1200 | 100% |  | 2026-08-27 | 2026-09-19 |  |  | SIC- Cost [252647]; Compactor [200 h]; Excavator [15 h]; Excavator Operator [142.43 h]; Dumper Operator [142.43 h]; Dumper Truck [200 h]; Grader [200 h]; Grader Operator [142.43 h]; Loader [50 h]; Loader Operator [142.43 h]; Un-Skilled Labor [47.48 h]; Supervisor [71.21 h]; Skilled Labor [47.48 h]; Water Tanker [200 h] | 252,646.68 | 252,646.68 | 8958.25 | 0 | B1.31 23 23.02 | M3 | P1-R.W |
| SDR-ST-CON-P1-2140 |  | Embankments to the Road 3 Layer | 13d | 2026-06-15 A | 2026-06-27 A | SDR-ST-CON-P1-1470 | 100% |  | 2026-09-20 | 2026-10-05 |  |  | SIC- Cost [252647]; Compactor [200 h]; Excavator [30 h]; Excavator Operator [142.43 h]; Dumper Operator [142.43 h]; Dumper Truck [1870 h]; Grader [70 h]; Grader Operator [142.43 h]; Loader [200 h]; Loader Operator [142.43 h]; Un-Skilled Labor [37.98 h]; Supervisor [35.61 h]; Skilled Labor [37.98 h]; Water Tanker [79.06 h] | 252,646.68 | 252,646.68 | 8958.25 | 0 | B1.31 23 23.03 | M3 | P1-R.W |
| SDR-ST-CON-P1-2710 |  | Embankments to the Road 4 Layer | 12d | 2026-08-11 A | 2026-08-16 A | SDR-ST-CON-P1-2140 | 100% |  | 2026-10-06 | 2026-10-19 |  |  | SIC- Cost [252647]; Compactor [96.67 h]; Excavator [20 h]; Excavator Operator [142.43 h]; Dumper Operator [142.43 h]; Dumper Truck [96.67 h]; Grader [68.11 h]; Grader Operator [142.43 h]; Loader [395.65 h]; Loader Operator [142.43 h]; Un-Skilled Labor [37.98 h]; Supervisor [28.49 h]; Skilled Labor [37.98 h]; Water Tanker [200 h] | 252,646.68 | 252,646.68 | 8958.25 | 0 | B1.31 23 23.04 | M3 | P1-R.W |
|  | 11 | **Subgrade** |  | 2026-09-10 | 2026-09-30 |  |  |  |  |  |  |  |  |  |  |  |  |  |  |  |
| SDR-ST-CON-P1-3260 |  | Subgrade layer works | 14d | 2026-09-10 A | 2026-09-30 A | SDR-ST-CON-P1-2710, SDR-ST-CON-P3-1040 | 100% |  | 2026-10-20 | 2026-11-04 |  |  | SIC- Cost [144749]; Compactor [50 h]; Excavator [15 h]; Excavator Operator [142.43 h]; Dumper Operator [142.43 h]; Dumper Truck [50 h]; Grader [80 h]; Grader Operator [142.43 h]; Loader [50 h]; Loader Operator [142.43 h]; Un-Skilled Labor [37.98 h]; Supervisor [28.49 h]; Skilled Labor [37.98 h]; Water Tanker [40 h]; Water Tanker Operator [37.98 h] | 144,748.92 | 144,748.92 | 3422 | 0 | B1.32 11 13.01 | M3 | P1-R.W |
|  | 2 | **Base Course** |  | 2026-10-03 | 2026-10-11 |  |  |  |  |  |  |  |  |  |  |  |  |  |  |  |
| SDR-ST-CON-P1-3850 |  | Aggregate base course layer | 13d | 2026-10-03 A | 2026-10-11 A | SDR-ST-CON-P1-3260 | 100% |  | 2026-11-05 | 2026-11-19 |  |  | SIC- Cost [174309]; Compactor [61.66 h]; Dumper Operator [135.31 h]; Dumper Truck [63.25 h]; Grader [100 h]; Grader Operator [135.31 h]; Loader [105.57 h]; Loader Operator [135.31 h]; Un-Skilled Labor [135.31 h]; Supervisor [28.49 h]; Skilled Labor [135.31 h]; Water Tanker [78.5 h]; Water Tanker Operator [135.31 h] | 174,308.58 | 174,308.58 | 2248 | 30.7692307692308 | B1.32 11 23.01 | M3 | P1-R.W |
|  | 3 | **Asphalt Works** |  | 2026-10-11 | 2027-04-01 |  |  |  |  |  |  |  |  |  |  |  |  |  |  |  |
|  | 1 | **Bituminous base course** |  | 2026-10-11 | 2027-03-01 |  |  |  |  |  |  |  |  |  |  |  |  |  |  |  |
| SDR-ST-CON-P1-4410 |  | Bituminous base course (Grading I - Class A 1st Layer with RC-01 | 8d | 2026-10-11 A | 2027-02-21 | SDR-ST-CON-P1-3850 | 70% | 6d | 2026-11-21 | 2026-11-29 | -61d | 0d | SIC- Cost [518809]; Compactor [50 h]; Dumper Operator [128.18 h]; Dumper Truck [50 h]; Supervisor [28.49 h]; Sweeper Machine [30 h]; Sweeper Machine Operator [128.18 h]; Pneumatic Tire Roller [288.26 h]; Pneumatic Roller Operator [128.18 h]; Asphalt Paver [30 h]; Asphalt Paver Operator [128.18 h] | 518,808.78 | 363,166.15 | 828.5 | 70 | B1.32 11 26.01 | M3 | P1-R.W |
| SDR-ST-CON-P1-4770 |  | Bituminous base course (Grading I - Class A 2nd layer with RC-02 | 6d | 2027-02-23 | 2027-03-01 | SDR-ST-PRO-MS-1270, SDR-ST-CON-P1-4410 |  |  |  |  | -61d | 0d | SIC- Cost [518809]; Compactor [50 h]; Dumper Operator [128.18 h]; Dumper Truck [50 h]; Supervisor [28.49 h]; Sweeper Machine [30 h]; Sweeper Machine Operator [840.32 h]; Pneumatic Tire Roller [30 h]; Pneumatic Roller Operator [128.18 h]; Asphalt Paver [30 h]; Asphalt Paver Operator [128.18 h] | 518,808.78 |  | 828.5 | 0 | B1.32 11 26.02 | M3 | P1-R.W |
|  | 2 | **Bituminous concrete wearing course** |  | 2027-03-04 | 2027-04-01 |  |  |  |  |  |  |  |  |  |  |  |  |  |  |  |
| SDR-ST-CON-P1-5110 |  | Bituminous concrete wearing course, (Grading I - Class A), including tack coat (RC2) | 21d | 2027-03-04 | 2027-04-01 | SDR-ST-PRO-MS-1270, SDR-ST-CON-P1-4770 FS+2d |  |  |  |  | -61d | 37d | SIC- Cost [366211]; Compactor [80 h]; Dumper Operator [113.94 h]; Dumper Truck [230 h]; Supervisor [28.49 h]; Sweeper Machine [200 h]; Sweeper Machine Operator [113.94 h]; Pneumatic Tire Roller [140 h]; Pneumatic Roller Operator [113.94 h]; Asphalt Paver [475 h]; Asphalt Paver Operator [113.94 h] | 366,210.74 |  | 570 | 0 | B1.32 12 16.01 | M3 | P1-R.W |
|  | 4 | **Kerbstone Installation** |  | 2027-02-15 | 2027-06-01 |  |  |  |  |  |  |  |  |  |  |  |  |  |  |  |
| SDR-ST-CON-P1-3860 |  | Precast Concrete Curbstone, Type A2 | 21d | 2027-02-15 | 2027-03-16 | SDR-ST-CON-P1-3260 |  |  |  |  | -70d | 0d | SIC- Cost [144150]; Un-Skilled Labor [128.18 h]; Supervisor [128.18 h]; Skilled Labor [128.18 h] | 144,149.62 |  | 2275 | -42.8571428571429 | B1.32 16 13.23.01 | lm | P1-R.W |
| SDR-ST-CON-P1-4530 |  | Precast Concrete Curbstone, Type D | 10d | 2027-05-22 | 2027-06-01 | SDR-ST-CON-P1-3860, SDR-ST-CON-P1-5110, SDR-ST-CON-P3-1230, SDR-ST-CON-P3-1220 |  |  |  |  | -98d | 0d | SIC- Cost [70526]; Un-Skilled Labor [39.97 h]; Supervisor [39.97 h]; Skilled Labor [39.97 h] | 70,526.03 |  | 1154 | 0 | B1.32 16 13.23.02 | lm | P1-R.W |
|  | 5 | **Interlock Installation** |  | 2027-06-03 | 2027-07-19 |  |  |  |  |  |  |  |  |  |  |  |  |  |  |  |
| SDR-ST-CON-P1-4100 |  | Interlock Installation Part 1 | 20d | 2027-06-03 | 2027-06-26 | SDR-ST-PRO-MS-1080, SDR-ST-CON-P1-3860, SDR-ST-CON-P1-2710, SDR-ST-CON-P1-4530 FS+1d |  |  |  |  | -98d | 0d | SIC- Cost [213105]; Un-Skilled Labor [142.43 h]; Supervisor [142.43 h]; Skilled Labor [142.43 h] | 213,104.54 |  | 775 | 0 | B1.32 14 13.13.02 | M2 | P1-R.W |
| SDR-ST-CON-P1-4620 |  | Interlock Installation Part 2 | 20d | 2027-06-27 | 2027-07-19 | SDR-ST-CON-P1-4170, SDR-ST-CON-P1-4100 |  |  |  |  | -98d | 0d | SIC- Cost [213105]; Un-Skilled Labor [142.43 h]; Supervisor [142.43 h]; Skilled Labor [142.43 h] | 213,104.54 |  | 775 | 0 | B1.32 14 13.13.01 | M2 | P1-R.W |

| ID | WBS | Activity | Duration | Start | Finish | Predecessors | Complete | Planned start | Planned finish | Total float | Free float | Resources | Cost | Actual cost | BOQ Qty | Variance | BOQ Line item | UOM | Activities Codes Sudair Station |
| --- | --- | --- | --- | --- | --- | --- | --- | --- | --- | --- | --- | --- | --- | --- | --- | --- | --- | --- | --- |
|  | 6 | **Road Marking** |  | 2027-07-20 | 2027-08-06 |  |  |  |  |  |  |  |  |  |  |  |  |  |  |
| SDR-ST-CON-P1-5210 |  | Retroreflective Thermoplastic White Traffic lines | 4d | 2027-07-20 | 2027-07-24 | SDR-ST-CON-P1-5110 SS, SDR-ST-CON-P1-2710, SDR-ST-CON-P1-4620, SDR-ST-TC-1030 |  |  |  | -79d | 0d | SIC- Cost [19365.7]; Supervisor [7.12 h]; Painter [28.49 h]; Painter Helper [28.49 h] | 19,365.66 |  | 343 | 0 | B1.32 17 23.01 | M2 | P1-R.W |
| SDR-ST-CON-P1-5310 |  | Retroreflective Thermoplastic Yellow, Traffic lines | 4d | 2027-07-25 | 2027-07-28 | SDR-ST-CON-P1-5210 |  |  |  | -79d | 0d | SIC- Cost [13725.2]; Supervisor [7.12 h]; Painter [28.49 h]; Painter Helper [28.49 h] | 13,725.18 |  | 243 | 0 | B1.32 17 23.02 | M2 | P1-R.W |
| SDR-ST-CON-P1-5470 |  | Ceramic raised pavement markers | 4d | 2027-07-29 | 2027-08-02 | SDR-ST-CON-P1-5310 |  |  |  | -79d | 0d | SIC- Cost [733.26]; Un-Skilled Labor [28.49 h]; Supervisor [7.12 h]; Skilled Labor [28.49 h] | 733.26 |  | 17 | 0 | B1.32 17 23.03 | Number | P1-R.W |
| SDR-ST-CON-P1-5620 |  | Rumble strip | 4d | 2027-08-03 | 2027-08-06 | SDR-ST-CON-P1-5470 |  |  |  | -79d | 32d | SIC- Cost [928.33]; Un-Skilled Labor [28.49 h]; Supervisor [7.12 h]; Skilled Labor [28.49 h] | 928.33 |  | 66 | 0 | B1.32 17 23.04 | M | P1-R.W |
|  | 7 | **Traffic Signage** |  | 2027-07-20 | 2027-08-02 |  |  |  |  |  |  |  |  |  |  |  |  |  |  |
| SDR-ST-CON-P1-5220 |  | Traffic signs, ground mounted, 1 Sheet Alumenium, (breakaway) Single post, with all accessories | 4d | 2027-07-20 | 2027-07-24 | SDR-ST-CON-P1-5210 SS |  |  |  | -77d | 0d | SIC- Cost [8095.27]; Un-Skilled Labor [28.49 h]; Supervisor [7.12 h]; Skilled Labor [28.49 h] | 8,095.27 |  | 4 | 0 | B1.10 14 53.01 | Number | P1-R.W |
| SDR-ST-CON-P1-5320 |  | Traffic signs, ground mounted, 1 Sheet Aluminum, (breakaway) Double post, with all accessories | 4d | 2027-07-25 | 2027-07-28 | SDR-ST-CON-P1-5220 |  |  |  | -77d | 0d | SIC- Cost [8446.63]; Un-Skilled Labor [28.49 h]; Supervisor [7.12 h]; Skilled Labor [28.49 h] | 8,446.63 |  | 3 | 0 | B1.10 14 53.02 | Number | P1-R.W |
| SDR-ST-CON-P1-5480 |  | Traffic signs, ground mounted, 2 Sheet Aluminum, (breakaway) Single post, with all accessories | 4d | 2027-07-29 | 2027-08-02 | SDR-ST-CON-P1-5320 |  |  |  | -77d | 0d | SIC- Cost [3519.42]; Un-Skilled Labor [28.49 h]; Supervisor [7.12 h]; Skilled Labor [28.49 h] | 3,519.42 |  | 1 | 0 | B1.10 14 53.03 | Number | P1-R.W |
|  | 8 | **Speed table** |  | 2027-08-03 | 2027-08-07 |  |  |  |  |  |  |  |  |  |  |  |  |  |  |
| SDR-ST-CON-P1-5490 |  | Interlock speed table including interlock, flush kerb and marking | 5d | 2027-08-03 | 2027-08-07 | SDR-ST-CON-P1-5110, SDR-ST-CON-P1-5480 |  |  |  | -77d | 28d | SIC- Cost [15282.2]; Un-Skilled Labor [56.97 h]; Supervisor [14.24 h]; Skilled Labor [56.97 h] | 15,282.19 |  | 128 | 0 | B1.10 14 53.03 | M2 | P1-R.W |
|  | 7 | **ROAD-01 From 470 to 1125 m (6)** |  | 2026-04-30 | 2027-09-08 |  |  |  |  |  |  |  |  |  |  |  |  |  |  |
|  | 14 | **GENERAL WORKS** |  | 2026-04-30 | 2026-05-20 |  |  |  |  |  |  |  |  |  |  |  |  |  |  |
|  | 10 | **Cleaning and removal of organic materials in Zone A** |  | 2026-04-30 | 2026-05-10 |  |  |  |  |  |  |  |  |  |  |  |  |  |  |
| SDR-ST-CON-P1-1010 |  | Cleaning and removal of organic materials in Zone A | 21d | 2026-04-30 A | 2026-05-10 A | SDR-ST-CON-P1-1050 SS | 100% | 2026-05-26 | 2026-06-23 |  |  | SIC- Cost [6463.05]; Excavator [200 h]; Excavator Operator [142.43 h]; Dumper Operator [142.43 h]; Dumper Truck [886.3 h]; Grader [200 h]; Grader Operator [142.43 h]; Loader [200 h]; Loader Operator [142.43 h]; Un-Skilled Labor [142.43 h]; Supervisor [142.43 h]; Skilled Labor [142.43 h] | 6,463.05 | 6,463.05 | 8300 | 0 | B1.31 23 16.01 | M2 | P1-R.W |
|  | 12 | **Surveying works Zone A** |  | 2026-05-10 | 2026-05-20 |  |  |  |  |  |  |  |  |  |  |  |  |  |  |
| SDR-ST-CON-P1-1070 |  | Surveying works Zone A | 20d | 2026-05-10 A | 2026-05-20 A | SDR-ST-CON-P1-1010 | 100% | 2026-06-24 | 2026-07-16 |  |  | SIC- Cost [3877.83]; Un-Skilled Labor [113.94 h]; Surveyor [113.94 h]; Supervisor [35.61 h] | 3,877.83 | 3,877.83 | 8300 | 0 | B1.31 23 16.02 | M2 | P1-R.W |
|  | 1 | **Earth Works Road** |  | 2026-06-25 | 2026-07-05 |  |  |  |  |  |  |  |  |  |  |  |  |  |  |
| SDR-ST-CON-P1-1120 |  | Roadway Excavation and cuttings | 14d | 2026-06-25 A | 2026-07-05 A | SDR-ST-CON-P1-1070 | 100% | 2026-07-18 | 2026-08-02 |  |  | SIC- Cost [15511.3]; Excavator [111.43 h]; Excavator Operator [142.43 h]; Dumper Operator [142.43 h]; Dumper Truck [200 h]; Grader [200 h]; Grader Operator [142.43 h]; Loader [200 h]; Loader Operator [142.43 h]; Un-Skilled Labor [142.43 h]; Supervisor [142.43 h]; Skilled Labor [6313.6 h] | 15,511.33 | 15,511.33 | 917 | 0 | B1.31 23 16.03 | M3 | P1-R.W |
|  | 10 | **Backfilling Works** |  | 2026-05-23 | 2026-08-16 |  |  |  |  |  |  |  |  |  |  |  |  |  |  |
| SDR-ST-CON-P1-1190 |  | Embankments to the Road 1 Layer | 20d | 2026-05-23 A | 2026-06-08 A | SDR-ST-CON-P1-1120 | 100% | 2026-08-03 | 2026-08-25 |  |  | SIC- Cost [252647]; Compactor [200 h]; Excavator [65 h]; Excavator Operator [142.43 h]; Dumper Operator [142.43 h]; Dumper Truck [200 h]; Grader [200 h]; Grader Operator [142.43 h]; Loader [200 h]; Loader Operator [142.43 h]; Un-Skilled Labor [142.43 h]; Supervisor [28.49 h]; Skilled Labor [142.43 h]; Water Tanker [200 h] | 252,646.68 | 252,646.68 | 8958.25 | 0 | B1.31 23 23.01 | M3 | P1-R.W |
| SDR-ST-CON-P1-1400 |  | Embankments to the Road 2 Layer | 13d | 2026-06-09 A | 2026-06-15 A | SDR-ST-CON-P1-1190 | 100% | 2026-08-26 | 2026-09-09 |  |  | SIC- Cost [252647]; Compactor [200 h]; Excavator [15 h]; Excavator Operator [142.43 h]; Dumper Operator [142.43 h]; Dumper Truck [200 h]; Grader [200 h]; Grader Operator [142.43 h]; Loader [50 h]; Loader Operator [142.43 h]; Un-Skilled Labor [37.98 h]; Supervisor [28.49 h]; Skilled Labor [37.98 h] | 252,646.68 | 252,646.68 | 8958.25 | 0 | B1.31 23 23.02 | M3 | P1-R.W |
| SDR-ST-CON-P1-2090 |  | Embankments to the Road 3 Layer | 15d | 2026-06-16 A | 2026-06-27 A | SDR-ST-CON-P1-1400 | 100% | 2026-09-10 | 2026-09-28 |  |  | SIC- Cost [252647]; Compactor [50 h]; Excavator [30 h]; Excavator Operator [142.43 h]; Dumper Operator [142.43 h]; Dumper Truck [2150.77 h]; Grader [100 h]; Grader Operator [142.43 h]; Loader [100.77 h]; Loader Operator [142.43 h]; Un-Skilled Labor [37.98 h]; Supervisor [37.98 h]; Skilled Labor [37.98 h]; Water Tanker [100 h] | 252,646.68 | 252,646.68 | 8958.25 | 0 | B1.31 23 23.03 | M3 | P1-R.W |
| SDR-ST-CON-P1-2570 |  | Embankments to the Road 4 Layer | 15d | 2026-08-11 A | 2026-08-16 A | SDR-ST-CON-P1-2090 | 100% | 2026-09-29 | 2026-10-15 |  |  | SIC- Cost [252647]; Compactor [50 h]; Excavator [15 h]; Excavator Operator [142.43 h]; Dumper Operator [142.43 h]; Dumper Truck [50 h]; Grader [4813.44 h]; Grader Operator [142.43 h]; Loader [50 h]; Loader Operator [142.43 h]; Un-Skilled Labor [37.98 h]; Supervisor [28.49 h]; Skilled Labor [37.98 h]; Water Tanker [40 h] | 252,646.68 | 252,646.68 | 8958.25 | 0 | B1.31 23 23.04 | M3 | P1-R.W |

| ID | WBS | Activity | Duration | Start | Finish | Predecessors | Complete | Planned start | Planned finish | Total float | Free float | Resources | Cost | Actual cost | BOQ Qty | Variance | BOQ Line item | UOM | Activities Codes Sudair Station |
| --- | --- | --- | --- | --- | --- | --- | --- | --- | --- | --- | --- | --- | --- | --- | --- | --- | --- | --- | --- |
|  | 11 | **Subgrade** |  | 2026-09-10 | 2026-10-07 |  |  |  |  |  |  |  |  |  |  |  |  |  |  |
| SDR-ST-CON-P1-3140 |  | Subgrade layer works | 20d | 2026-09-10 A | 2026-10-07 A | SDR-ST-CON-P1-2570 | 100% | 2026-10-17 | 2026-11-08 |  |  | SIC- Cost [144749]; Compactor [200 h]; Excavator [30 h]; Excavator Operator [142.43 h]; Dumper Operator [142.43 h]; Dumper Truck [101.16 h]; Grader [200 h]; Grader Operator [142.43 h]; Loader [104.27 h]; Loader Operator [142.43 h]; Un-Skilled Labor [37.98 h]; Supervisor [37.98 h]; Skilled Labor [37.98 h]; Water Tanker [100 h]; Water Tanker Operator [94.95 h] | 144,748.92 | 144,748.92 | 3422 | 0 | B1.32 11 13.01 | M3 | P1-R.W |
|  | 2 | **Base Course** |  | 2026-10-08 | 2026-10-29 |  |  |  |  |  |  |  |  |  |  |  |  |  |  |
| SDR-ST-CON-P1-3720 |  | Aggregate base course layer | 11d | 2026-10-08 A | 2026-10-29 A | SDR-ST-CON-P1-3140 | 100% | 2026-11-09 | 2026-11-21 |  |  | SIC- Cost [174309]; Compactor [50 h]; Dumper Operator [135.31 h]; Dumper Truck [5969.32 h]; Grader [80 h]; Grader Operator [135.31 h]; Loader [50 h]; Loader Operator [135.31 h]; Un-Skilled Labor [37.98 h]; Supervisor [28.49 h]; Skilled Labor [37.98 h]; Water Tanker [300 h]; Water Tanker Operator [94.95 h] | 174,308.58 | 174,308.58 | 2248 | 45.4545454545455 | B1.32 11 23.01 | M3 | P1-R.W |
|  | 3 | **Asphalt Works** |  | 2026-11-29 | 2027-03-31 |  |  |  |  |  |  |  |  |  |  |  |  |  |  |
|  | 1 | **Bituminous base course** |  | 2026-11-29 | 2027-02-27 |  |  |  |  |  |  |  |  |  |  |  |  |  |  |
| SDR-ST-CON-P1-4430 |  | Bituminous base course (Grading I - Class A 1st Layer with RC-01 | 6d | 2026-11-29 | 2026-12-05 | SDR-ST-CON-P1-3720 |  |  |  | 13d | 64d | SIC- Cost [518809]; Compactor [56 h]; Dumper Operator [128.18 h]; Dumper Truck [51.48 h]; Supervisor [28.49 h]; Sweeper Machine [50 h]; Sweeper Machine Operator [128.18 h]; Pneumatic Tire Roller [30 h]; Pneumatic Roller Operator [128.18 h]; Asphalt Paver [550 h]; Asphalt Paver Operator [128.18 h] | 518,808.78 |  | 828.5 | 0 | B1.32 11 26.01 | M3 | P1-R.W |
| SDR-ST-CON-P1-4730 |  | Bituminous base course (Grading I - Class A 2nd layer with RC-02 | 7d | 2027-02-18 | 2027-02-27 | SDR-ST-PRO-MS-1270, SDR-ST-CON-P1-4430 |  |  |  | -51d | 0d | SIC- Cost [518809]; Compactor [50 h]; Dumper Operator [128.18 h]; Dumper Truck [50 h]; Supervisor [28.49 h]; Sweeper Machine [30 h]; Sweeper Machine Operator [128.18 h]; Pneumatic Tire Roller [30 h]; Pneumatic Roller Operator [128.18 h]; Asphalt Paver [30 h]; Asphalt Paver Operator [128.18 h] | 518,808.78 |  | 828.5 | 0 | B1.32 11 26.02 | M3 | P1-R.W |
|  | 2 | **Bituminous concrete wearing course** |  | 2027-03-03 | 2027-03-31 |  |  |  |  |  |  |  |  |  |  |  |  |  |  |
| SDR-ST-CON-P1-5040 |  | Bituminous concrete wearing course, (Grading I - Class A), including tack coat (RC2) | 21d | 2027-03-03 | 2027-03-31 | SDR-ST-PRO-MS-1270, SDR-ST-CON-P1-4730 FS+3d |  |  |  | -51d | 36d | SIC- Cost [365045]; Compactor [50 h]; Dumper Operator [99.7 h]; Dumper Truck [100 h]; Supervisor [35.61 h]; Sweeper Machine [30 h]; Sweeper Machine Operator [99.7 h]; Pneumatic Tire Roller [260 h]; Pneumatic Roller Operator [99.7 h]; Asphalt Paver [30 h]; Asphalt Paver Operator [99.7 h] | 365,045.07 |  | 570 | 0 | B1.32 12 16.01 | M3 | P1-R.W |
|  | 4 | **Kerbstone Installation** |  | 2026-11-29 | 2027-04-08 |  |  |  |  |  |  |  |  |  |  |  |  |  |  |
| SDR-ST-CON-P1-3730 |  | Precast Concrete Curbstone, Type A2 | 20d | 2026-11-29 | 2026-12-21 | SDR-ST-CON-P1-3140 |  |  |  | -6d | 64d | SIC- Cost [144150]; Un-Skilled Labor [37.98 h]; Supervisor [28.49 h]; Skilled Labor [37.98 h] | 144,149.62 |  | 2275 | -30 | B1.32 16 13.23.01 | lm | P1-R.W |
| SDR-ST-CON-P1-4480 |  | Precast Concrete Curbstone, Type D | 20d | 2027-03-17 | 2027-04-08 | SDR-ST-CON-P1-3860, SDR-ST-CON-P1-3730 FS+4d |  |  |  | -70d | 0d | SIC- Cost [70526]; Un-Skilled Labor [4796.79 h]; Supervisor [28.49 h]; Skilled Labor [4796.79 h] | 70,526.03 |  | 1154 | 0 | B1.32 16 13.23.02 | lm | P1-R.W |
|  | 5 | **Interlock Installation** |  | 2027-04-10 | 2027-05-31 |  |  |  |  |  |  |  |  |  |  |  |  |  |  |
| SDR-ST-CON-P1-3890 |  | Interlock Installation Part 1 | 20d | 2027-04-10 | 2027-05-02 | SDR-ST-PRO-MS-1080, SDR-ST-CON-P1-4480 |  |  |  | -70d | 0d | SIC- Cost [213105]; Un-Skilled Labor [37.98 h]; Supervisor [28.49 h]; Skilled Labor [37.98 h] | 213,104.54 |  | 775 | 0 | B1.32 14 13.13.02 | M2 | P1-R.W |
| SDR-ST-CON-P1-4490 |  | Interlock Installation Part 2 | 20d | 2027-05-03 | 2027-05-31 | SDR-ST-CON-P1-4170, SDR-ST-CON-P1-3890 |  |  |  | -70d | 0d | SIC- Cost [213105]; Un-Skilled Labor [142.43 h]; Supervisor [28.49 h]; Skilled Labor [142.43 h] | 213,104.54 |  | 775 | 0 | B1.32 14 13.13.01 | M2 | P1-R.W |
|  | 6 | **Road Marking** |  | 2027-06-01 | 2027-08-11 |  |  |  |  |  |  |  |  |  |  |  |  |  |  |
| SDR-ST-CON-P1-5080 |  | Retroreflective Thermoplastic White Traffic lines | 7d | 2027-06-01 | 2027-06-08 | SDR-ST-CON-P1-5570, SDR-ST-CON-P1-5040 SS, SDR-ST-CON-P1-4490 |  |  |  | -70d | 35d | SIC- Cost [19365.7]; Supervisor [7.12 h]; Painter [28.49 h]; Painter Helper [28.49 h] | 19,365.66 |  | 343 | 0 | B1.32 17 23.01 | M2 | P1-R.W |
| SDR-ST-CON-P1-5150 |  | Retroreflective Thermoplastic Yellow, Traffic lines | 7d | 2027-07-20 | 2027-07-27 | SDR-ST-CON-P3-1310, SDR-ST-CON-P1-6070, SDR-ST-CON-P1-5030, SDR-ST-CON-P1-5080 |  |  |  | -105d | 0d | SIC- Cost [13725.2]; Supervisor [7.12 h]; Painter [3997.39 h]; Painter Helper [28.49 h] | 13,725.18 |  | 243 | 0 | B1.32 17 23.02 | M2 | P1-R.W |
| SDR-ST-CON-P1-5270 |  | Ceramic raised pavement markers | 7d | 2027-07-28 | 2027-08-04 | SDR-ST-CON-P1-6070, SDR-ST-CON-P1-4620, SDR-ST-CON-P1-5150 |  |  |  | -105d | 0d | SIC- Cost [733.26]; Un-Skilled Labor [1027.83 h]; Supervisor [7.12 h]; Skilled Labor [1027.83 h] | 733.78 |  | 17 | 0 | B1.32 17 23.03 | Number | P1-R.W |
| SDR-ST-CON-P1-5400 |  | Rumble strip | 7d | 2027-08-05 | 2027-08-11 | SDR-ST-CON-P1-5270 |  |  |  | -105d | 0d | SIC- Cost [928.33]; Un-Skilled Labor [28.49 h]; Supervisor [7.12 h]; Skilled Labor [28.49 h] | 928.33 |  | 66 | 0 | B1.32 17 23.04 | M | P1-R.W |
|  | 7 | **Traffic Signage** |  | 2027-08-12 | 2027-08-28 |  |  |  |  |  |  |  |  |  |  |  |  |  |  |
| SDR-ST-CON-P1-5090 |  | Traffic signs, ground mounted, 1 Sheet Alumenium, (breakaway) Single post, with all accessories | 8d | 2027-08-12 | 2027-08-21 | SDR-ST-CON-P1-5400 |  |  |  | -105d | 0d | SIC- Cost [8095.27]; Un-Skilled Labor [28.49 h]; Supervisor [7.12 h]; Skilled Labor [28.49 h] | 8,095.27 |  | 4 | 0 | B1.10 14 53.01 | Number | P1-R.W |
| SDR-ST-CON-P1-5160 |  | Traffic signs, ground mounted, 1 Sheet Aluminum, (breakaway) Double post, with all accessories | 6d | 2027-08-22 | 2027-08-28 | SDR-ST-CON-P1-5090 |  |  |  | -105d | 0d | SIC- Cost [8446.63]; Un-Skilled Labor [28.49 h]; Supervisor [7.12 h]; Skilled Labor [28.49 h] | 8,446.63 |  | 3 | 0 | B1.10 14 53.02 | Number | P1-R.W |

| ID | WBS | Activity | Duration | Start | Finish | Predecessors | Complete | Planned start | Planned finish | Total float | Free float | Resources | Cost | Actual cost | BOQ Qty | Variance | BOQ Line item | UOM | Activities Codes Sudair Station |
| --- | --- | --- | --- | --- | --- | --- | --- | --- | --- | --- | --- | --- | --- | --- | --- | --- | --- | --- | --- |
|  | 8 | **Speed table** |  | 2027-08-29 | 2027-09-08 |  |  |  |  |  |  |  |  |  |  |  |  |  |  |
| SDR-ST-CON-P1-5280 |  | Interlock speed table including interlock, flush kerb and marking | 10d | 2027-08-29 | 2027-09-08 | SDR-ST-CON-P1-5160 |  |  |  | -105d | 0d | SIC- Cost [15282.2]; Un-Skilled Labor [56.97 h]; Supervisor [21.36 h]; Skilled Labor [56.97 h] | 15,282.19 |  | 128 | 0 | B1.10 14 53.03 | M2 | P1-R.W |
|  | 9 | **ROAD-01 From 1125 to 1765 m (7)** |  | 2026-05-02 | 2027-09-12 |  |  |  |  |  |  |  |  |  |  |  |  |  |  |
|  | 14 | **GENERAL WORKS** |  | 2026-05-02 | 2026-05-24 |  |  |  |  |  |  |  |  |  |  |  |  |  |  |
|  | 10 | **Cleaning and removal of organic materials in Zone A** |  | 2026-05-02 | 2026-05-14 |  |  |  |  |  |  |  |  |  |  |  |  |  |  |
| SDR-ST-CON-P1-1020 |  | Cleaning and removal of organic materials in Zone A | 21d | 2026-05-02 A | 2026-05-14 A | SDR-ST-CON-P1-1010 SS+7d | 100% | 2026-06-08 | 2026-07-01 |  |  | SIC- Cost [6463.05]; Excavator [200 h]; Excavator Operator [142.43 h]; Dumper Operator [142.43 h]; Dumper Truck [392.21 h]; Grader [200 h]; Grader Operator [142.43 h]; Loader [200 h]; Loader Operator [142.43 h]; Un-Skilled Labor [2141.12 h]; Supervisor [142.43 h]; Skilled Labor [9307.65 h] | 6,463.05 | 6,463.05 | 8300 | 0 | B1.31 23 16.01 | M2 | P1-R.W |
|  | 12 | **Surveying works Zone A** |  | 2026-05-16 | 2026-05-24 |  |  |  |  |  |  |  |  |  |  |  |  |  |  |
| SDR-ST-CON-P1-1080 |  | Surveying works Zone A | 14d | 2026-05-16 A | 2026-05-24 A | SDR-ST-CON-P1-1020 | 100% | 2026-07-02 | 2026-07-18 |  |  | SIC- Cost [3877.83]; Un-Skilled Labor [113.94 h]; Surveyor [113.94 h]; Supervisor [21.36 h] | 3,877.83 | 3,877.83 | 8300 | 0 | B1.31 23 16.02 | M2 | P1-R.W |
|  | 1 | **Earth Works Road** |  | 2026-07-30 | 2026-08-09 |  |  |  |  |  |  |  |  |  |  |  |  |  |  |
| SDR-ST-CON-P1-1140 |  | Roadway Excavation and cuttings | 14d | 2026-07-30 A | 2026-08-09 A | SDR-ST-CON-P1-1080 | 100% | 2026-07-19 | 2026-08-03 |  |  | SIC- Cost [15511.3]; Excavator [60 h]; Excavator Operator [142.43 h]; Dumper Operator [142.43 h]; Dumper Truck [1230 h]; Grader [200 h]; Grader Operator [142.43 h]; Loader [200 h]; Loader Operator [142.43 h]; Un-Skilled Labor [2141.12 h]; Supervisor [28.49 h]; Skilled Labor [2141.12 h] | 15,511.33 | 15,511.33 | 917 | 0 | B1.31 23 16.03 | M3 | P1-R.W |
|  | 10 | **Backfilling Works** |  | 2026-05-24 | 2026-08-17 |  |  |  |  |  |  |  |  |  |  |  |  |  |  |
| SDR-ST-CON-P1-1210 |  | Embankments to the Road 1 Layer | 20d | 2026-05-24 A | 2026-06-08 A | SDR-ST-CON-P1-1140 | 100% | 2026-08-04 | 2026-08-26 |  |  | SIC- Cost [252647]; Compactor [200 h]; Excavator [65 h]; Excavator Operator [142.43 h]; Dumper Operator [142.43 h]; Dumper Truck [200 h]; Grader [200 h]; Grader Operator [142.43 h]; Loader [200 h]; Loader Operator [142.43 h]; Un-Skilled Labor [142.43 h]; Supervisor [28.49 h]; Skilled Labor [142.43 h]; Water Tanker [200 h] | 252,646.68 | 252,646.68 | 8958.25 | 0 | B1.31 23 23.01 | M3 | P1-R.W |
| SDR-ST-CON-P1-1580 |  | Embankments to the Road 2 Layer | 13d | 2026-06-09 A | 2026-06-15 A | SDR-ST-CON-P1-1210 | 100% | 2026-08-27 | 2026-09-10 |  |  | SIC- Cost [252647]; Compactor [200 h]; Excavator [18 h]; Excavator Operator [142.43 h]; Dumper Operator [142.43 h]; Dumper Truck [200 h]; Grader [179 h]; Grader Operator [142.43 h]; Loader [60.51 h]; Loader Operator [142.43 h]; Un-Skilled Labor [47.48 h]; Supervisor [28.49 h]; Skilled Labor [47.48 h]; Water Tanker [200 h] | 252,646.68 | 252,646.68 | 8958.25 | 0 | B1.31 23 23.02 | M3 | P1-R.W |
| SDR-ST-CON-P1-2220 |  | Embankments to the Road 3 Layer | 13d | 2026-06-15 A | 2026-06-30 A | SDR-ST-CON-P1-1580 | 100% | 2026-09-12 | 2026-09-27 |  |  | SIC- Cost [252647]; Compactor [50 h]; Excavator [15 h]; Excavator Operator [142.43 h]; Dumper Operator [142.43 h]; Dumper Truck [200 h]; Grader [100 h]; Grader Operator [142.43 h]; Loader [50 h]; Loader Operator [142.43 h]; Un-Skilled Labor [37.98 h]; Supervisor [28.49 h]; Skilled Labor [37.98 h]; Water Tanker [50 h] | 252,646.68 | 252,646.68 | 8958.25 | 0 | B1.31 23 23.03 | M3 | P1-R.W |
| SDR-ST-CON-P1-2880 |  | Embankments to the Road 4 Layer | 13d | 2026-08-11 A | 2026-08-17 A | SDR-ST-CON-P1-2220 | 100% | 2026-09-28 | 2026-10-12 |  |  | SIC- Cost [252647]; Compactor [97.14 h]; Excavator [30 h]; Excavator Operator [142.43 h]; Dumper Operator [142.43 h]; Dumper Truck [147.14 h]; Grader [239.51 h]; Grader Operator [142.43 h]; Loader [126.42 h]; Loader Operator [142.43 h]; Un-Skilled Labor [37.98 h]; Supervisor [28.49 h]; Skilled Labor [37.98 h]; Water Tanker [128.8 h] | 252,646.68 | 252,646.68 | 8958.25 | 0 | B1.31 23 23.04 | M3 | P1-R.W |
|  | 11 | **Subgrade** |  | 2026-09-10 | 2026-10-29 |  |  |  |  |  |  |  |  |  |  |  |  |  |  |
| SDR-ST-CON-P1-3600 |  | Subgrade layer works | 15d | 2026-09-10 A | 2026-10-29 A | SDR-ST-CON-P1-2880 | 100% | 2026-10-13 | 2026-10-29 |  |  | SIC- Cost [144749]; Compactor [200 h]; Excavator [15 h]; Excavator Operator [142.43 h]; Dumper Operator [142.43 h]; Dumper Truck [180 h]; Grader [200 h]; Grader Operator [142.43 h]; Loader [150 h]; Loader Operator [142.43 h]; Un-Skilled Labor [142.43 h]; Supervisor [142.43 h]; Skilled Labor [142.43 h]; Water Tanker [50 h]; Water Tanker Operator [142.43 h] | 144,748.92 | 144,748.92 | 3422 | 0 | B1.32 11 13.01 | M3 | P1-R.W |
|  | 2 | **Base Course** |  | 2026-10-17 | 2026-11-05 |  |  |  |  |  |  |  |  |  |  |  |  |  |  |
| SDR-ST-CON-P1-4220 |  | Aggregate base course layer | 15d | 2026-10-17 A | 2026-11-05 A | SDR-ST-CON-P1-3600 | 100% | 2026-10-31 | 2026-11-16 |  |  | SIC- Cost [174309]; Compactor [71.33 h]; Dumper Operator [135.31 h]; Dumper Truck [2835 h]; Grader [101.55 h]; Grader Operator [135.31 h]; Loader [209.58 h]; Loader Operator [135.31 h]; Un-Skilled Labor [135.31 h]; Supervisor [21.36 h]; Skilled Labor [135.31 h]; Water Tanker [240 h]; Water Tanker Operator [135.31 h] | 174,308.58 | 174,308.58 | 2248 | 6.66666666666667 | B1.32 11 23.01 | M3 | P1-R.W |
|  | 3 | **Asphalt Works** |  | 2026-11-29 | 2027-03-20 |  |  |  |  |  |  |  |  |  |  |  |  |  |  |
|  | 1 | **Bituminous base course** |  | 2026-11-29 | 2026-12-17 |  |  |  |  |  |  |  |  |  |  |  |  |  |  |
| SDR-ST-CON-P1-4750 |  | Bituminous base course (Grading I - Class A 1st Layer with RC-01 | 8d | 2026-11-29 | 2026-12-07 | SDR-ST-CON-P1-4220 |  |  |  | 9d | 0d | SIC- Cost [518809]; Compactor [50 h]; Dumper Operator [128.18 h]; Dumper Truck [50 h]; Supervisor [28.49 h]; Sweeper Machine [30 h]; Sweeper Machine Operator [128.18 h]; Pneumatic Tire Roller [30 h]; Pneumatic Roller Operator [128.18 h]; Asphalt Paver [30 h]; Asphalt Paver Operator [128.18 h] | 518,808.78 |  | 828.5 | 0 | B1.32 11 26.01 | M3 | P1-R.W |
| SDR-ST-CON-P1-5010 |  | Bituminous base course (Grading I - Class A 2nd layer with RC-02 | 9d | 2026-12-08 | 2026-12-17 | SDR-ST-CON-P1-4750 |  |  |  | 9d | 50d | SIC- Cost [518809]; Compactor [50 h]; Dumper Operator [128.18 h]; Dumper Truck [50 h]; Supervisor [28.49 h]; Sweeper Machine [172 h]; Sweeper Machine Operator [128.18 h]; Pneumatic Tire Roller [120 h]; Pneumatic Roller Operator [128.18 h]; Asphalt Paver [30 h]; Asphalt Paver Operator [128.18 h] | 518,808.78 |  | 828.5 | 0 | B1.32 11 26.02 | M3 | P1-R.W |
|  | 2 | **Bituminous concrete wearing course** |  | 2027-02-18 | 2027-03-20 |  |  |  |  |  |  |  |  |  |  |  |  |  |  |
| SDR-ST-CON-P1-5200 |  | Bituminous concrete wearing course, (Grading I - Class A), including tack coat (RC2) | 21d | 2027-02-18 | 2027-03-20 | SDR-ST-PRO-MS-1270, SDR-ST-CON-P1-5010 FS+3d |  |  |  | -41d | 46d | SIC- Cost [364403]; Compactor [50 h]; Dumper Operator [128.18 h]; Dumper Truck [50 h]; Supervisor [28.49 h]; Sweeper Machine [30 h]; Sweeper Machine Operator [128.18 h]; Pneumatic Tire Roller [36 h]; Pneumatic Roller Operator [128.18 h]; Asphalt Paver [30 h]; Asphalt Paver Operator [128.18 h] | 364,403.21 |  | 570 | 0 | B1.32 12 16.01 | M3 | P1-R.W |

| ID | WBS | Activity | Duration | Start | Finish | Predecessors | Complete | Planned start | Planned finish | Total float | Free float | Resources | Cost | Actual cost | BOQ Qty | Variance | BOQ Line item | UOM | Activities Codes Sudair Station |
| --- | --- | --- | --- | --- | --- | --- | --- | --- | --- | --- | --- | --- | --- | --- | --- | --- | --- | --- | --- |
|  | 4 | **Kerbstone Installation** |  | 2026-11-29 | 2027-01-18 |  |  |  |  |  |  |  |  |  |  |  |  |  |  |
| SDR-ST-CON-P1-4230 |  | Precast Concrete Curbstone, Type A2 | 20d | 2026-11-29 | 2026-12-21 | SDR-ST-CON-P1-3600 |  |  |  | -6d | 0d | SIC- Cost [144150]; Un-Skilled Labor [142.43 h]; Supervisor [28.49 h]; Skilled Labor [142.43 h] | 144,149.62 |  | 2275 | -70 | B1.32 16 13.23.01 | lm | P1-R.W |
| SDR-ST-CON-P1-4950 |  | Precast Concrete Curbstone, Type D | 20d | 2026-12-27 | 2027-01-18 | SDR-ST-CON-P1-4230 FS+4d |  |  |  | -6d | 3d | SIC- Cost [70526]; Un-Skilled Labor [142.43 h]; Supervisor [28.49 h]; Skilled Labor [142.43 h] | 70,526.03 |  | 1154 | 0 | B1.32 16 13.23.02 | lm | P1-R.W |
|  | 5 | **Interlock Installation** |  | 2027-01-23 | 2027-03-16 |  |  |  |  |  |  |  |  |  |  |  |  |  |  |
| SDR-ST-CON-P1-4440 |  | Interlock Installation Part 1 | 21d | 2027-01-23 | 2027-02-15 | SDR-ST-PRO-MS-1080, SDR-ST-CON-P1-4950 |  |  |  | -9d | 0d | SIC- Cost [213105]; Un-Skilled Labor [39.97 h]; Supervisor [28.49 h]; Skilled Labor [39.97 h] | 213,104.54 |  | 775 | 0 | B1.32 14 13.13.02 | M2 | P1-R.W |
| SDR-ST-CON-P1-4870 |  | Interlock Installation Part 2 | 20d | 2027-02-16 | 2027-03-16 | SDR-ST-CON-P1-4440 |  |  |  | -9d | 89d | SIC- Cost [213105]; Un-Skilled Labor [142.43 h]; Supervisor [28.49 h]; Skilled Labor [142.43 h] | 213,104.54 |  | 775 | 0 | B1.32 14 13.13.01 | M2 | P1-R.W |
|  | 6 | **Road Marking** |  | 2027-07-20 | 2027-08-21 |  |  |  |  |  |  |  |  |  |  |  |  |  |  |
| SDR-ST-CON-P1-5300 |  | Retroreflective Thermoplastic White Traffic lines | 7d | 2027-07-20 | 2027-07-27 | SDR-ST-CON-P3-1310, SDR-ST-CON-P3-1490, SDR-ST-CON-P1-6070, SDR-ST-CON-P1-5200 SS, SDR-ST-CON-P1-4870 |  |  |  | -111d | 0d | SIC- Cost [19365.7]; Supervisor [7.12 h]; Painter [1057.81 h]; Painter Helper [28.49 h] | 19,365.66 |  | 343 | 0 | B1.32 17 23.01 | M2 | P1-R.W |
| SDR-ST-CON-P1-5450 |  | Retroreflective Thermoplastic Yellow, Traffic lines | 7d | 2027-07-28 | 2027-08-04 | SDR-ST-CON-P1-5300 |  |  |  | -111d | 0d | SIC- Cost [13725.2]; Supervisor [7.12 h]; Painter [1057.81 h]; Painter Helper [28.49 h] | 13,725.18 |  | 243 | 0 | B1.32 17 23.02 | M2 | P1-R.W |
| SDR-ST-CON-P1-5610 |  | Ceramic raised pavement markers | 7d | 2027-08-05 | 2027-08-11 | SDR-ST-CON-P1-5450 |  |  |  | -111d | 0d | SIC- Cost [733.26]; Un-Skilled Labor [28.49 h]; Supervisor [7.12 h]; Skilled Labor [28.49 h] | 733.26 |  | 17 | 0 | B1.32 17 23.03 | Number | P1-R.W |
| SDR-ST-CON-P1-5690 |  | Rumble strip | 8d | 2027-08-12 | 2027-08-21 | SDR-ST-CON-P1-5610 |  |  |  | -111d | 0d | SIC- Cost [928.33]; Un-Skilled Labor [28.49 h]; Supervisor [7.12 h]; Skilled Labor [28.49 h] | 928.33 |  | 66 | 0 | B1.32 17 23.04 | M | P1-R.W |
|  | 7 | **Traffic Signage** |  | 2027-08-22 | 2027-09-02 |  |  |  |  |  |  |  |  |  |  |  |  |  |  |
| SDR-ST-CON-P1-5540 |  | Traffic signs, ground mounted, 1 Sheet Alumenium, (breakaway) Single post, with all accessories | 5d | 2027-08-22 | 2027-08-26 | SDR-ST-CON-P1-5690 |  |  |  | -111d | 0d | SIC- Cost [8095.27]; Un-Skilled Labor [4025.87 h]; Supervisor [7.12 h]; Skilled Labor [4025.87 h] | 8,095.27 |  | 4 | 0 | B1.10 14 53.01 | Number | P1-R.W |
| SDR-ST-CON-P1-5680 |  | Traffic signs, ground mounted, 1 Sheet Aluminum, (breakaway) Double post, with all accessories | 6d | 2027-08-28 | 2027-09-02 | SDR-ST-CON-P1-5540 |  |  |  | -111d | 0d | SIC- Cost [8446.63]; Un-Skilled Labor [4025.87 h]; Supervisor [7.12 h]; Skilled Labor [4025.87 h] | 8,446.63 |  | 3 | 0 | B1.10 14 53.02 | Number | P1-R.W |
|  | 8 | **Speed table** |  | 2027-09-04 | 2027-09-12 |  |  |  |  |  |  |  |  |  |  |  |  |  |  |
| SDR-ST-CON-P1-5460 |  | Interlock speed table including interlock, flush kerb and marking | 8d | 2027-09-04 | 2027-09-12 | SDR-ST-CON-P1-5680 |  |  |  | -111d | 0d | SIC- Cost [15282.2]; Un-Skilled Labor [56.97 h]; Supervisor [7.12 h]; Skilled Labor [56.97 h] | 15,282.19 |  | 128 | 0 | B1.10 14 53.03 | M2 | P1-R.W |
|  | 6 | **ROAD - 02** |  | 2026-05-02 | 2027-09-30 |  |  |  |  |  |  |  |  |  |  |  |  |  |  |
|  | 1 | **ROAD-01 From 0 to 400 m (9)** |  | 2026-05-02 | 2027-09-19 |  |  |  |  |  |  |  |  |  |  |  |  |  |  |
|  | 14 | **GENERAL WORKS** |  | 2026-05-02 | 2026-05-24 |  |  |  |  |  |  |  |  |  |  |  |  |  |  |
|  | 10 | **Cleaning and removal of organic materials in Zone A** |  | 2026-05-02 | 2026-05-10 |  |  |  |  |  |  |  |  |  |  |  |  |  |  |
| SDR-ST-CON-P1-1030 |  | Cleaning and removal of organic materials in Zone A | 21d | 2026-05-02 A | 2026-05-10 A | SDR-ST-CON-P1-1020 SS+4d | 100% | 2026-06-13 | 2026-07-06 |  |  | SIC- Cost [4536.95]; Excavator [200 h]; Excavator Operator [142.43 h]; Dumper Operator [142.43 h]; Dumper Truck [200 h]; Grader [200 h]; Grader Operator [142.43 h]; Loader [200 h]; Loader Operator [142.43 h]; Un-Skilled Labor [142.43 h]; Supervisor [142.43 h]; Skilled Labor [142.43 h] | 4,536.95 | 4,536.95 | 8300 | 0 | B1.31 23 16.01 | M2 | P1-R.W |
|  | 12 | **Surveying works Zone A** |  | 2026-05-11 | 2026-05-24 |  |  |  |  |  |  |  |  |  |  |  |  |  |  |
| SDR-ST-CON-P1-1100 |  | Surveying works Zone A | 19d | 2026-05-11 A | 2026-05-24 A | SDR-ST-CON-P1-1030 | 100% | 2026-07-07 | 2026-07-28 |  |  | SIC- Cost [2722.17]; Un-Skilled Labor [113.94 h]; Surveyor [113.94 h]; Supervisor [28.49 h] | 2,722.17 | 2,722.17 | 8300 | 0 | B1.31 23 16.02 | M2 | P1-R.W |
|  | 1 | **Earth Works Road** |  | 2026-07-08 | 2026-08-08 |  |  |  |  |  |  |  |  |  |  |  |  |  |  |
| SDR-ST-CON-P1-1160 |  | Roadway Excavation and cuttings | 14d | 2026-07-08 A | 2026-08-08 A | SDR-ST-CON-P1-1100 | 100% | 2026-07-29 | 2026-08-13 |  |  | SIC- Cost [10888.7]; Excavator [50 h]; Excavator Operator [142.43 h]; Dumper Operator [142.43 h]; Dumper Truck [200 h]; Grader [200 h]; Grader Operator [142.43 h]; Loader [200 h]; Loader Operator [142.43 h]; Un-Skilled Labor [142.43 h]; Supervisor [142.43 h]; Skilled Labor [142.43 h] | 10,888.69 | 10,888.69 | 917 | 0 | B1.31 23 16.03 | M3 | P1-R.W |

| ID | WBS | Activity | Duration | Start | Finish | Predecessors | Complete | Remaining | Planned start | Planned finish | Total float | Free float | Resources | Cost | Actual cost | BOQ Qty | Variance | BOQ Line item | UOM | Activities Codes Sudair Station |
| --- | --- | --- | --- | --- | --- | --- | --- | --- | --- | --- | --- | --- | --- | --- | --- | --- | --- | --- | --- | --- |
|  | 10 | **Backfilling Works** |  | 2026-05-31 | 2026-08-20 |  |  |  |  |  |  |  |  |  |  |  |  |  |  |  |
| SDR-ST-CON-P1-1300 |  | Embankments to the Road 1 Layer | 13d | 2026-05-31 A | 2026-06-09 A | SDR-ST-CON-P1-1160 | 100% |  | 2026-08-15 | 2026-08-29 |  |  | SIC- Cost [177354]; Compactor [200 h]; Excavator [40 h]; Excavator Operator [142.43 h]; Dumper Operator [142.43 h]; Dumper Truck [1215 h]; Grader [200 h]; Grader Operator [142.43 h]; Loader [200 h]; Loader Operator [142.43 h]; Un-Skilled Labor [37.98 h]; Supervisor [28.49 h]; Skilled Labor [37.98 h]; Water Tanker [200 h] | 177,353.68 | 177,353.68 | 8958.25 | 0 | B1.31 23 23.01 | M3 | P1-R.W |
| SDR-ST-CON-P1-1910 |  | Embankments to the Road 2 Layer | 13d | 2026-06-16 A | 2026-06-30 A | SDR-ST-CON-P1-1300 | 100% |  | 2026-08-30 | 2026-09-13 |  |  | SIC- Cost [177354]; Compactor [200 h]; Excavator [30 h]; Excavator Operator [142.43 h]; Dumper Operator [142.43 h]; Dumper Truck [200 h]; Grader [175.38 h]; Grader Operator [142.43 h]; Loader [119.41 h]; Loader Operator [142.43 h]; Un-Skilled Labor [37.98 h]; Supervisor [28.49 h]; Skilled Labor [37.98 h]; Water Tanker [233.22 h] | 177,353.68 | 177,353.68 | 8958.25 | 0 | B1.31 23 23.02 | M3 | P1-R.W |
| SDR-ST-CON-P1-2620 |  | Embankments to the Road 3 Layer | 13d | 2026-08-11 A | 2026-08-16 A | SDR-ST-CON-P1-1910 | 100% |  | 2026-09-14 | 2026-09-29 |  |  | SIC- Cost [177354]; Compactor [50 h]; Excavator [15 h]; Excavator Operator [142.43 h]; Dumper Operator [142.43 h]; Dumper Truck [200 h]; Grader [100 h]; Grader Operator [142.43 h]; Loader [50 h]; Loader Operator [142.43 h]; Un-Skilled Labor [37.98 h]; Supervisor [28.49 h]; Skilled Labor [37.98 h]; Water Tanker [50 h] | 177,353.68 | 177,353.68 | 8958.25 | 0 | B1.31 23 23.03 | M3 | P1-R.W |
| SDR-ST-CON-P1-2920 |  | Embankments to the Road 4 Layer | 13d | 2026-08-16 A | 2026-08-20 A | SDR-ST-CON-P1-2620 | 100% |  | 2026-09-30 | 2026-10-14 |  |  | SIC- Cost [177354]; Compactor [160 h]; Excavator [30 h]; Excavator Operator [142.43 h]; Dumper Operator [142.43 h]; Dumper Truck [200 h]; Grader [200 h]; Grader Operator [142.43 h]; Loader [143.27 h]; Loader Operator [142.43 h]; Un-Skilled Labor [37.98 h]; Supervisor [37.98 h]; Skilled Labor [37.98 h]; Water Tanker [148.21 h] | 177,353.68 | 177,353.68 | 8958.25 | 0 | B1.31 23 23.04 | M3 | P1-R.W |
|  | 11 | **Subgrade** |  | 2026-09-07 | 2026-12-05 |  |  |  |  |  |  |  |  |  |  |  |  |  |  |  |
| SDR-ST-CON-P1-3390 |  | Subgrade layer works | 13d | 2026-09-07 A | 2026-12-05 | SDR-ST-CON-P1-2920 | 80% | 6d | 2026-10-15 | 2026-10-29 | -11d | 0d | SIC- Cost [101611]; Compactor [50 h]; Excavator [15 h]; Excavator Operator [142.43 h]; Dumper Operator [142.43 h]; Dumper Truck [200 h]; Grader [200 h]; Grader Operator [142.43 h]; Loader [90.82 h]; Loader Operator [142.43 h]; Un-Skilled Labor [142.43 h]; Supervisor [142.43 h]; Skilled Labor [142.43 h]; Water Tanker [50 h]; Water Tanker Operator [142.43 h] | 101,611.28 | 81,289.02 | 3422 | -20 | B1.32 11 13.01 | M3 | P1-R.W |
|  | 2 | **Base Course** |  | 2026-11-08 | 2026-12-13 |  |  |  |  |  |  |  |  |  |  |  |  |  |  |  |
| SDR-ST-CON-P1-3960 |  | Aggregate base course layer | 13d | 2026-11-08 A | 2026-12-13 | SDR-ST-CON-P1-3390 | 15% | 7d | 2026-10-31 | 2026-11-14 | -9d | 0d | SIC- Cost [122362]; Compactor [85.55 h]; Dumper Operator [135.31 h]; Dumper Truck [1229.2 h]; Grader [101.27 h]; Grader Operator [135.31 h]; Loader [260 h]; Loader Operator [135.31 h]; Un-Skilled Labor [135.31 h]; Supervisor [135.31 h]; Skilled Labor [135.31 h]; Water Tanker [137.08 h]; Water Tanker Operator [135.31 h] | 122,361.66 | 18,354.25 | 2248 | -85 | B1.32 11 23.01 | M3 | P1-R.W |
|  | 3 | **Asphalt Works** |  | 2026-12-14 | 2027-01-31 |  |  |  |  |  |  |  |  |  |  |  |  |  |  |  |
|  | 1 | **Bituminous base course** |  | 2026-12-14 | 2027-01-04 |  |  |  |  |  |  |  |  |  |  |  |  |  |  |  |
| SDR-ST-CON-P1-4540 |  | Bituminous base course (Grading I - Class A 1st Layer with RC-01 | 10d | 2026-12-14 | 2026-12-24 | SDR-ST-CON-P1-3960 |  |  |  |  | -9d | 0d | SIC- Cost [364195]; Compactor [50 h]; Dumper Operator [128.18 h]; Dumper Truck [50 h]; Supervisor [28.49 h]; Sweeper Machine [30 h]; Sweeper Machine Operator [128.18 h]; Pneumatic Tire Roller [30 h]; Pneumatic Roller Operator [128.18 h]; Asphalt Paver [30 h]; Asphalt Paver Operator [128.18 h] | 364,194.94 |  | 828.5 | -10 | B1.32 11 26.01 | M3 | P1-R.W |
| SDR-ST-CON-P1-4890 |  | Bituminous base course (Grading I - Class A 2nd layer with RC-02 | 9d | 2026-12-26 | 2027-01-04 | SDR-ST-CON-P1-4540 |  |  |  |  | -9d | 0d | SIC- Cost [364195]; Compactor [50 h]; Dumper Operator [128.18 h]; Dumper Truck [50 h]; Supervisor [28.49 h]; Sweeper Machine [30 h]; Sweeper Machine Operator [128.18 h]; Pneumatic Tire Roller [30 h]; Pneumatic Roller Operator [128.18 h]; Asphalt Paver [30 h]; Asphalt Paver Operator [128.18 h] | 364,194.94 |  | 828.5 | 0 | B1.32 11 26.02 | M3 | P1-R.W |
|  | 2 | **Bituminous concrete wearing course** |  | 2027-01-07 | 2027-01-31 |  |  |  |  |  |  |  |  |  |  |  |  |  |  |  |
| SDR-ST-CON-P1-5130 |  | Bituminous concrete wearing course, (Grading I - Class A), including tack coat (RC2) | 21d | 2027-01-07 | 2027-01-31 | SDR-ST-CON-P1-4890 FS+2d |  |  |  |  | -9d | 42d | SIC- Cost [256255]; Compactor [1460 h]; Dumper Operator [128.18 h]; Dumper Truck [125 h]; Supervisor [28.49 h]; Sweeper Machine [460 h]; Sweeper Machine Operator [128.18 h]; Pneumatic Tire Roller [160 h]; Pneumatic Roller Operator [128.18 h]; Asphalt Paver [105 h]; Asphalt Paver Operator [128.18 h] | 256,255.43 |  | 570 | 0 | B1.32 12 16.01 | M3 | P1-R.W |
|  | 4 | **Kerbstone Installation** |  | 2026-12-06 | 2027-01-25 |  |  |  |  |  |  |  |  |  |  |  |  |  |  |  |
| SDR-ST-CON-P1-3970 |  | Precast Concrete Curbstone, Type A2 | 20d | 2026-12-06 | 2026-12-28 | SDR-ST-CON-P1-3390 |  |  |  |  | -11d | 0d | SIC- Cost [101191]; Un-Skilled Labor [128.18 h]; Supervisor [28.54 h]; Skilled Labor [128.18 h] | 101,190.58 |  | 2275 | -70 | B1.32 16 13.23.01 | lm | P1-R.W |
| SDR-ST-CON-P1-4690 |  | Precast Concrete Curbstone, Type D | 20d | 2027-01-03 | 2027-01-25 | SDR-ST-CON-P1-3970 FS+4d |  |  |  |  | -11d | 0d | SIC- Cost [49508.1]; Un-Skilled Labor [128.18 h]; Supervisor [28.49 h]; Skilled Labor [128.18 h] | 49,508.07 |  | 1154 | 0 | B1.32 16 13.23.02 | lm | P1-R.W |
|  | 5 | **Interlock Installation** |  | 2027-01-26 | 2027-03-18 |  |  |  |  |  |  |  |  |  |  |  |  |  |  |  |
| SDR-ST-CON-P1-4200 |  | Interlock Installation Part 1 | 20d | 2027-01-26 | 2027-02-17 | SDR-ST-CON-P1-3970 FS+4d, SDR-ST-CON-P1-4690 |  |  |  |  | -11d | 0d | SIC- Cost [149596]; Un-Skilled Labor [142.43 h]; Supervisor [28.49 h]; Skilled Labor [142.43 h] | 149,595.76 |  | 775 | 0 | B1.32 14 13.13.02 | M2 | P1-R.W |
| SDR-ST-CON-P1-4780 |  | Interlock Installation Part 2 | 20d | 2027-02-18 | 2027-03-18 | SDR-ST-CON-P1-4200 |  |  |  |  | -11d | 87d | SIC- Cost [149596]; Un-Skilled Labor [142.43 h]; Supervisor [28.49 h]; Skilled Labor [142.43 h] | 149,595.76 |  | 775 | 0 | B1.32 14 13.13.01 | M2 | P1-R.W |
|  | 6 | **Road Marking** |  | 2027-07-20 | 2027-08-19 |  |  |  |  |  |  |  |  |  |  |  |  |  |  |  |
| SDR-ST-CON-P1-5250 |  | Retroreflective Thermoplastic White Traffic lines | 7d | 2027-07-20 | 2027-07-27 | SDR-ST-CON-P3-1310, SDR-ST-CON-P1-6070, SDR-ST-CON-P1-6070 FF, SDR-ST-CON-P1-4780 |  |  |  |  | -111d | 0d | SIC- Cost [13594.4]; Supervisor [7.12 h]; Painter [1057.81 h]; Painter Helper [28.49 h] | 13,594.36 |  | 343 | 0 | B1.32 17 23.01 | M2 | P1-R.W |
| SDR-ST-CON-P1-5370 |  | Retroreflective Thermoplastic Yellow, Traffic lines | 7d | 2027-07-28 | 2027-08-04 | SDR-ST-CON-P1-6070, SDR-ST-CON-P1-5250 |  |  |  |  | -111d | 0d | SIC- Cost [9634.84]; Supervisor [7.12 h]; Painter [1611.85 h]; Painter Helper [28.49 h] | 9,634.84 |  | 243 | 0 | B1.32 17 23.02 | M2 | P1-R.W |
| SDR-ST-CON-P1-5550 |  | Ceramic raised pavement markers | 7d | 2027-08-05 | 2027-08-11 | SDR-ST-CON-P1-5370 |  |  |  |  | -111d | 0d | SIC- Cost [514.74]; Un-Skilled Labor [28.49 h]; Supervisor [7.12 h]; Skilled Labor [28.49 h] | 514.74 |  | 17 | 0 | B1.32 17 23.03 | Number | P1-R.W |
| SDR-ST-CON-P1-5630 |  | Rumble strip | 7d | 2027-08-12 | 2027-08-19 | SDR-ST-CON-P1-5550 |  |  |  |  | -111d | 0d | SIC- Cost [651.67]; Un-Skilled Labor [7.14 h]; Supervisor [7.14 h]; Skilled Labor [7.14 h] | 651.67 |  | 66 | 0 | B1.32 17 23.04 | M | P1-R.W |

| ID | WBS | Activity | Duration | Start | Finish | Predecessors | Complete | Remaining | Planned start | Planned finish | Total float | Free float | Resources | Cost | Actual cost | BOQ Qty | Variance | BOQ Line item | UOM | Activities Codes Sudair Station |
| --- | --- | --- | --- | --- | --- | --- | --- | --- | --- | --- | --- | --- | --- | --- | --- | --- | --- | --- | --- | --- |
|  | 7 | **Traffic Signage** |  | 2027-08-21 | 2027-09-08 |  |  |  |  |  |  |  |  |  |  |  |  |  |  |  |
| SDR-ST-CON-P1-5260 |  | Traffic signs, ground mounted, 1 Sheet Alumenium, (breakaway) Single post, with all accessories | 6d | 2027-08-21 | 2027-08-26 | SDR-ST-CON-P1-5250, SDR-ST-CON-P1-5630 |  |  |  |  | -111d | 0d | SIC- Cost [5681.92]; Un-Skilled Labor [1453.55 h]; Supervisor [7.12 h]; Skilled Labor [1453.55 h] | 5,681.92 |  | 4 | 0 | B1.10 14 53.01 | Number | P1-R.W |
| SDR-ST-CON-P1-5380 |  | Traffic signs, ground mounted, 1 Sheet Aluminum, (breakaway) Double post, with all accessories | 6d | 2027-08-28 | 2027-09-02 | SDR-ST-CON-P1-5260 |  |  |  |  | -111d | 0d | SIC- Cost [5929.3]; Un-Skilled Labor [28.49 h]; Supervisor [7.12 h]; Skilled Labor [28.49 h] | 5,929.3 |  | 3 | 0 | B1.10 14 53.02 | Number | P1-R.W |
| SDR-ST-CON-P1-5560 |  | Traffic signs, ground mounted, 2 Sheet Aluminum, (breakaway) Single post, with all accessories | 5d | 2027-09-04 | 2027-09-08 | SDR-ST-CON-P1-5380 |  |  |  |  | -111d | 0d | SIC- Cost [2470.58]; Un-Skilled Labor [28.49 h]; Supervisor [7.12 h]; Skilled Labor [28.49 h] | 2,470.58 |  | 1 | 0 | B1.10 14 53.03 | Number | P1-R.W |
|  | 8 | **Speed table** |  | 2027-09-11 | 2027-09-19 |  |  |  |  |  |  |  |  |  |  |  |  |  |  |  |
| SDR-ST-CON-P1-5390 |  | Interlock speed table including interlock, flush kerb and marking | 8d | 2027-09-11 | 2027-09-19 | SDR-ST-CON-P1-5380, SDR-ST-CON-P1-5560 FS+1d |  |  |  |  | -111d | 0d | SIC- Cost [10727.8]; Un-Skilled Labor [56.97 h]; Supervisor [7.12 h]; Skilled Labor [56.97 h] | 10,727.83 |  | 128 | 0 | B1.10 14 53.03 | M2 | P1-R.W |
|  | 2 | **ROAD-01 From 400 to 900 m (10)** |  | 2026-05-02 | 2027-09-30 |  |  |  |  |  |  |  |  |  |  |  |  |  |  |  |
|  | 14 | **GENERAL WORKS** |  | 2026-05-02 | 2026-05-24 |  |  |  |  |  |  |  |  |  |  |  |  |  |  |  |
|  | 10 | **Cleaning and removal of organic materials in Zone A** |  | 2026-05-02 | 2026-05-14 |  |  |  |  |  |  |  |  |  |  |  |  |  |  |  |
| SDR-ST-CON-P1-1040 |  | Cleaning and removal of organic materials in Zone A | 21d | 2026-05-02 A | 2026-05-14 A | SDR-ST-CON-P1-1030 SS+3d | 100% |  | 2026-06-16 | 2026-07-09 |  |  | SIC- Cost [4536.95]; Excavator [200 h]; Excavator Operator [142.43 h]; Dumper Operator [142.43 h]; Dumper Truck [200 h]; Grader [200 h]; Grader Operator [142.43 h]; Loader [200 h]; Loader Operator [142.43 h]; Un-Skilled Labor [142.43 h]; Supervisor [142.43 h]; Skilled Labor [142.43 h] | 4,536.95 | 4,536.95 | 8300 | 0 | B1.31 23 16.01 | M2 | P1-R.W |
|  | 12 | **Surveying works Zone A** |  | 2026-05-16 | 2026-05-24 |  |  |  |  |  |  |  |  |  |  |  |  |  |  |  |
| SDR-ST-CON-P1-1110 |  | Surveying works Zone A | 16d | 2026-05-16 A | 2026-05-24 A | SDR-ST-CON-P1-1040 | 100% |  | 2026-07-11 | 2026-07-28 |  |  | SIC- Cost [2722.17]; Un-Skilled Labor [113.94 h]; Surveyor [113.94 h]; Supervisor [28.49 h] | 2,722.17 | 2,722.17 | 8300 | 0 | B1.31 23 16.02 | M2 | P1-R.W |
|  | 1 | **Earth Works Road** |  | 2026-07-30 | 2026-08-10 |  |  |  |  |  |  |  |  |  |  |  |  |  |  |  |
| SDR-ST-CON-P1-1170 |  | Roadway Excavation and cuttings | 13d | 2026-07-30 A | 2026-08-10 A | SDR-ST-CON-P1-1110 | 100% |  | 2026-07-29 | 2026-08-12 |  |  | SIC- Cost [10888.7]; Excavator [50 h]; Excavator Operator [142.43 h]; Dumper Operator [142.43 h]; Dumper Truck [200 h]; Grader [200 h]; Grader Operator [142.43 h]; Loader [200 h]; Loader Operator [142.43 h]; Un-Skilled Labor [142.43 h]; Supervisor [28.49 h]; Skilled Labor [142.43 h] | 10,888.69 | 10,888.69 | 917 | 0 | B1.31 23 16.03 | M3 | P1-R.W |
|  | 10 | **Backfilling Works** |  | 2026-06-01 | 2026-08-16 |  |  |  |  |  |  |  |  |  |  |  |  |  |  |  |
| SDR-ST-CON-P1-1250 |  | Embankments to the Road 1 Layer | 14d | 2026-06-01 A | 2026-06-09 A | SDR-ST-CON-P1-1170 | 100% |  | 2026-08-13 | 2026-08-29 |  |  | SIC- Cost [177354]; Compactor [200 h]; Excavator [57 h]; Excavator Operator [142.43 h]; Dumper Operator [142.43 h]; Dumper Truck [200 h]; Grader [200 h]; Grader Operator [142.43 h]; Loader [200 h]; Loader Operator [142.43 h]; Un-Skilled Labor [37.98 h]; Supervisor [28.49 h]; Skilled Labor [37.98 h]; Water Tanker [200 h] | 177,353.68 | 177,353.68 | 8958.25 | 0 | B1.31 23 23.01 | M3 | P1-R.W |
| SDR-ST-CON-P1-1830 |  | Embankments to the Road 2 Layer | 14d | 2026-06-18 A | 2026-06-30 A | SDR-ST-CON-P1-1250 | 100% |  | 2026-08-30 | 2026-09-14 |  |  | SIC- Cost [177354]; Compactor [200 h]; Excavator [30 h]; Excavator Operator [142.43 h]; Dumper Operator [142.43 h]; Dumper Truck [200 h]; Grader [187.69 h]; Grader Operator [142.43 h]; Loader [131.84 h]; Loader Operator [142.43 h]; Un-Skilled Labor [37.98 h]; Supervisor [28.49 h]; Skilled Labor [37.98 h]; Water Tanker [200 h] | 177,353.68 | 177,353.68 | 8958.25 | 0 | B1.31 23 23.02 | M3 | P1-R.W |
| SDR-ST-CON-P1-2540 |  | Embankments to the Road 3 Layer | 14d | 2026-08-11 A | 2026-08-16 A | SDR-ST-CON-P1-1830 | 100% |  | 2026-09-15 | 2026-10-01 |  |  | SIC- Cost [177354]; Compactor [50 h]; Excavator [15 h]; Excavator Operator [142.43 h]; Dumper Operator [142.43 h]; Dumper Truck [200 h]; Grader [100 h]; Grader Operator [142.43 h]; Loader [50 h]; Loader Operator [142.43 h]; Un-Skilled Labor [37.98 h]; Supervisor [28.49 h]; Skilled Labor [37.98 h]; Water Tanker [200 h] | 177,353.68 | 177,353.68 | 8958.25 | 0 | B1.31 23 23.03 | M3 | P1-R.W |
| SDR-ST-CON-P1-3100 |  | Embankments to the Road 4 Layer | 14d | 2026-08-11 A | 2026-08-16 A | SDR-ST-CON-P1-2540 | 100% |  | 2026-10-03 | 2026-10-18 |  |  | SIC- Cost [177354]; Compactor [200 h]; Excavator [30 h]; Excavator Operator [142.43 h]; Dumper Operator [142.43 h]; Dumper Truck [200 h]; Grader [200 h]; Grader Operator [142.43 h]; Loader [139.18 h]; Loader Operator [142.43 h]; Un-Skilled Labor [37.98 h]; Supervisor [28.49 h]; Skilled Labor [37.98 h]; Water Tanker [200 h] | 177,353.68 | 177,353.68 | 8958.25 | 0 | B1.31 23 23.04 | M3 | P1-R.W |
|  | 11 | **Subgrade** |  | 2026-09-07 | 2026-11-07 |  |  |  |  |  |  |  |  |  |  |  |  |  |  |  |
| SDR-ST-CON-P1-3540 |  | Subgrade layer works | 14d | 2026-09-07 A | 2026-11-07 A | SDR-ST-CON-P1-3100 | 100% |  | 2026-10-19 | 2026-11-03 |  |  | SIC- Cost [101611]; Compactor [50 h]; Excavator [15 h]; Excavator Operator [142.43 h]; Dumper Operator [142.43 h]; Dumper Truck [200 h]; Grader [200 h]; Grader Operator [142.43 h]; Loader [200 h]; Loader Operator [142.43 h]; Un-Skilled Labor [142.43 h]; Supervisor [28.49 h]; Skilled Labor [142.43 h]; Water Tanker [200 h]; Water Tanker Operator [142.43 h] | 101,611.28 | 76,208.46 | 3422 | 0 | B1.32 11 13.01 | M3 | P1-R.W |
|  | 2 | **Base Course** |  | 2026-11-02 | 2026-12-14 |  |  |  |  |  |  |  |  |  |  |  |  |  |  |  |
| SDR-ST-CON-P1-4130 |  | Aggregate base course layer | 14d | 2026-11-02 A | 2026-12-14 | SDR-ST-CON-P1-3540 | 40% | 14d | 2026-11-29 | 2026-12-14 | -19d | 0d | SIC- Cost [122362]; Compactor [68.1 h]; Dumper Operator [135.31 h]; Dumper Truck [190 h]; Grader [103.81 h]; Grader Operator [135.31 h]; Loader [190 h]; Loader Operator [135.31 h]; Un-Skilled Labor [135.31 h]; Supervisor [21.36 h]; Skilled Labor [135.31 h]; Water Tanker [94.33 h]; Water Tanker Operator [135.31 h] | 122,361.66 |  | 2248 | -31.4285714285714 | B1.32 11 23.01 | M3 | P1-R.W |
|  | 3 | **Asphalt Works** |  | 2026-12-15 | 2027-01-24 |  |  |  |  |  |  |  |  |  |  |  |  |  |  |  |
|  | 1 | **Bituminous base course** |  | 2026-12-15 | 2026-12-30 |  |  |  |  |  |  |  |  |  |  |  |  |  |  |  |
| SDR-ST-CON-P1-4600 |  | Bituminous base course (Grading I - Class A 1st Layer with RC-01 | 8d | 2026-12-15 | 2026-12-23 | SDR-ST-CON-P1-4130 |  |  |  |  | -19d | 0d | SIC- Cost [364195]; Compactor [50 h]; Dumper Operator [56.52 h]; Dumper Truck [50 h]; Supervisor [9.42 h]; Sweeper Machine [30 h]; Sweeper Machine Operator [56.52 h]; Pneumatic Tire Roller [30 h]; Pneumatic Roller Operator [56.52 h]; Asphalt Paver [30 h]; Asphalt Paver Operator [56.52 h] | 364,194.94 |  | 828.5 | 0 | B1.32 11 26.01 | M3 | P1-R.W |
| SDR-ST-CON-P1-4930 |  | Bituminous base course (Grading I - Class A 2nd layer with RC-02 | 6d | 2026-12-24 | 2026-12-30 | SDR-ST-CON-P1-4600 |  |  |  |  | -19d | 0d | SIC- Cost [364195]; Compactor [50 h]; Dumper Operator [56.52 h]; Dumper Truck [50 h]; Supervisor [9.42 h]; Sweeper Machine [30 h]; Sweeper Machine Operator [56.52 h]; Pneumatic Tire Roller [60 h]; Pneumatic Roller Operator [56.52 h]; Asphalt Paver [30 h]; Asphalt Paver Operator [56.52 h] | 364,194.94 |  | 828.5 | 0 | B1.32 11 26.02 | M3 | P1-R.W |

| ID | WBS | Activity | Duration | Start | Finish | Predecessors | Complete | Planned start | Planned finish | Total float | Free float | Resources | Cost | Actual cost | BOQ Qty | Variance | BOQ Line item | UOM | Activities Codes Sudair Station |
| --- | --- | --- | --- | --- | --- | --- | --- | --- | --- | --- | --- | --- | --- | --- | --- | --- | --- | --- | --- |
|  | 2 | **Bituminous concrete wearing course** |  | 2026-12-31 | 2027-01-24 |  |  |  |  |  |  |  |  |  |  |  |  |  |  |
| SDR-ST-CON-P1-5180 |  | Bituminous concrete wearing course, (Grading I - Class A), including tack coat (RC2) | 21d | 2026-12-31 | 2027-01-24 | SDR-ST-CON-P1-4930 |  |  |  | -19d | 0d | SIC- Cost [256255]; Compactor [50 h]; Dumper Operator [271.52 h]; Dumper Truck [180 h]; Supervisor [45.25 h]; Sweeper Machine [30 h]; Sweeper Machine Operator [271.52 h]; Pneumatic Tire Roller [42 h]; Pneumatic Roller Operator [271.52 h]; Asphalt Paver [30 h]; Asphalt Paver Operator [271.52 h] | 256,255.43 |  | 570 | 0 | B1.32 12 16.01 | M3 | P1-R.W |
|  | 4 | **Kerbstone Installation** |  | 2026-11-29 | 2027-01-18 |  |  |  |  |  |  |  |  |  |  |  |  |  |  |
| SDR-ST-CON-P1-4140 |  | Precast Concrete Curbstone, Type A2 | 20d | 2026-11-29 | 2026-12-21 | SDR-ST-CON-P1-3540 |  |  |  | -14d | 0d | SIC- Cost [101191]; Un-Skilled Labor [128.18 h]; Supervisor [28.54 h]; Skilled Labor [128.18 h] | 101,190.58 |  | 2275 | -50 | B1.32 16 13.23.01 | lm | P1-R.W |
| SDR-ST-CON-P1-4810 |  | Precast Concrete Curbstone, Type D | 20d | 2026-12-27 | 2027-01-18 | SDR-ST-CON-P1-4140 FS+4d |  |  |  | -14d | 5d | SIC- Cost [49508.2]; Un-Skilled Labor [128.18 h]; Supervisor [28.54 h]; Skilled Labor [128.18 h] | 49,508.17 |  | 1154 | 0 | B1.32 16 13.23.02 | lm | P1-R.W |
|  | 5 | **Interlock Installation** |  | 2027-01-25 | 2027-03-18 |  |  |  |  |  |  |  |  |  |  |  |  |  |  |
| SDR-ST-CON-P1-4350 |  | Interlock Installation Part 1 | 20d | 2027-01-25 | 2027-02-16 | SDR-ST-CON-P1-5180, SDR-ST-CON-P1-4140 SS, SDR-ST-CON-P1-4810 |  |  |  | -19d | 0d | SIC- Cost [149596]; Dumper Truck [40 h]; Un-Skilled Labor [39.97 h]; Supervisor [28.54 h]; Skilled Labor [39.97 h] | 149,595.76 |  | 775 | 0 | B1.32 14 13.13.02 | M2 | P1-R.W |
| SDR-ST-CON-P1-4920 |  | Interlock Installation Part 2 | 20d | 2027-02-18 | 2027-03-18 | SDR-ST-CON-P1-4350 FS+1d |  |  |  | -19d | 100d | SIC- Cost [149596]; Un-Skilled Labor [4024.3 h]; Supervisor [28.54 h]; Skilled Labor [4024.3 h] | 149,595.76 |  | 775 | 0 | B1.32 14 13.13.01 | M2 | P1-R.W |
|  | 6 | **Road Marking** |  | 2027-07-20 | 2027-08-30 |  |  |  |  |  |  |  |  |  |  |  |  |  |  |
| SDR-ST-CON-P1-5290 |  | Retroreflective Thermoplastic White Traffic lines | 10d | 2027-07-20 | 2027-07-31 | SDR-ST-CON-P3-1310, SDR-ST-CON-P3-1490, SDR-ST-CON-P1-5180 SS, SDR-ST-CON-P1-4920 |  |  |  | -119d | 0d | SIC- Cost [13594.4]; Dumper Truck [260 h]; Un-Skilled Labor [28.49 h]; Supervisor [7.12 h]; Skilled Labor [28.49 h] | 13,594.36 |  | 343 | 0 | B1.32 17 23.01 | M2 | P1-R.W |
| SDR-ST-CON-P1-5410 |  | Retroreflective Thermoplastic Yellow, Traffic lines | 9d | 2027-08-01 | 2027-08-09 | SDR-ST-CON-P1-5290 |  |  |  | -119d | 0d | SIC- Cost [9634.84]; Un-Skilled Labor [28.49 h]; Supervisor [7.14 h]; Skilled Labor [28.49 h] | 9,634.84 |  | 243 | 0 | B1.32 17 23.02 | M2 | P1-R.W |
| SDR-ST-CON-P1-5580 |  | Ceramic raised pavement markers | 9d | 2027-08-10 | 2027-08-19 | SDR-ST-CON-P1-5410 |  |  |  | -119d | 0d | SIC- Cost [514.74]; Un-Skilled Labor [28.49 h]; Supervisor [7.14 h]; Skilled Labor [28.49 h] | 514.74 |  | 17 | 0 | B1.32 17 23.03 | Number | P1-R.W |
| SDR-ST-CON-P1-5640 |  | Rumble strip | 9d | 2027-08-21 | 2027-08-30 | SDR-ST-CON-P1-5580 |  |  |  | -119d | 0d | SIC- Cost [651.67]; Un-Skilled Labor [28.49 h]; Supervisor [7.14 h]; Skilled Labor [28.49 h] | 651.67 |  | 66 | 0 | B1.32 17 23.04 | M | P1-R.W |
|  | 7 | **Traffic Signage** |  | 2027-08-31 | 2027-09-20 |  |  |  |  |  |  |  |  |  |  |  |  |  |  |
| SDR-ST-CON-P1-5420 |  | Traffic signs, ground mounted, 1 Sheet Alumenium, (breakaway) Single post, with all accessories | 9d | 2027-08-31 | 2027-09-09 | SDR-ST-CON-P1-5290 SS, SDR-ST-CON-P1-5640 |  |  |  | -119d | 0d | SIC- Cost [5681.92]; Dumper Truck [260 h]; Un-Skilled Labor [3026.53 h]; Supervisor [7.12 h]; Skilled Labor [3026.53 h] | 5,681.92 |  | 4 | 0 | B1.10 14 53.01 | Number | P1-R.W |
| SDR-ST-CON-P1-5590 |  | Traffic signs, ground mounted, 1 Sheet Aluminum, (breakaway) Double post, with all accessories | 9d | 2027-09-11 | 2027-09-20 | SDR-ST-CON-P1-5420 |  |  |  | -119d | 0d | SIC- Cost [5929.39]; Un-Skilled Labor [2326.98 h]; Supervisor [7.12 h]; Skilled Labor [2027.18 h] | 5,929.39 |  | 3 | 0 | B1.10 14 53.02 | Number | P1-R.W |
|  | 8 | **Speed table** |  | 2027-09-21 | 2027-09-30 |  |  |  |  |  |  |  |  |  |  |  |  |  |  |
| SDR-ST-CON-P1-5430 |  | Interlock speed table including interlock, flush kerb and marking | 9d | 2027-09-21 | 2027-09-30 | SDR-ST-CON-P1-5410 SS, SDR-ST-CON-P1-5590 |  |  |  | -119d | 0d | SIC- Cost [10727.8]; Un-Skilled Labor [56.97 h]; Supervisor [21.36 h]; Skilled Labor [56.97 h] | 10,727.83 |  | 128 | 0 | B1.10 14 53.03 | M2 | P1-R.W |
|  | 3 | **ROAD-01 From 900 to 1239 m (11)** |  | 2026-05-03 | 2027-09-22 |  |  |  |  |  |  |  |  |  |  |  |  |  |  |
|  | 14 | **GENERAL WORKS** |  | 2026-05-03 | 2026-05-30 |  |  |  |  |  |  |  |  |  |  |  |  |  |  |
|  | 10 | **Cleaning and removal of organic materials in Zone A** |  | 2026-05-03 | 2026-05-16 |  |  |  |  |  |  |  |  |  |  |  |  |  |  |
| SDR-ST-CON-P1-1060 |  | Cleaning and removal of organic materials in Zone A | 21d | 2026-05-03 A | 2026-05-16 A | SDR-ST-CON-P1-1040 SS+6d | 100% | 2026-06-23 | 2026-07-16 |  |  | SIC- Cost [4536.95]; Excavator [200 h]; Excavator Operator [142.43 h]; Dumper Operator [142.43 h]; Dumper Truck [608.13 h]; Grader [200 h]; Grader Operator [142.43 h]; Loader [200 h]; Loader Operator [142.43 h]; Un-Skilled Labor [142.43 h]; Supervisor [21.36 h]; Skilled Labor [142.43 h] | 4,536.95 | 4,536.95 | 8300 | 0 | B1.31 23 16.01 | M2 | P1-R.W |
|  | 12 | **Surveying works Zone A** |  | 2026-05-16 | 2026-05-30 |  |  |  |  |  |  |  |  |  |  |  |  |  |  |
| SDR-ST-CON-P1-1130 |  | Surveying works Zone A | 19d | 2026-05-16 A | 2026-05-30 A | SDR-ST-CON-P1-1060 | 100% | 2026-07-18 | 2026-08-08 |  |  | SIC- Cost [2722.17]; Un-Skilled Labor [113.94 h]; Surveyor [113.94 h]; Supervisor [21.36 h] | 2,722.17 | 2,722.17 | 8300 | 0 | B1.31 23 16.02 | M2 | P1-R.W |

| ID | WBS | Activity | Duration | Start | Finish | Predecessors | Complete | Remaining | Planned start | Planned finish | Total float | Free float | Resources | Cost | Actual cost | BOQ Qty | Variance | BOQ Line item | UOM | Activities Codes Sudair Station |
| --- | --- | --- | --- | --- | --- | --- | --- | --- | --- | --- | --- | --- | --- | --- | --- | --- | --- | --- | --- | --- |
|  | 1 | **Earth Works Road** |  | 2026-07-30 | 2026-08-16 |  |  |  |  |  |  |  |  |  |  |  |  |  |  |  |
| SDR-ST-CON-P1-1220 |  | Roadway Excavation and cuttings | 16d | 2026-07-30 A | 2026-08-16 A | SDR-ST-CON-P1-1130 | 100% |  | 2026-08-09 | 2026-08-26 |  |  | SIC- Cost [10888.7]; Excavator [63.85 h]; Excavator Operator [142.43 h]; Dumper Operator [142.43 h]; Dumper Truck [200 h]; Grader [200 h]; Grader Operator [142.43 h]; Loader [200 h]; Loader Operator [142.43 h]; Un-Skilled Labor [142.43 h]; Supervisor [21.36 h]; Skilled Labor [142.43 h] | 10,888.69 | 10,888.69 | 917 | 0 | B1.31 23 16.03 | M3 | P1-R.W |
|  | 10 | **Backfilling Works** |  | 2026-06-02 | 2026-08-20 |  |  |  |  |  |  |  |  |  |  |  |  |  |  |  |
| SDR-ST-CON-P1-1350 |  | Embankments to the Road 1 Layer | 11d | 2026-06-02 A | 2026-08-16 A | SDR-ST-CON-P1-1220 | 100% |  | 2026-08-27 | 2026-09-08 |  |  | SIC- Cost [177354]; Compactor [200 h]; Excavator [15 h]; Excavator Operator [142.43 h]; Dumper Operator [142.43 h]; Dumper Truck [2780 h]; Grader [200 h]; Grader Operator [142.43 h]; Loader [200 h]; Loader Operator [142.43 h]; Un-Skilled Labor [37.98 h]; Supervisor [28.49 h]; Skilled Labor [37.98 h]; Water Tanker [200 h] | 177,353.68 | 177,353.68 | 8958.25 | 0 | B1.31 23 23.01 | M3 | P1-R.W |
| SDR-ST-CON-P1-1990 |  | Embankments to the Road 2 Layer | 11d | 2026-06-22 A | 2026-07-02 A | SDR-ST-CON-P1-1350 | 100% |  | 2026-09-09 | 2026-09-21 |  |  | SIC- Cost [177354]; Compactor [90 h]; Excavator [20 h]; Excavator Operator [142.43 h]; Dumper Operator [142.43 h]; Dumper Truck [200 h]; Grader [100 h]; Grader Operator [142.43 h]; Loader [94.57 h]; Loader Operator [142.43 h]; Un-Skilled Labor [37.98 h]; Supervisor [21.36 h]; Skilled Labor [37.98 h]; Water Tanker [200 h] | 177,353.68 | 177,353.68 | 8958.25 | 0 | B1.31 23 23.02 | M3 | P1-R.W |
| SDR-ST-CON-P1-2730 |  | Embankments to the Road 3 Layer | 11d | 2026-08-12 A | 2026-08-17 A | SDR-ST-CON-P1-1990 | 100% |  | 2026-09-22 | 2026-10-05 |  |  | SIC- Cost [177354]; Compactor [50 h]; Excavator [15 h]; Excavator Operator [142.43 h]; Dumper Operator [142.43 h]; Dumper Truck [200 h]; Grader [200 h]; Grader Operator [142.43 h]; Loader [50 h]; Loader Operator [142.43 h]; Un-Skilled Labor [37.98 h]; Supervisor [28.49 h]; Skilled Labor [37.98 h]; Water Tanker [200 h] | 177,353.68 | 177,353.68 | 8958.25 | 0 | B1.31 23 23.03 | M3 | P1-R.W |
| SDR-ST-CON-P1-3320 |  | Embankments to the Road 4 Layer | 10d | 2026-08-16 A | 2026-08-20 A | SDR-ST-CON-P1-2730 | 100% |  | 2026-10-06 | 2026-10-17 |  |  | SIC- Cost [177354]; Compactor [72 h]; Excavator [37 h]; Excavator Operator [142.43 h]; Dumper Operator [142.43 h]; Dumper Truck [150 h]; Grader [150 h]; Grader Operator [142.43 h]; Loader [150 h]; Loader Operator [142.43 h]; Un-Skilled Labor [37.98 h]; Supervisor [21.36 h]; Skilled Labor [37.98 h]; Water Tanker [200 h] | 177,353.68 | 177,353.68 | 8958.25 | 0 | B1.31 23 23.04 | M3 | P1-R.W |
|  | 11 | **Subgrade** |  | 2026-09-07 | 2026-12-07 |  |  |  |  |  |  |  |  |  |  |  |  |  |  |  |
| SDR-ST-CON-P1-3740 |  | Subgrade layer works | 11d | 2026-09-07 A | 2026-12-07 | SDR-ST-CON-P1-3320 | 80% | 8d | 2026-10-18 | 2026-10-29 | -17d | 0d | SIC- Cost [101611]; Compactor [50 h]; Excavator [15 h]; Excavator Operator [142.43 h]; Dumper Operator [142.43 h]; Dumper Truck [150 h]; Grader [100 h]; Grader Operator [142.43 h]; Loader [150 h]; Loader Operator [142.43 h]; Un-Skilled Labor [37.98 h]; Supervisor [21.36 h]; Skilled Labor [37.98 h]; Water Tanker [150 h]; Water Tanker Operator [142.43 h] | 101,611.28 | 60,966.77 | 3422 | -20 | B1.32 11 13.01 | M3 | P1-R.W |
|  | 2 | **Base Course** |  | 2026-11-08 | 2026-12-17 |  |  |  |  |  |  |  |  |  |  |  |  |  |  |  |
| SDR-ST-CON-P1-4290 |  | Aggregate base course layer | 9d | 2026-11-08 A | 2026-12-17 | SDR-ST-CON-P1-3740 | 10% | 9d | 2026-12-08 | 2026-12-17 | -17d | 0d | SIC- Cost [122362]; Compactor [69.15 h]; Dumper Operator [132.93 h]; Dumper Truck [140 h]; Grader [103.87 h]; Grader Operator [132.93 h]; Loader [140 h]; Loader Operator [132.93 h]; Un-Skilled Labor [37.98 h]; Supervisor [21.36 h]; Skilled Labor [37.98 h]; Water Tanker [140 h]; Water Tanker Operator [132.93 h] | 122,361.66 |  | 2248 | -90 | B1.32 11 23.01 | M3 | P1-R.W |
|  | 3 | **Asphalt Works** |  | 2026-12-19 | 2027-02-09 |  |  |  |  |  |  |  |  |  |  |  |  |  |  |  |
|  | 1 | **Bituminous base course** |  | 2026-12-19 | 2027-01-13 |  |  |  |  |  |  |  |  |  |  |  |  |  |  |  |
| SDR-ST-CON-P1-4650 |  | Bituminous base course (Grading I - Class A 1st Layer with RC-01 | 11d | 2026-12-19 | 2026-12-30 | SDR-ST-CON-P1-4290 |  |  |  |  | -17d | 0d | SIC- Cost [364195]; Compactor [50 h]; Dumper Operator [128.18 h]; Dumper Truck [180 h]; Supervisor [21.36 h]; Sweeper Machine [30 h]; Sweeper Machine Operator [128.18 h]; Pneumatic Tire Roller [30 h]; Pneumatic Roller Operator [128.18 h]; Asphalt Paver [30 h]; Asphalt Paver Operator [128.18 h] | 364,194.94 |  | 828.5 | -45.4545454545455 | B1.32 11 26.01 | M3 | P1-R.W |
| SDR-ST-CON-P1-4980 |  | Bituminous base course (Grading I - Class A 2nd layer with RC-02 | 12d | 2026-12-31 | 2027-01-13 | SDR-ST-CON-P1-4650 |  |  |  |  | -17d | 0d | SIC- Cost [364195]; Compactor [50 h]; Dumper Operator [128.18 h]; Dumper Truck [180 h]; Supervisor [21.36 h]; Sweeper Machine [30 h]; Sweeper Machine Operator [128.18 h]; Pneumatic Tire Roller [90 h]; Pneumatic Roller Operator [128.18 h]; Asphalt Paver [30 h]; Asphalt Paver Operator [128.18 h] | 364,194.94 |  | 828.5 | 0 | B1.32 11 26.02 | M3 | P1-R.W |
|  | 2 | **Bituminous concrete wearing course** |  | 2027-01-17 | 2027-02-09 |  |  |  |  |  |  |  |  |  |  |  |  |  |  |  |
| SDR-ST-CON-P1-5230 |  | Bituminous concrete wearing course, (Grading I - Class A), including tack coat (RC2) | 21d | 2027-01-17 | 2027-02-09 | SDR-ST-CON-P1-4980 FS+2d |  |  |  |  | -17d | 42d | SIC- Cost [256255]; Compactor [50 h]; Dumper Operator [128.18 h]; Dumper Truck [80 h]; Supervisor [21.36 h]; Sweeper Machine [30 h]; Sweeper Machine Operator [128.18 h]; Pneumatic Tire Roller [58.5 h]; Pneumatic Roller Operator [128.18 h]; Asphalt Paver [30 h]; Asphalt Paver Operator [128.18 h] | 256,255.43 |  | 570 | 0 | B1.32 12 16.01 | M3 | P1-R.W |
|  | 4 | **Kerbstone Installation** |  | 2027-01-20 | 2027-03-17 |  |  |  |  |  |  |  |  |  |  |  |  |  |  |  |
| SDR-ST-CON-P1-4300 |  | Precast Concrete Curbstone, Type A2 | 20d | 2027-01-20 | 2027-02-11 | SDR-ST-PRO-MS-1100, SDR-ST-CON-P1-3740 |  |  |  |  | -50d | 0d | SIC- Cost [101191]; Un-Skilled Labor [128.18 h]; Supervisor [28.54 h]; Skilled Labor [128.18 h] | 101,190.58 |  | 2275 | -70 | B1.32 16 13.23.01 | lm | P1-R.W |
| SDR-ST-CON-P1-4860 |  | Precast Concrete Curbstone, Type D | 20d | 2027-02-17 | 2027-03-17 | SDR-ST-PRO-MS-1100, SDR-ST-CON-P1-4300 FS+4d |  |  |  |  | -50d | 0d | SIC- Cost [49508.1]; Un-Skilled Labor [128.18 h]; Supervisor [28.54 h]; Skilled Labor [128.18 h] | 49,508.07 |  | 1154 | 0 | B1.32 16 13.23.02 | lm | P1-R.W |
|  | 5 | **Interlock Installation** |  | 2027-03-18 | 2027-05-03 |  |  |  |  |  |  |  |  |  |  |  |  |  |  |  |
| SDR-ST-CON-P1-4450 |  | Interlock Installation Part 1 | 20d | 2027-03-18 | 2027-04-10 | SDR-ST-CON-P1-5180, SDR-ST-CON-P1-4300 SS, SDR-ST-CON-P1-4860 |  |  |  |  | -50d | 0d | SIC- Cost [149596]; Un-Skilled Labor [39.97 h]; Supervisor [28.54 h]; Skilled Labor [39.97 h] | 149,595.76 |  | 775 | 0 | B1.32 14 13.13.02 | M2 | P1-R.W |
| SDR-ST-CON-P1-4940 |  | Interlock Installation Part 2 | 20d | 2027-04-11 | 2027-05-03 | SDR-ST-CON-P1-4450 |  |  |  |  | -50d | 12d | SIC- Cost [149596]; Un-Skilled Labor [4010.05 h]; Supervisor [28.54 h]; Skilled Labor [4010.05 h] | 149,595.76 |  | 775 | 0 | B1.32 14 13.13.01 | M2 | P1-R.W |
|  | 6 | **Road Marking** |  | 2027-05-24 | 2027-06-29 |  |  |  |  |  |  |  |  |  |  |  |  |  |  |  |
| SDR-ST-CON-P1-5350 |  | Retroreflective Thermoplastic White Traffic lines | 8d | 2027-05-24 | 2027-06-01 | SDR-ST-CON-P1-5750, SDR-ST-CON-P1-6070, SDR-ST-CON-P1-5230 SS, SDR-ST-CON-P1-4940 |  |  |  |  | -62d | 0d | SIC- Cost [13594.4]; Un-Skilled Labor [28.49 h]; Supervisor [7.14 h]; Skilled Labor [28.49 h] | 13,594.36 |  | 343 | 0 | B1.32 17 23.01 | M2 | P1-R.W |
| SDR-ST-CON-P1-5510 |  | Retroreflective Thermoplastic Yellow, Traffic lines | 8d | 2027-06-02 | 2027-06-10 | SDR-ST-CON-P1-5350 |  |  |  |  | -62d | 0d | SIC- Cost [9634.84]; Un-Skilled Labor [28.49 h]; Supervisor [7.14 h]; Skilled Labor [28.49 h] | 9,634.84 |  | 243 | 0 | B1.32 17 23.02 | M2 | P1-R.W |
| SDR-ST-CON-P1-5600 |  | Ceramic raised pavement markers | 8d | 2027-06-12 | 2027-06-20 | SDR-ST-CON-P1-5510 |  |  |  |  | -62d | 0d | SIC- Cost [514.74]; Un-Skilled Labor [28.49 h]; Supervisor [7.14 h]; Skilled Labor [28.49 h] | 514.74 |  | 17 | 0 | B1.32 17 23.03 | Number | P1-R.W |
| SDR-ST-CON-P1-5650 |  | Rumble strip | 8d | 2027-06-21 | 2027-06-29 | SDR-ST-CON-P1-5600 |  |  |  |  | -62d | 0d | SIC- Cost [651.67]; Un-Skilled Labor [28.49 h]; Supervisor [7.14 h]; Skilled Labor [28.49 h] | 651.67 |  | 66 | 0 | B1.32 17 23.04 | M | P1-R.W |

| ID | WBS | Activity | Duration | Start | Finish | Predecessors | Complete | Remaining | Planned start | Planned finish | Total float | Free float | Resources | Cost | Actual cost | BOQ Qty | Variance | BOQ Line item | UOM | Activities Codes Sudair Station |
| --- | --- | --- | --- | --- | --- | --- | --- | --- | --- | --- | --- | --- | --- | --- | --- | --- | --- | --- | --- | --- |
|  | 7 | **Traffic Signage** |  | 2027-06-30 | 2027-07-18 |  |  |  |  |  |  |  |  |  |  |  |  |  |  |  |
| SDR-ST-CON-P1-5360 |  | Traffic signs, ground mounted, 1 Sheet Alumenium, (breakaway) Single post, with all accessories | 6d | 2027-06-30 | 2027-07-06 | SDR-ST-CON-P1-5350 SS, SDR-ST-CON-P1-5650 |  |  |  |  | -62d | 0d | SIC- Cost [5681.92]; Un-Skilled Labor [28.49 h]; Supervisor [7.12 h]; Skilled Labor [28.49 h] | 5,681.92 |  | 4 | 0 | B1.10 14 53.01 | Number | P1-R.W |
| SDR-ST-CON-P1-5520 |  | Traffic signs, ground mounted, 1 Sheet Aluminum, (breakaway) Double post, with all accessories | 5d | 2027-07-07 | 2027-07-12 | SDR-ST-CON-P1-5360 |  |  |  |  | -62d | 0d | SIC- Cost [5929.39]; Un-Skilled Labor [28.49 h]; Supervisor [7.12 h]; Skilled Labor [28.49 h] | 5,929.39 |  | 3 | 0 | B1.10 14 53.02 | Number | P1-R.W |
| SDR-ST-CON-P1-5660 |  | Traffic signs, ground mounted, 2 Sheet Aluminum, (breakaway) Single post, with all accessories | 5d | 2027-07-13 | 2027-07-18 | SDR-ST-CON-P1-5520 |  |  |  |  | -62d | 49d | SIC- Cost [2470.58]; Un-Skilled Labor [28.49 h]; Supervisor [7.12 h]; Skilled Labor [28.49 h] | 2,470.58 |  | 1 | 0 | B1.10 14 53.03 | Number | P1-R.W |
|  | 8 | **Speed table** |  | 2027-09-13 | 2027-09-22 |  |  |  |  |  |  |  |  |  |  |  |  |  |  |  |
| SDR-ST-CON-P1-5530 |  | Interlock speed table including interlock, flush kerb and marking | 9d | 2027-09-13 | 2027-09-22 | SDR-ST-CON-P1-5460, SDR-ST-CON-P1-5350, SDR-ST-CON-P1-5660, SDR-ST-CON-P1-5620 |  |  |  |  | -111d | 0d | SIC- Cost [10727.8]; Compactor [260 h]; Dumper Truck [260 h]; Un-Skilled Labor [6359.17 h]; Supervisor [7.12 h]; Skilled Labor [6359.17 h] | 10,727.83 |  | 128 | 0 | B1.10 14 53.03 | M2 | P1-R.W |
|  | 12 | **ELECTRICAL WORKS** |  | 2026-08-03 | 2027-11-28 |  |  |  |  |  |  |  |  |  |  |  |  |  |  |  |
|  | 2 | **MV Network** |  | 2026-11-01 | 2027-08-25 |  |  |  |  |  |  |  |  |  |  |  |  |  |  |  |
|  | 5 | **ROAD - 01** |  | 2026-11-01 | 2027-08-25 |  |  |  |  |  |  |  |  |  |  |  |  |  |  |  |
|  | 4 | **ROAD-01 From 1125 to 1765 m (7)** |  | 2026-11-01 | 2027-07-03 |  |  |  |  |  |  |  |  |  |  |  |  |  |  |  |
|  | 6 | **Excavation** |  | 2026-11-01 | 2026-12-30 |  |  |  |  |  |  |  |  |  |  |  |  |  |  |  |
| SDR-ST-CON-P1-1570 |  | Excavation Works Part 1 | 21d | 2026-11-01 A | 2026-11-07 A | SDR-ST-CON-P1-1210, SDR-ST-CON-P1-2220 | 100% |  | 2026-09-28 | 2026-10-21 |  |  | SIC- Cost [22541.3]; Electrical Forman [149.55 h]; Electrical Technician [149.55 h]; Electrical Helper [149.55 h]; Labor [37.98 h]; Excavator [26.38 h]; Excavator Operator [149.55 h] | 22,541.29 | 22,541.29 | 378 | 0 | B2.31 23 00.01 | M3 | P1-M.V |
| SDR-ST-CON-P1-6090 |  | Excavation Works Part 2 | 21d | 2026-11-08 A | 2026-12-06 | SDR-ST-CON-P1-1570 | 72% | 7d | 2026-10-22 | 2026-11-15 | 14d | 0d | SIC- Cost; Electrical Forman [149.55 h]; Electrical Technician [149.55 h]; Electrical Helper [149.55 h]; Labor [37.98 h]; Excavator [26.38 h]; Excavator Operator [149.55 h] |  |  | 378 | -28 | B2.31 23 00.01 | M3 | P1-M.V |
| SDR-ST-CON-P1-6100 |  | Excavation Works Part 3 | 21d | 2026-12-07 | 2026-12-30 | SDR-ST-CON-P1-6090 |  |  |  |  | 14d | 86d | SIC- Cost; Electrical Forman [149.55 h]; Electrical Technician [149.55 h]; Electrical Helper [149.55 h]; Labor [37.98 h]; Excavator [26.38 h]; Excavator Operator [149.55 h] |  |  | 378 | 0 | B2.31 23 00.01 | M3 | P1-M.V |
|  | 7 | **Pipe laying** |  | 2027-04-17 | 2027-05-10 |  |  |  |  |  |  |  |  |  |  |  |  |  |  |  |
| SDR-ST-CON-P1-2270 |  | Pipe Laying | 21d | 2027-04-17 | 2027-05-10 | SDR-ST-PRO-MS-1210, SDR-ST-CON-P1-6100 |  |  |  |  | -72d | 0d | SIC- Cost [45082.6]; Electrical Forman [39.97 h]; Electrical Technician [39.97 h]; Electrical Helper [39.97 h]; Labor [37.98 h] | 45,082.58 |  | 1187 | 0 | B2.33 71 49.23.01 | M | P1-M.V |
|  | 8 | **Backfilling** |  | 2027-05-11 | 2027-06-08 |  |  |  |  |  |  |  |  |  |  |  |  |  |  |  |
| SDR-ST-CON-P1-3000 |  | Backfilling Works | 20d | 2027-05-11 | 2027-06-08 | SDR-ST-CON-P1-4660, SDR-ST-PRO-MS-1050, SDR-ST-CON-P1-2270 |  |  |  |  | -72d | 0d | SIC- Cost [22541.3]; Electrical Forman [149.55 h]; Electrical Technician [149.55 h]; Electrical Helper [149.55 h]; Labor [149.55 h]; Excavator [30 h]; Excavator Operator [149.55 h] | 22,541.29 |  | 378 | 0 | B2.33 71 49.23.02 | M3 | P1-M.V |
|  | 9 | **Pulling Cable** |  | 2027-06-09 | 2027-07-03 |  |  |  |  |  |  |  |  |  |  |  |  |  |  |  |
| SDR-ST-CON-P1-3900 |  | Pulling Cable | 21d | 2027-06-09 | 2027-07-03 | SDR-ST-PRO-MS-1220, SDR-ST-CON-P1-2270, SDR-ST-CON-P1-3000 |  |  |  |  | -72d | 12d | SIC- Cost [135248]; Electrical Forman [149.55 h]; Electrical Technician [2348.12 h]; Electrical Helper [2348.12 h]; Labor [5026.77 h] | 135,247.74 |  | 1187 | 0 | B2.33 71 49.23.03 | M | P1-M.V |
|  | 3 | **ROAD-01 From 470 to 1125 m (6)** |  | 2026-11-01 | 2027-07-01 |  |  |  |  |  |  |  |  |  |  |  |  |  |  |  |
|  | 6 | **Excavation** |  | 2026-11-01 | 2027-01-02 |  |  |  |  |  |  |  |  |  |  |  |  |  |  |  |
| SDR-ST-CON-P1-1720 |  | Excavation Works Part 1 | 21d | 2026-11-01 A | 2026-11-07 A | SDR-ST-CON-P1-1190, SDR-ST-CON-P1-1570 SS+7d | 100% |  | 2026-10-06 | 2026-10-29 |  |  | SIC- Cost [22541.3]; Electrical Forman [149.55 h]; Electrical Technician [149.55 h]; Electrical Helper [149.55 h]; Labor [149.55 h]; Excavator [30 h]; Excavator Operator [149.55 h] | 22,541.29 | 22,541.29 | 378 | 0 | B2.31 23 00.01 | M3 | P1-M.V |
| SDR-ST-CON-P1-6110 |  | Excavation Works Part2 | 21d | 2026-11-09 A | 2026-12-12 | SDR-ST-CON-P1-1720 | 39% | 12d | 2026-10-31 | 2026-11-23 | 12d | 0d | SIC- Cost; Electrical Forman [149.55 h]; Electrical Technician [149.55 h]; Electrical Helper [149.55 h]; Labor [149.55 h]; Excavator [30 h]; Excavator Operator [149.55 h] |  |  | 378 | -27.6666666666667 | B2.31 23 00.01 | M3 | P1-M.V |
| SDR-ST-CON-P1-6120 |  | Excavation Works Part 3 | 18d | 2026-12-13 | 2027-01-02 | SDR-ST-CON-P1-6110 |  |  |  |  | 12d | 84d | SIC- Cost; Electrical Forman [149.55 h]; Electrical Technician [149.55 h]; Electrical Helper [149.55 h]; Labor [149.55 h]; Excavator [30 h]; Excavator Operator [149.55 h] |  |  | 378 | 0 | B2.31 23 00.01 | M3 | P1-M.V |

| ID | WBS | Activity | Duration | Start | Finish | Predecessors | Complete | Remaining | Planned start | Planned finish | Total float | Free float | Resources | Cost | Actual cost | BOQ Qty | Variance | BOQ Line item | UOM | Activities Codes Sudair Station |
| --- | --- | --- | --- | --- | --- | --- | --- | --- | --- | --- | --- | --- | --- | --- | --- | --- | --- | --- | --- | --- |
|  | 7 | **Pipe laying** |  | 2027-04-17 | 2027-05-10 |  |  |  |  |  |  |  |  |  |  |  |  |  |  |  |
| SDR-ST-CON-P1-2420 |  | Pipe Laying | 21d | 2027-04-17 | 2027-05-10 | SDR-ST-PRO-MS-1210, SDR-ST-CON-P1-6120 |  |  |  |  | -72d | 0d | SIC- Cost [45082.6]; Electrical Forman [142.43 h]; Electrical Technician [142.43 h]; Electrical Helper [142.43 h]; Labor [37.98 h] | 45,082.58 |  | 1187 | 0 | B2.33 71 49.23.01 | M | P1-M.V |
|  | 8 | **Backfilling** |  | 2027-05-11 | 2027-06-08 |  |  |  |  |  |  |  |  |  |  |  |  |  |  |  |
| SDR-ST-CON-P1-3150 |  | Backfilling Works | 20d | 2027-05-11 | 2027-06-08 | SDR-ST-CON-P1-4660, SDR-ST-CON-P1-2420 |  |  |  |  | -72d | 0d | SIC- Cost [22541.3]; Electrical Forman [37.98 h]; Electrical Technician [149.55 h]; Electrical Helper [149.55 h]; Labor [37.98 h]; Excavator [20.25 h]; Excavator Operator [149.55 h] | 22,541.29 |  | 378 | 0 | B2.33 71 49.23.02 | M3 | P1-M.V |
|  | 9 | **Pulling Cable** |  | 2027-06-09 | 2027-07-01 |  |  |  |  |  |  |  |  |  |  |  |  |  |  |  |
| SDR-ST-CON-P1-4000 |  | Pulling Cable | 20d | 2027-06-09 | 2027-07-01 | SDR-ST-PRO-MS-1220, SDR-ST-CON-P1-2420, SDR-ST-CON-P1-3150 |  |  |  |  | -72d | 0d | SIC- Cost [135248]; Electrical Forman [149.55 h]; Electrical Technician [3036.07 h]; Electrical Helper [149.55 h]; Labor [149.55 h] | 135,247.74 |  | 1187 | 0 | B2.33 71 49.23.03 | M | P1-M.V |
|  | 2 | **ROAD-01 N 03** |  | 2026-11-04 | 2027-08-25 |  |  |  |  |  |  |  |  |  |  |  |  |  |  |  |
|  | 6 | **Excavation** |  | 2026-11-04 | 2027-01-05 |  |  |  |  |  |  |  |  |  |  |  |  |  |  |  |
| SDR-ST-CON-P1-1770 |  | Excavation Works Part 1 | 21d | 2026-11-04 A | 2026-11-07 A | SDR-ST-CON-P1-1200, SDR-ST-CON-P1-1720 SS+7d | 100% |  | 2026-10-14 | 2026-11-07 |  |  | SIC- Cost [22541.3]; Electrical Forman [37.98 h]; Electrical Technician [149.55 h]; Electrical Helper [149.55 h]; Labor [37.98 h]; Excavator [30 h]; Excavator Operator [142.43 h] | 22,541.29 | 22,541.29 | 378 | 0 | B2.31 23 00.01 | M3 | P1-M.V |
| SDR-ST-CON-P1-6130 |  | Excavation Works Part 2 | 21d | 2026-11-05 A | 2026-12-15 | SDR-ST-CON-P1-1770 | 5% | 15d | 2026-11-08 | 2026-12-01 | 10d | 0d | SIC- Cost; Electrical Forman [37.98 h]; Electrical Technician [149.55 h]; Electrical Helper [149.55 h]; Labor [37.98 h]; Excavator [30 h]; Excavator Operator [142.43 h] |  |  | 378 | -28.3333333333333 | B2.31 23 00.01 | M3 | P1-M.V |
| SDR-ST-CON-P1-6140 |  | Excavation Works Part 3 | 18d | 2026-12-16 | 2027-01-05 | SDR-ST-CON-P1-6130 |  |  |  |  | 10d | 81d | SIC- Cost; Electrical Forman [37.98 h]; Electrical Technician [149.55 h]; Electrical Helper [149.55 h]; Labor [37.98 h]; Excavator [30 h]; Excavator Operator [142.43 h] |  |  | 378 | 0 | B2.31 23 00.01 | M3 | P1-M.V |
|  | 7 | **Pipe laying** |  | 2027-04-17 | 2027-05-10 |  |  |  |  |  |  |  |  |  |  |  |  |  |  |  |
| SDR-ST-CON-P1-2500 |  | Pipe Laying | 21d | 2027-04-17 | 2027-05-10 | SDR-ST-PRO-MS-1210, SDR-ST-CON-P1-6140 |  |  |  |  | -71d | 16d | SIC- Cost [45082.6]; Electrical Forman [149.55 h]; Electrical Technician [149.55 h]; Electrical Helper [149.55 h]; Labor [37.98 h] | 45,082.58 |  | 1187 | 0 | B2.33 71 49.23.01 | M | P1-M.V |
|  | 8 | **Backfilling** |  | 2027-07-12 | 2027-08-03 |  |  |  |  |  |  |  |  |  |  |  |  |  |  |  |
| SDR-ST-CON-P1-3280 |  | Backfilling Works | 20d | 2027-07-12 | 2027-08-03 | SDR-ST-CON-P3-1490, SDR-ST-CON-P1-2500 |  |  |  |  | -101d | 0d | SIC- Cost [22541.3]; Electrical Forman [149.55 h]; Electrical Technician [149.55 h]; Electrical Helper [149.55 h]; Compactor [600 h]; Labor [149.55 h]; Excavator [15 h]; Excavator Operator [149.55 h] | 22,541.29 |  | 378 | 0 | B2.33 71 49.23.02 | M3 | P1-M.V |
|  | 9 | **Pulling Cable** |  | 2027-08-04 | 2027-08-25 |  |  |  |  |  |  |  |  |  |  |  |  |  |  |  |
| SDR-ST-CON-P1-4250 |  | Pulling Cable | 20d | 2027-08-04 | 2027-08-25 | SDR-ST-PRO-MS-1220, SDR-ST-CON-P1-2500, SDR-ST-CON-P1-3280 |  |  |  |  | -101d | 0d | SIC- Cost [135248]; Electrical Forman [96.35 h]; Electrical Technician [1997.47 h]; Electrical Helper [96.35 h]; Compactor [520 h]; Labor [96.35 h] | 135,247.74 |  | 1187 | 0 | B2.33 71 49.23.03 | M | P1-M.V |
|  | 1 | **ROAD-01 N 01** |  | 2026-11-03 | 2027-07-01 |  |  |  |  |  |  |  |  |  |  |  |  |  |  |  |
|  | 6 | **Excavation** |  | 2026-11-03 | 2027-04-20 |  |  |  |  |  |  |  |  |  |  |  |  |  |  |  |
| SDR-ST-CON-P1-1730 |  | Excavation Works Part 1 | 21d | 2026-11-03 A | 2026-12-07 | SDR-ST-CON-P1-1770 SS+7d | 72% | 8d | 2026-10-22 | 2026-11-15 | 2d | 0d | SIC- Cost [22541.3]; Electrical Forman [37.98 h]; Electrical Technician [96.35 h]; Electrical Helper [96.35 h]; Labor [37.98 h]; Excavator [16 h]; Excavator Operator [15.19 h] | 22,541.29 | 16,229.73 | 378 | -28 | B2.31 23 00.01 | M3 | P1-M.V |
| SDR-ST-CON-P1-6150 |  | Excavation Works Part 2 | 20d | 2027-03-02 | 2027-03-29 | SDR-ST-MILS-1070, SDR-ST-CON-P1-1730 |  |  |  |  | -48d | 0d | SIC- Cost; Electrical Forman [37.98 h]; Electrical Technician [96.35 h]; Electrical Helper [96.35 h]; Labor [37.98 h]; Excavator [16 h]; Excavator Operator [15.19 h] |  |  | 378 | 0 | B2.31 23 00.01 | M3 | P1-M.V |
| SDR-ST-CON-P1-6160 |  | Excavation Works Part 3 | 19d | 2027-03-30 | 2027-04-20 | SDR-ST-CON-P1-6150 |  |  |  |  | -48d | 0d | SIC- Cost; Electrical Forman [37.98 h]; Electrical Technician [96.35 h]; Electrical Helper [96.35 h]; Labor [37.98 h]; Excavator [16 h]; Excavator Operator [15.19 h] |  |  | 378 | 0 | B2.31 23 00.01 | M3 | P1-M.V |
|  | 7 | **Pipe laying** |  | 2027-04-21 | 2027-05-13 |  |  |  |  |  |  |  |  |  |  |  |  |  |  |  |
| SDR-ST-CON-P1-2430 |  | Pipe Laying | 20d | 2027-04-21 | 2027-05-13 | SDR-ST-CON-P1-4640, SDR-ST-PRO-MS-1210, SDR-ST-CON-P1-6160 |  |  |  |  | -48d | 0d | SIC- Cost [45082.6]; Electrical Forman [37.98 h]; Electrical Technician [96.35 h]; Electrical Helper [96.35 h]; Labor [37.98 h] | 45,082.58 |  | 1187 | 0 | B2.33 71 49.23.01 | M | P1-M.V |

| ID | WBS | Activity | Duration | Start | Finish | Predecessors | Complete | Remaining | Planned start | Planned finish | Total float | Free float | Resources | Cost | Actual cost | BOQ Qty | Variance | BOQ Line item | UOM | Activities Codes Sudair Station |
| --- | --- | --- | --- | --- | --- | --- | --- | --- | --- | --- | --- | --- | --- | --- | --- | --- | --- | --- | --- | --- |
|  | 8 | **Backfilling** |  | 2027-05-15 | 2027-06-10 |  |  |  |  |  |  |  |  |  |  |  |  |  |  |  |
| SDR-ST-CON-P1-3160 |  | Backfilling Works | 19d | 2027-05-15 | 2027-06-10 | SDR-ST-CON-P1-5720, SDR-ST-CON-P1-5570, SDR-ST-CON-P1-5710, SDR-ST-CON-P1-5730, SDR-ST-CON-P1-2430 |  |  |  |  | -47d | 0d | SIC- Cost [22541.3]; Electrical Forman [37.98 h]; Electrical Technician [96.35 h]; Electrical Helper [95.9 h]; Labor [96.35 h]; Excavator [12 h]; Excavator Operator [96.35 h] | 22,541.29 |  | 378 | 0 | B2.33 71 49.23.02 | M3 | P1-M.V |
|  | 9 | **Pulling Cable** |  | 2027-06-12 | 2027-07-01 |  |  |  |  |  |  |  |  |  |  |  |  |  |  |  |
| SDR-ST-CON-P1-4010 |  | Pulling Cable | 18d | 2027-06-12 | 2027-07-01 | SDR-ST-CON-P1-4910, SDR-ST-CON-P1-4520, SDR-ST-PRO-MS-1220, SDR-ST-CON-P1-2430, SDR-ST-CON-P1-3160 |  |  |  |  | -47d | 48d | SIC- Cost [135248]; Electrical Forman [37.98 h]; Electrical Technician [1997.47 h]; Electrical Helper [96.35 h]; Labor [37.98 h] | 135,247.74 |  | 1187 | 0 | B2.33 71 49.23.03 | M | P1-M.V |
|  | 6 | **ROAD - 02** |  | 2026-11-03 | 2027-07-03 |  |  |  |  |  |  |  |  |  |  |  |  |  |  |  |
|  | 3 | **ROAD-01 From 0 to 400 m (9) 2 Way 150 mm** |  | 2026-11-03 | 2027-06-27 |  |  |  |  |  |  |  |  |  |  |  |  |  |  |  |
|  | 6 | **Excavation** |  | 2026-11-03 | 2027-03-31 |  |  |  |  |  |  |  |  |  |  |  |  |  |  |  |
| SDR-ST-CON-P1-1920 |  | Excavation Works Part 1 | 21d | 2026-11-03 A | 2026-12-15 | SDR-ST-CON-P1-1300, SDR-ST-CON-P1-1730 SS+7d | 39% | 15d | 2026-10-31 | 2026-11-23 | 2d | 0d | SIC- Cost [22541.3]; Electrical Forman [37.98 h]; Electrical Technician [96.35 h]; Electrical Helper [96.35 h]; Labor [37.98 h]; Excavator [30 h]; Excavator Operator [96.35 h] | 22,541.29 | 8,791.1 | 378 | -27.6666666666667 | B2.31 23 00.01 | M3 | P1-M.V |
| SDR-ST-CON-P1-6170 |  | Excavation Works Part 2 | 20d | 2026-12-16 | 2027-01-07 | SDR-ST-CON-P1-1920 |  |  |  |  | 17d | 47d | SIC- Cost; Electrical Forman [37.98 h]; Electrical Technician [96.35 h]; Electrical Helper [96.35 h]; Labor [37.98 h]; Excavator [30 h]; Excavator Operator [96.35 h] |  |  | 378 | 0 | B2.31 23 00.01 | M3 | P1-M.V |
| SDR-ST-CON-P1-6180 |  | Excavation Works Part 3 | 19d | 2027-03-06 | 2027-03-31 | SDR-ST-CON-P1-4020, SDR-ST-CON-P1-4310, SDR-ST-CON-P1-6170 |  |  |  |  | -30d | 13d | SIC- Cost; Electrical Forman [37.98 h]; Electrical Technician [96.35 h]; Electrical Helper [96.35 h]; Labor [37.98 h]; Excavator [30 h]; Excavator Operator [96.35 h] |  |  | 378 | 0 | B2.31 23 00.01 | M3 | P1-M.V |
|  | 7 | **Pipe laying** |  | 2027-04-17 | 2027-05-09 |  |  |  |  |  |  |  |  |  |  |  |  |  |  |  |
| SDR-ST-CON-P1-2660 |  | Pipe Laying | 20d | 2027-04-17 | 2027-05-09 | SDR-ST-CON-P1-4740, SDR-ST-CON-P1-4880, SDR-ST-PRO-MS-1210, SDR-ST-CON-P1-6180 |  |  |  |  | -43d | 0d | SIC- Cost [45082.6]; Electrical Forman [37.98 h]; Electrical Technician [96.35 h]; Electrical Helper [96.35 h]; Labor [37.98 h] | 45,082.58 |  | 1187 | 0 | B2.33 71 49.23.01 | M | P1-M.V |
|  | 8 | **Backfilling** |  | 2027-05-10 | 2027-06-06 |  |  |  |  |  |  |  |  |  |  |  |  |  |  |  |
| SDR-ST-CON-P1-3430 |  | Backfilling Works | 19d | 2027-05-10 | 2027-06-06 | SDR-ST-CON-P1-2660 |  |  |  |  | -43d | 0d | SIC- Cost [22541.3]; Electrical Forman [37.98 h]; Electrical Technician [96.35 h]; Electrical Helper [95.9 h]; Labor [37.98 h]; Excavator [12 h]; Excavator Operator [96.35 h] | 22,541.29 |  | 378 | 0 | B2.33 71 49.23.02 | M3 | P1-M.V |
|  | 9 | **Pulling Cable** |  | 2027-06-07 | 2027-06-27 |  |  |  |  |  |  |  |  |  |  |  |  |  |  |  |
| SDR-ST-CON-P1-4320 |  | Pulling Cable | 18d | 2027-06-07 | 2027-06-27 | SDR-ST-PRO-MS-1220, SDR-ST-CON-P1-2660, SDR-ST-CON-P1-3430 |  |  |  |  | -43d | 52d | SIC- Cost [135248]; Electrical Forman [96.35 h]; Electrical Technician [96.35 h]; Electrical Helper [96.35 h]; Labor [96.35 h] | 135,247.74 |  | 1187 | 0 | B2.33 71 49.23.03 | M | P1-M.V |
|  | 2 | **ROAD-01 From 400 to 900 m (10) 2 Way 150 mm** |  | 2026-11-03 | 2027-07-03 |  |  |  |  |  |  |  |  |  |  |  |  |  |  |  |
|  | 6 | **Excavation** |  | 2026-11-03 | 2027-04-21 |  |  |  |  |  |  |  |  |  |  |  |  |  |  |  |
| SDR-ST-CON-P1-1840 |  | Excavation Works Part 1 | 21d | 2026-11-03 A | 2026-12-16 | SDR-ST-CON-P1-1250, SDR-ST-CON-P1-1920 SS+7d | 5% | 16d | 2026-11-08 | 2026-12-01 | 2d | 0d | SIC- Cost [22541.3]; Electrical Forman [37.98 h]; Electrical Technician [96.35 h]; Electrical Helper [96.35 h]; Labor [37.98 h]; Excavator [30 h]; Excavator Operator [96.35 h] | 22,541.29 | 1,127.06 | 378 | -28.3333333333333 | B2.31 23 00.01 | M3 | P1-M.V |
| SDR-ST-CON-P1-6190 |  | Excavation Works Part 2 | 20d | 2027-03-02 | 2027-03-29 | SDR-ST-MILS-1070, SDR-ST-CON-P1-1840 |  |  |  |  | -61d | 0d | SIC- Cost; Electrical Forman [37.98 h]; Electrical Technician [96.35 h]; Electrical Helper [96.35 h]; Labor [37.98 h]; Excavator [30 h]; Excavator Operator [96.35 h] |  |  | 378 | 0 | B2.31 23 00.01 | M3 | P1-M.V |
| SDR-ST-CON-P1-6200 |  | Excavation Works Part 3 | 20d | 2027-03-30 | 2027-04-21 | SDR-ST-CON-P1-6190 |  |  |  |  | -61d | 0d | SIC- Cost; Electrical Forman [37.98 h]; Electrical Technician [96.35 h]; Electrical Helper [96.35 h]; Labor [37.98 h]; Excavator [30 h]; Excavator Operator [96.35 h] |  |  | 378 | 0 | B2.31 23 00.01 | M3 | P1-M.V |
|  | 7 | **Pipe laying** |  | 2027-04-22 | 2027-05-15 |  |  |  |  |  |  |  |  |  |  |  |  |  |  |  |
| SDR-ST-CON-P1-2590 |  | Pipe Laying | 20d | 2027-04-22 | 2027-05-15 | SDR-ST-PRO-MS-1210, SDR-ST-CON-P1-1840, SDR-ST-CON-P1-6200 |  |  |  |  | -43d | 0d | SIC- Cost [45082.6]; Electrical Forman [37.98 h]; Electrical Technician [96.35 h]; Electrical Helper [96.35 h]; Labor [37.98 h] | 45,082.58 |  | 1187 | 0 | B2.33 71 49.23.01 | M | P1-M.V |
|  | 8 | **Backfilling** |  | 2027-05-22 | 2027-06-12 |  |  |  |  |  |  |  |  |  |  |  |  |  |  |  |
| SDR-ST-CON-P1-3340 |  | Backfilling Works | 19d | 2027-05-22 | 2027-06-12 | SDR-ST-CON-P1-2590 |  |  |  |  | -43d | 0d | SIC- Cost [22541.3]; Electrical Forman [37.98 h]; Electrical Technician [96.35 h]; Electrical Helper [95.9 h]; Labor [37.98 h]; Excavator [12 h]; Excavator Operator [11.39 h] | 22,541.29 |  | 378 | 0 | B2.33 71 49.23.02 | M3 | P1-M.V |

| ID | WBS | Activity | Duration | Start | Finish | Predecessors | Complete | Remaining | Planned start | Planned finish | Total float | Free float | Resources | Cost | Actual cost | BOQ Qty | Variance | BOQ Line item | UOM | Activities Codes Sudair Station |
| --- | --- | --- | --- | --- | --- | --- | --- | --- | --- | --- | --- | --- | --- | --- | --- | --- | --- | --- | --- | --- |
|  | 9 | **Pulling Cable** |  | 2027-06-13 | 2027-07-03 |  |  |  |  |  |  |  |  |  |  |  |  |  |  |  |
| SDR-ST-CON-P1-4050 |  | Pulling Cable | 18d | 2027-06-13 | 2027-07-03 | SDR-ST-PRO-MS-1220, SDR-ST-CON-P1-2590, SDR-ST-CON-P1-3340 |  |  |  |  | -43d | 47d | SIC- Cost [135248]; Electrical Forman [96.35 h]; Electrical Technician [96.35 h]; Electrical Helper [96.35 h]; Labor [96.35 h] | 135,247.74 |  | 1187 | 0 | B2.33 71 49.23.03 | M | P1-M.V |
|  | 1 | **ROAD-01 From 900 to 1239 m (11) 2 Way 150 mm** |  | 2026-11-29 | 2027-06-27 |  |  |  |  |  |  |  |  |  |  |  |  |  |  |  |
|  | 6 | **Excavation** |  | 2026-11-29 | 2027-02-06 |  |  |  |  |  |  |  |  |  |  |  |  |  |  |  |
| SDR-ST-CON-P1-2000 |  | Excavation Works Part 1 | 21d | 2026-11-29 | 2026-12-22 | SDR-ST-CON-P1-1350, SDR-ST-CON-P1-1840 SS+7d |  |  |  |  | 10d | 0d | SIC- Cost [22541.3]; Electrical Forman [37.98 h]; Electrical Technician [96.35 h]; Electrical Helper [96.35 h]; Labor [37.98 h]; Excavator [30 h]; Excavator Operator [96.35 h] | 22,541.29 |  | 378 | 0 | B2.31 23 00.01 | M3 | P1-M.V |
| SDR-ST-CON-P1-6210 |  | Excavation Works Part 2 | 20d | 2026-12-23 | 2027-01-14 | SDR-ST-CON-P1-2000 |  |  |  |  | 10d | 0d | SIC- Cost; Electrical Forman [37.98 h]; Electrical Technician [96.35 h]; Electrical Helper [96.35 h]; Labor [37.98 h]; Excavator [30 h]; Excavator Operator [96.35 h] |  |  | 378 | 0 | B2.31 23 00.01 | M3 | P1-M.V |
| SDR-ST-CON-P1-6220 |  | Excavation Works Part 3 | 19d | 2027-01-16 | 2027-02-06 | SDR-ST-CON-P1-6210 |  |  |  |  | 13d | 54d | SIC- Cost; Electrical Forman [37.98 h]; Electrical Technician [96.35 h]; Electrical Helper [96.35 h]; Labor [37.98 h]; Excavator [1070 h]; Excavator Operator [96.35 h] |  |  | 378 | 0 | B2.31 23 00.01 | M3 | P1-M.V |
|  | 7 | **Pipe laying** |  | 2027-04-17 | 2027-05-09 |  |  |  |  |  |  |  |  |  |  |  |  |  |  |  |
| SDR-ST-CON-P1-2750 |  | Pipe Laying | 20d | 2027-04-17 | 2027-05-09 | SDR-ST-CON-P1-4660, SDR-ST-PRO-MS-1210, SDR-ST-CON-P1-6220 |  |  |  |  | -41d | 0d | SIC- Cost [45082.6]; Electrical Forman [37.98 h]; Electrical Technician [96.35 h]; Electrical Helper [96.35 h]; Labor [37.98 h] | 45,082.58 |  | 1187 | 0 | B2.33 71 49.23.01 | M | P1-M.V |
|  | 8 | **Backfilling** |  | 2027-05-10 | 2027-06-06 |  |  |  |  |  |  |  |  |  |  |  |  |  |  |  |
| SDR-ST-CON-P1-3460 |  | Backfilling Works | 19d | 2027-05-10 | 2027-06-06 | SDR-ST-CON-P1-2750 |  |  |  |  | -41d | 0d | SIC- Cost [22541.3]; Electrical Forman [37.98 h]; Electrical Technician [96.35 h]; Electrical Helper [95.9 h]; Labor [37.98 h]; Excavator [12 h]; Excavator Operator [11.39 h] | 22,541.29 |  | 378 | 0 | B2.33 71 49.23.02 | M3 | P1-M.V |
|  | 9 | **Pulling Cable** |  | 2027-06-07 | 2027-06-27 |  |  |  |  |  |  |  |  |  |  |  |  |  |  |  |
| SDR-ST-CON-P1-3980 |  | Pulling Cable | 18d | 2027-06-07 | 2027-06-27 | SDR-ST-PRO-MS-1220, SDR-ST-CON-P1-2750, SDR-ST-CON-P1-3460 |  |  |  |  | -41d | 52d | SIC- Cost [135248]; Electrical Forman [96.35 h]; Electrical Technician [2992.82 h]; Electrical Helper [96.35 h]; Labor [96.35 h] | 135,247.74 |  | 1187 | 0 | B2.33 71 49.23.03 | M | P1-M.V |
|  | 1 | **Earthing System** |  | 2027-01-16 | 2027-02-02 |  |  |  |  |  |  |  |  |  |  |  |  |  |  |  |
| SDR-ST-CON-P1-4840 |  | Installation of Earthing System Including lighting poles circuits | 16d | 2027-01-16 | 2027-02-02 | SDR-ST-CON-P1-6210 |  |  |  |  | 10d | 72d | SIC- Cost [4795]; Electrical Technician [85.46 h]; Electrical Helper [85.46 h] | 4,795 |  | 7 | 0 | B2.33 71 19.01 | Number | P1-M.V |
|  | 16 | **Street Lighting Network** |  | 2026-08-03 | 2027-11-28 |  |  |  |  |  |  |  |  |  |  |  |  |  |  |  |
|  | 7 | **ROAD - 01** |  | 2026-08-03 | 2027-11-28 |  |  |  |  |  |  |  |  |  |  |  |  |  |  |  |
|  | 2 | **ROAD-01 From 470 to 1125 m (6)** |  | 2026-08-03 | 2027-05-03 |  |  |  |  |  |  |  |  |  |  |  |  |  |  |  |
|  | 10 | **Excavation** |  | 2026-08-03 | 2027-02-01 |  |  |  |  |  |  |  |  |  |  |  |  |  |  |  |
| SDR-ST-CON-P1-1180 |  | Excavation for LV Cable trench Section 1 | 21d | 2026-08-03 A | 2026-12-21 | SDR-ST-CON-P1-1190 SS | 70% | 20d | 2026-08-03 | 2026-08-26 | -67d | 0d | SIC- Cost [5106]; Electrical Forman [96.35 h]; Electrical Technician [96.35 h]; Electrical Helper [96.35 h]; Labor [96.35 h]; Excavator [65 h]; Excavator Operator [96.35 h] | 5,106 | 3,574.2 | 107.85 | -30 | B2.31 23 00.01 | M3 | P1-S.L |
| SDR-ST-CON-P1-1560 |  | Excavation for LV Cable trench Section 2 | 21d | 2026-11-05 A | 2027-01-11 | SDR-ST-CON-P1-1180 FS+2d | 50% | 16d | 2026-08-30 | 2026-09-22 | -67d | 0d | SIC- Cost [5106]; Electrical Forman [37.98 h]; Electrical Technician [96.35 h]; Electrical Helper [96.35 h]; Labor [37.98 h]; Excavator [15.36 h]; Excavator Operator [96.35 h] | 5,106 | 2,553 | 107.85 | -50 | B2.31 23 00.01 | M3 | P1-S.L |
| SDR-ST-CON-P1-2250 |  | Excavation for LV Cable trench Section 3 | 21d | 2026-11-05 A | 2027-02-01 | SDR-ST-CON-P1-1560 | 50% | 18d | 2026-09-24 | 2026-10-18 | -67d | 0d | SIC- Cost [5106]; Electrical Forman [37.98 h]; Electrical Technician [96.35 h]; Electrical Helper [96.35 h]; Labor [37.98 h]; Excavator [15 h]; Excavator Operator [96.35 h] | 5,106 | 2,553 | 107.85 | -50 | B2.31 23 00.02 | M3 | P1-S.L |
|  | 11 | **Install Footings** |  | 2027-02-02 | 2027-02-27 |  |  |  |  |  |  |  |  |  |  |  |  |  |  |  |
| SDR-ST-CON-P1-2980 |  | Install Footings | 21d | 2027-02-02 | 2027-02-27 | SDR-ST-PRO-MS-1260, SDR-ST-CON-P1-2250 |  |  |  |  | -67d | 0d | SIC- Cost [15318]; Electrical Forman [37.98 h]; Electrical Technician [96.35 h]; Electrical Helper [96.35 h]; Labor [37.98 h] | 15,318 |  | 20 | -100 | B2.33 71 00 01.01 | Number | P1-S.L |

| ID | WBS | Activity | Duration | Start | Finish | Predecessors | Complete | Remaining | Planned start | Planned finish | Total float | Free float | Resources | Cost | Actual cost | BOQ Qty | Variance | BOQ Line item | UOM | Activities Codes Sudair Station |
| --- | --- | --- | --- | --- | --- | --- | --- | --- | --- | --- | --- | --- | --- | --- | --- | --- | --- | --- | --- | --- |
|  | 12 | **Backfilling** |  | 2027-02-28 | 2027-03-15 |  |  |  |  |  |  |  |  |  |  |  |  |  |  |  |
| SDR-ST-CON-P1-3870 |  | Backfilling over LV Cables of Street lighting | 10d | 2027-02-28 | 2027-03-15 | SDR-ST-CON-P1-2980 |  |  |  |  | -67d | 0d | SIC- Cost [15318]; Electrical Forman [48.17 h]; Electrical Technician [48.17 h]; Electrical Helper [48.17 h]; Labor [9.08 h]; Excavator [65 h]; Excavator Operator [48.17 h] | 15,318 |  | 323 | -30 | B2.31 23 00.01 | M3 | P1-S.L |
|  | 13 | **Install pole** |  | 2027-03-16 | 2027-05-03 |  |  |  |  |  |  |  |  |  |  |  |  |  |  |  |
| SDR-ST-CON-P1-4420 |  | Install Pole Part 1 | 21d | 2027-03-16 | 2027-04-08 | SDR-ST-PRO-MS-1020, SDR-ST-PRO-MS-1230, SDR-ST-CON-P1-3870 |  |  |  |  | -67d | 0d | SIC- Cost [53613]; Electrical Forman [48.17 h]; Electrical Technician [48.17 h]; Electrical Helper [48.17 h]; Labor [48.17 h] | 53,612.98 |  | 10 | 0 | B2.33 71 16.01 | Number | P1-S.L |
| SDR-ST-CON-P1-5170 |  | Install Pole Part 2 | 21d | 2027-04-10 | 2027-05-03 | SDR-ST-PRO-MS-1230, SDR-ST-CON-P1-4420 |  |  |  |  | -67d | 0d | SIC- Cost [53613]; Electrical Forman [48.17 h]; Electrical Technician [48.17 h]; Electrical Helper [48.17 h]; Labor [48.17 h] | 53,612.98 |  | 10 | 0 | B2.33 71 16.01 | Number | P1-S.L |
|  | 3 | **ROAD-01 From 1125 to 1765 m (7)** |  | 2026-08-03 | 2027-04-26 |  |  |  |  |  |  |  |  |  |  |  |  |  |  |  |
|  | 10 | **Excavation** |  | 2026-08-03 | 2027-01-17 |  |  |  |  |  |  |  |  |  |  |  |  |  |  |  |
| SDR-ST-CON-P1-1590 |  | Excavation for LV Cable trench Section 1 | 21d | 2026-08-03 A | 2026-12-21 | SDR-ST-CON-P1-1210 | 70% | 20d | 2026-08-27 | 2026-09-20 | -45d | 0d | SIC- Cost [5106]; Electrical Forman [37.98 h]; Electrical Technician [96.35 h]; Electrical Helper [96.35 h]; Labor [37.98 h]; Excavator [22.18 h]; Excavator Operator [96.35 h] | 5,106 | 3,574.2 | 107.85 | -30 | B2.31 23 00.01 | M3 | P1-S.L |
| SDR-ST-CON-P1-2390 |  | Excavation for LV Cable trench Section 2 | 21d | 2026-11-04 A | 2027-01-05 | SDR-ST-CON-P1-1590 FS+2d | 50% | 11d | 2026-09-24 | 2026-10-18 | -45d | 0d | SIC- Cost [5106]; Electrical Forman [37.98 h]; Electrical Technician [96.35 h]; Electrical Helper [96.35 h]; Labor [37.98 h]; Excavator [15 h]; Excavator Operator [96.35 h] | 5,106 | 2,553 | 107.85 | -50 | B2.31 23 00.01 | M3 | P1-S.L |
| SDR-ST-CON-P1-3120 |  | Excavation for LV Cable trench Section 3 | 21d | 2026-11-04 A | 2027-01-17 | SDR-ST-CON-P1-2390 | 50% | 10d | 2026-10-19 | 2026-11-11 | -45d | 0d | SIC- Cost [5106]; Electrical Forman [37.98 h]; Electrical Technician [96.35 h]; Electrical Helper [96.35 h]; Labor [37.98 h]; Excavator [30 h]; Excavator Operator [96.35 h] | 5,106 | 2,553 | 107.85 | -50 | B2.31 23 00.02 | M3 | P1-S.L |
|  | 11 | **Install Footings** |  | 2027-01-18 | 2027-02-09 |  |  |  |  |  |  |  |  |  |  |  |  |  |  |  |
| SDR-ST-CON-P1-3990 |  | Install Footings | 20d | 2027-01-18 | 2027-02-09 | SDR-ST-PRO-MS-1260, SDR-ST-CON-P1-3120 |  |  |  |  | -45d | 0d | SIC- Cost [15318]; Electrical Forman [96.35 h]; Electrical Technician [96.35 h]; Electrical Helper [96.35 h]; Labor [96.35 h] | 15,318 |  | 20 | -15 | B2.33 71 00 01.01 | Number | P1-S.L |
|  | 12 | **Backfilling** |  | 2027-02-10 | 2027-03-03 |  |  |  |  |  |  |  |  |  |  |  |  |  |  |  |
| SDR-ST-CON-P1-4680 |  | Backfilling over LV Cables of Street lighting | 18d | 2027-02-10 | 2027-03-03 | SDR-ST-CON-P1-3990 |  |  |  |  | -45d | 0d | SIC- Cost [15318]; Electrical Forman [48.17 h]; Electrical Technician [48.17 h]; Electrical Helper [48.17 h]; Labor [9.08 h]; Excavator [15 h]; Excavator Operator [48.17 h] | 15,318 |  | 323 | 0 | B2.31 23 00.01 | M3 | P1-S.L |
|  | 13 | **Install pole** |  | 2027-03-04 | 2027-04-26 |  |  |  |  |  |  |  |  |  |  |  |  |  |  |  |
| SDR-ST-CON-P1-5050 |  | Install Pole Part 1 | 21d | 2027-03-04 | 2027-04-01 | SDR-ST-PRO-MS-1230, SDR-ST-CON-P1-4680 |  |  |  |  | -45d | 0d | SIC- Cost [53613]; Electrical Forman [48.17 h]; Electrical Technician [48.17 h]; Electrical Helper [48.17 h]; Labor [48.17 h] | 53,612.98 |  | 10 | 0 | B2.33 71 16.01 | Number | P1-S.L |
| SDR-ST-CON-P1-5760 |  | Install Pole Part 2 | 21d | 2027-04-03 | 2027-04-26 | SDR-ST-PRO-MS-1230, SDR-ST-CON-P1-5050 |  |  |  |  | -45d | 27d | SIC- Cost [53613]; Electrical Forman [48.17 h]; Electrical Technician [48.17 h]; Electrical Helper [48.17 h]; Labor [48.17 h] | 53,612.98 |  | 10 | 0 | B2.33 71 16.01 | Number | P1-S.L |
|  | 1 | **ROAD-01 From 0 to 470 m (3)** |  | 2026-09-05 | 2027-07-19 |  |  |  |  |  |  |  |  |  |  |  |  |  |  |  |
|  | 10 | **Excavation** |  | 2026-09-05 | 2027-01-02 |  |  |  |  |  |  |  |  |  |  |  |  |  |  |  |
| SDR-ST-CON-P1-1500 |  | Excavation for LV Cable trench Section 1 | 21d | 2026-09-05 A | 2026-12-09 | SDR-ST-CON-P1-1200 | 70% | 10d | 2026-08-27 | 2026-09-20 | -48d | 0d | SIC- Cost [5106]; Electrical Forman [37.98 h]; Electrical Technician [96.35 h]; Electrical Helper [96.35 h]; Labor [37.98 h]; Excavator [15 h]; Excavator Operator [96.35 h] | 5,106 | 3,574.2 | 107.85 | -30 | B2.31 23 00.01 | M3 | P1-S.L |
| SDR-ST-CON-P1-3040 |  | Excavation for LV Cable trench Section 3 | 21d | 2026-11-03 A | 2027-01-02 | SDR-ST-CON-P1-2320 | 50% | 10d | 2026-10-17 | 2026-11-09 | -41d | 2d | SIC- Cost [5106]; Electrical Forman [37.98 h]; Electrical Technician [96.35 h]; Electrical Helper [96.35 h]; Labor [37.98 h]; Excavator [30 h]; Excavator Operator [96.35 h] | 5,106 | 2,553 | 107.85 | -50 | B2.31 23 00.02 | M3 | P1-S.L |
| SDR-ST-CON-P1-2320 |  | Excavation for LV Cable trench Section 2 | 21d | 2026-11-04 A | 2026-12-21 | SDR-ST-CON-P1-1500 | 50% | 10d | 2026-09-21 | 2026-10-15 | -41d | 0d | SIC- Cost [5106]; Electrical Forman [37.98 h]; Electrical Technician [96.35 h]; Electrical Helper [96.35 h]; Labor [37.98 h]; Excavator [15 h]; Excavator Operator [96.35 h] | 5,106 | 2,553 | 107.85 | -50 | B2.31 23 00.01 | M3 | P1-S.L |
|  | 11 | **Install Footings** |  | 2027-01-05 | 2027-01-28 |  |  |  |  |  |  |  |  |  |  |  |  |  |  |  |
| SDR-ST-CON-P1-3920 |  | Install Footings | 21d | 2027-01-05 | 2027-01-28 | SDR-ST-PRO-MS-1260, SDR-ST-CON-P1-3040 |  |  |  |  | -43d | 0d | SIC- Cost [15318]; Electrical Forman [96.35 h]; Electrical Technician [96.35 h]; Electrical Helper [96.35 h]; Labor [96.35 h] | 15,318 |  | 20 | -23.8095238095238 | B2.33 71 00 01.01 | Number | P1-S.L |

| ID | WBS | Activity | Duration | Start | Finish | Predecessors | Complete | Remaining | Planned start | Planned finish | Total float | Free float | Resources | Cost | Actual cost | BOQ Qty | Variance | BOQ Line item | UOM | Activities Codes Sudair Station |
| --- | --- | --- | --- | --- | --- | --- | --- | --- | --- | --- | --- | --- | --- | --- | --- | --- | --- | --- | --- | --- |
|  | 12 | **Backfilling** |  | 2027-01-30 | 2027-02-15 |  |  |  |  |  |  |  |  |  |  |  |  |  |  |  |
| SDR-ST-CON-P1-4850 |  | Backfilling over LV Cables of Street lighting | 15d | 2027-01-30 | 2027-02-15 | SDR-ST-CON-P1-3920 |  |  |  |  | -43d | 8d | SIC- Cost [15318]; Electrical Forman [48.17 h]; Electrical Technician [48.17 h]; Electrical Helper [48.17 h]; Labor [9.08 h]; Excavator [15 h]; Excavator Operator [48.17 h] | 15,318 |  | 323 | 0 | B2.31 23 00.01 | M3 | P1-S.L |
|  | 13 | **Install pole** |  | 2027-02-27 | 2027-07-19 |  |  |  |  |  |  |  |  |  |  |  |  |  |  |  |
| SDR-ST-CON-P1-5330 |  | Install Pole Part 1 | 21d | 2027-02-27 | 2027-03-27 | SDR-ST-PRO-MS-1020, SDR-ST-PRO-MS-1230, SDR-ST-CON-P1-4850 |  |  |  |  | -51d | 8d | SIC- Cost [26807.5]; Electrical Forman [24.09 h]; Electrical Technician [24.09 h]; Electrical Helper [24.09 h]; Labor [24.09 h] | 26,807.48 |  | 10 | 0 | B2.33 71 16.01 | Number | P1-S.L |
| SDR-ST-CON-P1-5780 |  | Install Pole Part 2 | 21d | 2027-04-06 | 2027-04-29 | SDR-ST-CON-P1-4660, SDR-ST-CON-P1-5230, SDR-ST-CON-P1-5180, SDR-ST-CON-P1-4160, SDR-ST-CON-P1-4270, SDR-ST-PRO-MS-1230, SDR-ST-CON-P1-5330 |  |  |  |  | -59d | 3d | SIC- Cost [26806]; Electrical Forman [24.09 h]; Electrical Technician [24.09 h]; Electrical Helper [24.09 h]; Labor [24.09 h] | 26,805.99 |  | 10 | 0 | B2.33 71 16.01 | Number | P1-S.L |
| SDR-ST-CON-P1-6070 |  | Install Pole Part 3 | 12d | 2027-05-04 | 2027-05-23 | SDR-ST-CON-P1-5790, SDR-ST-CON-P1-5170, SDR-ST-CON-P1-4840, SDR-ST-CON-P1-4800 FS+4d, SDR-ST-CON-P1-5000, SDR-ST-CON-P1-4820, SDR-ST-CON-P1-4900, SDR-ST-CON-P1-5240, SDR-ST-PRO-MS-1180, SDR-ST-PRO-MS-1230, SDR-ST-CON-P1-5780 |  |  |  |  | -62d | 0d | SIC- Cost [26806]; Electrical Forman [24.09 h]; Electrical Technician [24.09 h]; Electrical Helper [24.09 h]; Labor [24.09 h] | 26,805.99 |  |  | 0 |  |  | P1-S.L |
| SDR-ST-CON-P1-6080 |  | Install Pole Part 4 | 7d | 2027-07-12 | 2027-07-19 | SDR-ST-CON-P3-1490, SDR-ST-CON-P1-5750, SDR-ST-PRO-MS-1180, SDR-ST-PRO-MS-1180 FF, SDR-ST-PRO-MS-1230, SDR-ST-CON-P1-6070 |  |  |  |  | -76d | 11d | SIC- Cost [26806.5]; Electrical Forman [24.09 h]; Electrical Technician [24.09 h]; Electrical Helper [24.09 h]; Labor [24.09 h] | 26,806.5 |  |  | 0 |  |  | P1-S.L |
|  | 4 | **ROAD-01 N (1)** |  | 2026-11-04 | 2027-04-20 |  |  |  |  |  |  |  |  |  |  |  |  |  |  |  |
|  | 10 | **Excavation** |  | 2026-11-04 | 2027-01-06 |  |  |  |  |  |  |  |  |  |  |  |  |  |  |  |
| SDR-ST-CON-P1-3190 |  | Excavation for LV Cable trench Section 3 | 21d | 2026-11-04 A | 2027-01-06 | SDR-ST-CON-P1-2410 | 50% | 11d | 2026-10-19 | 2026-11-11 | -43d | 0d | SIC- Cost [4946.16]; Electrical Forman [37.98 h]; Electrical Technician [96.35 h]; Electrical Helper [96.35 h]; Labor [37.98 h]; Excavator [15 h]; Excavator Operator [96.35 h] | 4,946.16 | 2,473.08 | 107.85 | -50 | B2.31 23 00.02 | M3 | P1-S.L |
| SDR-ST-CON-P1-1700 |  | Excavation for LV Cable trench Section 1 | 21d | 2026-11-05 A | 2026-12-10 | SDR-ST-CON-P1-1500 SS | 50% | 11d | 2026-08-27 | 2026-09-20 | -48d | 0d | SIC- Cost [4946.16]; Electrical Forman [37.98 h]; Electrical Technician [96.35 h]; Electrical Helper [96.35 h]; Labor [37.98 h]; Excavator [28.81 h]; Excavator Operator [96.35 h] | 4,946.16 | 2,473.08 | 107.85 | -50 | B2.31 23 00.01 | M3 | P1-S.L |
| SDR-ST-CON-P1-2410 |  | Excavation for LV Cable trench Section 2 | 21d | 2026-11-05 A | 2026-12-24 | SDR-ST-CON-P1-1700 FS+2d | 50% | 10d | 2026-09-24 | 2026-10-18 | -43d | 0d | SIC- Cost [4946.16]; Electrical Forman [37.98 h]; Electrical Technician [96.35 h]; Electrical Helper [96.35 h]; Labor [37.98 h]; Excavator [15.26 h]; Excavator Operator [96.35 h] | 4,946.16 | 2,473.08 | 107.85 | -50 | B2.31 23 00.01 | M3 | P1-S.L |
|  | 11 | **Install Footings** |  | 2027-01-07 | 2027-01-31 |  |  |  |  |  |  |  |  |  |  |  |  |  |  |  |
| SDR-ST-CON-P1-4110 |  | Install Footings | 21d | 2027-01-07 | 2027-01-31 | SDR-ST-CON-P1-3190 |  |  |  |  | -43d | 0d | SIC- Cost [14838.5]; Electrical Forman [96.35 h]; Electrical Technician [96.35 h]; Electrical Helper [96.35 h]; Labor [96.35 h] | 14,838.5 |  | 20 | -14.2857142857143 | B2.33 71 00 01.01 | Number | P1-S.L |
|  | 12 | **Backfilling** |  | 2027-02-01 | 2027-02-15 |  |  |  |  |  |  |  |  |  |  |  |  |  |  |  |
| SDR-ST-CON-P1-4960 |  | Backfilling over LV Cables of Street lighting | 13d | 2027-02-01 | 2027-02-15 | SDR-ST-CON-P1-4110 |  |  |  |  | -43d | 8d | SIC- Cost [14838.5]; Electrical Forman [48.17 h]; Electrical Technician [48.17 h]; Electrical Helper [48.17 h]; Labor [9.08 h]; Excavator [15 h]; Excavator Operator [48.17 h] | 14,838.48 |  | 323 | 0 | B2.31 23 00.01 | M3 | P1-S.L |
|  | 13 | **Install pole** |  | 2027-02-27 | 2027-04-20 |  |  |  |  |  |  |  |  |  |  |  |  |  |  |  |
| SDR-ST-CON-P1-5340 |  | Install Pole Part 1 | 21d | 2027-02-27 | 2027-03-27 | SDR-ST-PRO-MS-1230, SDR-ST-CON-P1-4960 |  |  |  |  | -51d | 0d | SIC- Cost [51934.7]; Electrical Forman [48.17 h]; Electrical Technician [48.17 h]; Electrical Helper [48.17 h]; Labor [48.17 h] | 51,934.74 |  | 10 | 0 | B2.33 71 16.01 | Number | P1-S.L |
| SDR-ST-CON-P1-5790 |  | Install Pole Part 2 | 21d | 2027-03-28 | 2027-04-20 | SDR-ST-CON-P1-5130, SDR-ST-PRO-MS-1230, SDR-ST-CON-P1-5340 |  |  |  |  | -51d | 11d | SIC- Cost [51934.7]; Electrical Forman [48.17 h]; Electrical Technician [48.17 h]; Electrical Helper [48.17 h]; Labor [48.17 h] | 51,934.74 |  | 10 | 0 | B2.33 71 16.01 | Number | P1-S.L |
|  | 5 | **Road Crossing & Drawpits** |  | 2026-08-27 | 2026-11-15 |  |  |  |  |  |  |  |  |  |  |  |  |  |  |  |
|  | 1 | **ROAD - 01** |  | 2026-08-27 | 2026-11-15 |  |  |  |  |  |  |  |  |  |  |  |  |  |  |  |
|  | 1 | **ROAD-01 From 470 to 1125 m (6)** |  | 2026-08-27 | 2026-11-15 |  |  |  |  |  |  |  |  |  |  |  |  |  |  |  |
|  | 1 | **Road crossing Ducts & Drawpits** |  | 2026-08-27 | 2026-11-15 |  |  |  |  |  |  |  |  |  |  |  |  |  |  |  |
|  | 1 | **Excavation** |  | 2026-08-27 | 2026-10-07 |  |  |  |  |  |  |  |  |  |  |  |  |  |  |  |
| SDR-ST-CON-P1-1450 |  | Excavation for GRP Pipes Section 1 | 21d | 2026-08-27 A | 2026-10-07 A | SDR-ST-CON-P1-1180 | 100% |  | 2026-08-27 | 2026-09-20 |  |  | SIC- Cost [2160.34]; Labor [37.98 h]; Excavator [15 h]; Excavator Operator [142.43 h] | 2,160.34 | 2,160.34 | 20 | 0 |  | M | P1-S.L |

| ID | WBS | Activity | Duration | Start | Finish | Predecessors | Complete | Planned start | Planned finish | Resources | Cost | Actual cost | BOQ Qty | Variance | UOM | Activities Codes Sudair Station |
| --- | --- | --- | --- | --- | --- | --- | --- | --- | --- | --- | --- | --- | --- | --- | --- | --- |
|  | 7 | **bedding Works** |  | 2026-10-08 | 2026-10-10 |  |  |  |  |  |  |  |  |  |  |  |
| SDR-ST-CON-P1-2160 |  | Sand bedding for GRP Pipes | 21d | 2026-10-08 A | 2026-10-10 A | SDR-ST-CON-P1-1450 | 100% | 2026-09-21 | 2026-10-15 | SIC- Cost [540.09]; Labor [142.43 h]; Excavator [24.29 h]; Excavator Operator [142.43 h]; Loader [61.35 h] | 540.09 | 540.09 | 20 | 0 | M | P1-S.L |
|  | 2 | **Pipes Laying** |  | 2026-10-11 | 2026-10-14 |  |  |  |  |  |  |  |  |  |  |  |
| SDR-ST-CON-P1-2890 |  | Install ST GRP Pipes | 14d | 2026-10-11 A | 2026-10-14 A | SDR-ST-CON-P1-2160 | 100% | 2026-10-17 | 2026-11-01 | Pipe Fitter [142.43 h]; SIC- Cost [4860.77]; Labor [142.43 h] | 4,860.77 | 4,860.77 | 20 | 0 | M | P1-S.L |
|  | 6 | **Testing** |  | 2026-10-14 | 2026-10-20 |  |  |  |  |  |  |  |  |  |  |  |
| SDR-ST-CON-P1-3530 |  | Testing ST GRP Pipes | 7d | 2026-10-14 A | 2026-10-20 A | SDR-ST-CON-P1-2890 | 100% | 2026-12-22 | 2026-12-29 | Pipe Fitter [142.43 h]; SIC- Cost [1080.17]; Labor [37.98 h] | 1,080.17 |  | 20 | 0 | M | P1-S.L |
|  | 3 | **Backfilling** |  | 2026-10-11 | 2026-11-15 |  |  |  |  |  |  |  |  |  |  |  |
| SDR-ST-CON-P1-3810 |  | Backfilling ST GRP Pipes | 6d | 2026-10-11 A | 2026-11-15 A | SDR-ST-CON-P1-3530 | 100% | 2026-12-22 | 2026-12-28 | SIC- Cost [2160.34]; Labor [37.98 h]; Excavator [15 h]; Excavator Operator [142.43 h] | 2,160.34 |  | 20 | 16.6666666666667 | M | P1-S.L |
|  | 2 | **ROAD-01 From 1125 to 1765 m (7)** |  | 2026-08-27 | 2026-11-07 |  |  |  |  |  |  |  |  |  |  |  |
|  | 1 | **Road crossing Ducts & Drawpits** |  | 2026-08-27 | 2026-11-07 |  |  |  |  |  |  |  |  |  |  |  |
|  | 1 | **Excavation** |  | 2026-08-27 | 2026-10-08 |  |  |  |  |  |  |  |  |  |  |  |
| SDR-ST-CON-P1-1600 |  | Excavation for GRP Pipes Section 1 | 21d | 2026-08-27 A | 2026-10-08 A | SDR-ST-CON-P1-1590 SS | 100% | 2026-08-27 | 2026-09-20 | SIC- Cost [2160.34]; Labor [37.98 h]; Excavator [29.36 h]; Excavator Operator [142.43 h] | 2,160.34 | 2,160.34 | 20 | 0 | M | P1-S.L |
|  | 7 | **bedding Works** |  | 2026-09-21 | 2026-10-12 |  |  |  |  |  |  |  |  |  |  |  |
| SDR-ST-CON-P1-2280 |  | Sand bedding for GRP Pipes | 15d | 2026-09-21 A | 2026-10-12 A | SDR-ST-CON-P1-1600 | 100% | 2026-09-21 | 2026-10-08 | SIC- Cost [540.09]; Labor [142.43 h]; Excavator [15 h]; Excavator Operator [142.43 h]; Loader [50 h] | 540.09 | 540.09 | 20 | 0 | M | P1-S.L |
|  | 2 | **Pipes Laying** |  | 2026-10-13 | 2026-10-17 |  |  |  |  |  |  |  |  |  |  |  |
| SDR-ST-CON-P1-2800 |  | Install ST GRP Pipes | 12d | 2026-10-13 A | 2026-10-17 A | SDR-ST-PRO-MS-1000, SDR-ST-CON-P1-2280 | 100% | 2026-10-10 | 2026-10-22 | Pipe Fitter [142.43 h]; SIC- Cost [4860.77]; Labor [37.98 h] | 4,860.77 | 4,860.77 | 20 | 0 | M | P1-S.L |
|  | 6 | **Testing** |  | 2026-10-17 | 2026-10-21 |  |  |  |  |  |  |  |  |  |  |  |
| SDR-ST-CON-P1-3250 |  | Testing ST GRP Pipes | 9d | 2026-10-17 A | 2026-10-21 A | SDR-ST-CON-P1-2800 | 100% | 2026-12-19 | 2026-12-28 | Pipe Fitter [142.43 h]; SIC- Cost [1080.17]; Labor [37.98 h] | 1,080.17 |  | 20 | 0 | M | P1-S.L |
|  | 3 | **Backfilling** |  | 2026-10-20 | 2026-11-07 |  |  |  |  |  |  |  |  |  |  |  |
| SDR-ST-CON-P1-3670 |  | Backfilling ST GRP Pipes | 11d | 2026-10-20 A | 2026-11-07 A | SDR-ST-CON-P1-3250 | 100% | 2026-12-19 | 2026-12-30 | SIC- Cost [2160.34]; Labor [142.43 h]; Excavator [15 h]; Excavator Operator [142.43 h] | 2,160.34 |  | 20 | 0 | M | P1-S.L |
|  | 3 | **ROAD-01 From 0 to 470 m (3)** |  | 2026-08-27 | 2026-11-13 |  |  |  |  |  |  |  |  |  |  |  |
|  | 1 | **Road crossing Ducts & Drawpits** |  | 2026-08-27 | 2026-11-13 |  |  |  |  |  |  |  |  |  |  |  |
|  | 1 | **Excavation** |  | 2026-08-27 | 2026-10-12 |  |  |  |  |  |  |  |  |  |  |  |
| SDR-ST-CON-P1-1510 |  | Excavation for GRP Pipes Section 1 | 21d | 2026-08-27 A | 2026-10-12 A | SDR-ST-CON-P1-1500 SS | 100% | 2026-08-27 | 2026-09-20 | SIC- Cost [2160.34]; Labor [37.98 h]; Excavator [15 h]; Excavator Operator [142.43 h] | 2,160.34 | 2,160.34 | 20 | 0 | M | P1-S.L |

| ID | WBS | Activity | Duration | Start | Finish | Predecessors | Complete | Planned start | Planned finish | Total float | Free float | Resources | Cost | Actual cost | BOQ Qty | Variance | UOM | Activities Codes Sudair Station |
| --- | --- | --- | --- | --- | --- | --- | --- | --- | --- | --- | --- | --- | --- | --- | --- | --- | --- | --- |
|  | 7 | **bedding Works** |  | 2026-10-13 | 2026-10-15 |  |  |  |  |  |  |  |  |  |  |  |  |  |
| SDR-ST-CON-P1-2180 |  | Sand bedding for GRP Pipes | 21d | 2026-10-13 A | 2026-10-15 A | SDR-ST-CON-P1-1510 | 100% | 2026-09-21 | 2026-10-15 |  |  | SIC- Cost [540.09]; Labor [37.98 h]; Excavator [18.57 h]; Excavator Operator [142.43 h]; Loader [54.37 h] | 540.09 | 540.09 | 20 | 0 | M | P1-S.L |
|  | 2 | **Pipes Laying** |  | 2026-10-17 | 2026-10-19 |  |  |  |  |  |  |  |  |  |  |  |  |  |
| SDR-ST-CON-P1-2930 |  | Install ST GRP Pipes | 13d | 2026-10-17 A | 2026-10-19 A | SDR-ST-CON-P1-2180 | 100% | 2026-10-17 | 2026-10-31 |  |  | Pipe Fitter [142.43 h]; SIC- Cost [4860.77]; Labor [37.98 h] | 4,860.77 | 4,860.77 | 20 | 0 | M | P1-S.L |
|  | 6 | **Testing** |  | 2026-10-19 | 2026-10-24 |  |  |  |  |  |  |  |  |  |  |  |  |  |
| SDR-ST-CON-P1-3510 |  | Testing ST GRP Pipes | 10d | 2026-10-19 A | 2026-10-24 A | SDR-ST-CON-P1-2930 | 100% | 2026-11-29 | 2026-12-09 |  |  | Pipe Fitter [142.43 h]; SIC- Cost [1080.17]; Labor [142.43 h] | 1,080.17 |  | 20 | 0 | M | P1-S.L |
|  | 3 | **Backfilling** |  | 2026-10-25 | 2026-11-13 |  |  |  |  |  |  |  |  |  |  |  |  |  |
| SDR-ST-CON-P1-3760 |  | Backfilling ST GRP Pipes | 13d | 2026-10-25 A | 2026-11-13 A | SDR-ST-CON-P1-3510 FS+1d | 100% | 2026-11-29 | 2026-12-13 |  |  | SIC- Cost [2160.34]; Labor [142.43 h]; Excavator [15 h]; Excavator Operator [142.43 h] | 2,160.34 |  | 20 | 84.6153846153846 | M | P1-S.L |
|  | 4 | **ROAD-01 N (1)** |  | 2026-10-04 | 2026-11-14 |  |  |  |  |  |  |  |  |  |  |  |  |  |
|  | 1 | **Road crossing Ducts & Drawpits** |  | 2026-10-04 | 2026-11-14 |  |  |  |  |  |  |  |  |  |  |  |  |  |
|  | 1 | **Excavation** |  | 2026-10-04 | 2026-10-20 |  |  |  |  |  |  |  |  |  |  |  |  |  |
| SDR-ST-CON-P1-1710 |  | Excavation for GRP Pipes Section 1 | 21d | 2026-10-04 A | 2026-10-20 A | SDR-ST-CON-P1-1700 SS | 100% | 2026-11-29 | 2026-12-22 |  |  | SIC- Cost [2160.34]; Labor [37.98 h]; Excavator [35.51 h]; Excavator Operator [142.43 h] | 2,160.34 |  | 20 | 0 | M | P1-S.L |
|  | 7 | **bedding Works** |  | 2026-10-10 | 2026-10-21 |  |  |  |  |  |  |  |  |  |  |  |  |  |
| SDR-ST-CON-P1-2360 |  | Sand bedding for GRP Pipes | 21d | 2026-10-10 A | 2026-10-21 A | SDR-ST-CON-P1-1710 | 100% | 2026-11-29 | 2026-12-22 |  |  | SIC- Cost [540.09]; Labor [142.43 h]; Excavator [15 h]; Excavator Operator [142.43 h]; Loader [50 h] | 540.09 |  | 20 | 0 | M | P1-S.L |
|  | 2 | **Pipes Laying** |  | 2026-10-11 | 2026-10-24 |  |  |  |  |  |  |  |  |  |  |  |  |  |
| SDR-ST-CON-P1-3090 |  | Install ST GRP Pipes | 12d | 2026-10-11 A | 2026-10-24 A | SDR-ST-CON-P1-2360 | 100% | 2026-11-29 | 2026-12-12 |  |  | Pipe Fitter [142.43 h]; SIC- Cost [4860.77]; Labor [37.98 h] | 4,860.77 |  | 20 | 0 | M | P1-S.L |
|  | 6 | **Testing** |  | 2026-10-20 | 2026-10-26 |  |  |  |  |  |  |  |  |  |  |  |  |  |
| SDR-ST-CON-P1-3520 |  | Testing ST GRP Pipes | 14d | 2026-10-20 A | 2026-10-26 A | SDR-ST-CON-P1-3090 | 100% | 2026-11-29 | 2026-12-14 |  |  | Pipe Fitter [142.43 h]; SIC- Cost [1080.17]; Labor [142.43 h] | 1,080.17 |  | 20 | 0 | M | P1-S.L |
|  | 3 | **Backfilling** |  | 2026-11-01 | 2026-11-14 |  |  |  |  |  |  |  |  |  |  |  |  |  |
| SDR-ST-CON-P1-3930 |  | Backfilling ST GRP Pipes | 10d | 2026-11-01 A | 2026-11-14 A | SDR-ST-CON-P1-3520 FS+1d | 100% | 2026-11-29 | 2026-12-09 |  |  | SIC- Cost [2160.34]; Labor [142.43 h]; Excavator [15 h]; Excavator Operator [142.43 h] | 2,160.34 |  | 20 | 100 | M | P1-S.L |
|  | 11 | **Ring Main Unit** |  | 2027-08-02 | 2027-10-11 |  |  |  |  |  |  |  |  |  |  |  |  |  |
|  | 1 | **Leveling** |  | 2027-08-02 | 2027-08-16 |  |  |  |  |  |  |  |  |  |  |  |  |  |
| SDR-ST-CON-P1-5840 |  | Ring Main Unit leveling | 14d | 2027-08-02 | 2027-08-16 | SDR-ST-CON-P1-3900, SDR-ST-CON-P1-5780, SDR-ST-CON-P3-1460, SDR-ST-CON-P1-6080 |  |  |  | -87d | 8d | SIC- Cost [5534.7]; Electrical Forman [142.43 h]; Electrical Technician [142.43 h]; Electrical Helper [142.43 h]; Labor [142.43 h] | 5,534.7 |  | 1 | 0 | Number | P1-S.L |
|  | 2 | **Lean Concrete** |  | 2027-08-26 | 2027-09-18 |  |  |  |  |  |  |  |  |  |  |  |  |  |
| SDR-ST-CON-P1-5890 |  | Ring Main Unit Lean Concrete | 20d | 2027-08-26 | 2027-09-18 | SDR-ST-CON-P1-4070, SDR-ST-MILS-1060, SDR-ST-CON-P1-5840 |  |  |  | -90d | 0d | SIC- Cost [11069.4]; Electrical Forman [142.43 h]; Electrical Technician [142.43 h]; Electrical Helper [142.43 h]; Labor [142.43 h] | 11,069.41 |  | 1 | 0 | Number | P1-S.L |

| ID | WBS | Activity | Duration | Start | Finish | Predecessors | Total float | Free float | Resources | Cost | BOQ Qty | Variance | UOM | Activities Codes Sudair Station |
| --- | --- | --- | --- | --- | --- | --- | --- | --- | --- | --- | --- | --- | --- | --- |
|  | 3 | **Installation** |  | 2027-09-19 | 2027-10-11 |  |  |  |  |  |  |  |  |  |
| SDR-ST-CON-P1-5920 |  | Ring Main Unit installation for Street Lighting | 20d | 2027-09-19 | 2027-10-11 | SDR-ST-CON-P1-5800, SDR-ST-CON-P1-5890, SDR-ST-MILS-1080, SDR-ST-MILS-1060 | -90d | 18d | SIC- Cost [38742.9]; Electrical Forman [142.43 h]; Electrical Technician [142.43 h]; Electrical Helper [142.43 h]; Labor [142.43 h] | 38,742.93 | 1 | 0 | Number | P1-S.L |
|  | 12 | **Feeder Pillars** |  | 2027-08-26 | 2027-10-30 |  |  |  |  |  |  |  |  |  |
|  | 1 | **Leveling** |  | 2027-08-26 | 2027-09-19 |  |  |  |  |  |  |  |  |  |
| SDR-ST-CON-P1-5880 |  | Feeder Pillars Leveling | 21d | 2027-08-26 | 2027-09-19 | SDR-ST-CON-P1-4320, SDR-ST-CON-P1-4010, SDR-ST-CON-P1-4250, SDR-ST-CON-P1-4000, SDR-ST-CON-P1-5840 | -95d | 0d | SIC- Cost [1209.3]; Electrical Forman [142.43 h]; Electrical Technician [142.43 h]; Electrical Helper [142.43 h]; Labor [142.43 h] | 1,209.3 | 1 | 0 | Number | P1-S.L |
|  | 2 | **Lean Concrete** |  | 2027-09-20 | 2027-10-12 |  |  |  |  |  |  |  |  |  |
| SDR-ST-CON-P1-5930 |  | Feeder Pillars Lean Concrete | 20d | 2027-09-20 | 2027-10-12 | SDR-ST-CON-P1-5880, SDR-ST-MILS-1070, SDR-ST-MILS-1080, SDR-ST-CON-P3-1500 | -93d | 0d | SIC- Cost [2418.6]; Electrical Forman [142.43 h]; Electrical Technician [142.43 h]; Electrical Helper [142.43 h]; Labor [142.43 h] | 2,418.6 | 1 | 0 | Number | P1-S.L |
|  | 3 | **Installation** |  | 2027-10-13 | 2027-10-30 |  |  |  |  |  |  |  |  |  |
| SDR-ST-CON-P1-6000 |  | Feeder Pillars Installation | 15d | 2027-10-13 | 2027-10-30 | SDR-ST-CON-P1-5930 | -93d | 9d | SIC- Cost [8465.11]; Electrical Forman [142.43 h]; Electrical Technician [142.43 h]; Electrical Helper [142.43 h]; Labor [142.43 h] | 8,465.11 | 1 | 0 | Number | P1-S.L |
|  | 13 | **KWH Frame** |  | 2027-10-07 | 2027-11-28 |  |  |  |  |  |  |  |  |  |
|  | 1 | **Leveling** |  | 2027-10-07 | 2027-10-28 |  |  |  |  |  |  |  |  |  |
| SDR-ST-CON-P1-5940 |  | KWH meter mounting frame Leveling | 19d | 2027-10-07 | 2027-10-28 | SDR-ST-CO-1010, SDR-ST-CON-P1-5880 | -110d | 0d | SIC- Cost [720.9]; Electrical Forman [142.43 h]; Electrical Technician [142.43 h]; Electrical Helper [142.43 h]; Labor [142.43 h] | 720.9 | 1 | 0 | Number | P1-S.L |
|  | 2 | **Lean Concrete** |  | 2027-10-30 | 2027-11-15 |  |  |  |  |  |  |  |  |  |
| SDR-ST-CON-P1-6010 |  | KWH meter mounting frame Lean Concrete | 15d | 2027-10-30 | 2027-11-15 | SDR-ST-CON-P1-5940 | -110d | 0d | SIC- Cost [1441.8]; Electrical Forman [142.43 h]; Electrical Technician [142.43 h]; Electrical Helper [142.43 h]; Labor [142.43 h] | 1,441.8 | 1 | 0 | Number | P1-S.L |
|  | 3 | **Installation** |  | 2027-11-16 | 2027-11-28 |  |  |  |  |  |  |  |  |  |
| SDR-ST-CON-P1-6040 |  | KWH meter mounting frame installation | 11d | 2027-11-16 | 2027-11-28 | SDR-ST-CON-P1-6010 | -110d | 8d | SIC- Cost [5046.3]; Electrical Forman [142.43 h]; Electrical Technician [142.43 h]; Electrical Helper [142.43 h]; Labor [142.43 h] | 5,046.3 | 1 | 0 | Number | P1-S.L |
|  | 14 | **Street Lighting Sub-station** |  | 2027-10-12 | 2027-11-23 |  |  |  |  |  |  |  |  |  |
|  | 1 | **Leveling** |  | 2027-10-12 | 2027-11-03 |  |  |  |  |  |  |  |  |  |
| SDR-ST-CON-P1-5950 |  | Unit Substation Leveling Part 1 | 20d | 2027-10-12 | 2027-11-03 | SDR-ST-CON-P1-5940 SS+4d | -110d | 0d | SIC- Cost [4054.25]; Electrical Forman [142.43 h]; Electrical Technician [2033.59 h]; Electrical Helper [142.43 h]; Labor [142.43 h] | 4,054.25 | 1 | 0 | Number | P1-S.L |
| SDR-ST-CON-P1-5960 |  | Unit Substation Leveling Part 2 | 20d | 2027-10-12 | 2027-11-03 | SDR-ST-CON-P1-5950 SS | -110d | 0d | SIC- Cost [4054.25]; Electrical Forman [142.43 h]; Electrical Technician [2531.27 h]; Electrical Helper [142.43 h]; Labor [142.43 h] | 4,054.25 | 1 | 0 | Number | P1-S.L |
|  | 2 | **Lean Concrete** |  | 2027-11-04 | 2027-11-17 |  |  |  |  |  |  |  |  |  |
| SDR-ST-CON-P1-6020 |  | Unit Substation Lean Concrete | 12d | 2027-11-04 | 2027-11-17 | SDR-ST-CON-P1-5950, SDR-ST-CON-P1-5960 | -110d | 0d | SIC- Cost [16217]; Electrical Forman [142.43 h]; Electrical Technician [142.43 h]; Electrical Helper [142.43 h]; Labor [142.43 h] | 16,217.01 | 1 | 0 | Number | P1-S.L |
|  | 3 | **Installation** |  | 2027-11-18 | 2027-11-23 |  |  |  |  |  |  |  |  |  |
| SDR-ST-CON-P1-6050 |  | Unit Substation Install for Street Lighting | 5d | 2027-11-18 | 2027-11-23 | SDR-ST-CON-P1-6020 | -110d | 0d | SIC- Cost [56759.6]; Electrical Forman [142.43 h]; Electrical Technician [142.43 h]; Electrical Helper [142.43 h]; Labor [142.43 h] | 56,759.55 | 1 | 0 | Number | P1-S.L |

| ID | WBS | Activity | Duration | Start | Finish | Predecessors | Complete | Remaining | Planned start | Planned finish | Total float | Free float | Resources | Cost | Actual cost | BOQ Qty | Variance | BOQ Line item | UOM | Activities Codes Sudair Station |
| --- | --- | --- | --- | --- | --- | --- | --- | --- | --- | --- | --- | --- | --- | --- | --- | --- | --- | --- | --- | --- |
|  | 8 | **ROAD - 02** |  | 2026-08-15 | 2027-11-18 |  |  |  |  |  |  |  |  |  |  |  |  |  |  |  |
|  | 6 | **ROAD-01 From 0 to 400 m (9) 2 Way 110 mm** |  | 2026-11-02 | 2027-03-04 |  |  |  |  |  |  |  |  |  |  |  |  |  |  |  |
|  | 10 | **Excavation** |  | 2026-11-02 | 2027-01-07 |  |  |  |  |  |  |  |  |  |  |  |  |  |  |  |
| SDR-ST-CON-P1-1780 |  | Excavation for LV Cable trench Section 2 | 15d | 2026-11-02 A | 2026-12-24 | SDR-ST-CON-P1-1310 FS+2d | 30% | 10d | 2026-09-03 | 2026-09-20 | -51d | 0d | SIC- Cost [5106]; Electrical Forman [142.43 h]; Electrical Technician [142.43 h]; Electrical Helper [142.43 h]; Labor [37.98 h]; Excavator [17.71 h]; Excavator Operator [142.43 h] | 5,106 | 1,531.8 | 107.85 | -70 | B2.31 23 00.01 | M3 | P1-S.L |
| SDR-ST-CON-P1-1310 |  | Excavation for LV Cable trench Section 1 | 15d | 2026-11-04 A | 2026-12-10 | SDR-ST-CON-P1-1300 SS | 30% | 11d | 2026-08-15 | 2026-08-31 | -81d | 0d | SIC- Cost [5106]; Electrical Forman [142.43 h]; Electrical Technician [142.43 h]; Electrical Helper [142.43 h]; Labor [142.43 h]; Excavator [84.31 h]; Excavator Operator [142.43 h] | 5,106 | 1,531.8 | 107.85 | -70 | B2.31 23 00.01 | M3 | P1-S.L |
| SDR-ST-CON-P1-2350 |  | Excavation for LV Cable trench Section 3 | 16d | 2026-11-04 A | 2027-01-07 | SDR-ST-CON-P1-1780 | 30% | 12d | 2026-09-21 | 2026-10-10 | -51d | 0d | SIC- Cost [5106]; Electrical Forman [142.43 h]; Electrical Technician [142.43 h]; Electrical Helper [142.43 h]; Labor [37.98 h]; Excavator [15 h]; Excavator Operator [142.43 h] | 5,106 | 1,531.8 | 107.85 | -70 | B2.31 23 00.02 | M3 | P1-S.L |
|  | 11 | **Install Footings** |  | 2027-01-09 | 2027-01-25 |  |  |  |  |  |  |  |  |  |  |  |  |  |  |  |
| SDR-ST-CON-P1-2860 |  | Install Footings | 15d | 2027-01-09 | 2027-01-25 | SDR-ST-CON-P1-2350 |  |  |  |  | -51d | 0d | SIC- Cost [15318]; Electrical Forman [37.98 h]; Electrical Technician [142.43 h]; Electrical Helper [142.43 h]; Labor [37.98 h] | 15,318 |  | 20 | -100 | B2.33 71 00 01.01 | Number | P1-S.L |
|  | 12 | **Backfilling** |  | 2027-01-26 | 2027-02-13 |  |  |  |  |  |  |  |  |  |  |  |  |  |  |  |
| SDR-ST-CON-P1-3500 |  | Backfilling over LV Cables of Street lighting | 16d | 2027-01-26 | 2027-02-13 | SDR-ST-CON-P1-2860 |  |  |  |  | -51d | 0d | SIC- Cost [15318]; Electrical Forman [37.98 h]; Electrical Technician [142.43 h]; Electrical Helper [142.43 h]; Labor [37.98 h]; Excavator [15 h]; Excavator Operator [142.43 h] | 15,318 |  | 323 | -100 | B2.31 23 00.01 | M3 | P1-S.L |
|  | 13 | **Install pole** |  | 2027-02-14 | 2027-03-04 |  |  |  |  |  |  |  |  |  |  |  |  |  |  |  |
| SDR-ST-CON-P1-4260 |  | Install Pole Part 1 | 8d | 2027-02-14 | 2027-02-23 | SDR-ST-CON-P1-3500 |  |  |  |  | -51d | 0d | SIC- Cost [53613]; Electrical Forman [142.43 h]; Electrical Technician [142.43 h]; Electrical Helper [142.43 h]; Labor [142.43 h] | 53,612.98 |  | 10 | 0 | B2.33 71 16.01 | Number | P1-S.L |
| SDR-ST-CON-P1-4570 |  | Install Pole Part 2 | 8d | 2027-02-24 | 2027-03-04 | SDR-ST-CON-P1-4260 |  |  |  |  | -51d | 0d | SIC- Cost [53613]; Electrical Forman [39.97 h]; Electrical Technician [39.97 h]; Electrical Helper [39.97 h]; Labor [39.97 h] | 53,612.98 |  | 10 | 0 | B2.33 71 16.01 | Number | P1-S.L |
|  | 5 | **ROAD-01 From 400 to 900 m (10) 4 Way 110 mm** |  | 2026-11-01 | 2027-03-15 |  |  |  |  |  |  |  |  |  |  |  |  |  |  |  |
|  | 10 | **Excavation** |  | 2026-11-01 | 2027-01-02 |  |  |  |  |  |  |  |  |  |  |  |  |  |  |  |
| SDR-ST-CON-P1-1260 |  | Excavation for LV Cable trench Section 1 | 15d | 2026-11-01 A | 2026-12-07 | SDR-ST-CON-P1-1250 SS | 30% | 8d | 2026-08-13 | 2026-08-30 | -75d | 0d | SIC- Cost [5106]; Electrical Forman [142.43 h]; Electrical Technician [142.43 h]; Electrical Helper [142.43 h]; Labor [142.43 h]; Excavator [98.84 h]; Excavator Operator [142.43 h] | 5,106 | 1,531.8 | 107.85 | -70 | B2.31 23 00.01 | M3 | P1-S.L |
| SDR-ST-CON-P1-1760 |  | Excavation for LV Cable trench Section 2 | 15d | 2026-11-01 A | 2026-12-21 | SDR-ST-CON-P1-1260 FS+2d | 30% | 10d | 2026-09-02 | 2026-09-19 | -51d | 0d | SIC- Cost [5106]; Electrical Forman [37.98 h]; Electrical Technician [142.43 h]; Electrical Helper [142.43 h]; Labor [37.98 h]; Excavator [15.87 h]; Excavator Operator [142.43 h] | 5,106 | 1,531.8 | 107.85 | -70 | B2.31 23 00.01 | M3 | P1-S.L |
| SDR-ST-CON-P1-2260 |  | Excavation for LV Cable trench Section 3 | 15d | 2026-11-01 A | 2027-01-02 | SDR-ST-CON-P1-1760 | 30% | 10d | 2026-09-20 | 2026-10-07 | -51d | 0d | SIC- Cost [5106]; Electrical Forman [37.98 h]; Electrical Technician [142.43 h]; Electrical Helper [142.43 h]; Labor [37.98 h]; Excavator [15 h]; Excavator Operator [142.43 h] | 5,106 | 1,531.8 | 107.85 | -70 | B2.31 23 00.02 | M3 | P1-S.L |
|  | 11 | **Install Footings** |  | 2027-01-03 | 2027-01-18 |  |  |  |  |  |  |  |  |  |  |  |  |  |  |  |
| SDR-ST-CON-P1-2770 |  | Install Footings | 14d | 2027-01-03 | 2027-01-18 | SDR-ST-CON-P1-2260 |  |  |  |  | -51d | 0d | SIC- Cost [15318]; Electrical Forman [37.98 h]; Electrical Technician [142.43 h]; Electrical Helper [142.43 h]; Labor [37.98 h] | 15,318 |  | 20 | -100 | B2.33 71 00 01.01 | Number | P1-S.L |
|  | 12 | **Backfilling** |  | 2027-01-19 | 2027-02-03 |  |  |  |  |  |  |  |  |  |  |  |  |  |  |  |
| SDR-ST-CON-P1-3350 |  | Backfilling over LV Cables of Street lighting | 14d | 2027-01-19 | 2027-02-03 | SDR-ST-CON-P1-2770 |  |  |  |  | -51d | 0d | SIC- Cost [15318]; Electrical Forman [37.98 h]; Electrical Technician [142.43 h]; Electrical Helper [142.43 h]; Labor [37.98 h]; Excavator [15 h]; Excavator Operator [142.43 h] | 15,318 |  | 323 | -100 | B2.31 23 00.01 | M3 | P1-S.L |
|  | 13 | **Install pole** |  | 2027-02-04 | 2027-03-15 |  |  |  |  |  |  |  |  |  |  |  |  |  |  |  |
| SDR-ST-CON-P1-3940 |  | Install Pole Part 1 | 8d | 2027-02-04 | 2027-02-13 | SDR-ST-CON-P1-3350 |  |  |  |  | -51d | 13d | SIC- Cost [53613]; Electrical Forman [37.98 h]; Electrical Technician [39.97 h]; Electrical Helper [39.97 h]; Labor [37.98 h] | 53,612.98 |  | 10 | -62.5 | B2.33 71 16.01 | Number | P1-S.L |
| SDR-ST-CON-P1-4400 |  | Install Pole Part 2 | 8d | 2027-03-02 | 2027-03-15 | SDR-ST-MILS-1080, SDR-ST-CON-P1-3940 |  |  |  |  | -20d | 0d | SIC- Cost [53613]; Electrical Forman [39.97 h]; Electrical Technician [39.97 h]; Electrical Helper [39.97 h]; Labor [39.97 h] | 53,612.98 |  | 10 | 0 | B2.33 71 16.01 | Number | P1-S.L |

| ID | WBS | Activity | Duration | Start | Finish | Predecessors | Complete | Remaining | Planned start | Planned finish | Total float | Free float | Resources | Cost | Actual cost | BOQ Qty | Variance | BOQ Line item | UOM | Activities Codes Sudair Station |
| --- | --- | --- | --- | --- | --- | --- | --- | --- | --- | --- | --- | --- | --- | --- | --- | --- | --- | --- | --- | --- |
|  | 4 | **ROAD-01 From 900 to 1239 m (11) 2 Way 110 mm** |  | 2026-11-05 | 2027-03-15 |  |  |  |  |  |  |  |  |  |  |  |  |  |  |  |
|  | 10 | **Excavation** |  | 2026-11-05 | 2027-01-04 |  |  |  |  |  |  |  |  |  |  |  |  |  |  |  |
| SDR-ST-CON-P1-1360 |  | Excavation for LV Cable trench Section 1 | 14d | 2026-11-05 A | 2026-12-09 | SDR-ST-CON-P1-1350 SS | 30% | 10d | 2026-08-27 | 2026-09-12 | -59d | 0d | SIC- Cost [5106]; Electrical Forman [142.43 h]; Electrical Technician [142.43 h]; Electrical Helper [142.43 h]; Labor [142.43 h]; Excavator [15 h]; Excavator Operator [142.43 h] | 5,106 | 1,531.8 | 107.85 | -70 | B2.31 23 00.01 | M3 | P1-S.L |
| SDR-ST-CON-P1-1900 |  | Excavation for LV Cable trench Section 2 | 14d | 2026-11-05 A | 2026-12-23 | SDR-ST-CON-P1-1360 FS+2d | 30% | 10d | 2026-09-15 | 2026-10-01 | -36d | 0d | SIC- Cost [5106]; Electrical Forman [142.43 h]; Electrical Technician [142.43 h]; Electrical Helper [142.43 h]; Labor [142.43 h]; Excavator [20.63 h]; Excavator Operator [142.43 h] | 5,106 | 1,531.8 | 107.85 | -70 | B2.31 23 00.01 | M3 | P1-S.L |
| SDR-ST-CON-P1-2400 |  | Excavation for LV Cable trench Section 3 | 14d | 2026-11-05 A | 2027-01-04 | SDR-ST-CON-P1-1900 | 30% | 10d | 2026-10-03 | 2026-10-18 | -36d | 0d | SIC- Cost [5106]; Electrical Forman [142.43 h]; Electrical Technician [142.43 h]; Electrical Helper [142.43 h]; Labor [142.43 h]; Excavator [15 h]; Excavator Operator [142.43 h] | 5,106 | 1,531.8 | 107.85 | -70 | B2.31 23 00.02 | M3 | P1-S.L |
|  | 11 | **Install Footings** |  | 2027-01-05 | 2027-01-20 |  |  |  |  |  |  |  |  |  |  |  |  |  |  |  |
| SDR-ST-CON-P1-2840 |  | Install Footings | 14d | 2027-01-05 | 2027-01-20 | SDR-ST-CON-P1-2400 |  |  |  |  | -36d | 0d | SIC- Cost [15318]; Electrical Forman [142.43 h]; Electrical Technician [142.43 h]; Electrical Helper [142.43 h]; Labor [142.43 h] | 15,318 |  | 20 | -100 | B2.33 71 00 01.01 | Number | P1-S.L |
|  | 12 | **Backfilling** |  | 2027-01-21 | 2027-02-06 |  |  |  |  |  |  |  |  |  |  |  |  |  |  |  |
| SDR-ST-CON-P1-3470 |  | Backfilling over LV Cables of Street lighting | 14d | 2027-01-21 | 2027-02-06 | SDR-ST-CON-P1-2840 |  |  |  |  | -36d | 0d | SIC- Cost [15318]; Electrical Forman [142.43 h]; Electrical Technician [142.43 h]; Electrical Helper [142.43 h]; Labor [142.43 h]; Excavator [15 h]; Excavator Operator [142.43 h] | 15,318 |  | 323 | -71.4285714285714 | B2.31 23 00.01 | M3 | P1-S.L |
|  | 13 | **Install pole** |  | 2027-02-07 | 2027-03-15 |  |  |  |  |  |  |  |  |  |  |  |  |  |  |  |
| SDR-ST-CON-P1-4080 |  | Install Pole Part 1 | 13d | 2027-02-07 | 2027-02-21 | SDR-ST-CON-P1-3470 |  |  |  |  | -36d | 0d | SIC- Cost [53613]; Electrical Forman [39.97 h]; Electrical Technician [39.97 h]; Electrical Helper [39.97 h]; Labor [39.97 h] | 53,612.98 |  | 10 | 0 | B2.33 71 16.01 | Number | P1-S.L |
| SDR-ST-CON-P1-4610 |  | Install Pole Part 2 | 14d | 2027-02-23 | 2027-03-15 | SDR-ST-CON-P1-4080 |  |  |  |  | -36d | 8d | SIC- Cost [53613]; Electrical Forman [142.43 h]; Electrical Technician [142.43 h]; Electrical Helper [142.43 h]; Labor [142.43 h] | 53,612.98 |  | 10 | 0 | B2.33 71 16.01 | Number | P1-S.L |
|  | 1 | **Road Crossing & Drawpits** |  | 2026-08-15 | 2026-11-10 |  |  |  |  |  |  |  |  |  |  |  |  |  |  |  |
|  | 2 | **ROAD - 02** |  | 2026-08-15 | 2026-11-10 |  |  |  |  |  |  |  |  |  |  |  |  |  |  |  |
|  | 1 | **ROAD-01 From 0 to 400 m (9) 2 Way 110 mm** |  | 2026-08-15 | 2026-10-31 |  |  |  |  |  |  |  |  |  |  |  |  |  |  |  |
|  | 1 | **Road crossing Ducts & Drawpits** |  | 2026-08-15 | 2026-10-31 |  |  |  |  |  |  |  |  |  |  |  |  |  |  |  |
|  | 1 | **Excavation** |  | 2026-08-15 | 2026-10-11 |  |  |  |  |  |  |  |  |  |  |  |  |  |  |  |
| SDR-ST-CON-P1-1320 |  | Excavation for GRP Pipes Section 1 | 21d | 2026-08-15 A | 2026-10-11 A | SDR-ST-CON-P1-1310 SS | 100% |  | 2026-08-15 | 2026-09-07 |  |  | SIC- Cost [2160.34]; Labor [37.98 h]; Excavator [42.61 h]; Excavator Operator [142.43 h] | 2,160.34 | 2,160.34 | 20 | 0 |  | M | P1-S.L |
|  | 7 | **bedding Works** |  | 2026-09-08 | 2026-10-11 |  |  |  |  |  |  |  |  |  |  |  |  |  |  |  |
| SDR-ST-CON-P1-1950 |  | Sand bedding for GRP Pipes | 18d | 2026-09-08 A | 2026-10-11 A | SDR-ST-CON-P1-1320 | 100% |  | 2026-09-08 | 2026-09-29 |  |  | SIC- Cost [540.09]; Labor [37.98 h]; Excavator [20 h]; Excavator Operator [142.43 h]; Loader [114.96 h] | 540.09 | 540.09 | 20 | 0 |  | M | P1-S.L |
|  | 2 | **Pipes Laying** |  | 2026-09-30 | 2026-10-13 |  |  |  |  |  |  |  |  |  |  |  |  |  |  |  |
| SDR-ST-CON-P1-2560 |  | Install ST GRP Pipes | 16d | 2026-09-30 A | 2026-10-13 A | SDR-ST-CON-P1-1950 | 100% |  | 2026-09-30 | 2026-10-18 |  |  | Pipe Fitter [142.43 h]; SIC- Cost [4860.77]; Labor [37.98 h] | 4,860.77 | 4,860.77 | 20 | 0 |  | M | P1-S.L |
|  | 6 | **Testing** |  | 2026-10-01 | 2026-10-15 |  |  |  |  |  |  |  |  |  |  |  |  |  |  |  |
| SDR-ST-CON-P1-3200 |  | Testing ST GRP Pipes | 12d | 2026-10-01 A | 2026-10-15 A | SDR-ST-CON-P1-2560 | 100% |  | 2026-11-29 | 2026-12-12 |  |  | Pipe Fitter [142.43 h]; SIC- Cost [1080.17]; Labor [142.43 h] | 1,080.17 |  | 20 | 0 |  | M | P1-S.L |

| ID | WBS | Activity | Duration | Start | Finish | Predecessors | Complete | Planned start | Planned finish | Resources | Cost | Actual cost | BOQ Qty | Variance | UOM | Activities Codes Sudair Station |
| --- | --- | --- | --- | --- | --- | --- | --- | --- | --- | --- | --- | --- | --- | --- | --- | --- |
|  | 3 | **Backfilling** |  | 2026-10-15 | 2026-10-31 |  |  |  |  |  |  |  |  |  |  |  |
| SDR-ST-CON-P1-3700 |  | Backfilling ST GRP Pipes | 11d | 2026-10-15 A | 2026-10-31 A | SDR-ST-CON-P1-3200 | 100% | 2026-11-29 | 2026-12-10 | SIC- Cost [2160.34]; Labor [142.43 h]; Excavator [15 h]; Excavator Operator [142.43 h] | 2,160.34 |  | 20 | 0 | M | P1-S.L |
|  | 2 | **ROAD-01 From 400 to 900 m (10) 4 Way 110 mm** |  | 2026-10-22 | 2026-11-08 |  |  |  |  |  |  |  |  |  |  |  |
|  | 1 | **Road crossing Ducts & Drawpits** |  | 2026-10-22 | 2026-11-08 |  |  |  |  |  |  |  |  |  |  |  |
|  | 1 | **Excavation** |  | 2026-10-22 | 2026-11-07 |  |  |  |  |  |  |  |  |  |  |  |
| SDR-ST-CON-P1-1270 |  | Excavation for GRP Pipes Section 1 | 21d | 2026-10-22 A | 2026-11-07 A | SDR-ST-CON-P1-1260 SS | 100% | 2026-08-13 | 2026-09-06 | SIC- Cost [2160.34]; Labor [142.43 h]; Excavator [76.85 h]; Excavator Operator [142.43 h] | 2,160.34 | 2,160.34 | 20 | 0 | M | P1-S.L |
|  | 7 | **bedding Works** |  | 2026-10-22 | 2026-11-07 |  |  |  |  |  |  |  |  |  |  |  |
| SDR-ST-CON-P1-1870 |  | Sand bedding for GRP Pipes | 17d | 2026-10-22 A | 2026-11-07 A | SDR-ST-CON-P1-1270 | 100% | 2026-09-07 | 2026-09-27 | SIC- Cost [540.09]; Labor [37.98 h]; Excavator [20 h]; Excavator Operator [142.43 h]; Loader [132.54 h] | 540.09 | 540.09 | 20 | 0 | M | P1-S.L |
|  | 2 | **Pipes Laying** |  | 2026-10-22 | 2026-11-07 |  |  |  |  |  |  |  |  |  |  |  |
| SDR-ST-CON-P1-2470 |  | Install ST GRP Pipes | 14d | 2026-10-22 A | 2026-11-07 A | SDR-ST-CON-P1-1870 | 100% | 2026-09-28 | 2026-10-13 | Pipe Fitter [142.43 h]; SIC- Cost [4860.77]; Labor [37.98 h] | 4,860.77 | 4,860.77 | 20 | 0 | M | P1-S.L |
|  | 6 | **Testing** |  | 2026-10-22 | 2026-11-07 |  |  |  |  |  |  |  |  |  |  |  |
| SDR-ST-CON-P1-2970 |  | Testing ST GRP Pipes | 9d | 2026-10-22 A | 2026-11-07 A | SDR-ST-CON-P1-2470 | 100% | 2026-11-29 | 2026-12-08 | Pipe Fitter [142.43 h]; SIC- Cost [1080.17]; Labor [37.98 h] | 1,080.17 |  | 20 | 0 | M | P1-S.L |
|  | 3 | **Backfilling** |  | 2026-10-30 | 2026-11-08 |  |  |  |  |  |  |  |  |  |  |  |
| SDR-ST-CON-P1-3360 |  | Backfilling ST GRP Pipes | 14d | 2026-10-30 A | 2026-11-08 A | SDR-ST-CON-P1-2970 | 100% | 2026-11-29 | 2026-12-14 | SIC- Cost [2160.34]; Labor [37.98 h]; Excavator [15 h]; Excavator Operator [142.43 h] | 2,160.34 |  | 20 | 0 | M | P1-S.L |
|  | 3 | **ROAD-01 From 900 to 1239 m (11) 2 Way 110 mm** |  | 2026-10-22 | 2026-11-10 |  |  |  |  |  |  |  |  |  |  |  |
|  | 1 | **Road crossing Ducts & Drawpits** |  | 2026-10-22 | 2026-11-10 |  |  |  |  |  |  |  |  |  |  |  |
|  | 1 | **Excavation** |  | 2026-10-22 | 2026-11-07 |  |  |  |  |  |  |  |  |  |  |  |
| SDR-ST-CON-P1-1370 |  | Excavation for GRP Pipes Section 1 | 21d | 2026-10-22 A | 2026-11-07 A | SDR-ST-CON-P1-1360 SS | 100% | 2026-08-27 | 2026-09-20 | SIC- Cost [2160.34]; Labor [37.98 h]; Excavator [15 h]; Excavator Operator [142.43 h] | 2,160.34 | 2,160.34 | 20 | 0 | M | P1-S.L |
|  | 7 | **bedding Works** |  | 2026-10-22 | 2026-11-06 |  |  |  |  |  |  |  |  |  |  |  |
| SDR-ST-CON-P1-2060 |  | Sand bedding for GRP Pipes | 15d | 2026-10-22 A | 2026-11-06 A | SDR-ST-CON-P1-1370 | 100% | 2026-09-21 | 2026-10-08 | SIC- Cost [540.09]; Labor [37.98 h]; Excavator [20 h]; Excavator Operator [142.43 h]; Loader [96.77 h] | 540.09 | 540.09 | 20 | 0 | M | P1-S.L |
|  | 2 | **Pipes Laying** |  | 2026-10-29 | 2026-11-07 |  |  |  |  |  |  |  |  |  |  |  |
| SDR-ST-CON-P1-2600 |  | Install ST GRP Pipes | 14d | 2026-10-29 A | 2026-11-07 A | SDR-ST-CON-P1-2060 | 100% | 2026-10-10 | 2026-10-25 | Pipe Fitter [142.43 h]; SIC- Cost [4860.77]; Labor [37.98 h] | 4,860.77 | 4,860.77 | 20 | 0 | M | P1-S.L |
|  | 6 | **Testing** |  | 2026-10-29 | 2026-11-09 |  |  |  |  |  |  |  |  |  |  |  |
| SDR-ST-CON-P1-3110 |  | Testing ST GRP Pipes | 8d | 2026-10-29 A | 2026-11-09 A | SDR-ST-CON-P1-2600 | 100% | 2026-11-29 | 2026-12-07 | Pipe Fitter [142.43 h]; SIC- Cost [1080.17]; Labor [37.98 h] | 1,080.17 |  | 20 | 0 | M | P1-S.L |

| ID | WBS | Activity | Duration | Start | Finish | Predecessors | Complete | Planned start | Planned finish | Total float | Free float | Resources | Cost | BOQ Qty | Variance | UOM | Activities Codes Sudair Station |
| --- | --- | --- | --- | --- | --- | --- | --- | --- | --- | --- | --- | --- | --- | --- | --- | --- | --- |
|  | 3 | **Backfilling** |  | 2026-10-30 | 2026-11-10 |  |  |  |  |  |  |  |  |  |  |  |  |
| SDR-ST-CON-P1-3480 |  | Backfilling ST GRP Pipes | 12d | 2026-10-30 A | 2026-11-10 A | SDR-ST-CON-P1-3110 | 100% | 2026-11-29 | 2026-12-12 |  |  | SIC- Cost [2160.34]; Labor [37.98 h]; Excavator [15 h]; Excavator Operator [142.43 h] | 2,160.34 | 20 | 16.6666666666667 | M | P1-S.L |
|  | 11 | **Ring Main Unit** |  | 2027-07-03 | 2027-11-16 |  |  |  |  |  |  |  |  |  |  |  |  |
|  | 1 | **Leveling** |  | 2027-07-03 | 2027-07-25 |  |  |  |  |  |  |  |  |  |  |  |  |
| SDR-ST-CON-P1-5810 |  | Ring Main Unit leveling | 20d | 2027-07-03 | 2027-07-25 | SDR-ST-CON-P1-4000, SDR-ST-CON-P1-5760 FS+25d |  |  |  | -72d | 0d | SIC- Cost [5534.7]; Electrical Forman [142.43 h]; Electrical Technician [142.43 h]; Electrical Helper [142.43 h]; Labor [142.43 h] | 5,534.7 | 1 | 0 | Number | P1-S.L |
|  | 2 | **Lean Concrete** |  | 2027-09-20 | 2027-10-12 |  |  |  |  |  |  |  |  |  |  |  |  |
| SDR-ST-CON-P1-5850 |  | Ring Main Unit Lean Concrete | 20d | 2027-09-20 | 2027-10-12 | SDR-ST-CON-P1-5390, SDR-ST-CON-P1-5810 |  |  |  | -111d | 0d | SIC- Cost [11069.4]; Electrical Forman [142.43 h]; Electrical Technician [142.43 h]; Electrical Helper [142.43 h]; Labor [142.43 h] | 11,069.41 | 1 | 0 | Number | P1-S.L |
|  | 3 | **Installation** |  | 2027-10-25 | 2027-11-16 |  |  |  |  |  |  |  |  |  |  |  |  |
| SDR-ST-CON-P1-5970 |  | Ring Main Unit installation for Street Lighting | 20d | 2027-10-25 | 2027-11-16 | SDR-ST-CON-P1-5850 FS+10d |  |  |  | -111d | 8d | SIC- Cost [38742.9]; Electrical Forman [142.43 h]; Electrical Technician [142.43 h]; Electrical Helper [142.43 h]; Labor [142.43 h] | 38,742.93 | 1 | 0 | Number | P1-S.L |
|  | 12 | **Feeder Pillars** |  | 2027-07-03 | 2027-09-26 |  |  |  |  |  |  |  |  |  |  |  |  |
|  | 1 | **Leveling** |  | 2027-07-03 | 2027-07-25 |  |  |  |  |  |  |  |  |  |  |  |  |
| SDR-ST-CON-P1-5820 |  | Feeder Pillars Leveling | 20d | 2027-07-03 | 2027-07-25 | SDR-ST-CON-P1-5810 SS |  |  |  | -72d | 0d | SIC- Cost [1209.3]; Electrical Forman [142.43 h]; Electrical Technician [142.43 h]; Electrical Helper [142.43 h]; Labor [142.43 h] | 1,209.3 | 1 | 0 | Number | P1-S.L |
|  | 2 | **Lean Concrete** |  | 2027-07-26 | 2027-08-16 |  |  |  |  |  |  |  |  |  |  |  |  |
| SDR-ST-CON-P1-5860 |  | Feeder Pillars Lean Concrete | 20d | 2027-07-26 | 2027-08-16 | SDR-ST-CON-P1-5820 |  |  |  | -70d | 0d | SIC- Cost [2418.6]; Electrical Forman [142.43 h]; Electrical Technician [142.43 h]; Electrical Helper [142.43 h]; Labor [142.43 h] | 2,418.6 | 1 | 0 | Number | P1-S.L |
|  | 3 | **Installation** |  | 2027-09-04 | 2027-09-26 |  |  |  |  |  |  |  |  |  |  |  |  |
| SDR-ST-CON-P1-5980 |  | Feeder Pillars Installation | 20d | 2027-09-04 | 2027-09-26 | SDR-ST-CON-P1-5860 FS+15d |  |  |  | -70d | 30d | SIC- Cost [8465.11]; Electrical Forman [142.43 h]; Electrical Technician [142.43 h]; Electrical Helper [142.43 h]; Labor [142.43 h] | 8,465.11 | 1 | 0 | Number | P1-S.L |
|  | 13 | **KWH Frame** |  | 2027-07-04 | 2027-10-28 |  |  |  |  |  |  |  |  |  |  |  |  |
|  | 1 | **Leveling** |  | 2027-07-04 | 2027-07-26 |  |  |  |  |  |  |  |  |  |  |  |  |
| SDR-ST-CON-P1-5830 |  | KWH meter mounting frame Leveling | 20d | 2027-07-04 | 2027-07-26 | SDR-ST-CON-P1-5820 SS+1d |  |  |  | -72d | 0d | SIC- Cost [720.9]; Electrical Forman [142.43 h]; Electrical Technician [142.43 h]; Electrical Helper [142.43 h]; Labor [142.43 h] | 720.9 | 1 | 0 | Number | P1-S.L |
|  | 2 | **Lean Concrete** |  | 2027-09-13 | 2027-10-05 |  |  |  |  |  |  |  |  |  |  |  |  |
| SDR-ST-CON-P1-5870 |  | KWH meter mounting frame Lean Concrete | 20d | 2027-09-13 | 2027-10-05 | SDR-ST-CON-P1-5460, SDR-ST-CON-P1-5830 |  |  |  | -95d | 0d | SIC- Cost [1441.8]; Electrical Forman [142.43 h]; Electrical Technician [142.43 h]; Electrical Helper [142.43 h]; Labor [142.43 h] | 1,441.8 | 1 | 0 | Number | P1-S.L |
|  | 3 | **Installation** |  | 2027-10-06 | 2027-10-28 |  |  |  |  |  |  |  |  |  |  |  |  |
| SDR-ST-CON-P1-5910 |  | KWH meter mounting frame installation | 20d | 2027-10-06 | 2027-10-28 | SDR-ST-CON-P1-5870 |  |  |  | -95d | 24d | SIC- Cost [5046.3]; Electrical Forman [142.43 h]; Electrical Technician [142.43 h]; Electrical Helper [142.43 h]; Labor [142.43 h] | 5,046.3 | 1 | 0 | Number | P1-S.L |
|  | 14 | **Street Lighting Sub-station** |  | 2027-07-27 | 2027-11-18 |  |  |  |  |  |  |  |  |  |  |  |  |
|  | 1 | **Leveling** |  | 2027-07-27 | 2027-08-17 |  |  |  |  |  |  |  |  |  |  |  |  |
| SDR-ST-CON-P1-5900 |  | Unit Substation Leveling | 20d | 2027-07-27 | 2027-08-17 | SDR-ST-CON-P1-5830, SDR-ST-PRO-MS-1250 |  |  |  | -72d | 33d | SIC- Cost [8108.51]; Electrical Forman [142.43 h]; Electrical Technician [142.43 h]; Electrical Helper [142.43 h]; Labor [48.17 h] | 8,108.51 | 1 | 0 | Number | P1-S.L |

| ID | WBS | Activity | Duration | Start | Finish | Predecessors | Complete | Remaining | Planned start | Planned finish | Total float | Free float | Resources | Cost | Actual cost | BOQ Qty | Variance | UOM | Activities Codes Sudair Station | BOQ Line item |
| --- | --- | --- | --- | --- | --- | --- | --- | --- | --- | --- | --- | --- | --- | --- | --- | --- | --- | --- | --- | --- |
|  | 2 | **Lean Concrete** |  | 2027-10-07 | 2027-10-30 |  |  |  |  |  |  |  |  |  |  |  |  |  |  |  |
| SDR-ST-CON-P1-5990 |  | Unit Substation Lean Concrete | 20d | 2027-10-07 | 2027-10-30 | SDR-ST-CO-1010, SDR-ST-CON-P1-5900 |  |  |  |  | -102d | 0d | SIC- Cost [16217]; Electrical Forman [142.43 h]; Electrical Technician [2033.59 h]; Electrical Helper [2033.59 h]; Labor [2033.59 h] | 16,217.01 |  | 1 | 0 | Number | P1-S.L |  |
|  | 3 | **Installation** |  | 2027-10-31 | 2027-11-18 |  |  |  |  |  |  |  |  |  |  |  |  |  |  |  |
| SDR-ST-CON-P1-6030 |  | Unit Substation Install for Street Lighting | 17d | 2027-10-31 | 2027-11-18 | SDR-ST-CON-P1-5990 |  |  |  |  | -102d | 16d | SIC- Cost [56759.6]; Electrical Forman [142.43 h]; Electrical Technician [142.43 h]; Electrical Helper [142.43 h]; Labor [142.43 h] | 56,759.55 |  | 1 | 0 | Number | P1-S.L |  |
|  | 5 | **TELECOMMUNICATIONS WORKS** |  | 2026-08-13 | 2027-04-24 |  |  |  |  |  |  |  |  |  |  |  |  |  |  |  |
|  | 3 | **ROAD - 01** |  | 2026-08-15 | 2027-03-07 |  |  |  |  |  |  |  |  |  |  |  |  |  |  |  |
|  | 4 | **ROAD-01 N 1 (2X3)X50 mm MH-15 to MH-16** |  | 2026-08-27 | 2027-03-04 |  |  |  |  |  |  |  |  |  |  |  |  |  |  |  |
|  | 3 | **Ducts** |  | 2026-11-04 | 2027-03-04 |  |  |  |  |  |  |  |  |  |  |  |  |  |  |  |
|  | 2 | **Excavation** |  | 2026-11-04 | 2026-12-29 |  |  |  |  |  |  |  |  |  |  |  |  |  |  |  |
| SDR-ST-CON-P1-1690 |  | Excavation for telecom trench Section 1 | 21d | 2026-11-04 A | 2026-12-14 | SDR-ST-CON-P1-1700 SS | 40% | 14d | 2026-08-27 | 2026-09-20 | -48d | 0d | SIC- Cost [2028.61]; Excavator [31.46 h]; Excavator Operator [142.43 h] | 2,028.61 | 608.58 | 125 | -60 | M3 | P1-Tele | B2.1.33 81 26.01 |
| SDR-ST-CON-P1-2340 |  | Excavation for telecom trench Section 2 | 21d | 2026-11-04 A | 2026-12-29 | SDR-ST-CON-P1-1690 | 40% | 13d | 2026-09-21 | 2026-10-15 | -48d | 0d | SIC- Cost [2028.61]; Excavator [15 h]; Excavator Operator [142.43 h] | 2,028.61 | 608.58 | 125 | -60 | M3 | P1-Tele | B2.1.33 81 26.02 |
|  | 5 | **Pipe laying** |  | 2026-11-07 | 2027-01-14 |  |  |  |  |  |  |  |  |  |  |  |  |  |  |  |
| SDR-ST-CON-P1-3070 |  | HDPE Pipes for Telecom Installation | 20d | 2026-11-07 A | 2027-01-14 | SDR-ST-CON-P1-2340 | 25% | 14d | 2026-10-17 | 2026-11-08 | -48d | 0d | SIC- Cost [8114.47]; Electrical Forman [37.98 h]; Electrical Technician [135.31 h]; Electrical Helper [135.31 h] | 8,114.47 | 2,028.62 | 535 | -75 |  | P1-Tele | B2.1.33 81 26.03 |
|  | 6 | **Backfilling** |  | 2027-01-16 | 2027-02-07 |  |  |  |  |  |  |  |  |  |  |  |  |  |  |  |
| SDR-ST-CON-P1-3680 |  | Backfilling over HDPE Telecom Pipes | 20d | 2027-01-16 | 2027-02-07 | SDR-ST-CON-P1-3070 |  |  |  |  | -48d | 0d | SIC- Cost [4057.23]; Excavator [15 h]; Excavator Operator [128.18 h] | 4,057.23 |  | 535 | -30 |  | P1-Tele | B2.1.33 81 26.07 |
|  | 7 | **Pulling Cable** |  | 2027-02-08 | 2027-03-04 |  |  |  |  |  |  |  |  |  |  |  |  |  |  |  |
| SDR-ST-CON-P1-4310 |  | Pulling Cable | 21d | 2027-02-08 | 2027-03-04 | SDR-ST-CON-P1-3680 |  |  |  |  | -48d | 0d | SIC- Cost [24343.4]; Electrical Forman [128.18 h]; Electrical Technician [128.18 h]; Electrical Helper [128.18 h] | 24,343.4 |  | 535 | 0 |  | P1-Tele | B2.1.33 81 26.06 |
|  | 4 | **Manholes** |  | 2026-08-27 | 2027-01-12 |  |  |  |  |  |  |  |  |  |  |  |  |  |  |  |
|  | 1 | **Excavation** |  | 2026-08-27 | 2026-10-06 |  |  |  |  |  |  |  |  |  |  |  |  |  |  |  |
| SDR-ST-CON-P1-1680 |  | Excavation for Telecom Manhole Section 1 | 21d | 2026-08-27 A | 2026-10-03 A | SDR-ST-CON-P1-1690 SS | 100% |  | 2026-08-27 | 2026-09-20 |  |  | SIC- Cost [1012.67]; Excavator [30 h]; Excavator Operator [128.18 h] | 1,012.67 | 1,012.67 | 3 | 0 | M3 | P1-Tele | B2.1.33 81 26.03 |
| SDR-ST-CON-P1-2370 |  | Excavation for Telecom Manhole Section 2 | 21d | 2026-10-04 A | 2026-10-06 A | SDR-ST-CON-P1-1680 | 100% |  | 2026-09-21 | 2026-10-15 |  |  | SIC- Cost [1012.67]; Excavator [15 h]; Excavator Operator [128.18 h] | 1,012.67 | 1,012.67 | 3 | 0 | M3 | P1-Tele | B2.1.33 81 26.04 |
|  | 2 | **Bedding Work** |  | 2026-09-24 | 2026-10-15 |  |  |  |  |  |  |  |  |  |  |  |  |  |  |  |
| SDR-ST-CON-P1-3080 |  | Sand bedding for Telecom Manhole | 20d | 2026-09-24 A | 2026-10-15 A | SDR-ST-CON-P1-2370 | 100% |  | 2026-10-17 | 2026-11-08 |  |  | SIC- Cost [1350.23]; Labor [37.98 h]; Excavator [25.75 h]; Excavator Operator [128.18 h] | 1,350.23 | 1,350.23 | 10 | 0 | M3 | P1-Tele | B2.1.33 81 26.05 |
|  | 3 | **Install Manholes** |  | 2026-10-05 | 2026-10-17 |  |  |  |  |  |  |  |  |  |  |  |  |  |  |  |
| SDR-ST-CON-P1-3690 |  | Installation of Telecom Manhole | 20d | 2026-10-05 A | 2026-10-17 A | SDR-ST-CON-P1-1680, SDR-ST-CON-P1-3080 | 100% |  | 2026-11-09 | 2026-12-01 |  |  | SIC- Cost [6076.04]; Electrical Forman [128.18 h]; Electrical Technician [128.18 h]; Electrical Helper [128.18 h] | 6,076.04 | 6,076.04 | 2 | 70 | Number | P1-Tele | B2.1.33 81 26.06 |

| ID | WBS | Activity | Duration | Start | Finish | Predecessors | Complete | Remaining | Planned start | Planned finish | Total float | Free float | Resources | Cost | Actual cost | BOQ Qty | Variance | BOQ Line item | UOM | Activities Codes Sudair Station |
| --- | --- | --- | --- | --- | --- | --- | --- | --- | --- | --- | --- | --- | --- | --- | --- | --- | --- | --- | --- | --- |
|  | 4 | **Testting** |  | 2026-11-29 | 2026-12-21 |  |  |  |  |  |  |  |  |  |  |  |  |  |  |  |
| SDR-ST-CON-P1-4360 |  | Telecom Manhole finishing works | 20d | 2026-11-29 | 2026-12-21 | SDR-ST-CON-P1-3690 |  |  |  |  | 30d | 0d | SIC- Cost [1350.23]; Electrical Forman [128.18 h]; Electrical Technician [128.18 h]; Electrical Helper [128.18 h] | 1,350.23 |  | 2 | 0 | B2.1.33 81 26.07 | Number | P1-Tele |
|  | 5 | **Backfilling** |  | 2026-12-22 | 2027-01-12 |  |  |  |  |  |  |  |  |  |  |  |  |  |  |  |
| SDR-ST-CON-P1-4880 |  | Backfilling over Telecom Manhole | 19d | 2026-12-22 | 2027-01-12 | SDR-ST-CON-P1-4360 |  |  |  |  | 30d | 27d | SIC- Cost [2700.46]; Excavator [60 h]; Excavator Operator [128.18 h] | 2,700.46 |  | 10 | 0 | B2.1.33 81 26.08 | M3 | P1-Tele |
|  | 2 | **ROAD-01 From 0 to 470 m (3) (2X3)X50 mm MH-12 to MH-14** |  | 2026-08-20 | 2027-02-16 |  |  |  |  |  |  |  |  |  |  |  |  |  |  |  |
|  | 3 | **Ducts** |  | 2026-08-20 | 2027-01-28 |  |  |  |  |  |  |  |  |  |  |  |  |  |  |  |
|  | 2 | **Excavation** |  | 2026-08-20 | 2026-11-05 |  |  |  |  |  |  |  |  |  |  |  |  |  |  |  |
| SDR-ST-CON-P1-1530 |  | Excavation for telecom trench Section 1 | 21d | 2026-08-20 A | 2026-08-31 A | SDR-ST-CON-P1-1500 SS | 100% |  | 2026-08-27 | 2026-09-20 |  |  | SIC- Cost [2028.61]; Excavator [15 h]; Excavator Operator [128.18 h] | 2,028.61 | 2,028.61 | 125 | 0 | B2.1.33 81 26.01 | M3 | P1-Tele |
| SDR-ST-CON-P1-2190 |  | Excavation for telecom trench Section 2 | 21d | 2026-10-19 A | 2026-11-05 A | SDR-ST-CON-P1-1530 | 100% |  | 2026-09-21 | 2026-10-15 |  |  | SIC- Cost [2028.61]; Excavator [18.51 h]; Excavator Operator [128.18 h] | 2,028.61 | 2,028.61 | 125 | 0 | B2.1.33 81 26.02 | M3 | P1-Tele |
|  | 5 | **Pipe laying** |  | 2026-11-01 | 2026-12-10 |  |  |  |  |  |  |  |  |  |  |  |  |  |  |  |
| SDR-ST-CON-P1-2940 |  | HDPE Pipes for Telecom Installation | 21d | 2026-11-01 A | 2026-12-10 | SDR-ST-CON-P1-2190 | 50% | 11d | 2026-10-17 | 2026-11-09 | -16d | 0d | SIC- Cost [8114.47]; Electrical Forman [37.98 h]; Electrical Technician [128.18 h]; Electrical Helper [128.18 h] | 8,114.47 | 4,057.24 | 535 | -50 | B2.1.33 81 26.03 |  | P1-Tele |
|  | 6 | **Backfilling** |  | 2026-12-12 | 2027-01-04 |  |  |  |  |  |  |  |  |  |  |  |  |  |  |  |
| SDR-ST-CON-P1-3770 |  | Backfilling over HDPE Telecom Pipes | 21d | 2026-12-12 | 2027-01-04 | SDR-ST-CON-P1-2940 |  |  |  |  | -16d | 0d | SIC- Cost [4057.23]; Excavator [22.5 h]; Excavator Operator [128.18 h] | 4,057.23 |  | 535 | -23.8095238095238 | B2.1.33 81 26.07 |  | P1-Tele |
|  | 7 | **Pulling Cable** |  | 2027-01-05 | 2027-01-28 |  |  |  |  |  |  |  |  |  |  |  |  |  |  |  |
| SDR-ST-CON-P1-4370 |  | Pulling Cable | 21d | 2027-01-05 | 2027-01-28 | SDR-ST-CON-P1-3770 |  |  |  |  | -16d | 0d | SIC- Cost [24343.4]; Electrical Forman [128.18 h]; Electrical Technician [128.18 h]; Electrical Helper [128.18 h] | 24,343.4 |  | 535 | 0 | B2.1.33 81 26.06 |  | P1-Tele |
|  | 4 | **Manholes** |  | 2026-08-27 | 2027-02-16 |  |  |  |  |  |  |  |  |  |  |  |  |  |  |  |
|  | 1 | **Excavation** |  | 2026-08-27 | 2026-11-04 |  |  |  |  |  |  |  |  |  |  |  |  |  |  |  |
| SDR-ST-CON-P1-1520 |  | Excavation for Telecom Manhole Section 1 | 21d | 2026-08-27 A | 2026-10-01 A | SDR-ST-CON-P1-1530 SS | 100% |  | 2026-08-27 | 2026-09-20 |  |  | SIC- Cost [1012.67]; Excavator [15 h]; Excavator Operator [128.18 h] | 1,012.67 | 1,012.67 | 3 | 0 | B2.1.33 81 26.03 | M3 | P1-Tele |
| SDR-ST-CON-P1-2200 |  | Excavation for Telecom Manhole Section 2 | 21d | 2026-10-05 A | 2026-11-04 A | SDR-ST-CON-P1-1520 | 100% |  | 2026-09-21 | 2026-10-15 |  |  | SIC- Cost [1012.67]; Excavator [17.63 h]; Excavator Operator [128.18 h] | 1,012.67 | 1,012.67 | 3 | 0 | B2.1.33 81 26.04 | M3 | P1-Tele |
|  | 2 | **Bedding Work** |  | 2026-10-07 | 2026-11-05 |  |  |  |  |  |  |  |  |  |  |  |  |  |  |  |
| SDR-ST-CON-P1-2950 |  | Sand bedding for Telecom Manhole | 19d | 2026-10-07 A | 2026-11-05 A | SDR-ST-PRO-MS-1010, SDR-ST-CON-P1-2200 | 100% |  | 2026-10-17 | 2026-11-07 |  |  | SIC- Cost [1350.23]; Labor [37.98 h]; Excavator [30 h]; Excavator Operator [128.18 h] | 1,350.23 | 1,350.23 | 10 | 0 | B2.1.33 81 26.05 | M3 | P1-Tele |
|  | 3 | **Install Manholes** |  | 2026-10-13 | 2026-11-04 |  |  |  |  |  |  |  |  |  |  |  |  |  |  |  |
| SDR-ST-CON-P1-3780 |  | Installation of Telecom Manhole | 20d | 2026-10-13 A | 2026-11-04 A | SDR-ST-CON-P1-1520, SDR-ST-CON-P1-2950 | 100% |  | 2026-11-08 | 2026-11-30 |  |  | SIC- Cost [6076.04]; Electrical Forman [128.18 h]; Electrical Technician [128.18 h]; Electrical Helper [128.18 h] | 6,076.04 | 6,076.04 | 3 | 65 | B2.1.33 81 26.06 | Number | P1-Tele |
|  | 4 | **Testting** |  | 2026-12-30 | 2027-01-23 |  |  |  |  |  |  |  |  |  |  |  |  |  |  |  |
| SDR-ST-CON-P1-4630 |  | Telecom Manhole finishing works | 21d | 2026-12-30 | 2027-01-23 | SDR-ST-CON-P1-3780 |  |  |  |  | -11d | 0d | SIC- Cost [1350.23]; Electrical Forman [99.7 h]; Electrical Technician [99.7 h]; Electrical Helper [99.7 h] | 1,350.23 |  | 3 | 0 | B2.1.33 81 26.07 | Number | P1-Tele |

| ID | WBS | Activity | Duration | Start | Finish | Predecessors | Complete | Remaining | Planned start | Planned finish | Total float | Free float | Resources | Cost | Actual cost | BOQ Qty | Variance | BOQ Line item | UOM | Activities Codes Sudair Station |
| --- | --- | --- | --- | --- | --- | --- | --- | --- | --- | --- | --- | --- | --- | --- | --- | --- | --- | --- | --- | --- |
|  | 5 | **Backfilling** |  | 2027-01-24 | 2027-02-16 |  |  |  |  |  |  |  |  |  |  |  |  |  |  |  |
| SDR-ST-CON-P1-5140 |  | Backfilling over Telecom Manhole | 21d | 2027-01-24 | 2027-02-16 | SDR-ST-CON-P1-4630 |  |  |  |  | -11d | 1d | SIC- Cost [2700.46]; Excavator [128.34 h]; Excavator Operator [128.18 h] | 2,700.46 |  | 10 | 0 | B2.1.33 81 26.08 | M3 | P1-Tele |
|  | 1 | **ROAD-01 From 470 to 1125 m (6) (2X3)X50 mm MH-10 to MH-11** |  | 2026-08-15 | 2027-02-27 |  |  |  |  |  |  |  |  |  |  |  |  |  |  |  |
|  | 3 | **Ducts** |  | 2026-08-20 | 2027-02-27 |  |  |  |  |  |  |  |  |  |  |  |  |  |  |  |
|  | 2 | **Excavation** |  | 2026-08-20 | 2026-12-17 |  |  |  |  |  |  |  |  |  |  |  |  |  |  |  |
| SDR-ST-CON-P1-1240 |  | Excavation for telecom trench Section 1 | 21d | 2026-08-20 A | 2026-08-31 A | SDR-ST-CON-P1-1180 SS+10d | 100% |  | 2026-08-15 | 2026-09-07 |  |  | SIC- Cost [2028.61]; Excavator [74.02 h]; Excavator Operator [128.18 h] | 2,028.61 | 2,028.61 | 125 | 0 | B2.1.33 81 26.01 | M3 | P1-Tele |
| SDR-ST-CON-P1-1790 |  | Excavation for telecom trench Section 2 | 21d | 2026-11-05 A | 2026-12-17 | SDR-ST-CON-P1-1240 | 30% | 17d | 2026-09-08 | 2026-10-03 | -53d | 0d | SIC- Cost [2028.61]; Excavator [20 h]; Excavator Operator [128.18 h] | 2,028.61 | 405.72 | 125 | -70 | B2.1.33 81 26.02 | M3 | P1-Tele |
|  | 5 | **Pipe laying** |  | 2026-11-07 | 2027-01-11 |  |  |  |  |  |  |  |  |  |  |  |  |  |  |  |
| SDR-ST-CON-P1-2510 |  | HDPE Pipes for Telecom Installation | 21d | 2026-11-07 A | 2027-01-11 | SDR-ST-CON-P1-1790 | 30% | 21d | 2026-12-19 | 2027-01-11 | -53d | 0d | SIC- Cost [8114.47]; Electrical Forman [37.98 h]; Electrical Technician [128.18 h]; Electrical Helper [128.18 h] | 8,114.47 |  | 535 | -70 | B2.1.33 81 26.03 |  | P1-Tele |
|  | 6 | **Backfilling** |  | 2027-01-12 | 2027-02-01 |  |  |  |  |  |  |  |  |  |  |  |  |  |  |  |
| SDR-ST-CON-P1-3230 |  | Backfilling over HDPE Telecom Pipes | 18d | 2027-01-12 | 2027-02-01 | SDR-ST-CON-P1-2510 |  |  |  |  | -53d | 0d | SIC- Cost [4057.23]; Excavator [100 h]; Excavator Operator [94.95 h] | 4,057.23 |  | 535 | -88.8888888888889 | B2.1.33 81 26.07 |  | P1-Tele |
|  | 7 | **Pulling Cable** |  | 2027-02-02 | 2027-02-27 |  |  |  |  |  |  |  |  |  |  |  |  |  |  |  |
| SDR-ST-CON-P1-4020 |  | Pulling Cable | 21d | 2027-02-02 | 2027-02-27 | SDR-ST-CON-P1-3230 |  |  |  |  | -53d | 5d | SIC- Cost [24343.4]; Electrical Forman [128.18 h]; Electrical Technician [128.18 h]; Electrical Helper [128.18 h] | 24,343.4 |  | 535 | 0 | B2.1.33 81 26.06 |  | P1-Tele |
|  | 4 | **Manholes** |  | 2026-08-15 | 2027-02-16 |  |  |  |  |  |  |  |  |  |  |  |  |  |  |  |
|  | 1 | **Excavation** |  | 2026-08-15 | 2026-10-13 |  |  |  |  |  |  |  |  |  |  |  |  |  |  |  |
| SDR-ST-CON-P1-1230 |  | Excavation for Telecom Manhole Section 1 | 21d | 2026-08-15 A | 2026-10-12 A | SDR-ST-CON-P1-1240 SS | 100% |  | 2026-08-15 | 2026-09-07 |  |  | SIC- Cost [1012.67]; Excavator [59.26 h]; Excavator Operator [128.18 h] | 1,012.67 | 1,012.67 | 3 | 0 | B2.1.33 81 26.03 | M3 | P1-Tele |
| SDR-ST-CON-P1-1800 |  | Excavation for Telecom Manhole Section 2 | 21d | 2026-09-08 A | 2026-10-13 A | SDR-ST-CON-P1-1230 | 100% |  | 2026-09-08 | 2026-10-03 |  |  | SIC- Cost [1012.67]; Excavator [20 h]; Excavator Operator [94.95 h] | 1,012.67 | 1,012.67 | 3 | 0 | B2.1.33 81 26.04 | M3 | P1-Tele |
|  | 2 | **Bedding Work** |  | 2026-10-08 | 2026-10-15 |  |  |  |  |  |  |  |  |  |  |  |  |  |  |  |
| SDR-ST-CON-P1-2520 |  | Sand bedding for Telecom Manhole | 19d | 2026-10-08 A | 2026-10-15 A | SDR-ST-PRO-MS-1010, SDR-ST-CON-P1-1800 | 100% |  | 2026-10-04 | 2026-10-25 |  |  | SIC- Cost [1350.23]; Labor [37.98 h]; Excavator [29.5 h]; Excavator Operator [37.98 h] | 1,350.23 | 1,350.23 | 10 | 0 | B2.1.33 81 26.05 | M3 | P1-Tele |
|  | 3 | **Install Manholes** |  | 2026-10-13 | 2026-10-17 |  |  |  |  |  |  |  |  |  |  |  |  |  |  |  |
| SDR-ST-CON-P1-3240 |  | Installation of Telecom Manhole | 20d | 2026-10-13 A | 2026-10-17 A | SDR-ST-CON-P1-1230, SDR-ST-CON-P1-2520 | 100% |  | 2026-10-26 | 2026-11-17 |  |  | SIC- Cost [6076.04]; Electrical Forman [37.98 h]; Electrical Technician [37.98 h]; Electrical Helper [37.98 h] | 6,076.04 | 6,076.04 | 2 | 10 | B2.1.33 81 26.06 | Number | P1-Tele |
|  | 4 | **Testting** |  | 2026-12-30 | 2027-01-23 |  |  |  |  |  |  |  |  |  |  |  |  |  |  |  |
| SDR-ST-CON-P1-4150 |  | Telecom Manhole finishing works | 21d | 2026-12-30 | 2027-01-23 | SDR-ST-CON-P1-3240 |  |  |  |  | 2d | 0d | SIC- Cost [1350.23]; Electrical Forman [99.7 h]; Electrical Technician [99.7 h]; Electrical Helper [99.7 h] | 1,350.23 |  | 2 | 0 | B2.1.33 81 26.07 | Number | P1-Tele |
|  | 5 | **Backfilling** |  | 2027-01-24 | 2027-02-16 |  |  |  |  |  |  |  |  |  |  |  |  |  |  |  |
| SDR-ST-CON-P1-4740 |  | Backfilling over Telecom Manhole | 21d | 2027-01-24 | 2027-02-16 | SDR-ST-CON-P1-4150 |  |  |  |  | 2d | 0d | SIC- Cost [2700.46]; Excavator [30 h]; Excavator Operator [128.18 h] | 2,700.46 |  | 10 | 0 | B2.1.33 81 26.08 | M3 | P1-Tele |

| ID | WBS | Activity | Duration | Start | Finish | Predecessors | Complete | Remaining | Planned start | Planned finish | Total float | Free float | Resources | Cost | Actual cost | BOQ Qty | Variance | BOQ Line item | UOM | Activities Codes Sudair Station |
| --- | --- | --- | --- | --- | --- | --- | --- | --- | --- | --- | --- | --- | --- | --- | --- | --- | --- | --- | --- | --- |
|  | 3 | **ROAD-01 From 1125 to 1765 m (7) (2X3)X50 mm MH-8 to MH-9** |  | 2026-08-20 | 2027-03-07 |  |  |  |  |  |  |  |  |  |  |  |  |  |  |  |
|  | 3 | **Ducts** |  | 2026-08-20 | 2027-03-07 |  |  |  |  |  |  |  |  |  |  |  |  |  |  |  |
|  | 2 | **Excavation** |  | 2026-08-20 | 2026-12-22 |  |  |  |  |  |  |  |  |  |  |  |  |  |  |  |
| SDR-ST-CON-P1-1620 |  | Excavation for telecom trench Section 1 | 21d | 2026-08-20 A | 2026-08-31 A | SDR-ST-CON-P1-1590 SS | 100% |  | 2026-08-27 | 2026-09-20 |  |  | SIC- Cost [2028.61]; Excavator [17.28 h]; Excavator Operator [37.98 h] | 2,028.61 | 2,028.61 | 125 | 0 | B2.1.33 81 26.01 | M3 | P1-Tele |
| SDR-ST-CON-P1-2290 |  | Excavation for telecom trench Section 2 | 21d | 2026-11-05 A | 2026-12-22 | SDR-ST-CON-P1-1620 | 30% | 21d | 2026-11-29 | 2026-12-22 | -33d | 0d | SIC- Cost [2028.61]; Excavator [15 h]; Excavator Operator [128.18 h] | 2,028.61 |  | 125 | -70 | B2.1.33 81 26.02 | M3 | P1-Tele |
|  | 5 | **Pipe laying** |  | 2026-12-23 | 2027-01-16 |  |  |  |  |  |  |  |  |  |  |  |  |  |  |  |
| SDR-ST-CON-P1-3010 |  | HDPE Pipes for Telecom Installation | 21d | 2026-12-23 | 2027-01-16 | SDR-ST-CON-P1-2290 |  |  |  |  | -33d | 0d | SIC- Cost [8114.47]; Electrical Forman [128.18 h]; Electrical Technician [128.18 h]; Electrical Helper [128.18 h] | 8,114.47 |  | 535 | -100 | B2.1.33 81 26.03 |  | P1-Tele |
|  | 6 | **Backfilling** |  | 2027-01-17 | 2027-02-09 |  |  |  |  |  |  |  |  |  |  |  |  |  |  |  |
| SDR-ST-CON-P1-3630 |  | Backfilling over HDPE Telecom Pipes | 21d | 2027-01-17 | 2027-02-09 | SDR-ST-CON-P1-3010 |  |  |  |  | -33d | 0d | SIC- Cost [4057.23]; Excavator [15 h]; Excavator Operator [37.98 h] | 4,057.23 |  | 535 | -23.8095238095238 | B2.1.33 81 26.07 |  | P1-Tele |
|  | 7 | **Pulling Cable** |  | 2027-02-10 | 2027-03-07 |  |  |  |  |  |  |  |  |  |  |  |  |  |  |  |
| SDR-ST-CON-P1-4240 |  | Pulling Cable | 21d | 2027-02-10 | 2027-03-07 | SDR-ST-CON-P1-3630 |  |  |  |  | -33d | 9d | SIC- Cost [24343.4]; Electrical Forman [128.18 h]; Electrical Technician [128.18 h]; Electrical Helper [128.18 h] | 24,343.4 |  | 535 | 0 | B2.1.33 81 26.06 |  | P1-Tele |
|  | 4 | **Manholes** |  | 2026-08-27 | 2027-01-10 |  |  |  |  |  |  |  |  |  |  |  |  |  |  |  |
|  | 1 | **Excavation** |  | 2026-08-27 | 2026-10-10 |  |  |  |  |  |  |  |  |  |  |  |  |  |  |  |
| SDR-ST-CON-P1-1610 |  | Excavation for Telecom Manhole Section 1 | 21d | 2026-08-27 A | 2026-10-04 A | SDR-ST-CON-P1-1620 SS | 100% |  | 2026-08-27 | 2026-09-20 |  |  | SIC- Cost [1012.67]; Excavator [22.94 h]; Excavator Operator [94.95 h] | 1,012.67 | 1,012.67 | 3 | 0 | B2.1.33 81 26.03 | M3 | P1-Tele |
| SDR-ST-CON-P1-2300 |  | Excavation for Telecom Manhole Section 2 | 21d | 2026-10-04 A | 2026-10-10 A | SDR-ST-CON-P1-1610 | 100% |  | 2026-09-21 | 2026-10-15 |  |  | SIC- Cost [1012.67]; Excavator [15 h]; Excavator Operator [37.98 h] | 1,012.67 | 1,012.67 | 3 | 0 | B2.1.33 81 26.04 | M3 | P1-Tele |
|  | 2 | **Bedding Work** |  | 2026-10-10 | 2026-10-14 |  |  |  |  |  |  |  |  |  |  |  |  |  |  |  |
| SDR-ST-CON-P1-3020 |  | Sand bedding for Telecom Manhole | 19d | 2026-10-10 A | 2026-10-14 A | SDR-ST-CON-P1-2300 | 100% |  | 2026-10-17 | 2026-11-07 |  |  | SIC- Cost [1350.23]; Labor [37.98 h]; Excavator [19.22 h]; Excavator Operator [37.98 h] | 1,350.23 | 1,350.23 | 10 | 0 | B2.1.33 81 26.05 | M3 | P1-Tele |
|  | 3 | **Install Manholes** |  | 2026-10-15 | 2026-10-18 |  |  |  |  |  |  |  |  |  |  |  |  |  |  |  |
| SDR-ST-CON-P1-3820 |  | Installation of Telecom Manhole | 20d | 2026-10-15 A | 2026-10-18 A | SDR-ST-CON-P1-1610, SDR-ST-CON-P1-3020 | 100% |  | 2026-11-08 | 2026-11-30 |  |  | SIC- Cost [6076.04]; Electrical Forman [39.97 h]; Electrical Technician [39.97 h]; Electrical Helper [39.97 h] | 6,076.04 | 6,076.04 | 2 | 65 | B2.1.33 81 26.06 | Number | P1-Tele |
|  | 4 | **Testting** |  | 2026-11-29 | 2026-12-19 |  |  |  |  |  |  |  |  |  |  |  |  |  |  |  |
| SDR-ST-CON-P1-4720 |  | Telecom Manhole finishing works | 18d | 2026-11-29 | 2026-12-19 | SDR-ST-CON-P1-3820 |  |  |  |  | 27d | 0d | SIC- Cost [1350.23]; Electrical Forman [99.7 h]; Electrical Technician [99.7 h]; Electrical Helper [99.7 h] | 1,350.23 |  | 2 | 0 | B2.1.33 81 26.07 | Number | P1-Tele |
|  | 5 | **Backfilling** |  | 2026-12-20 | 2027-01-10 |  |  |  |  |  |  |  |  |  |  |  |  |  |  |  |
| SDR-ST-CON-P1-5240 |  | Backfilling over Telecom Manhole | 19d | 2026-12-20 | 2027-01-10 | SDR-ST-CON-P1-4720 |  |  |  |  | 27d | 92d | SIC- Cost [2700.46]; Excavator [30 h]; Excavator Operator [128.18 h] | 2,700.46 |  | 10 | 0 | B2.1.33 81 26.08 | M3 | P1-Tele |
|  | 4 | **ROAD - 02** |  | 2026-08-13 | 2027-04-24 |  |  |  |  |  |  |  |  |  |  |  |  |  |  |  |
|  | 3 | **ROAD-01 From 0 to 400 m (9) (2X3)X50 mm MH-5 to MH-7** |  | 2026-08-15 | 2027-04-05 |  |  |  |  |  |  |  |  |  |  |  |  |  |  |  |
|  | 3 | **Ducts** |  | 2026-11-08 | 2027-04-05 |  |  |  |  |  |  |  |  |  |  |  |  |  |  |  |
|  | 2 | **Excavation** |  | 2026-11-08 | 2027-01-16 |  |  |  |  |  |  |  |  |  |  |  |  |  |  |  |
| SDR-ST-CON-P1-1960 |  | Excavation for telecom trench Section 2 | 21d | 2026-11-08 A | 2027-01-16 | SDR-ST-CON-P1-1340 | 30% | 21d | 2026-12-23 | 2027-01-16 | -81d | 0d | SIC- Cost [2028.61]; Excavator [20 h]; Excavator Operator [94.95 h] | 2,028.61 |  | 125 | -70 | B2.1.33 81 26.02 | M3 | P1-Tele |
| SDR-ST-CON-P1-1340 |  | Excavation for telecom trench Section 1 | 21d | 2026-11-09 A | 2026-12-22 | SDR-ST-CON-P1-1310 SS | 30% | 21d | 2026-11-29 | 2026-12-22 | -81d | 0d | SIC- Cost [2028.61]; Excavator [38.42 h]; Excavator Operator [128.18 h] | 2,028.61 |  | 125 | -70 | B2.1.33 81 26.01 | M3 | P1-Tele |

| ID | WBS | Activity | Duration | Start | Finish | Predecessors | Complete | Remaining | Planned start | Planned finish | Total float | Free float | Resources | Cost | Actual cost | BOQ Qty | Variance | BOQ Line item | Activities Codes Sudair Station | UOM |
| --- | --- | --- | --- | --- | --- | --- | --- | --- | --- | --- | --- | --- | --- | --- | --- | --- | --- | --- | --- | --- |
|  | 5 | **Pipe laying** |  | 2026-11-09 | 2027-02-09 |  |  |  |  |  |  |  |  |  |  |  |  |  |  |  |
| SDR-ST-CON-P1-2670 |  | HDPE Pipes for Telecom Installation | 21d | 2026-11-09 A | 2027-02-09 | SDR-ST-CON-P1-1960 | 30% | 21d | 2027-01-17 | 2027-02-09 | -81d | 0d | SIC- Cost [8114.47]; Electrical Forman [37.98 h]; Electrical Technician [128.18 h]; Electrical Helper [128.18 h] | 8,114.47 |  | 535 | -70 | B2.1.33 81 26.03 | P1-Tele |  |
|  | 6 | **Backfilling** |  | 2027-02-10 | 2027-03-07 |  |  |  |  |  |  |  |  |  |  |  |  |  |  |  |
| SDR-ST-CON-P1-3440 |  | Backfilling over HDPE Telecom Pipes | 21d | 2027-02-10 | 2027-03-07 | SDR-ST-CON-P1-2670 |  |  |  |  | -81d | 0d | SIC- Cost [4057.23]; Excavator [15 h]; Excavator Operator [37.98 h] | 4,057.23 |  | 535 | -76.1904761904762 | B2.1.33 81 26.07 | P1-Tele |  |
|  | 7 | **Pulling Cable** |  | 2027-03-08 | 2027-04-05 |  |  |  |  |  |  |  |  |  |  |  |  |  |  |  |
| SDR-ST-CON-P1-4270 |  | Pulling Cable | 21d | 2027-03-08 | 2027-04-05 | SDR-ST-CON-P1-3440 |  |  |  |  | -81d | 0d | SIC- Cost [24343.4]; Electrical Forman [128.18 h]; Electrical Technician [128.18 h]; Electrical Helper [128.18 h] | 24,343.4 |  | 535 | 0 | B2.1.33 81 26.06 | P1-Tele |  |
|  | 4 | **Manholes** |  | 2026-08-15 | 2027-01-16 |  |  |  |  |  |  |  |  |  |  |  |  |  |  |  |
|  | 1 | **Excavation** |  | 2026-08-15 | 2026-10-05 |  |  |  |  |  |  |  |  |  |  |  |  |  |  |  |
| SDR-ST-CON-P1-1330 |  | Excavation for Telecom Manhole Section 1 | 21d | 2026-08-15 A | 2026-10-04 A | SDR-ST-CON-P1-1340 SS | 100% |  | 2026-08-15 | 2026-09-07 |  |  | SIC- Cost [1012.67]; Excavator [32.56 h]; Excavator Operator [128.18 h] | 1,012.67 | 1,012.67 | 3 | 0 | B2.1.33 81 26.03 | P1-Tele | M3 |
| SDR-ST-CON-P1-1970 |  | Excavation for Telecom Manhole Section 2 | 21d | 2026-10-03 A | 2026-10-05 A | SDR-ST-CON-P1-1330 | 100% |  | 2026-09-08 | 2026-10-03 |  |  | SIC- Cost [1012.67]; Excavator [20 h]; Excavator Operator [37.98 h] | 1,012.67 | 1,012.67 | 3 | 0 | B2.1.33 81 26.04 | P1-Tele | M3 |
|  | 2 | **Bedding Work** |  | 2026-10-05 | 2026-10-10 |  |  |  |  |  |  |  |  |  |  |  |  |  |  |  |
| SDR-ST-CON-P1-2680 |  | Sand bedding for Telecom Manhole | 21d | 2026-10-05 A | 2026-10-10 A | SDR-ST-CON-P1-1970 | 100% |  | 2026-10-04 | 2026-10-27 |  |  | SIC- Cost [1350.23]; Labor [37.98 h]; Excavator [40 h]; Excavator Operator [37.98 h] | 1,350.23 | 1,350.23 | 10 | 0 | B2.1.33 81 26.05 | P1-Tele | M3 |
|  | 3 | **Install Manholes** |  | 2026-10-11 | 2026-10-15 |  |  |  |  |  |  |  |  |  |  |  |  |  |  |  |
| SDR-ST-CON-P1-3450 |  | Installation of Telecom Manhole | 20d | 2026-10-11 A | 2026-10-15 A | SDR-ST-CON-P1-1330, SDR-ST-CON-P1-2680 | 100% |  | 2026-10-28 | 2026-11-19 |  |  | SIC- Cost [6076.04]; Electrical Forman [128.18 h]; Electrical Technician [128.18 h]; Electrical Helper [128.18 h] | 6,076.04 | 6,076.04 | 3 | 20 | B2.1.33 81 26.06 | P1-Tele | Number |
|  | 4 | **Testting** |  | 2026-11-29 | 2026-12-22 |  |  |  |  |  |  |  |  |  |  |  |  |  |  |  |
| SDR-ST-CON-P1-4380 |  | Telecom Manhole finishing works | 21d | 2026-11-29 | 2026-12-22 | SDR-ST-CON-P1-3450 |  |  |  |  | 20d | 0d | SIC- Cost [1350.23]; Electrical Forman [99.7 h]; Electrical Technician [99.7 h]; Electrical Helper [99.7 h] | 1,350.23 |  | 3 | 0 | B2.1.33 81 26.07 | P1-Tele | Number |
|  | 5 | **Backfilling** |  | 2026-12-23 | 2027-01-16 |  |  |  |  |  |  |  |  |  |  |  |  |  |  |  |
| SDR-ST-CON-P1-4900 |  | Backfilling over Telecom Manhole | 21d | 2026-12-23 | 2027-01-16 | SDR-ST-CON-P1-4380 |  |  |  |  | 20d | 87d | SIC- Cost [2700.46]; Excavator [30 h]; Excavator Operator [128.18 h] | 2,700.46 |  | 10 | 0 | B2.1.33 81 26.08 | P1-Tele | M3 |
|  | 1 | **ROAD-01 From 400 to 900 m (10) (2X3)X50 mm MH-1 to MH-4** |  | 2026-08-13 | 2027-04-05 |  |  |  |  |  |  |  |  |  |  |  |  |  |  |  |
|  | 3 | **Ducts** |  | 2026-11-29 | 2027-04-05 |  |  |  |  |  |  |  |  |  |  |  |  |  |  |  |
|  | 2 | **Excavation** |  | 2026-11-29 | 2027-01-16 |  |  |  |  |  |  |  |  |  |  |  |  |  |  |  |
| SDR-ST-CON-P1-1290 |  | Excavation for telecom trench Section 1 | 21d | 2026-11-29 | 2026-12-22 | SDR-ST-CON-P1-1260 SS |  |  |  |  | -75d | 0d | SIC- Cost [2028.61]; Excavator [54.34 h]; Excavator Operator [128.18 h] | 2,028.61 |  | 125 | -100 | B2.1.33 81 26.01 | P1-Tele | M3 |
| SDR-ST-CON-P1-1880 |  | Excavation for telecom trench Section 2 | 21d | 2026-12-23 | 2027-01-16 | SDR-ST-CON-P1-1290 |  |  |  |  | -75d | 0d | SIC- Cost [2028.61]; Excavator [20 h]; Excavator Operator [94.95 h] | 2,028.61 |  | 125 | -100 | B2.1.33 81 26.02 | P1-Tele | M3 |
|  | 5 | **Pipe laying** |  | 2027-01-17 | 2027-02-09 |  |  |  |  |  |  |  |  |  |  |  |  |  |  |  |
| SDR-ST-CON-P1-2640 |  | HDPE Pipes for Telecom Installation | 21d | 2027-01-17 | 2027-02-09 | SDR-ST-CON-P1-1880 |  |  |  |  | -75d | 0d | SIC- Cost [8114.47]; Electrical Forman [37.98 h]; Electrical Technician [128.18 h]; Electrical Helper [128.18 h] | 8,114.47 |  | 535 | -100 | B2.1.33 81 26.03 | P1-Tele |  |

| ID | WBS | Activity | Duration | Start | Finish | Predecessors | Complete | Remaining | Planned start | Planned finish | Total float | Free float | Resources | Cost | Actual cost | BOQ Qty | Variance | BOQ Line item | Activities Codes Sudair Station | UOM |
| --- | --- | --- | --- | --- | --- | --- | --- | --- | --- | --- | --- | --- | --- | --- | --- | --- | --- | --- | --- | --- |
|  | 6 | **Backfilling** |  | 2027-02-10 | 2027-03-07 |  |  |  |  |  |  |  |  |  |  |  |  |  |  |  |
| SDR-ST-CON-P1-3370 |  | Backfilling over HDPE Telecom Pipes | 21d | 2027-02-10 | 2027-03-07 | SDR-ST-CON-P1-2640 |  |  |  |  | -75d | 0d | SIC- Cost [4057.23]; Excavator [15 h]; Excavator Operator [37.98 h] | 4,057.23 |  | 535 | -80.952380952381 | B2.1.33 81 26.07 | P1-Tele |  |
|  | 7 | **Pulling Cable** |  | 2027-03-08 | 2027-04-05 |  |  |  |  |  |  |  |  |  |  |  |  |  |  |  |
| SDR-ST-CON-P1-4160 |  | Pulling Cable | 21d | 2027-03-08 | 2027-04-05 | SDR-ST-CON-P1-3370 |  |  |  |  | -75d | 0d | SIC- Cost [24343.4]; Electrical Forman [128.18 h]; Electrical Technician [128.18 h]; Electrical Helper [128.18 h] | 24,343.4 |  | 535 | 0 | B2.1.33 81 26.06 | P1-Tele |  |
|  | 4 | **Manholes** |  | 2026-08-13 | 2027-01-16 |  |  |  |  |  |  |  |  |  |  |  |  |  |  |  |
|  | 1 | **Excavation** |  | 2026-08-13 | 2026-11-08 |  |  |  |  |  |  |  |  |  |  |  |  |  |  |  |
| SDR-ST-CON-P1-1280 |  | Excavation for Telecom Manhole Section 1 | 21d | 2026-08-13 A | 2026-10-08 A | SDR-ST-CON-P1-1290 SS | 100% |  | 2026-08-13 | 2026-09-06 |  |  | SIC- Cost [1012.67]; Excavator [44.51 h]; Excavator Operator [128.18 h] | 1,012.67 | 1,012.67 | 3 | 0 | B2.1.33 81 26.03 | P1-Tele | M3 |
| SDR-ST-CON-P1-1890 |  | Excavation for Telecom Manhole Section 2 | 21d | 2026-10-07 A | 2026-11-08 A | SDR-ST-CON-P1-1280 | 100% |  | 2026-09-07 | 2026-10-01 |  |  | SIC- Cost [1012.67]; Excavator [20 h]; Excavator Operator [94.95 h] | 1,012.67 | 911.4 | 3 | 0 | B2.1.33 81 26.04 | P1-Tele | M3 |
|  | 2 | **Bedding Work** |  | 2026-10-10 | 2026-11-09 |  |  |  |  |  |  |  |  |  |  |  |  |  |  |  |
| SDR-ST-CON-P1-2650 |  | Sand bedding for Telecom Manhole | 19d | 2026-10-10 A | 2026-11-09 A | SDR-ST-CON-P1-1890 | 100% |  | 2026-10-03 | 2026-10-24 |  |  | SIC- Cost [1350.23]; Labor [37.98 h]; Excavator [40 h]; Excavator Operator [37.98 h] | 1,350.23 | 1,215.21 | 10 | 0 | B2.1.33 81 26.05 | P1-Tele | M3 |
|  | 3 | **Install Manholes** |  | 2026-10-13 | 2026-11-10 |  |  |  |  |  |  |  |  |  |  |  |  |  |  |  |
| SDR-ST-CON-P1-3380 |  | Installation of Telecom Manhole | 20d | 2026-10-13 A | 2026-11-10 A | SDR-ST-CON-P1-1280, SDR-ST-CON-P1-2650 | 100% |  | 2026-10-25 | 2026-11-16 |  |  | SIC- Cost [6076.04]; Electrical Forman [37.98 h]; Electrical Technician [37.98 h]; Electrical Helper [37.98 h] | 6,076.04 | 5,468.44 | 4 | 5 | B2.1.33 81 26.06 | P1-Tele | Number |
|  | 4 | **Testting** |  | 2026-11-29 | 2026-12-22 |  |  |  |  |  |  |  |  |  |  |  |  |  |  |  |
| SDR-ST-CON-P1-4280 |  | Telecom Manhole finishing works | 21d | 2026-11-29 | 2026-12-22 | SDR-ST-CON-P1-3380 |  |  |  |  | 20d | 0d | SIC- Cost [1350.23]; Electrical Forman [99.7 h]; Electrical Technician [99.7 h]; Electrical Helper [99.7 h] | 1,350.23 |  | 4 | 0 | B2.1.33 81 26.07 | P1-Tele | Number |
|  | 5 | **Backfilling** |  | 2026-12-23 | 2027-01-16 |  |  |  |  |  |  |  |  |  |  |  |  |  |  |  |
| SDR-ST-CON-P1-4820 |  | Backfilling over Telecom Manhole | 21d | 2026-12-23 | 2027-01-16 | SDR-ST-CON-P1-4280 |  |  |  |  | 20d | 87d | SIC- Cost [2700.46]; Excavator [30 h]; Excavator Operator [128.18 h] | 2,700.46 |  | 10 | 0 | B2.1.33 81 26.08 | P1-Tele | M3 |
|  | 2 | **ROAD-01 From 900 to 1239 m (11) (2)X32 mm MH-1** |  | 2026-11-03 | 2027-04-24 |  |  |  |  |  |  |  |  |  |  |  |  |  |  |  |
|  | 3 | **Ducts** |  | 2026-11-03 | 2027-04-05 |  |  |  |  |  |  |  |  |  |  |  |  |  |  |  |
|  | 2 | **Excavation** |  | 2026-11-03 | 2027-01-16 |  |  |  |  |  |  |  |  |  |  |  |  |  |  |  |
| SDR-ST-CON-P1-1390 |  | Excavation for telecom trench Section 1 | 21d | 2026-11-03 A | 2026-12-22 | SDR-ST-CON-P1-1360 SS | 30% | 21d | 2026-11-29 | 2026-12-22 | -59d | 0d | SIC- Cost [2028.61]; Excavator [15 h]; Excavator Operator [128.18 h] | 2,028.61 |  | 125 | -70 | B2.1.33 81 26.01 | P1-Tele | M3 |
| SDR-ST-CON-P1-2070 |  | Excavation for telecom trench Section 2 | 21d | 2026-11-03 A | 2027-01-16 | SDR-ST-CON-P1-1390 | 30% | 21d | 2026-12-23 | 2027-01-16 | -54d | 0d | SIC- Cost [2028.61]; Excavator [23.85 h]; Excavator Operator [94.95 h] | 2,028.61 |  | 125 | -70 | B2.1.33 81 26.02 | P1-Tele | M3 |
|  | 5 | **Pipe laying** |  | 2027-01-17 | 2027-02-09 |  |  |  |  |  |  |  |  |  |  |  |  |  |  |  |
| SDR-ST-CON-P1-2780 |  | HDPE Pipes for Telecom Installation | 21d | 2027-01-17 | 2027-02-09 | SDR-ST-CON-P1-2070 |  |  |  |  | -54d | 0d | SIC- Cost [8114.47]; Electrical Forman [37.98 h]; Electrical Technician [128.18 h]; Electrical Helper [128.18 h] | 8,114.47 |  | 535 | -100 | B2.1.33 81 26.03 | P1-Tele |  |
|  | 6 | **Backfilling** |  | 2027-02-10 | 2027-03-07 |  |  |  |  |  |  |  |  |  |  |  |  |  |  |  |
| SDR-ST-CON-P1-3580 |  | Backfilling over HDPE Telecom Pipes | 21d | 2027-02-10 | 2027-03-07 | SDR-ST-CON-P1-2780 |  |  |  |  | -54d | 0d | SIC- Cost [4057.23]; Excavator [15 h]; Excavator Operator [37.98 h] | 4,057.23 |  | 535 | -23.8095238095238 | B2.1.33 81 26.07 | P1-Tele |  |

| ID | WBS | Activity | Duration | Start | Finish | Predecessors | Complete | Remaining | Planned start | Planned finish | Total float | Free float | Resources | Cost | Actual cost | BOQ Qty | Variance | BOQ Line item | Activities Codes Sudair Station | UOM |
| --- | --- | --- | --- | --- | --- | --- | --- | --- | --- | --- | --- | --- | --- | --- | --- | --- | --- | --- | --- | --- |
|  | 7 | **Pulling Cable** |  | 2027-03-08 | 2027-04-05 |  |  |  |  |  |  |  |  |  |  |  |  |  |  |  |
| SDR-ST-CON-P1-4170 |  | Pulling Cable | 21d | 2027-03-08 | 2027-04-05 | SDR-ST-CON-P1-3580 |  |  |  |  | -54d | 23d | SIC- Cost [24343.4]; Electrical Forman [128.18 h]; Electrical Technician [128.18 h]; Electrical Helper [128.18 h] | 24,343.4 |  | 535 | 0 | B2.1.33 81 26.06 | P1-Tele |  |
|  | 4 | **Manholes** |  | 2026-11-29 | 2027-04-24 |  |  |  |  |  |  |  |  |  |  |  |  |  |  |  |
|  | 1 | **Excavation** |  | 2026-11-29 | 2027-01-16 |  |  |  |  |  |  |  |  |  |  |  |  |  |  |  |
| SDR-ST-CON-P1-1380 |  | Excavation for Telecom Manhole Section 1 | 21d | 2026-11-29 | 2026-12-22 | SDR-ST-CON-P1-1390 SS |  |  |  |  | -59d | 0d | SIC- Cost [1012.67]; Excavator [15 h]; Excavator Operator [128.18 h] | 1,012.67 |  | 3 | -100 | B2.1.33 81 26.03 | P1-Tele | M3 |
| SDR-ST-CON-P1-2080 |  | Excavation for Telecom Manhole Section 2 | 21d | 2026-12-23 | 2027-01-16 | SDR-ST-CON-P1-1380 |  |  |  |  | -59d | 0d | SIC- Cost [1012.67]; Excavator [34.91 h]; Excavator Operator [94.95 h] | 1,012.67 |  | 3 | -100 | B2.1.33 81 26.04 | P1-Tele | M3 |
|  | 2 | **Bedding Work** |  | 2027-01-17 | 2027-02-07 |  |  |  |  |  |  |  |  |  |  |  |  |  |  |  |
| SDR-ST-CON-P1-2790 |  | Sand bedding for Telecom Manhole | 19d | 2027-01-17 | 2027-02-07 | SDR-ST-CON-P1-2080 |  |  |  |  | -59d | 0d | SIC- Cost [1350.23]; Labor [37.98 h]; Excavator [30 h]; Excavator Operator [75.96 h] | 1,350.23 |  | 10 | -100 | B2.1.33 81 26.05 | P1-Tele | M3 |
|  | 3 | **Install Manholes** |  | 2027-02-08 | 2027-03-04 |  |  |  |  |  |  |  |  |  |  |  |  |  |  |  |
| SDR-ST-CON-P1-3590 |  | Installation of Telecom Manhole | 21d | 2027-02-08 | 2027-03-04 | SDR-ST-CON-P1-1380, SDR-ST-CON-P1-2790 |  |  |  |  | -59d | 0d | SIC- Cost [6076.04]; Electrical Forman [128.18 h]; Electrical Technician [128.18 h]; Electrical Helper [128.18 h] | 6,076.04 |  | 4 | -33.3333333333333 | B2.1.33 81 26.06 | P1-Tele | Number |
|  | 4 | **Testting** |  | 2027-03-06 | 2027-04-03 |  |  |  |  |  |  |  |  |  |  |  |  |  |  |  |
| SDR-ST-CON-P1-4500 |  | Telecom Manhole finishing works | 21d | 2027-03-06 | 2027-04-03 | SDR-ST-CON-P1-3590 |  |  |  |  | -59d | 0d | SIC- Cost [1350.23]; Electrical Forman [99.7 h]; Electrical Technician [99.7 h]; Electrical Helper [99.7 h] | 1,350.23 |  | 4 | 0 | B2.1.33 81 26.07 | P1-Tele | Number |
|  | 5 | **Backfilling** |  | 2027-04-04 | 2027-04-24 |  |  |  |  |  |  |  |  |  |  |  |  |  |  |  |
| SDR-ST-CON-P1-5000 |  | Backfilling over Telecom Manhole | 18d | 2027-04-04 | 2027-04-24 | SDR-ST-CON-P1-4500 |  |  |  |  | -59d | 8d | SIC- Cost [2700.46]; Excavator [30 h]; Excavator Operator [128.18 h] | 2,700.46 |  | 10 | 0 | B2.1.33 81 26.08 | P1-Tele | M3 |
|  | 13 | **LOW VOLTAGE** |  | 2026-08-20 | 2027-06-16 |  |  |  |  |  |  |  |  |  |  |  |  |  |  |  |
|  | 1 | **ROAD - 01** |  | 2026-08-20 | 2027-05-12 |  |  |  |  |  |  |  |  |  |  |  |  |  |  |  |
|  | 1 | **ROAD-01 From 470 to 1125 m (6)** |  | 2026-08-20 | 2027-05-12 |  |  |  |  |  |  |  |  |  |  |  |  |  |  |  |
|  | 6 | **Excavation** |  | 2026-08-20 | 2027-01-20 |  |  |  |  |  |  |  |  |  |  |  |  |  |  |  |
| SDR-ST-CON-P1-1670 |  | Excavation Works Part 1 | 21d | 2026-08-20 A | 2026-12-27 | SDR-ST-CON-P1-1180, SDR-ST-CON-P1-1570 | 70% | 5d | 2026-10-22 | 2026-11-15 | -15d | 0d | SIC- Cost [2898.07]; Electrical Forman [37.98 h]; Electrical Technician [128.18 h]; Electrical Helper [128.18 h]; Labor [37.98 h]; Excavator [24.56 h]; Excavator Operator [128.18 h] | 2,898.07 | 2,028.65 |  | -30 |  | P1-L.V |  |
| SDR-ST-CON-P1-6230 |  | Excavation Works Part 2 | 21d | 2026-12-28 | 2027-01-20 | SDR-ST-CON-P1-1670 |  |  |  |  | -15d | 0d | SIC- Cost; Electrical Forman [37.98 h]; Electrical Technician [128.18 h]; Electrical Helper [128.18 h]; Labor [37.98 h]; Excavator [24.56 h]; Excavator Operator [128.18 h] |  |  |  | 0 |  | P1-L.V |  |
|  | 7 | **Pipe laying** |  | 2027-01-21 | 2027-02-13 |  |  |  |  |  |  |  |  |  |  |  |  |  |  |  |
| SDR-ST-CON-P1-2330 |  | Pipe Laying | 20d | 2027-01-21 | 2027-02-13 | SDR-ST-CON-P1-1670, SDR-ST-CON-P1-6230 |  |  |  |  | -15d | 0d | SIC- Cost [5796.13]; Electrical Forman [37.98 h]; Electrical Technician [39.97 h]; Electrical Helper [39.97 h]; Labor [37.98 h] | 5,796.13 |  |  | 0 |  | P1-L.V |  |
|  | 8 | **Backfilling** |  | 2027-02-14 | 2027-03-15 |  |  |  |  |  |  |  |  |  |  |  |  |  |  |  |
| SDR-ST-CON-P1-2990 |  | Backfilling Works | 21d | 2027-02-14 | 2027-03-15 | SDR-ST-CON-P1-4880, SDR-ST-CON-P1-2330 |  |  |  |  | 6d | 29d | SIC- Cost [2898.07]; Electrical Forman [37.98 h]; Electrical Technician [128.18 h]; Electrical Helper [128.18 h]; Labor [37.98 h]; Excavator [30 h]; Excavator Operator [128.18 h] | 2,898.07 |  |  | 0 |  | P1-L.V |  |

| ID | WBS | Activity | Duration | Start | Finish | Predecessors | Complete | Remaining | Planned start | Planned finish | Total float | Free float | Resources | Cost | Actual cost | Variance | Activities Codes Sudair Station | BOQ Qty | BOQ Line item | UOM |
| --- | --- | --- | --- | --- | --- | --- | --- | --- | --- | --- | --- | --- | --- | --- | --- | --- | --- | --- | --- | --- |
|  | 9 | **Pulling Cable** |  | 2027-04-19 | 2027-05-12 |  |  |  |  |  |  |  |  |  |  |  |  |  |  |  |
| SDR-ST-CON-P1-3880 |  | Pulling Cable | 21d | 2027-04-19 | 2027-05-12 | SDR-ST-CON-P1-5750, SDR-ST-PRO-MS-1120, SDR-ST-CON-P1-2330, SDR-ST-CON-P1-2990 |  |  |  |  | -23d | 57d | SIC- Cost [17388.4]; Electrical Forman [128.18 h]; Electrical Technician [128.18 h]; Electrical Helper [128.18 h]; Labor [128.18 h] | 17,388.4 |  | 0 | P1-L.V |  |  |  |
|  | 2 | **ROAD - 02** |  | 2026-08-24 | 2027-06-16 |  |  |  |  |  |  |  |  |  |  |  |  |  |  |  |
|  | 1 | **ROAD-01 From 400 to 900 m (10)** |  | 2026-08-24 | 2027-04-25 |  |  |  |  |  |  |  |  |  |  |  |  |  |  |  |
|  | 6 | **Excavation** |  | 2026-08-24 | 2027-01-26 |  |  |  |  |  |  |  |  |  |  |  |  |  |  |  |
| SDR-ST-CON-P1-1740 |  | Excavation Works Part 1 | 21d | 2026-08-24 A | 2027-01-02 | SDR-ST-CON-P1-1260, SDR-ST-CON-P1-1670 SS+7d | 50% | 10d | 2026-10-31 | 2026-11-23 | -8d | 0d | SIC- Cost [2898.07]; Electrical Forman [37.98 h]; Electrical Technician [128.18 h]; Electrical Helper [128.18 h]; Labor [37.98 h]; Excavator [30 h]; Excavator Operator [128.18 h] | 2,898.07 | 1,449.04 | -16.6666666666667 | P1-L.V |  |  |  |
| SDR-ST-CON-P1-6240 |  | Excavation Works Part 2 | 21d | 2027-01-03 | 2027-01-26 | SDR-ST-CON-P1-1740 |  |  |  |  | -8d | 0d | SIC- Cost; Electrical Forman [37.98 h]; Electrical Technician [128.18 h]; Electrical Helper [128.18 h]; Labor [37.98 h]; Excavator [30 h]; Excavator Operator [128.18 h] |  |  | 0 | P1-L.V |  |  |  |
|  | 7 | **Pipe laying** |  | 2027-01-27 | 2027-02-18 |  |  |  |  |  |  |  |  |  |  |  |  |  |  |  |
| SDR-ST-CON-P1-2440 |  | Pipe Laying | 20d | 2027-01-27 | 2027-02-18 | SDR-ST-CON-P1-1740, SDR-ST-CON-P1-6240 |  |  |  |  | -8d | 0d | SIC- Cost [5796.13]; Electrical Forman [37.98 h]; Electrical Technician [128.18 h]; Electrical Helper [128.18 h]; Labor [37.98 h] | 5,796.13 |  | 0 | P1-L.V |  |  |  |
|  | 8 | **Backfilling** |  | 2027-02-20 | 2027-03-21 |  |  |  |  |  |  |  |  |  |  |  |  |  |  |  |
| SDR-ST-CON-P1-3170 |  | Backfilling Works | 21d | 2027-02-20 | 2027-03-21 | SDR-ST-CON-P1-2440 |  |  |  |  | -8d | 9d | SIC- Cost [2898.07]; Electrical Forman [37.98 h]; Electrical Technician [128.18 h]; Electrical Helper [128.18 h]; Labor [37.98 h]; Excavator [17.25 h]; Excavator Operator [128.18 h] | 2,898.07 |  | 0 | P1-L.V |  |  |  |
|  | 9 | **Pulling Cable** |  | 2027-04-01 | 2027-04-25 |  |  |  |  |  |  |  |  |  |  |  |  |  |  |  |
| SDR-ST-CON-P1-4040 |  | Pulling Cable | 21d | 2027-04-01 | 2027-04-25 | SDR-ST-CON-P1-4520, SDR-ST-CON-P1-4700, SDR-ST-CON-P1-4910, SDR-ST-CON-P1-2440, SDR-ST-CON-P1-3170 |  |  |  |  | -8d | 76d | SIC- Cost [17388.4]; Electrical Forman [128.18 h]; Electrical Technician [128.18 h]; Electrical Helper [128.18 h]; Labor [128.18 h] | 17,388.41 |  | 0 | P1-L.V |  |  |  |
|  | 4 | **ROAD-01 From 900 to 1239 m (11)** |  | 2026-08-24 | 2027-06-16 |  |  |  |  |  |  |  |  |  |  |  |  |  |  |  |
|  | 6 | **Excavation** |  | 2026-08-24 | 2027-01-26 |  |  |  |  |  |  |  |  |  |  |  |  |  |  |  |
| SDR-ST-CON-P1-1750 |  | Excavation Works Part 1 | 21d | 2026-08-24 A | 2027-01-02 | SDR-ST-CON-P1-1360 SS, SDR-ST-CON-P1-1740 SS+7d | 50% | 10d | 2026-11-08 | 2026-12-01 | -2d | 0d | SIC- Cost [2898.07]; Electrical Forman [37.98 h]; Electrical Technician [39.97 h]; Electrical Helper [39.97 h]; Labor [37.98 h]; Excavator [30 h]; Excavator Operator [39.97 h] | 2,898.07 | 1,449.04 | 16.6666666666667 | P1-L.V |  |  |  |
| SDR-ST-CON-P1-6250 |  | Excavation Works Part 2 | 21d | 2027-01-03 | 2027-01-26 | SDR-ST-CON-P1-1750 |  |  |  |  | -2d | 0d | SIC- Cost; Electrical Forman [37.98 h]; Electrical Technician [128.18 h]; Electrical Helper [128.18 h]; Labor [37.98 h]; Excavator [30 h]; Excavator Operator [128.18 h] |  |  | 0 | P1-L.V |  |  |  |
|  | 7 | **Pipe laying** |  | 2027-01-27 | 2027-02-18 |  |  |  |  |  |  |  |  |  |  |  |  |  |  |  |
| SDR-ST-CON-P1-2450 |  | Pipe Laying | 20d | 2027-01-27 | 2027-02-18 | SDR-ST-CON-P1-1750, SDR-ST-CON-P1-6250 |  |  |  |  | -2d | 0d | SIC- Cost [5796.13]; Electrical Forman [128.18 h]; Electrical Technician [128.18 h]; Electrical Helper [128.18 h]; Labor [128.18 h] | 5,796.13 |  | 0 | P1-L.V |  |  |  |
|  | 8 | **Backfilling** |  | 2027-02-20 | 2027-03-21 |  |  |  |  |  |  |  |  |  |  |  |  |  |  |  |
| SDR-ST-CON-P1-3180 |  | Backfilling Works | 21d | 2027-02-20 | 2027-03-21 | SDR-ST-CON-P1-2450 |  |  |  |  | -2d | 49d | SIC- Cost [2898.07]; Electrical Forman [128.18 h]; Electrical Technician [128.18 h]; Electrical Helper [128.18 h]; Labor [128.18 h]; Excavator [16.5 h]; Excavator Operator [128.18 h] | 2,898.07 |  | 0 | P1-L.V |  |  |  |
|  | 9 | **Pulling Cable** |  | 2027-05-24 | 2027-06-16 |  |  |  |  |  |  |  |  |  |  |  |  |  |  |  |
| SDR-ST-CON-P1-4070 |  | Pulling Cable | 21d | 2027-05-24 | 2027-06-16 | SDR-ST-CON-P1-6070, SDR-ST-CON-P1-5100, SDR-ST-CON-P1-5070, SDR-ST-CON-P1-2450, SDR-ST-CON-P1-3180 |  |  |  |  | -40d | 61d | SIC- Cost [17388.4]; Electrical Forman [128.18 h]; Electrical Technician [128.18 h]; Electrical Helper [128.18 h]; Labor [96.35 h] | 17,388.41 |  | 0 | P1-L.V |  |  |  |
|  | 10 | **PORTABLE WATER** |  | 2026-08-09 | 2027-05-06 |  |  |  |  |  |  |  |  |  |  |  |  |  |  |  |
|  | 2 | **ROAD - 01** |  | 2026-08-09 | 2027-05-06 |  |  |  |  |  |  |  |  |  |  |  |  |  |  |  |
|  | 2 | **ROAD-01 From 0 to 470 m (3)** |  | 2026-08-09 | 2027-05-06 |  |  |  |  |  |  |  |  |  |  |  |  |  |  |  |
|  | 7 | **Pipes Work** |  | 2026-08-09 | 2026-11-08 |  |  |  |  |  |  |  |  |  |  |  |  |  |  |  |
|  | 1 | **Excavation** |  | 2026-08-09 | 2026-09-14 |  |  |  |  |  |  |  |  |  |  |  |  |  |  |  |
| SDR-ST-CON-P1-1480 |  | Excavation for PW HDPE Pipes 315 mm Section 1 | 21d | 2026-08-09 A | 2026-08-31 A | SDR-ST-CON-P1-1200 FS+15d | 100% |  | 2026-09-14 | 2026-10-08 |  |  | SIC- Cost [5079]; Plumbing Helper [128.18 h]; Labor [128.18 h]; Plumber [128.18 h]; Excavator [15 h]; Excavator Operator [128.18 h]; Un-Skilled Labor [128.18 h]; Skilled Labor [128.18 h] | 5,079 | 5,079 | 0 | P1-P.W | 125 | B3.33 14 13.01 | M3 |
| SDR-ST-CON-P1-1980 |  | Excavation for PW HDPE Pipes 315 mm Section 2 | 21d | 2026-08-09 A | 2026-09-14 A | SDR-ST-CON-P1-1480 | 100% |  | 2026-10-10 | 2026-11-02 |  |  | SIC- Cost [5079]; Plumbing Helper [128.18 h]; Labor [128.18 h]; Plumber [128.18 h]; Excavator [33.61 h]; Excavator Operator [128.18 h]; Un-Skilled Labor [37.98 h]; Skilled Labor [37.98 h] | 5,079 | 5,079 | 0 | P1-P.W | 125 | B3.33 14 13.02 | M3 |

| ID | WBS | Activity | Duration | Start | Finish | Predecessors | Complete | Planned start | Planned finish | Total float | Free float | Resources | Cost | Actual cost | BOQ Qty | Variance | BOQ Line item | UOM | Activities Codes Sudair Station |
| --- | --- | --- | --- | --- | --- | --- | --- | --- | --- | --- | --- | --- | --- | --- | --- | --- | --- | --- | --- |
|  | 8 | **bedding Works** |  | 2026-08-26 | 2026-09-30 |  |  |  |  |  |  |  |  |  |  |  |  |  |  |
| SDR-ST-CON-P1-2490 |  | Sand bedding for PW HDPE Pipes 315 mm | 21d | 2026-08-26 A | 2026-09-30 A | SDR-ST-CON-P1-1980 FS+1d | 100% | 2026-11-04 | 2026-11-28 |  |  | SIC- Cost [2539.5]; Plumbing Helper [128.18 h]; Labor [128.18 h]; Plumber [128.18 h]; Excavator [22 h]; Excavator Operator [128.18 h]; Un-Skilled Labor [37.98 h]; Skilled Labor [37.98 h] | 2,539.5 | 2,539.5 | 410 | 52.3809523809524 | B3.33 14 13.03 | M | P1-P.W |
|  | 2 | **Pipes Laying** |  | 2026-08-29 | 2026-09-27 |  |  |  |  |  |  |  |  |  |  |  |  |  |  |
| SDR-ST-CON-P1-3270 |  | Install PW 315 mm HDPE Pipe | 21d | 2026-08-29 A | 2026-09-27 A | SDR-ST-CON-P1-3930, SDR-ST-CON-P1-3760, SDR-ST-PRO-MS-1110, SDR-ST-CON-P1-2490 | 100% | 2026-11-29 | 2026-12-22 |  |  | SIC- Cost [22855.5]; Plumbing Helper [37.98 h]; Labor [37.98 h]; Plumber [37.98 h]; Excavator [15 h]; Excavator Operator [37.98 h]; Un-Skilled Labor [37.98 h]; Skilled Labor [37.98 h] | 22,855.52 | 22,855.52 | 410 | 100 | B3.33 14 13.04 | M | P1-P.W |
|  | 5 | **Testing** |  | 2026-10-03 | 2026-10-05 |  |  |  |  |  |  |  |  |  |  |  |  |  |  |
| SDR-ST-CON-P1-4190 |  | Testing of PW HDPE Pipe 315 mm. | 21d | 2026-10-03 A | 2026-10-05 A | SDR-ST-CON-P1-4400, SDR-ST-CON-P1-3270 | 100% | 2026-12-23 | 2027-01-16 |  |  | SIC- Cost [5079]; Plumbing Helper [106.82 h]; Labor [106.82 h]; Plumber [106.82 h]; Excavator [30 h]; Excavator Operator [106.82 h]; Un-Skilled Labor [106.82 h]; Skilled Labor [106.82 h] | 5,079 | 5,079 | 410 | 100 | B3.33 14 13.05 | M | P1-P.W |
|  | 9 | **Backfilling** |  | 2026-10-22 | 2026-11-08 |  |  |  |  |  |  |  |  |  |  |  |  |  |  |
| SDR-ST-CON-P1-4800 |  | Backfilling of PW HDPE Pipe 315 mm. | 21d | 2026-10-22 A | 2026-11-08 A | SDR-ST-PRO-MS-1050, SDR-ST-CON-P1-4190 | 100% | 2027-01-17 | 2027-02-09 |  |  | SIC- Cost [10158]; Plumbing Helper [128.18 h]; Labor [128.18 h]; Plumber [128.18 h]; Excavator [30 h]; Excavator Operator [128.18 h]; Un-Skilled Labor [128.18 h]; Skilled Labor [128.18 h] | 10,158.01 | 10,158.01 | 410 | 100 | B3.33 14 13.06 | M | P1-P.W |
|  | 3 | **Valve Chambers & Valves & Fire Hydrant** |  | 2026-11-29 | 2027-05-06 |  |  |  |  |  |  |  |  |  |  |  |  |  |  |
|  | 3 | **Excavation** |  | 2026-11-29 | 2027-01-23 |  |  |  |  |  |  |  |  |  |  |  |  |  |  |
| SDR-ST-CON-P1-1490 |  | Excavation for Valve Chambers Section 1 | 21d | 2026-11-29 | 2026-12-22 | SDR-ST-CON-P1-1480 SS+7d |  |  |  | -41d | 6d | SIC- Cost [1249.33]; Plumbing Helper [128.18 h]; Labor [128.18 h]; Plumber [128.18 h]; Excavator [15 h]; Excavator Operator [128.18 h]; Un-Skilled Labor [37.98 h]; Skilled Labor [37.98 h] | 1,249.33 |  | 125 | -100 | B3.33 14 19.01 | M3 | P1-P.W |
| SDR-ST-CON-P1-2150 |  | Excavation for Valve Chambers Section 2 | 21d | 2026-12-30 | 2027-01-23 | SDR-ST-PRO-MS-1010, SDR-ST-CON-P1-1490 |  |  |  | -47d | 0d | SIC- Cost [1249.33]; Plumbing Helper [128.18 h]; Labor [128.18 h]; Plumber [128.18 h]; Excavator [30.1 h]; Excavator Operator [170.91 h]; Un-Skilled Labor [37.98 h]; Skilled Labor [37.98 h] | 1,249.33 |  | 125 | -100 | B3.33 14 19.02 | M3 | P1-P.W |
|  | 1 | **bedding Works** |  | 2027-01-24 | 2027-02-16 |  |  |  |  |  |  |  |  |  |  |  |  |  |  |
| SDR-ST-CON-P1-2850 |  | Sand bedding for Valve Chambers | 21d | 2027-01-24 | 2027-02-16 | SDR-ST-CON-P1-2150 |  |  |  | -47d | 0d | SIC- Cost [624.67]; Plumbing Helper [128.18 h]; Labor [128.18 h]; Plumber [128.18 h]; Excavator [30 h]; Excavator Operator [128.18 h]; Un-Skilled Labor [37.98 h]; Skilled Labor [37.98 h] | 624.67 |  | 10 | -19.047619047619 | B3.33 14 19.03 | M3 | P1-P.W |
|  | 4 | **Install Chambers & Valves & Fire Hydrant** |  | 2027-02-17 | 2027-03-18 |  |  |  |  |  |  |  |  |  |  |  |  |  |  |
| SDR-ST-CON-P1-3560 |  | Install Chambers & Valves | 21d | 2027-02-17 | 2027-03-18 | SDR-ST-PRO-MS-1190, SDR-ST-CON-P1-2850 |  |  |  | -47d | 0d | SIC- Cost [5622]; Plumbing Helper [128.18 h]; Labor [128.18 h]; Plumber [128.18 h]; Excavator [30 h]; Excavator Operator [128.18 h]; Un-Skilled Labor [128.18 h]; Skilled Labor [128.18 h] | 5,622 |  | 2 | 0 | B3.33 14 19.04 | Number | P1-P.W |
|  | 2 | **Testing** |  | 2027-03-20 | 2027-04-12 |  |  |  |  |  |  |  |  |  |  |  |  |  |  |
| SDR-ST-CON-P1-4470 |  | Testing for Chambers & Valves | 21d | 2027-03-20 | 2027-04-12 | SDR-ST-CON-P1-4570, SDR-ST-CON-P1-4310, SDR-ST-CON-P1-3560 |  |  |  | -47d | 0d | SIC- Cost [1249.33]; Plumbing Helper [39.97 h]; Labor [39.97 h]; Plumber [39.97 h]; Excavator [15 h]; Excavator Operator [39.97 h]; Un-Skilled Labor [39.97 h]; Skilled Labor [39.97 h] | 1,249.33 |  | 2 | 0 | B3.33 14 19.05 | Number | P1-P.W |
|  | 6 | **Backfilling** |  | 2027-04-13 | 2027-05-06 |  |  |  |  |  |  |  |  |  |  |  |  |  |  |
| SDR-ST-CON-P1-5030 |  | Backfilling for Chambers & Valves | 21d | 2027-04-13 | 2027-05-06 | SDR-ST-CON-P1-4990, SDR-ST-PRO-MS-1050, SDR-ST-CON-P1-4470 |  |  |  | -47d | 0d | SIC- Cost [2498.67]; Plumbing Helper [128.18 h]; Labor [128.18 h]; Plumber [128.18 h]; Excavator [16.45 h]; Excavator Operator [128.18 h]; Un-Skilled Labor [106.82 h]; Skilled Labor [128.18 h] | 2,498.67 |  | 10 | 0 | B3.33 14 19.06 | M3 | P1-P.W |
|  | 1 | **ROAD-01 From 470 to 1125 m (6)** |  | 2026-08-09 | 2027-04-29 |  |  |  |  |  |  |  |  |  |  |  |  |  |  |
|  | 7 | **Pipes Work** |  | 2026-08-09 | 2026-10-28 |  |  |  |  |  |  |  |  |  |  |  |  |  |  |
|  | 1 | **Excavation** |  | 2026-08-09 | 2026-09-24 |  |  |  |  |  |  |  |  |  |  |  |  |  |  |
| SDR-ST-CON-P1-1410 |  | Excavation for PW HDPE Pipes 315 mm Section 1 | 21d | 2026-08-09 A | 2026-08-31 A | SDR-ST-CON-P1-1190 FS+7d | 100% | 2026-09-03 | 2026-09-28 |  |  | SIC- Cost [5079]; Plumbing Helper [128.18 h]; Labor [128.18 h]; Plumber [128.18 h]; Excavator [15 h]; Excavator Operator [128.18 h]; Un-Skilled Labor [37.98 h]; Skilled Labor [37.98 h] | 5,079 | 5,079 | 125 | 0 | B3.33 14 13.01 | M3 | P1-P.W |
| SDR-ST-CON-P1-2050 |  | Excavation for PW HDPE Pipes 315 mm Section 2 | 21d | 2026-08-09 A | 2026-09-24 A | SDR-ST-CON-P1-1410 | 100% | 2026-09-29 | 2026-10-22 |  |  | SIC- Cost [5079]; Plumbing Helper [128.18 h]; Labor [128.18 h]; Plumber [128.18 h]; Excavator [30 h]; Excavator Operator [128.18 h]; Un-Skilled Labor [37.98 h]; Skilled Labor [37.98 h] | 5,079 | 5,079 | 125 | 0 | B3.33 14 13.02 | M3 | P1-P.W |

| ID | WBS | Activity | Duration | Start | Finish | Predecessors | Complete | Planned start | Planned finish | Total float | Free float | Resources | Cost | Actual cost | BOQ Qty | Variance | BOQ Line item | UOM | Activities Codes Sudair Station |
| --- | --- | --- | --- | --- | --- | --- | --- | --- | --- | --- | --- | --- | --- | --- | --- | --- | --- | --- | --- |
|  | 8 | **bedding Works** |  | 2026-08-24 | 2026-09-30 |  |  |  |  |  |  |  |  |  |  |  |  |  |  |
| SDR-ST-CON-P1-2690 |  | Sand bedding for PW HDPE Pipes 315 mm | 21d | 2026-08-24 A | 2026-09-30 A | SDR-ST-CON-P1-2050 | 100% | 2026-10-24 | 2026-11-16 |  |  | SIC- Cost [2539.5]; Plumbing Helper [128.18 h]; Labor [128.18 h]; Plumber [128.18 h]; Excavator [30 h]; Excavator Operator [128.18 h]; Un-Skilled Labor [37.98 h]; Skilled Labor [37.98 h] | 2,539.5 | 2,539.5 | 410 | 4.76190476190476 | B3.33 14 13.03 | M | P1-P.W |
|  | 2 | **Pipes Laying** |  | 2026-08-29 | 2026-10-03 |  |  |  |  |  |  |  |  |  |  |  |  |  |  |
| SDR-ST-CON-P1-3290 |  | Install PW 315 mm HDPE Pipe | 21d | 2026-08-29 A | 2026-10-03 A | SDR-ST-PRO-MS-1110, SDR-ST-CON-P1-2690 | 100% | 2026-11-17 | 2026-12-10 |  |  | SIC- Cost [22855.5]; Plumbing Helper [37.98 h]; Labor [128.18 h]; Plumber [37.98 h]; Excavator [15 h]; Excavator Operator [128.18 h]; Un-Skilled Labor [37.98 h]; Skilled Labor [37.98 h] | 22,855.52 | 22,855.52 | 410 | 100 | B3.33 14 13.04 | M | P1-P.W |
|  | 5 | **Testing** |  | 2026-10-03 | 2026-10-05 |  |  |  |  |  |  |  |  |  |  |  |  |  |  |
| SDR-ST-CON-P1-4030 |  | Testing of PW HDPE Pipe 315 mm. | 21d | 2026-10-03 A | 2026-10-05 A | SDR-ST-CON-P1-4570, SDR-ST-CON-P1-3290 | 100% | 2026-12-12 | 2027-01-04 |  |  | SIC- Cost [5079]; Plumbing Helper [39.97 h]; Labor [39.97 h]; Plumber [39.97 h]; Excavator [30 h]; Excavator Operator [39.97 h]; Un-Skilled Labor [39.97 h]; Skilled Labor [39.97 h] | 5,079 | 5,079 | 410 | 100 | B3.33 14 13.05 | M | P1-P.W |
|  | 9 | **Backfilling** |  | 2026-10-25 | 2026-10-28 |  |  |  |  |  |  |  |  |  |  |  |  |  |  |
| SDR-ST-CON-P1-4700 |  | Backfilling of PW HDPE Pipe 315 mm. | 21d | 2026-10-25 A | 2026-10-28 A | SDR-ST-PRO-MS-1050, SDR-ST-CON-P1-4030 | 100% | 2027-01-05 | 2027-01-28 |  |  | SIC- Cost [10158]; Plumbing Helper [128.18 h]; Labor [128.18 h]; Plumber [128.18 h]; Excavator [30 h]; Excavator Operator [128.18 h]; Un-Skilled Labor [128.18 h]; Skilled Labor [128.18 h] | 10,158.01 | 10,158.01 | 410 | 100 | B3.33 14 13.06 | M | P1-P.W |
|  | 3 | **Valve Chambers & Valves & Fire Hydrant** |  | 2026-11-29 | 2027-04-29 |  |  |  |  |  |  |  |  |  |  |  |  |  |  |
|  | 3 | **Excavation** |  | 2026-11-29 | 2027-01-16 |  |  |  |  |  |  |  |  |  |  |  |  |  |  |
| SDR-ST-CON-P1-1420 |  | Excavation for Valve Chambers Section 1 | 21d | 2026-11-29 | 2026-12-22 | SDR-ST-CON-P1-1410 SS+7d |  |  |  | -36d | 0d | SIC- Cost [1249.33]; Plumbing Helper [37.98 h]; Labor [128.18 h]; Plumber [37.98 h]; Excavator [15 h]; Excavator Operator [128.18 h]; Un-Skilled Labor [37.98 h]; Skilled Labor [37.98 h] | 1,249.33 |  | 125 | -100 | B3.33 14 19.01 | M3 | P1-P.W |
| SDR-ST-CON-P1-2100 |  | Excavation for Valve Chambers Section 2 | 21d | 2026-12-23 | 2027-01-16 | SDR-ST-CON-P1-1420 |  |  |  | -36d | 0d | SIC- Cost [1249.33]; Plumbing Helper [128.18 h]; Labor [128.18 h]; Plumber [128.18 h]; Excavator [22.38 h]; Excavator Operator [128.18 h]; Un-Skilled Labor [37.98 h]; Skilled Labor [37.98 h] | 1,249.33 |  | 125 | -100 | B3.33 14 19.02 | M3 | P1-P.W |
|  | 1 | **bedding Works** |  | 2027-01-17 | 2027-02-09 |  |  |  |  |  |  |  |  |  |  |  |  |  |  |
| SDR-ST-CON-P1-2820 |  | Sand bedding for Valve Chambers | 21d | 2027-01-17 | 2027-02-09 | SDR-ST-CON-P1-2100 |  |  |  | -36d | 0d | SIC- Cost [624.67]; Plumbing Helper [128.18 h]; Labor [128.18 h]; Plumber [128.18 h]; Excavator [30 h]; Excavator Operator [128.18 h]; Un-Skilled Labor [37.98 h]; Skilled Labor [37.98 h] | 624.67 |  | 10 | -61.9047619047619 | B3.33 14 19.03 | M3 | P1-P.W |
|  | 4 | **Install Chambers & Valves & Fire Hydrant** |  | 2027-02-10 | 2027-03-07 |  |  |  |  |  |  |  |  |  |  |  |  |  |  |
| SDR-ST-CON-P1-3660 |  | Install Chambers & Valves | 21d | 2027-02-10 | 2027-03-07 | SDR-ST-PRO-MS-1190, SDR-ST-CON-P1-2820 |  |  |  | -36d | 0d | SIC- Cost [5622]; Plumbing Helper [128.18 h]; Labor [128.18 h]; Plumber [128.18 h]; Excavator [147.06 h]; Excavator Operator [128.18 h]; Un-Skilled Labor [128.18 h]; Skilled Labor [128.18 h] | 5,622 |  | 2 | 0 | B3.33 14 19.04 | Number | P1-P.W |
|  | 2 | **Testing** |  | 2027-03-08 | 2027-04-05 |  |  |  |  |  |  |  |  |  |  |  |  |  |  |
| SDR-ST-CON-P1-4550 |  | Testing for Chambers & Valves | 21d | 2027-03-08 | 2027-04-05 | SDR-ST-CON-P1-3660 |  |  |  | -36d | 0d | SIC- Cost [1249.33]; Plumbing Helper [106.82 h]; Labor [106.82 h]; Plumber [106.82 h]; Excavator [15 h]; Excavator Operator [106.82 h]; Un-Skilled Labor [106.82 h]; Skilled Labor [106.82 h] | 1,249.33 |  | 2 | 0 | B3.33 14 19.05 | Number | P1-P.W |
|  | 6 | **Backfilling** |  | 2027-04-06 | 2027-04-29 |  |  |  |  |  |  |  |  |  |  |  |  |  |  |
| SDR-ST-CON-P1-5100 |  | Backfilling for Chambers & Valves | 21d | 2027-04-06 | 2027-04-29 | SDR-ST-PRO-MS-1050, SDR-ST-CON-P1-4550 |  |  |  | -36d | 15d | SIC- Cost [2498.67]; Plumbing Helper [128.18 h]; Labor [128.18 h]; Plumber [128.18 h]; Excavator [16.03 h]; Excavator Operator [128.18 h]; Un-Skilled Labor [128.18 h]; Skilled Labor [128.18 h] | 2,498.67 |  | 10 | 0 | B3.33 14 19.06 | M3 | P1-P.W |
|  | 3 | **ROAD-01 From 1125 to 1765 m (7)** |  | 2026-08-09 | 2027-04-29 |  |  |  |  |  |  |  |  |  |  |  |  |  |  |
|  | 7 | **Pipes Work** |  | 2026-08-09 | 2026-10-25 |  |  |  |  |  |  |  |  |  |  |  |  |  |  |
|  | 1 | **Excavation** |  | 2026-08-09 | 2026-09-21 |  |  |  |  |  |  |  |  |  |  |  |  |  |  |
| SDR-ST-CON-P1-1630 |  | Excavation for PW HDPE Pipes 315 mm Section 1 | 21d | 2026-08-09 A | 2026-08-31 A | SDR-ST-CON-P1-1210 FS+7d | 100% | 2026-09-05 | 2026-09-29 |  |  | SIC- Cost [5079]; Plumbing Helper [37.98 h]; Labor [128.18 h]; Plumber [37.98 h]; Excavator [15 h]; Excavator Operator [128.18 h]; Un-Skilled Labor [37.98 h]; Skilled Labor [37.98 h] | 5,079 | 5,079 | 125 | 0 | B3.33 14 13.01 | M3 | P1-P.W |
| SDR-ST-CON-P1-2130 |  | Excavation for PW HDPE Pipes 315 mm Section 2 | 21d | 2026-08-09 A | 2026-09-21 A | SDR-ST-PRO-MS-1010, SDR-ST-CON-P1-1630 | 100% | 2026-09-30 | 2026-10-24 |  |  | SIC- Cost [5079]; Plumbing Helper [37.98 h]; Labor [128.18 h]; Plumber [37.98 h]; Excavator [31.21 h]; Excavator Operator [128.18 h]; Un-Skilled Labor [37.98 h]; Skilled Labor [37.98 h] | 5,079 | 5,079 | 125 | 0 | B3.33 14 13.02 | M3 | P1-P.W |

| ID | WBS | Activity | Duration | Start | Finish | Predecessors | Complete | Planned start | Planned finish | Total float | Free float | Resources | Cost | Actual cost | BOQ Qty | Variance | BOQ Line item | UOM | Activities Codes Sudair Station |
| --- | --- | --- | --- | --- | --- | --- | --- | --- | --- | --- | --- | --- | --- | --- | --- | --- | --- | --- | --- |
|  | 8 | **bedding Works** |  | 2026-08-26 | 2026-10-03 |  |  |  |  |  |  |  |  |  |  |  |  |  |  |
| SDR-ST-CON-P1-2810 |  | Sand bedding for PW HDPE Pipes 315 mm | 21d | 2026-08-26 A | 2026-10-03 A | SDR-ST-CON-P1-2130 | 100% | 2026-10-25 | 2026-11-17 |  |  | SIC- Cost [2539.5]; Plumbing Helper [37.98 h]; Labor [128.18 h]; Plumber [37.98 h]; Excavator [30 h]; Excavator Operator [128.18 h]; Un-Skilled Labor [37.98 h]; Skilled Labor [37.98 h] | 2,539.5 | 2,539.5 | 410 | 9.52380952380952 | B3.33 14 13.03 | M | P1-P.W |
|  | 2 | **Pipes Laying** |  | 2026-08-29 | 2026-09-30 |  |  |  |  |  |  |  |  |  |  |  |  |  |  |
| SDR-ST-CON-P1-3490 |  | Install PW 315 mm HDPE Pipe | 21d | 2026-08-29 A | 2026-09-30 A | SDR-ST-PRO-MS-1110, SDR-ST-CON-P1-2810 | 100% | 2026-11-18 | 2026-12-12 |  |  | SIC- Cost [22855.5]; Plumbing Helper [37.98 h]; Labor [37.98 h]; Plumber [37.98 h]; Excavator [15 h]; Excavator Operator [37.98 h]; Un-Skilled Labor [37.98 h]; Skilled Labor [37.98 h] | 22,855.52 | 22,855.52 | 410 | 100 | B3.33 14 13.04 | M | P1-P.W |
|  | 5 | **Testing** |  | 2026-10-03 | 2026-10-05 |  |  |  |  |  |  |  |  |  |  |  |  |  |  |
| SDR-ST-CON-P1-3950 |  | Testing of PW HDPE Pipe 315 mm. | 21d | 2026-10-03 A | 2026-10-05 A | SDR-ST-CON-P1-4370, SDR-ST-CON-P1-3490 | 100% | 2026-12-29 | 2027-01-21 |  |  | SIC- Cost [5079]; Plumbing Helper [85.46 h]; Labor [85.46 h]; Plumber [85.46 h]; Excavator [30 h]; Excavator Operator [85.46 h]; Un-Skilled Labor [85.46 h]; Skilled Labor [85.46 h] | 5,079 | 5,079 | 410 | 100 | B3.33 14 13.05 | M | P1-P.W |
|  | 9 | **Backfilling** |  | 2026-10-25 | 2026-10-25 |  |  |  |  |  |  |  |  |  |  |  |  |  |  |
| SDR-ST-CON-P1-4520 |  | Backfilling of PW HDPE Pipe 315 mm. | 21d | 2026-10-25 A | 2026-10-25 A | SDR-ST-CON-P1-4990, SDR-ST-PRO-MS-1050, SDR-ST-CON-P1-3950 | 100% | 2027-01-23 | 2027-02-15 |  |  | SIC- Cost [10158]; Plumbing Helper [128.18 h]; Labor [128.18 h]; Plumber [128.18 h]; Excavator [17.57 h]; Excavator Operator [128.18 h]; Un-Skilled Labor [128.18 h]; Skilled Labor [128.18 h] | 10,158.01 | 10,158.01 | 410 | 100 | B3.33 14 13.06 | M | P1-P.W |
|  | 3 | **Valve Chambers & Valves & Fire Hydrant** |  | 2026-11-29 | 2027-04-29 |  |  |  |  |  |  |  |  |  |  |  |  |  |  |
|  | 3 | **Excavation** |  | 2026-11-29 | 2027-01-16 |  |  |  |  |  |  |  |  |  |  |  |  |  |  |
| SDR-ST-CON-P1-1640 |  | Excavation for Valve Chambers Section 1 | 21d | 2026-11-29 | 2026-12-22 | SDR-ST-CON-P1-1630 SS+7d |  |  |  | -54d | 0d | SIC- Cost [1249.33]; Plumbing Helper [37.98 h]; Labor [128.18 h]; Plumber [37.98 h]; Excavator [32.23 h]; Excavator Operator [128.18 h]; Un-Skilled Labor [37.98 h]; Skilled Labor [37.98 h] | 1,249.33 |  | 125 | -100 | B3.33 14 19.01 | M3 | P1-P.W |
| SDR-ST-CON-P1-2230 |  | Excavation for Valve Chambers Section 2 | 21d | 2026-12-23 | 2027-01-16 | SDR-ST-CON-P1-1640 |  |  |  | -54d | 0d | SIC- Cost [1249.33]; Plumbing Helper [128.18 h]; Labor [128.18 h]; Plumber [128.18 h]; Excavator [15 h]; Excavator Operator [128.18 h]; Un-Skilled Labor [37.98 h]; Skilled Labor [37.98 h] | 1,249.33 |  | 125 | -100 | B3.33 14 19.02 | M3 | P1-P.W |
|  | 1 | **bedding Works** |  | 2027-01-17 | 2027-02-09 |  |  |  |  |  |  |  |  |  |  |  |  |  |  |
| SDR-ST-CON-P1-2900 |  | Sand bedding for Valve Chambers | 21d | 2027-01-17 | 2027-02-09 | SDR-ST-CON-P1-2230 |  |  |  | -54d | 0d | SIC- Cost [624.67]; Plumbing Helper [37.98 h]; Labor [113.94 h]; Plumber [37.98 h]; Excavator [30 h]; Excavator Operator [113.94 h]; Un-Skilled Labor [37.98 h]; Skilled Labor [37.98 h] | 624.67 |  | 10 | -57.1428571428571 | B3.33 14 19.03 | M3 | P1-P.W |
|  | 4 | **Install Chambers & Valves & Fire Hydrant** |  | 2027-02-10 | 2027-03-07 |  |  |  |  |  |  |  |  |  |  |  |  |  |  |
| SDR-ST-CON-P1-3640 |  | Install Chambers & Valves | 21d | 2027-02-10 | 2027-03-07 | SDR-ST-PRO-MS-1190, SDR-ST-CON-P1-2900 |  |  |  | -54d | 0d | SIC- Cost [5622]; Plumbing Helper [128.18 h]; Labor [128.18 h]; Plumber [128.18 h]; Excavator [30 h]; Excavator Operator [128.18 h]; Un-Skilled Labor [128.18 h]; Skilled Labor [128.18 h] | 5,622 |  | 2 | 0 | B3.33 14 19.04 | Number | P1-P.W |
|  | 2 | **Testing** |  | 2027-03-08 | 2027-04-05 |  |  |  |  |  |  |  |  |  |  |  |  |  |  |
| SDR-ST-CON-P1-4510 |  | Testing for Chambers & Valves | 21d | 2027-03-08 | 2027-04-05 | SDR-ST-CON-P1-4370, SDR-ST-CON-P1-3640 |  |  |  | -47d | 0d | SIC- Cost [1249.33]; Plumbing Helper [106.82 h]; Labor [106.82 h]; Plumber [106.82 h]; Excavator [15 h]; Excavator Operator [106.82 h]; Un-Skilled Labor [106.82 h]; Skilled Labor [106.82 h] | 1,249.33 |  | 2 | 0 | B3.33 14 19.05 | Number | P1-P.W |
|  | 6 | **Backfilling** |  | 2027-04-06 | 2027-04-29 |  |  |  |  |  |  |  |  |  |  |  |  |  |  |
| SDR-ST-CON-P1-5070 |  | Backfilling for Chambers & Valves | 21d | 2027-04-06 | 2027-04-29 | SDR-ST-CON-P1-5020, SDR-ST-CON-P1-4970, SDR-ST-CON-P1-5140, SDR-ST-PRO-MS-1050, SDR-ST-CON-P1-4510 |  |  |  | -47d | 0d | SIC- Cost [2498.67]; Plumbing Helper [43.97 h]; Compactor [600 h]; Labor [18.17 h]; Plumber [43.97 h]; Excavator [16.63 h]; Excavator Operator [64.06 h]; Un-Skilled Labor [71.22 h]; Skilled Labor [56.91 h] | 2,498.67 |  | 10 | 0 | B3.33 14 19.06 | M3 | P1-P.W |
|  | 3 | **ROAD - 02** |  | 2026-08-27 | 2027-04-25 |  |  |  |  |  |  |  |  |  |  |  |  |  |  |
|  | 3 | **ROAD-01 From 0 to 400 m (9)** |  | 2026-08-27 | 2027-04-25 |  |  |  |  |  |  |  |  |  |  |  |  |  |  |
|  | 7 | **Pipes Work** |  | 2026-08-27 | 2027-02-24 |  |  |  |  |  |  |  |  |  |  |  |  |  |  |
|  | 1 | **Excavation** |  | 2026-08-27 | 2026-09-21 |  |  |  |  |  |  |  |  |  |  |  |  |  |  |
| SDR-ST-CON-P1-1930 |  | Excavation for PW HDPE Pipes 315 mm Section 1 | 21d | 2026-08-27 A | 2026-09-14 A | SDR-ST-CON-P1-1300 FS+7d | 100% | 2026-09-07 | 2026-10-01 |  |  | SIC- Cost [5079]; Plumbing Helper [37.98 h]; Labor [128.18 h]; Plumber [37.98 h]; Excavator [20 h]; Excavator Operator [128.18 h]; Un-Skilled Labor [37.98 h]; Skilled Labor [37.98 h] | 5,079 | 5,079 | 125 | 0 | B3.33 14 13.01 | M3 | P1-P.W |
| SDR-ST-CON-P1-2480 |  | Excavation for PW HDPE Pipes 315 mm Section 2 | 21d | 2026-08-31 A | 2026-09-21 A | SDR-ST-CON-P1-1930 | 100% | 2026-10-03 | 2026-10-26 |  |  | SIC- Cost [5079]; Plumbing Helper [37.98 h]; Labor [128.18 h]; Plumber [37.98 h]; Excavator [15 h]; Excavator Operator [128.18 h]; Un-Skilled Labor [37.98 h]; Skilled Labor [37.98 h] | 5,079 | 5,079 | 125 | 0 | B3.33 14 13.02 | M3 | P1-P.W |

| ID | WBS | Activity | Duration | Start | Finish | Predecessors | Complete | Remaining | Planned start | Planned finish | Total float | Free float | Resources | Cost | Actual cost | BOQ Qty | Variance | BOQ Line item | UOM | Activities Codes Sudair Station |
| --- | --- | --- | --- | --- | --- | --- | --- | --- | --- | --- | --- | --- | --- | --- | --- | --- | --- | --- | --- | --- |
|  | 8 | **bedding Works** |  | 2026-09-22 | 2026-10-24 |  |  |  |  |  |  |  |  |  |  |  |  |  |  |  |
| SDR-ST-CON-P1-3130 |  | Sand bedding for PW HDPE Pipes 315 mm | 21d | 2026-09-22 A | 2026-10-24 A | SDR-ST-CON-P1-2480 | 100% |  | 2026-10-27 | 2026-11-19 |  |  | SIC- Cost [2539.5]; Plumbing Helper [37.98 h]; Labor [128.18 h]; Plumber [37.98 h]; Excavator [20.62 h]; Excavator Operator [128.18 h]; Un-Skilled Labor [37.98 h]; Skilled Labor [37.98 h] | 2,539.5 | 2,539.5 | 410 | 19.047619047619 | B3.33 14 13.03 | M | P1-P.W |
|  | 2 | **Pipes Laying** |  | 2026-09-24 | 2026-11-08 |  |  |  |  |  |  |  |  |  |  |  |  |  |  |  |
| SDR-ST-CON-P1-3650 |  | Install PW 315 mm HDPE Pipe | 21d | 2026-09-24 A | 2026-11-08 A | SDR-ST-PRO-MS-1110, SDR-ST-CON-P1-3130 | 100% |  | 2026-11-21 | 2026-12-14 |  |  | SIC- Cost [22855.5]; Plumbing Helper [37.98 h]; Labor [37.98 h]; Plumber [37.98 h]; Excavator [15 h]; Excavator Operator [37.98 h]; Un-Skilled Labor [37.98 h]; Skilled Labor [37.98 h] | 22,855.52 | 22,855.52 | 410 | 100 | B3.33 14 13.04 | M | P1-P.W |
|  | 5 | **Testing** |  | 2026-10-24 | 2026-12-10 |  |  |  |  |  |  |  |  |  |  |  |  |  |  |  |
| SDR-ST-CON-P1-4340 |  | Testing of PW HDPE Pipe 315 mm. | 21d | 2026-10-24 A | 2026-12-10 | SDR-ST-CON-P1-3650 | 50% | 11d | 2026-12-15 | 2027-01-07 | 45d | 58d | SIC- Cost [5079]; Plumbing Helper [106.82 h]; Labor [106.82 h]; Plumber [106.82 h]; Excavator [19.39 h]; Excavator Operator [106.82 h]; Un-Skilled Labor [106.82 h]; Skilled Labor [106.82 h] | 5,079 | 2,539.5 | 410 | 50 | B3.33 14 13.05 | M | P1-P.W |
|  | 9 | **Backfilling** |  | 2026-10-24 | 2027-02-24 |  |  |  |  |  |  |  |  |  |  |  |  |  |  |  |
| SDR-ST-CON-P1-4910 |  | Backfilling of PW HDPE Pipe 315 mm. | 21d | 2026-10-24 A | 2027-02-24 | SDR-ST-CON-P1-5020, SDR-ST-CON-P1-4740, SDR-ST-CON-P1-4880, SDR-ST-PRO-MS-1050, SDR-ST-CON-P1-4340 | 95% | 6d | 2027-01-17 | 2027-02-09 | 15d | 26d | SIC- Cost [10158]; Plumbing Helper [106.82 h]; Labor [106.82 h]; Plumber [106.82 h]; Excavator [101.25 h]; Excavator Operator [106.82 h]; Un-Skilled Labor [106.82 h]; Skilled Labor [106.82 h] | 10,158.01 | 9,650.11 | 410 | 95 | B3.33 14 13.06 | M | P1-P.W |
|  | 3 | **Valve Chambers & Valves & Fire Hydrant** |  | 2026-11-29 | 2027-04-25 |  |  |  |  |  |  |  |  |  |  |  |  |  |  |  |
|  | 3 | **Excavation** |  | 2026-11-29 | 2027-01-13 |  |  |  |  |  |  |  |  |  |  |  |  |  |  |  |
| SDR-ST-CON-P1-1940 |  | Excavation for Valve Chambers Section 1 | 20d | 2026-11-29 | 2026-12-21 | SDR-ST-CON-P1-1930 SS |  |  |  |  | -56d | 0d | SIC- Cost [1249.33]; Plumbing Helper [128.18 h]; Labor [128.18 h]; Plumber [128.18 h]; Excavator [20 h]; Excavator Operator [128.18 h]; Un-Skilled Labor [37.98 h]; Skilled Labor [37.98 h] | 1,249.33 |  | 125 | -100 | B3.33 14 19.01 | M3 | P1-P.W |
| SDR-ST-CON-P1-2630 |  | Excavation for Valve Chambers Section 2 | 20d | 2026-12-22 | 2027-01-13 | SDR-ST-CON-P1-1940 |  |  |  |  | -56d | 0d | SIC- Cost [1249.33]; Plumbing Helper [128.18 h]; Labor [128.18 h]; Plumber [128.18 h]; Excavator [30 h]; Excavator Operator [128.18 h]; Un-Skilled Labor [37.98 h]; Skilled Labor [37.98 h] | 1,249.33 |  | 125 | -100 | B3.33 14 19.02 | M3 | P1-P.W |
|  | 1 | **bedding Works** |  | 2027-01-14 | 2027-02-06 |  |  |  |  |  |  |  |  |  |  |  |  |  |  |  |
| SDR-ST-CON-P1-3400 |  | Sand bedding for Valve Chambers | 20d | 2027-01-14 | 2027-02-06 | SDR-ST-CON-P1-2630 |  |  |  |  | -56d | 0d | SIC- Cost [624.67]; Plumbing Helper [37.98 h]; Labor [128.18 h]; Plumber [37.98 h]; Excavator [15 h]; Excavator Operator [128.18 h]; Un-Skilled Labor [37.98 h]; Skilled Labor [37.98 h] | 624.67 |  | 10 | -95 | B3.33 14 19.03 | M3 | P1-P.W |
|  | 4 | **Install Chambers & Valves & Fire Hydrant** |  | 2027-02-07 | 2027-03-02 |  |  |  |  |  |  |  |  |  |  |  |  |  |  |  |
| SDR-ST-CON-P1-4330 |  | Install Chambers & Valves | 20d | 2027-02-07 | 2027-03-02 | SDR-ST-PRO-MS-1190, SDR-ST-CON-P1-3400 |  |  |  |  | -56d | 0d | SIC- Cost [5622]; Plumbing Helper [128.18 h]; Labor [128.18 h]; Plumber [128.18 h]; Excavator [19.84 h]; Excavator Operator [128.18 h]; Un-Skilled Labor [128.18 h]; Skilled Labor [128.18 h] | 5,622 |  | 2 | 0 | B3.33 14 19.04 | Number | P1-P.W |
|  | 2 | **Testing** |  | 2027-03-03 | 2027-03-23 |  |  |  |  |  |  |  |  |  |  |  |  |  |  |  |
| SDR-ST-CON-P1-5060 |  | Testing for Chambers & Valves | 14d | 2027-03-03 | 2027-03-23 | SDR-ST-CON-P1-4370, SDR-ST-CON-P1-4330 |  |  |  |  | -25d | 7d | SIC- Cost [1249.33]; Plumbing Helper [99.7 h]; Labor [99.7 h]; Plumber [99.7 h]; Excavator [106.49 h]; Excavator Operator [99.7 h]; Un-Skilled Labor [99.7 h]; Skilled Labor [99.7 h] | 1,249.33 |  | 2 | 0 | B3.33 14 19.05 | Number | P1-P.W |
|  | 6 | **Backfilling** |  | 2027-04-01 | 2027-04-25 |  |  |  |  |  |  |  |  |  |  |  |  |  |  |  |
| SDR-ST-CON-P1-5730 |  | Backfilling for Chambers & Valves | 21d | 2027-04-01 | 2027-04-25 | SDR-ST-CON-P1-4020, SDR-ST-CON-P1-4610, SDR-ST-CON-P1-4990, SDR-ST-PRO-MS-1050, SDR-ST-CON-P1-5060 |  |  |  |  | -32d | 16d | SIC- Cost [2498.67]; Plumbing Helper [128.18 h]; Labor [128.18 h]; Plumber [128.18 h]; Excavator [180 h]; Excavator Operator [128.18 h]; Un-Skilled Labor [128.18 h]; Skilled Labor [128.18 h] | 2,498.67 |  | 10 | 0 | B3.33 14 19.06 | M3 | P1-P.W |
|  | 2 | **ROAD-01 From 400 to 900 m (10)** |  | 2026-08-27 | 2027-04-25 |  |  |  |  |  |  |  |  |  |  |  |  |  |  |  |
|  | 7 | **Pipes Work** |  | 2026-08-27 | 2026-12-07 |  |  |  |  |  |  |  |  |  |  |  |  |  |  |  |
|  | 1 | **Excavation** |  | 2026-08-27 | 2026-09-24 |  |  |  |  |  |  |  |  |  |  |  |  |  |  |  |
| SDR-ST-CON-P1-1850 |  | Excavation for PW HDPE Pipes 315 mm Section 1 | 17d | 2026-08-27 A | 2026-09-14 A | SDR-ST-CON-P1-1250 FS+8d | 100% |  | 2026-09-08 | 2026-09-28 |  |  | SIC- Cost [5079]; Plumbing Helper [128.18 h]; Labor [128.18 h]; Plumber [128.18 h]; Excavator [20 h]; Excavator Operator [128.18 h]; Un-Skilled Labor [37.98 h]; Skilled Labor [37.98 h] | 5,079 | 5,079 | 125 | 0 | B3.33 14 13.01 | M3 | P1-P.W |
| SDR-ST-CON-P1-2460 |  | Excavation for PW HDPE Pipes 315 mm Section 2 | 17d | 2026-08-31 A | 2026-09-24 A | SDR-ST-CON-P1-1850 | 100% |  | 2026-09-29 | 2026-10-18 |  |  | SIC- Cost [5079]; Plumbing Helper [128.18 h]; Labor [128.18 h]; Plumber [128.18 h]; Excavator [15 h]; Excavator Operator [128.18 h]; Un-Skilled Labor [128.18 h]; Skilled Labor [128.18 h] | 5,079 | 5,079 | 125 | 0 | B3.33 14 13.02 | M3 | P1-P.W |

| ID | WBS | Activity | Duration | Start | Finish | Predecessors | Complete | Remaining | Planned start | Planned finish | Total float | Free float | Resources | Cost | Actual cost | BOQ Qty | Variance | BOQ Line item | UOM | Activities Codes Sudair Station |
| --- | --- | --- | --- | --- | --- | --- | --- | --- | --- | --- | --- | --- | --- | --- | --- | --- | --- | --- | --- | --- |
|  | 8 | **bedding Works** |  | 2026-09-22 | 2026-10-24 |  |  |  |  |  |  |  |  |  |  |  |  |  |  |  |
| SDR-ST-CON-P1-3060 |  | Sand bedding for PW HDPE Pipes 315 mm | 12d | 2026-09-22 A | 2026-10-24 A | SDR-ST-CON-P1-2460 | 100% |  | 2026-10-19 | 2026-11-01 |  |  | SIC- Cost [2539.5]; Plumbing Helper [128.18 h]; Labor [128.18 h]; Plumber [128.18 h]; Excavator [30 h]; Excavator Operator [128.18 h]; Un-Skilled Labor [37.98 h]; Skilled Labor [37.98 h] | 2,539.5 | 2,539.5 | 410 | 0 | B3.33 14 13.03 | M | P1-P.W |
|  | 2 | **Pipes Laying** |  | 2026-09-24 | 2026-10-24 |  |  |  |  |  |  |  |  |  |  |  |  |  |  |  |
| SDR-ST-CON-P1-3570 |  | Install PW 315 mm HDPE Pipe | 11d | 2026-09-24 A | 2026-10-24 A | SDR-ST-PRO-MS-1110, SDR-ST-CON-P1-3060 | 100% |  | 2026-11-02 | 2026-11-14 |  |  | SIC- Cost [22855.5]; Plumbing Helper [37.98 h]; Labor [37.98 h]; Plumber [37.98 h]; Excavator [15 h]; Excavator Operator [37.98 h]; Un-Skilled Labor [37.98 h]; Skilled Labor [37.98 h] | 22,855.52 | 22,855.52 | 410 | 0 | B3.33 14 13.04 | M | P1-P.W |
|  | 5 | **Testing** |  | 2026-10-25 | 2026-12-07 |  |  |  |  |  |  |  |  |  |  |  |  |  |  |  |
| SDR-ST-CON-P1-4060 |  | Testing of PW HDPE Pipe 315 mm. | 14d | 2026-10-25 A | 2026-12-07 | SDR-ST-CON-P1-3570 | 50% | 8d | 2026-11-15 | 2026-11-30 | 26d | 0d | SIC- Cost [5079]; Plumbing Helper [99.7 h]; Labor [99.7 h]; Plumber [99.7 h]; Excavator [30 h]; Excavator Operator [99.7 h]; Un-Skilled Labor [99.7 h]; Skilled Labor [99.7 h] | 5,079 | 2,539.5 | 410 | 42.8571428571429 | B3.33 14 13.05 | M | P1-P.W |
|  | 9 | **Backfilling** |  | 2026-10-23 | 2026-11-01 |  |  |  |  |  |  |  |  |  |  |  |  |  |  |  |
| SDR-ST-CON-P1-4640 |  | Backfilling of PW HDPE Pipe 315 mm. | 21d | 2026-10-23 A | 2026-11-01 A | SDR-ST-PRO-MS-1050, SDR-ST-CON-P1-4060 | 100% |  | 2026-12-01 | 2026-12-24 |  |  | SIC- Cost [10158]; Plumbing Helper [128.18 h]; Labor [128.18 h]; Plumber [128.18 h]; Excavator [162.43 h]; Excavator Operator [128.18 h]; Un-Skilled Labor [128.18 h]; Skilled Labor [128.18 h] | 10,158.01 | 10,158.01 | 410 | 100 | B3.33 14 13.06 | M | P1-P.W |
|  | 3 | **Valve Chambers & Valves & Fire Hydrant** |  | 2026-11-29 | 2027-04-25 |  |  |  |  |  |  |  |  |  |  |  |  |  |  |  |
|  | 3 | **Excavation** |  | 2026-11-29 | 2027-01-21 |  |  |  |  |  |  |  |  |  |  |  |  |  |  |  |
| SDR-ST-CON-P1-1860 |  | Excavation for Valve Chambers Section 1 | 20d | 2026-11-29 | 2026-12-21 | SDR-ST-CON-P1-1850 SS |  |  |  |  | -60d | 7d | SIC- Cost [1249.33]; Plumbing Helper [128.18 h]; Labor [128.18 h]; Plumber [128.18 h]; Excavator [20 h]; Excavator Operator [128.18 h]; Un-Skilled Labor [37.98 h]; Skilled Labor [37.98 h] | 1,249.33 |  | 125 | -100 | B3.33 14 19.01 | M3 | P1-P.W |
| SDR-ST-CON-P1-2550 |  | Excavation for Valve Chambers Section 2 | 20d | 2026-12-30 | 2027-01-21 | SDR-ST-PRO-MS-1010, SDR-ST-CON-P1-1860 |  |  |  |  | -57d | 0d | SIC- Cost [1249.33]; Plumbing Helper [128.18 h]; Labor [128.18 h]; Plumber [128.18 h]; Excavator [30 h]; Excavator Operator [128.18 h]; Un-Skilled Labor [37.98 h]; Skilled Labor [37.98 h] | 1,249.33 |  | 125 | -100 | B3.33 14 19.02 | M3 | P1-P.W |
|  | 1 | **bedding Works** |  | 2027-01-23 | 2027-02-14 |  |  |  |  |  |  |  |  |  |  |  |  |  |  |  |
| SDR-ST-CON-P1-3310 |  | Sand bedding for Valve Chambers | 20d | 2027-01-23 | 2027-02-14 | SDR-ST-CON-P1-2550 |  |  |  |  | -57d | 0d | SIC- Cost [624.67]; Plumbing Helper [37.98 h]; Labor [37.98 h]; Plumber [37.98 h]; Excavator [15 h]; Excavator Operator [37.98 h]; Un-Skilled Labor [37.98 h]; Skilled Labor [37.98 h] | 624.67 |  | 10 | -90 | B3.33 14 19.03 | M3 | P1-P.W |
|  | 4 | **Install Chambers & Valves & Fire Hydrant** |  | 2027-02-15 | 2027-03-15 |  |  |  |  |  |  |  |  |  |  |  |  |  |  |  |
| SDR-ST-CON-P1-4210 |  | Install Chambers & Valves | 20d | 2027-02-15 | 2027-03-15 | SDR-ST-PRO-MS-1190, SDR-ST-CON-P1-3310 |  |  |  |  | -57d | 0d | SIC- Cost [5622]; Plumbing Helper [128.18 h]; Labor [128.18 h]; Plumber [128.18 h]; Excavator [30 h]; Excavator Operator [128.18 h]; Un-Skilled Labor [128.18 h]; Skilled Labor [128.18 h] | 5,622 |  | 2 | 0 | B3.33 14 19.04 | Number | P1-P.W |
|  | 2 | **Testing** |  | 2027-03-16 | 2027-03-31 |  |  |  |  |  |  |  |  |  |  |  |  |  |  |  |
| SDR-ST-CON-P1-4990 |  | Testing for Chambers & Valves | 14d | 2027-03-16 | 2027-03-31 | SDR-ST-CON-P1-4370, SDR-ST-CON-P1-4210 |  |  |  |  | -37d | 0d | SIC- Cost [1249.33]; Plumbing Helper [99.7 h]; Labor [99.7 h]; Plumber [99.7 h]; Excavator [30 h]; Excavator Operator [99.7 h]; Un-Skilled Labor [99.7 h]; Skilled Labor [99.7 h] | 1,249.33 |  | 2 | 0 | B3.33 14 19.05 | Number | P1-P.W |
|  | 6 | **Backfilling** |  | 2027-04-01 | 2027-04-25 |  |  |  |  |  |  |  |  |  |  |  |  |  |  |  |
| SDR-ST-CON-P1-5710 |  | Backfilling for Chambers & Valves | 21d | 2027-04-01 | 2027-04-25 | SDR-ST-CON-P1-4880, SDR-ST-PRO-MS-1050, SDR-ST-CON-P1-4990 |  |  |  |  | -31d | 16d | SIC- Cost [2498.67]; Plumbing Helper [128.18 h]; Labor [128.18 h]; Plumber [128.18 h]; Excavator [15 h]; Excavator Operator [128.18 h]; Un-Skilled Labor [2848.55 h]; Skilled Labor [2848.55 h] | 2,498.67 |  | 10 | 0 | B3.33 14 19.06 | M3 | P1-P.W |
|  | 1 | **ROAD-01 From 900 to 1239 m (11)** |  | 2026-08-27 | 2027-04-18 |  |  |  |  |  |  |  |  |  |  |  |  |  |  |  |
|  | 7 | **Pipes Work** |  | 2026-08-27 | 2027-02-07 |  |  |  |  |  |  |  |  |  |  |  |  |  |  |  |
|  | 1 | **Excavation** |  | 2026-08-27 | 2026-09-24 |  |  |  |  |  |  |  |  |  |  |  |  |  |  |  |
| SDR-ST-CON-P1-2010 |  | Excavation for PW HDPE Pipes 315 mm Section 1 | 16d | 2026-08-27 A | 2026-09-14 A | SDR-ST-CON-P1-1350 | 100% |  | 2026-09-09 | 2026-09-28 |  |  | SIC- Cost [5079]; Plumbing Helper [37.98 h]; Labor [128.18 h]; Plumber [37.98 h]; Excavator [20 h]; Excavator Operator [128.18 h]; Un-Skilled Labor [128.18 h]; Skilled Labor [128.18 h] | 5,079 | 5,079 | 125 | 0 | B3.33 14 13.01 | M3 | P1-P.W |
| SDR-ST-CON-P1-2610 |  | Excavation for PW HDPE Pipes 315 mm Section 2 | 16d | 2026-08-31 A | 2026-09-24 A | SDR-ST-PRO-MS-1010, SDR-ST-CON-P1-2010 | 100% |  | 2026-09-29 | 2026-10-17 |  |  | SIC- Cost [5079]; Plumbing Helper [128.18 h]; Labor [128.18 h]; Plumber [128.18 h]; Excavator [30 h]; Excavator Operator [128.18 h]; Un-Skilled Labor [37.98 h]; Skilled Labor [37.98 h] | 5,079 | 5,079 | 125 | 0 | B3.33 14 13.02 | M3 | P1-P.W |

| ID | WBS | Activity | Duration | Start | Finish | Predecessors | Complete | Planned start | Planned finish | Total float | Free float | Resources | Cost | Actual cost | BOQ Qty | Variance | BOQ Line item | UOM | Activities Codes Sudair Station |
| --- | --- | --- | --- | --- | --- | --- | --- | --- | --- | --- | --- | --- | --- | --- | --- | --- | --- | --- | --- |
|  | 8 | **bedding Works** |  | 2026-09-22 | 2026-11-12 |  |  |  |  |  |  |  |  |  |  |  |  |  |  |
| SDR-ST-CON-P1-3220 |  | Sand bedding for PW HDPE Pipes 315 mm | 10d | 2026-09-22 A | 2026-11-12 A | SDR-ST-CON-P1-2610 | 100% | 2026-10-18 | 2026-10-28 |  |  | SIC- Cost [2539.5]; Plumbing Helper [37.98 h]; Labor [37.98 h]; Plumber [37.98 h]; Excavator [15 h]; Excavator Operator [37.98 h]; Un-Skilled Labor [37.98 h]; Skilled Labor [37.98 h] | 2,539.5 | 2,031.6 | 410 | 0 | B3.33 14 13.03 | M | P1-P.W |
|  | 2 | **Pipes Laying** |  | 2026-09-24 | 2026-11-12 |  |  |  |  |  |  |  |  |  |  |  |  |  |  |
| SDR-ST-CON-P1-3610 |  | Install PW 315 mm HDPE Pipe | 10d | 2026-09-24 A | 2026-11-12 A | SDR-ST-PRO-MS-1110, SDR-ST-CON-P1-3220 | 100% | 2026-10-29 | 2026-11-09 |  |  | SIC- Cost [22855.5]; Plumbing Helper [37.98 h]; Labor [37.98 h]; Plumber [37.98 h]; Excavator [15 h]; Excavator Operator [37.98 h]; Un-Skilled Labor [37.98 h]; Skilled Labor [37.98 h] | 22,855.52 | 18,284.42 | 410 | 0 | B3.33 14 13.04 | M | P1-P.W |
|  | 5 | **Testing** |  | 2026-12-30 | 2027-01-14 |  |  |  |  |  |  |  |  |  |  |  |  |  |  |
| SDR-ST-CON-P1-4090 |  | Testing of PW HDPE Pipe 315 mm. | 14d | 2026-12-30 | 2027-01-14 | SDR-ST-CON-P1-3610 |  |  |  | -17d | 0d | SIC- Cost [5079]; Plumbing Helper [85.46 h]; Labor [85.46 h]; Plumber [85.46 h]; Excavator [53.35 h]; Excavator Operator [85.46 h]; Un-Skilled Labor [85.46 h]; Skilled Labor [85.46 h] | 5,079 |  | 410 | -35.7142857142857 | B3.33 14 13.05 | M | P1-P.W |
|  | 9 | **Backfilling** |  | 2027-01-16 | 2027-02-07 |  |  |  |  |  |  |  |  |  |  |  |  |  |  |
| SDR-ST-CON-P1-4660 |  | Backfilling of PW HDPE Pipe 315 mm. | 20d | 2027-01-16 | 2027-02-07 | SDR-ST-PRO-MS-1050, SDR-ST-CON-P1-4090 |  |  |  | -17d | 44d | SIC- Cost [10158]; Plumbing Helper [128.18 h]; Labor [128.18 h]; Plumber [128.18 h]; Excavator [30 h]; Excavator Operator [128.18 h]; Un-Skilled Labor [128.18 h]; Skilled Labor [128.18 h] | 10,158.03 |  | 410 | 0 | B3.33 14 13.06 | M | P1-P.W |
|  | 3 | **Valve Chambers & Valves & Fire Hydrant** |  | 2026-11-29 | 2027-04-18 |  |  |  |  |  |  |  |  |  |  |  |  |  |  |
|  | 3 | **Excavation** |  | 2026-11-29 | 2027-01-13 |  |  |  |  |  |  |  |  |  |  |  |  |  |  |
| SDR-ST-CON-P1-2020 |  | Excavation for Valve Chambers Section 1 | 20d | 2026-11-29 | 2026-12-21 | SDR-ST-CON-P1-2010 SS |  |  |  | -64d | 0d | SIC- Cost [1249.33]; Plumbing Helper [128.18 h]; Labor [128.18 h]; Plumber [128.18 h]; Excavator [20 h]; Excavator Operator [128.18 h]; Un-Skilled Labor [128.18 h]; Skilled Labor [128.18 h] | 1,249.33 |  | 125 | -100 | B3.33 14 19.01 | M3 | P1-P.W |
| SDR-ST-CON-P1-2740 |  | Excavation for Valve Chambers Section 2 | 20d | 2026-12-22 | 2027-01-13 | SDR-ST-CON-P1-2020 |  |  |  | -64d | 0d | SIC- Cost [1249.33]; Plumbing Helper [128.18 h]; Labor [128.18 h]; Plumber [128.18 h]; Excavator [110.42 h]; Excavator Operator [128.18 h]; Un-Skilled Labor [128.18 h]; Skilled Labor [128.18 h] | 1,249.33 |  | 125 | -100 | B3.33 14 19.02 | M3 | P1-P.W |
|  | 1 | **bedding Works** |  | 2027-01-14 | 2027-02-06 |  |  |  |  |  |  |  |  |  |  |  |  |  |  |
| SDR-ST-CON-P1-3550 |  | Sand bedding for Valve Chambers | 20d | 2027-01-14 | 2027-02-06 | SDR-ST-CON-P1-2740 |  |  |  | -64d | 0d | SIC- Cost [624.67]; Plumbing Helper [128.18 h]; Labor [128.18 h]; Plumber [128.18 h]; Excavator [41.1 h]; Excavator Operator [128.18 h]; Un-Skilled Labor [128.18 h]; Skilled Labor [128.18 h] | 624.67 |  | 10 | -85 | B3.33 14 19.03 | M3 | P1-P.W |
|  | 4 | **Install Chambers & Valves & Fire Hydrant** |  | 2027-02-08 | 2027-03-03 |  |  |  |  |  |  |  |  |  |  |  |  |  |  |
| SDR-ST-CON-P1-4460 |  | Install Chambers & Valves | 20d | 2027-02-08 | 2027-03-03 | SDR-ST-PRO-MS-1190, SDR-ST-CON-P1-3550 FS+1d |  |  |  | -64d | 0d | SIC- Cost [5622]; Plumbing Helper [128.18 h]; Labor [128.18 h]; Plumber [128.18 h]; Excavator [69.35 h]; Excavator Operator [128.18 h]; Un-Skilled Labor [128.18 h]; Skilled Labor [128.18 h] | 5,622 |  | 2 | 0 | B3.33 14 19.04 | Number | P1-P.W |
|  | 2 | **Testing** |  | 2027-03-04 | 2027-03-24 |  |  |  |  |  |  |  |  |  |  |  |  |  |  |
| SDR-ST-CON-P1-5190 |  | Testing for Chambers & Valves | 14d | 2027-03-04 | 2027-03-24 | SDR-ST-CON-P1-4370, SDR-ST-CON-P1-4460 |  |  |  | -37d | 0d | SIC- Cost [1249.33]; Plumbing Helper [99.7 h]; Labor [99.7 h]; Plumber [99.7 h]; Excavator [38.13 h]; Excavator Operator [99.7 h]; Un-Skilled Labor [99.7 h]; Skilled Labor [99.7 h] | 1,249.33 |  | 2 | 0 | B3.33 14 19.05 | Number | P1-P.W |
|  | 6 | **Backfilling** |  | 2027-03-25 | 2027-04-18 |  |  |  |  |  |  |  |  |  |  |  |  |  |  |
| SDR-ST-CON-P1-5750 |  | Backfilling for Chambers & Valves | 21d | 2027-03-25 | 2027-04-18 | SDR-ST-CON-P1-4610, SDR-ST-PRO-MS-1050, SDR-ST-CON-P1-5190 |  |  |  | -37d | 0d | SIC- Cost [2498.67]; Plumbing Helper [128.18 h]; Labor [128.18 h]; Plumber [128.18 h]; Excavator [18.12 h]; Excavator Operator [128.18 h]; Un-Skilled Labor [128.18 h]; Skilled Labor [128.18 h] | 2,498.67 |  | 10 | 0 | B3.33 14 19.06 | M3 | P1-P.W |
|  | 7 | **SEWARAGE NETWORK** |  | 2026-08-09 | 2027-05-02 |  |  |  |  |  |  |  |  |  |  |  |  |  |  |
|  | 6 | **ROAD - 01** |  | 2026-08-09 | 2027-05-02 |  |  |  |  |  |  |  |  |  |  |  |  |  |  |
|  | 2 | **ROAD-01 From 0 to 470 m (3) 110 mm HDPE** |  | 2026-08-09 | 2027-03-20 |  |  |  |  |  |  |  |  |  |  |  |  |  |  |
|  | 7 | **Pipes Work** |  | 2026-08-09 | 2027-01-14 |  |  |  |  |  |  |  |  |  |  |  |  |  |  |
|  | 1 | **Excavation** |  | 2026-08-09 | 2026-10-17 |  |  |  |  |  |  |  |  |  |  |  |  |  |  |
| SDR-ST-CON-P1-1540 |  | Excavation for GRP Pipe 200mm Diameter Section 1 | 20d | 2026-08-09 A | 2026-08-31 A | SDR-ST-CON-P1-1200 | 100% | 2026-08-27 | 2026-09-19 |  |  | SIC- Cost [10614.3]; Surveyor [37.98 h]; Labor [37.98 h]; Plumber [37.98 h]; Excavator [15 h]; Excavator Operator [128.18 h] | 10,614.33 | 10,614.33 | 30 | 0 | B4.33 31 00.01 | M3 | P1-S.N |
| SDR-ST-CON-P1-2380 |  | Excavation for GRP Pipe 200mm Diameter Section 2 | 20d | 2026-09-07 A | 2026-10-17 A | SDR-ST-CON-P1-1540 | 100% | 2026-09-20 | 2026-10-13 |  |  | SIC- Cost [10614.3]; Surveyor [37.98 h]; Labor [37.98 h]; Plumber [37.98 h]; Excavator [15 h]; Excavator Operator [128.18 h] | 10,614.33 | 10,614.33 | 30 | 0 | B4.33 31 00.02 | M3 | P1-S.N |

| ID | WBS | Activity | Duration | Start | Finish | Predecessors | Complete | Planned start | Planned finish | Total float | Free float | Resources | Cost | Actual cost | BOQ Qty | Variance | BOQ Line item | UOM | Activities Codes Sudair Station |
| --- | --- | --- | --- | --- | --- | --- | --- | --- | --- | --- | --- | --- | --- | --- | --- | --- | --- | --- | --- |
|  | 5 | **bedding Works** |  | 2026-09-22 | 2026-11-01 |  |  |  |  |  |  |  |  |  |  |  |  |  |  |
| SDR-ST-CON-P1-3050 |  | Sand bedding for GRP Pipe 200mm Diameter | 15d | 2026-09-22 A | 2026-11-01 A | SDR-ST-CON-P1-2380 | 100% | 2026-10-14 | 2026-10-31 |  |  | SIC- Cost [5307.16]; Surveyor [37.98 h]; Labor [37.98 h]; Plumber [37.98 h]; Excavator [33.52 h]; Excavator Operator [128.18 h] | 5,307.16 | 5,307.16 | 30 | 0 | B4.33 31 00.03 | M3 | P1-S.N |
|  | 2 | **Pipes Laying** |  | 2026-09-24 | 2026-11-08 |  |  |  |  |  |  |  |  |  |  |  |  |  |  |
| SDR-ST-CON-P1-3710 |  | 200 mm GRP Pipe Laying | 20d | 2026-09-24 A | 2026-11-08 A | SDR-ST-PRO-MS-1130, SDR-ST-CON-P1-3050 | 100% | 2026-11-01 | 2026-11-23 |  |  | SIC- Cost [47764.5]; Surveyor [128.18 h]; Compactor [50 h]; Labor [128.18 h]; Plumber [128.18 h]; Excavator [15 h]; Excavator Operator [128.18 h] | 47,764.48 | 47,764.48 | 60 | 35 | B4.33 31 00.04 | M | P1-S.N |
|  | 3 | **Testing** |  | 2026-11-29 | 2026-12-21 |  |  |  |  |  |  |  |  |  |  |  |  |  |  |
| SDR-ST-CON-P1-4590 |  | Testing of 200 mm GRP Pipe. | 20d | 2026-11-29 | 2026-12-21 | SDR-ST-CON-P1-3710 |  |  |  | -4d | 0d | SIC- Cost [10614.3]; Surveyor [128.18 h]; Labor [128.18 h]; Plumber [128.18 h]; Excavator [30 h]; Excavator Operator [128.18 h] | 10,614.33 |  | 60 | 0 | B4.33 31 00.05 | M2 | P1-S.N |
|  | 6 | **Backfilling** |  | 2026-12-22 | 2027-01-14 |  |  |  |  |  |  |  |  |  |  |  |  |  |  |
| SDR-ST-CON-P1-5570 |  | Backfilling of 200 mm GRP Pipe. | 21d | 2026-12-22 | 2027-01-14 | SDR-ST-PRO-MS-1050, SDR-ST-CON-P1-4590 |  |  |  | -4d | 68d | SIC- Cost [21228.7]; Surveyor [128.18 h]; Labor [128.18 h]; Plumber [128.18 h]; Excavator [15 h]; Excavator Operator [128.18 h] | 21,228.66 |  | 60 | 0 | B4.33 31 00.06 | M3 | P1-S.N |
|  | 4 | **Manholes** |  | 2026-08-27 | 2027-03-20 |  |  |  |  |  |  |  |  |  |  |  |  |  |  |
|  | 1 | **Excavation** |  | 2026-08-27 | 2026-10-03 |  |  |  |  |  |  |  |  |  |  |  |  |  |  |
| SDR-ST-CON-P1-1550 |  | Excavation for manhole. Section 1 | 21d | 2026-08-27 A | 2026-10-03 A | SDR-ST-CON-P1-1540 SS | 100% | 2026-08-27 | 2026-09-20 |  |  | SIC- Cost [1359.27]; Surveyor [37.98 h]; Labor [128.18 h]; Plumber [128.18 h]; Excavator [15 h]; Excavator Operator [128.18 h] | 1,359.27 | 1,359.27 | 10 | 0 | B4.33 14 19.01 | M3 | P1-S.N |
| SDR-ST-CON-P1-2210 |  | Excavation for manhole. Section 2 | 21d | 2026-10-01 A | 2026-10-03 A | SDR-ST-CON-P1-1550 | 100% | 2026-09-21 | 2026-10-15 |  |  | SIC- Cost [1359.27]; Surveyor [37.98 h]; Labor [128.18 h]; Plumber [128.18 h]; Excavator [15.19 h]; Excavator Operator [128.18 h] | 1,359.27 | 1,359.27 | 10 | 0 | B4.33 14 19.02 | M3 | P1-S.N |
|  | 2 | **bedding Works** |  | 2026-10-05 | 2026-10-07 |  |  |  |  |  |  |  |  |  |  |  |  |  |  |
| SDR-ST-CON-P1-2960 |  | Sand bedding for manhole. | 21d | 2026-10-05 A | 2026-10-07 A | SDR-ST-CON-P1-2210 | 100% | 2026-10-17 | 2026-11-09 |  |  | SIC- Cost [1812.36]; Surveyor [37.98 h]; Labor [128.18 h]; Plumber [128.18 h]; Excavator [30 h]; Excavator Operator [128.18 h] | 1,812.36 | 1,812.36 | 9 | 0 | B4.33 14 19.03 | M3 | P1-S.N |
|  | 3 | **Install Manholes** |  | 2026-10-08 | 2026-10-11 |  |  |  |  |  |  |  |  |  |  |  |  |  |  |
| SDR-ST-CON-P1-3840 |  | Manhole Installation | 21d | 2026-10-08 A | 2026-10-11 A | SDR-ST-PRO-MS-1140, SDR-ST-CON-P1-2210, SDR-ST-CON-P1-2960 | 100% | 2026-11-10 | 2026-12-03 |  |  | SIC- Cost [8155.63]; Surveyor [128.18 h]; Compactor [92.9 h]; Labor [39.97 h]; Plumber [39.97 h]; Excavator [40 h]; Excavator Operator [39.97 h] | 8,155.63 | 8,155.63 | 2 | 76.1904761904762 | B4.33 14 19.014 | Number | P1-S.N |
|  | 4 | **Testing** |  | 2027-01-25 | 2027-02-17 |  |  |  |  |  |  |  |  |  |  |  |  |  |  |
| SDR-ST-CON-P1-4790 |  | Testing | 21d | 2027-01-25 | 2027-02-17 | SDR-ST-CON-P1-3840, SDR-ST-CON-P1-3840 FF |  |  |  | 0d |  | SIC- Cost [1812.36]; Surveyor [71.21 h]; Labor [128.18 h]; Plumber [128.18 h] | 1,812.36 |  | 2 | 0 | B4.33 14 19.05 | Number | P1-S.N |
|  | 5 | **Backfilling** |  | 2027-02-18 | 2027-03-20 |  |  |  |  |  |  |  |  |  |  |  |  |  |  |
| SDR-ST-CON-P1-5720 |  | Backfilling | 21d | 2027-02-18 | 2027-03-20 | SDR-ST-PRO-MS-1050, SDR-ST-CON-P1-4790 |  |  |  | 0d | 47d | SIC- Cost [3624.72]; Surveyor [128.18 h]; Labor [128.18 h]; Plumber [128.18 h]; Excavator [22.69 h]; Excavator Operator [128.18 h] | 3,624.72 |  | 9.5 | 0 | B4.33 14 19.06 | M3 | P1-S.N |
|  | 1 | **ROAD-01 From 470 to 1125 m (6) 110 mm HDPE** |  | 2026-08-13 | 2027-03-20 |  |  |  |  |  |  |  |  |  |  |  |  |  |  |
|  | 7 | **Pipes Work** |  | 2026-08-13 | 2027-01-14 |  |  |  |  |  |  |  |  |  |  |  |  |  |  |
|  | 1 | **Excavation** |  | 2026-08-13 | 2026-10-24 |  |  |  |  |  |  |  |  |  |  |  |  |  |  |
| SDR-ST-CON-P1-1430 |  | Excavation for GRP Pipe 200mm Diameter Section 1 | 17d | 2026-08-13 A | 2026-08-31 A | SDR-ST-CON-P1-1190 | 100% | 2026-08-26 | 2026-09-14 |  |  | SIC- Cost [10614.3]; Surveyor [128.18 h]; Labor [128.18 h]; Plumber [128.18 h]; Excavator [15 h]; Excavator Operator [128.18 h] | 10,614.33 | 10,614.33 | 30 | 0 | B4.33 31 00.01 | M3 | P1-S.N |
| SDR-ST-CON-P1-2110 |  | Excavation for GRP Pipe 200mm Diameter Section 2 | 17d | 2026-09-07 A | 2026-10-24 A | SDR-ST-CON-P1-1430 FS+3d | 100% | 2026-09-19 | 2026-10-08 |  |  | SIC- Cost [10614.3]; Surveyor [128.18 h]; Labor [128.18 h]; Plumber [128.18 h]; Excavator [22.15 h]; Excavator Operator [128.18 h] | 10,614.33 | 10,614.33 | 30 | 0 | B4.33 31 00.02 | M3 | P1-S.N |

| ID | WBS | Activity | Duration | Start | Finish | Predecessors | Complete | Planned start | Planned finish | Total float | Free float | Resources | Cost | Actual cost | BOQ Qty | Variance | BOQ Line item | UOM | Activities Codes Sudair Station |
| --- | --- | --- | --- | --- | --- | --- | --- | --- | --- | --- | --- | --- | --- | --- | --- | --- | --- | --- | --- |
|  | 5 | **bedding Works** |  | 2026-10-17 | 2026-11-03 |  |  |  |  |  |  |  |  |  |  |  |  |  |  |
| SDR-ST-CON-P1-2720 |  | Sand bedding for GRP Pipe 200mm Diameter | 15d | 2026-10-17 A | 2026-11-03 A | SDR-ST-CON-P1-2110 | 100% | 2026-10-10 | 2026-10-26 |  |  | SIC- Cost [5307.16]; Surveyor [128.18 h]; Labor [128.18 h]; Plumber [128.18 h]; Excavator [30 h]; Excavator Operator [128.18 h] | 5,307.16 | 5,307.16 | 30 | 0 | B4.33 31 00.03 | M3 | P1-S.N |
|  | 2 | **Pipes Laying** |  | 2026-10-17 | 2026-11-08 |  |  |  |  |  |  |  |  |  |  |  |  |  |  |
| SDR-ST-CON-P1-3300 |  | 200 mm GRP Pipe Laying | 18d | 2026-10-17 A | 2026-11-08 A | SDR-ST-PRO-MS-1130, SDR-ST-CON-P1-2110, SDR-ST-CON-P1-2720 | 100% | 2026-10-29 | 2026-11-18 |  |  | SIC- Cost [47764.5]; Surveyor [37.98 h]; Compactor [40 h]; Labor [37.98 h]; Plumber [37.98 h]; Excavator [15 h]; Excavator Operator [37.98 h] | 47,764.48 | 47,764.48 | 60 | 16.6666666666667 | B4.33 31 00.04 | M | P1-S.N |
|  | 3 | **Testing** |  | 2026-11-29 | 2026-12-21 |  |  |  |  |  |  |  |  |  |  |  |  |  |  |
| SDR-ST-CON-P1-4120 |  | Testing of 200 mm GRP Pipe. | 20d | 2026-11-29 | 2026-12-21 | SDR-ST-CON-P1-3300 |  |  |  | 2d | 0d | SIC- Cost [10614.3]; Surveyor [128.18 h]; Labor [128.18 h]; Plumber [128.18 h]; Excavator [30 h]; Excavator Operator [128.18 h] | 10,614.33 |  | 60 | 0 | B4.33 31 00.05 | M2 | P1-S.N |
|  | 6 | **Backfilling** |  | 2026-12-22 | 2027-01-14 |  |  |  |  |  |  |  |  |  |  |  |  |  |  |
| SDR-ST-CON-P1-4970 |  | Backfilling of 200 mm GRP Pipe. | 21d | 2026-12-22 | 2027-01-14 | SDR-ST-PRO-MS-1050, SDR-ST-CON-P1-4120 |  |  |  | 2d | 64d | SIC- Cost [21228.7]; Surveyor [39.97 h]; Labor [39.97 h]; Plumber [39.97 h]; Excavator [30 h]; Excavator Operator [39.97 h] | 21,228.66 |  | 60 | 0 | B4.33 31 00.06 | M3 | P1-S.N |
|  | 4 | **Manholes** |  | 2026-08-26 | 2027-03-20 |  |  |  |  |  |  |  |  |  |  |  |  |  |  |
|  | 1 | **Excavation** |  | 2026-08-26 | 2026-10-06 |  |  |  |  |  |  |  |  |  |  |  |  |  |  |
| SDR-ST-CON-P1-1440 |  | Excavation for manhole. Section 1 | 21d | 2026-08-26 A | 2026-10-06 A | SDR-ST-CON-P1-1430 SS | 100% | 2026-08-26 | 2026-09-19 |  |  | SIC- Cost [1359.27]; Surveyor [37.98 h]; Labor [37.98 h]; Plumber [37.98 h]; Excavator [15 h]; Excavator Operator [37.98 h] | 1,359.27 | 1,359.27 | 10 | 0 | B4.33 14 19.01 | M3 | P1-S.N |
| SDR-ST-CON-P1-2120 |  | Excavation for manhole. Section 2 | 21d | 2026-10-01 A | 2026-10-03 A | SDR-ST-CON-P1-1440 | 100% | 2026-09-20 | 2026-10-14 |  |  | SIC- Cost [1359.27]; Surveyor [37.98 h]; Labor [37.98 h]; Plumber [37.98 h]; Excavator [40 h]; Excavator Operator [37.98 h] | 1,359.27 | 1,359.27 | 10 | 0 | B4.33 14 19.02 | M3 | P1-S.N |
|  | 2 | **bedding Works** |  | 2026-10-07 | 2026-10-10 |  |  |  |  |  |  |  |  |  |  |  |  |  |  |
| SDR-ST-CON-P1-2870 |  | Sand bedding for manhole. | 21d | 2026-10-07 A | 2026-10-10 A | SDR-ST-CON-P1-2120 | 100% | 2026-10-15 | 2026-11-08 |  |  | SIC- Cost [1812.36]; Surveyor [71.21 h]; Labor [37.98 h]; Plumber [37.98 h]; Excavator [35.82 h]; Excavator Operator [37.98 h] | 1,812.36 | 1,812.36 | 9 | 0 | B4.33 14 19.03 | M3 | P1-S.N |
|  | 3 | **Install Manholes** |  | 2026-10-08 | 2026-10-13 |  |  |  |  |  |  |  |  |  |  |  |  |  |  |
| SDR-ST-CON-P1-3790 |  | Manhole Installation | 21d | 2026-10-08 A | 2026-10-13 A | SDR-ST-PRO-MS-1140, SDR-ST-CON-P1-2120, SDR-ST-CON-P1-2870 | 100% | 2026-11-09 | 2026-12-02 |  |  | SIC- Cost [8155.63]; Surveyor [71.21 h]; Compactor [100 h]; Labor [39.97 h]; Plumber [39.97 h]; Excavator [30 h]; Excavator Operator [39.97 h] | 8,155.63 | 8,155.63 | 2 | 71.4285714285714 | B4.33 14 19.014 | Number | P1-S.N |
|  | 4 | **Testing** |  | 2027-01-25 | 2027-02-17 |  |  |  |  |  |  |  |  |  |  |  |  |  |  |
| SDR-ST-CON-P1-4710 |  | Testing | 21d | 2027-01-25 | 2027-02-17 | SDR-ST-CON-P1-3790, SDR-ST-CON-P1-3790 FF |  |  |  | -36d | 0d | SIC- Cost [1812.36]; Surveyor [128.18 h]; Labor [128.18 h]; Plumber [128.18 h] | 1,812.36 |  | 2 | 0 | B4.33 14 19.05 | Number | P1-S.N |
|  | 5 | **Backfilling** |  | 2027-02-18 | 2027-03-20 |  |  |  |  |  |  |  |  |  |  |  |  |  |  |
| SDR-ST-CON-P1-5700 |  | Backfilling | 21d | 2027-02-18 | 2027-03-20 | SDR-ST-CON-P1-4880, SDR-ST-PRO-MS-1050, SDR-ST-CON-P1-4710 |  |  |  | -1d | 28d | SIC- Cost [3624.72]; Surveyor [128.18 h]; Labor [128.18 h]; Plumber [128.18 h]; Excavator [15 h]; Excavator Operator [128.18 h] | 3,624.72 |  | 9.5 | 0 | B4.33 14 19.06 | M3 | P1-S.N |
|  | 3 | **ROAD-01 From 1125 to 1765 m (7) 110 mm HDPE** |  | 2026-08-13 | 2027-05-02 |  |  |  |  |  |  |  |  |  |  |  |  |  |  |
|  | 7 | **Pipes Work** |  | 2026-08-13 | 2027-02-01 |  |  |  |  |  |  |  |  |  |  |  |  |  |  |
|  | 1 | **Excavation** |  | 2026-08-13 | 2026-11-04 |  |  |  |  |  |  |  |  |  |  |  |  |  |  |
| SDR-ST-CON-P1-1650 |  | Excavation for GRP Pipe 200mm Diameter Section 1 | 17d | 2026-08-13 A | 2026-08-31 A | SDR-ST-CON-P1-1210 | 100% | 2026-08-27 | 2026-09-15 |  |  | SIC- Cost [10614.3]; Surveyor [37.98 h]; Labor [37.98 h]; Plumber [37.98 h]; Excavator [15 h]; Excavator Operator [128.18 h] | 10,614.33 | 10,614.33 | 30 | 0 | B4.33 31 00.01 | M3 | P1-S.N |
| SDR-ST-CON-P1-2240 |  | Excavation for GRP Pipe 200mm Diameter Section 2 | 17d | 2026-09-07 A | 2026-11-04 A | SDR-ST-CON-P1-1650 FS+3d | 100% | 2026-09-20 | 2026-10-10 |  |  | SIC- Cost [10614.3]; Surveyor [37.98 h]; Labor [128.18 h]; Plumber [128.18 h]; Excavator [15 h]; Excavator Operator [128.18 h] | 10,614.33 | 10,083.61 | 30 | 0 | B4.33 31 00.02 | M3 | P1-S.N |

| ID | WBS | Activity | Duration | Start | Finish | Predecessors | Complete | Remaining | Planned start | Planned finish | Total float | Free float | Resources | Cost | Actual cost | BOQ Qty | Variance | BOQ Line item | UOM | Activities Codes Sudair Station |
| --- | --- | --- | --- | --- | --- | --- | --- | --- | --- | --- | --- | --- | --- | --- | --- | --- | --- | --- | --- | --- |
|  | 5 | **bedding Works** |  | 2026-10-24 | 2026-11-04 |  |  |  |  |  |  |  |  |  |  |  |  |  |  |  |
| SDR-ST-CON-P1-2830 |  | Sand bedding for GRP Pipe 200mm Diameter | 14d | 2026-10-24 A | 2026-11-04 A | SDR-ST-CON-P1-2240 | 100% |  | 2026-10-11 | 2026-10-26 |  |  | SIC- Cost [5307.16]; Surveyor [37.98 h]; Labor [128.18 h]; Plumber [128.18 h]; Excavator [30 h]; Excavator Operator [128.18 h] | 5,307.16 | 5,041.8 | 30 | 0 | B4.33 31 00.03 | M3 | P1-S.N |
|  | 2 | **Pipes Laying** |  | 2026-10-24 | 2026-12-14 |  |  |  |  |  |  |  |  |  |  |  |  |  |  |  |
| SDR-ST-CON-P1-3420 |  | 200 mm GRP Pipe Laying | 18d | 2026-10-24 A | 2026-12-14 | SDR-ST-PRO-MS-1130, SDR-ST-CON-P1-2830 | 95% | 14d | 2026-10-29 | 2026-11-18 | -13d | 0d | SIC- Cost [47764.5]; Surveyor [37.98 h]; Compactor [40 h]; Labor [37.98 h]; Plumber [37.98 h]; Excavator; Excavator Operator [37.98 h] | 47,764.48 | 45,376.26 | 60 | 11.6666666666667 | B4.33 31 00.04 | M | P1-S.N |
|  | 3 | **Testing** |  | 2026-12-15 | 2027-01-07 |  |  |  |  |  |  |  |  |  |  |  |  |  |  |  |
| SDR-ST-CON-P1-4180 |  | Testing of 200 mm GRP Pipe. | 21d | 2026-12-15 | 2027-01-07 | SDR-ST-CON-P1-3420 |  |  |  |  | -13d | 0d | SIC- Cost [10614.3]; Surveyor [128.18 h]; Labor [128.18 h]; Plumber [128.18 h]; Excavator [30 h]; Excavator Operator [128.18 h] | 10,614.33 |  | 60 | 0 | B4.33 31 00.05 | M2 | P1-S.N |
|  | 6 | **Backfilling** |  | 2027-01-09 | 2027-02-01 |  |  |  |  |  |  |  |  |  |  |  |  |  |  |  |
| SDR-ST-CON-P1-5020 |  | Backfilling of 200 mm GRP Pipe. | 21d | 2027-01-09 | 2027-02-01 | SDR-ST-PRO-MS-1050, SDR-ST-CON-P1-4180 |  |  |  |  | -13d | 13d | SIC- Cost [21228.7]; Surveyor [39.97 h]; Labor [39.97 h]; Plumber [39.97 h]; Excavator [30 h]; Excavator Operator [39.97 h] | 21,228.66 |  | 60 | 0 | B4.33 31 00.06 | M3 | P1-S.N |
|  | 4 | **Manholes** |  | 2026-11-29 | 2027-05-02 |  |  |  |  |  |  |  |  |  |  |  |  |  |  |  |
|  | 1 | **Excavation** |  | 2026-11-29 | 2027-01-16 |  |  |  |  |  |  |  |  |  |  |  |  |  |  |  |
| SDR-ST-CON-P1-1660 |  | Excavation for manhole. Section 1 | 21d | 2026-11-29 | 2026-12-22 | SDR-ST-CON-P1-1650 SS |  |  |  |  | -68d | 0d | SIC- Cost [1359.27]; Surveyor [37.98 h]; Labor [37.98 h]; Plumber [37.98 h]; Excavator [23.48 h]; Excavator Operator [128.18 h] | 1,359.27 |  | 10 | -100 | B4.33 14 19.01 | M3 | P1-S.N |
| SDR-ST-CON-P1-2310 |  | Excavation for manhole. Section 2 | 21d | 2026-12-23 | 2027-01-16 | SDR-ST-CON-P1-1660 |  |  |  |  | -68d | 0d | SIC- Cost [1359.27]; Surveyor [37.98 h]; Labor [37.98 h]; Plumber [37.98 h]; Excavator [15 h]; Excavator Operator [128.18 h] | 1,359.27 |  | 10 | -100 | B4.33 14 19.02 | M3 | P1-S.N |
|  | 2 | **bedding Works** |  | 2027-01-17 | 2027-02-09 |  |  |  |  |  |  |  |  |  |  |  |  |  |  |  |
| SDR-ST-CON-P1-3030 |  | Sand bedding for manhole. | 21d | 2027-01-17 | 2027-02-09 | SDR-ST-CON-P1-2310 |  |  |  |  | -68d | 0d | SIC- Cost [1812.36]; Surveyor [37.98 h]; Labor [37.98 h]; Plumber [37.98 h]; Excavator [30 h]; Excavator Operator [128.18 h] | 1,812.36 |  | 9 | -100 | B4.33 14 19.03 | M3 | P1-S.N |
|  | 3 | **Install Manholes** |  | 2027-02-10 | 2027-03-07 |  |  |  |  |  |  |  |  |  |  |  |  |  |  |  |
| SDR-ST-CON-P1-3910 |  | Manhole Installation | 21d | 2027-02-10 | 2027-03-07 | SDR-ST-PRO-MS-1140, SDR-ST-CON-P1-2310, SDR-ST-CON-P1-3030 |  |  |  |  | -68d | 0d | SIC- Cost [8155.63]; Surveyor [128.18 h]; Compactor [200 h]; Labor [199.87 h]; Plumber [199.87 h]; Excavator [200 h]; Excavator Operator [199.87 h] | 8,155.63 |  | 2 | -23.8095238095238 | B4.33 14 19.014 | Number | P1-S.N |
|  | 4 | **Testing** |  | 2027-03-08 | 2027-04-05 |  |  |  |  |  |  |  |  |  |  |  |  |  |  |  |
| SDR-ST-CON-P1-4830 |  | Testing | 21d | 2027-03-08 | 2027-04-05 | SDR-ST-CON-P1-3910 |  |  |  |  | -68d | 0d | SIC- Cost [1812.36]; Surveyor [39.97 h]; Labor [39.97 h]; Plumber [39.97 h] | 1,812.36 |  | 2 | 0 | B4.33 14 19.05 | Number | P1-S.N |
|  | 5 | **Backfilling** |  | 2027-04-12 | 2027-05-02 |  |  |  |  |  |  |  |  |  |  |  |  |  |  |  |
| SDR-ST-CON-P1-5740 |  | Backfilling | 18d | 2027-04-12 | 2027-05-02 | SDR-ST-PRO-MS-1050, SDR-ST-CON-P1-4830 FS+5d |  |  |  |  | -68d | 44d | SIC- Cost [3624.72]; Surveyor [128.18 h]; Labor [128.18 h]; Plumber [128.18 h]; Excavator [50.39 h]; Excavator Operator [128.18 h] | 3,624.72 |  | 9.5 | 0 | B4.33 14 19.06 | M3 | P1-S.N |
|  | 1 | **ROAD - 02** |  | 2026-08-30 | 2027-04-15 |  |  |  |  |  |  |  |  |  |  |  |  |  |  |  |
|  | 1 | **ROAD-01 From 400 to 900 m (10) 110 mm HDPE** |  | 2026-08-30 | 2027-03-20 |  |  |  |  |  |  |  |  |  |  |  |  |  |  |  |
|  | 7 | **Pipes Work** |  | 2026-09-07 | 2027-01-21 |  |  |  |  |  |  |  |  |  |  |  |  |  |  |  |
|  | 1 | **Excavation** |  | 2026-09-07 | 2026-11-04 |  |  |  |  |  |  |  |  |  |  |  |  |  |  |  |
| SDR-ST-CON-P1-1810 |  | Excavation for GRP Pipe 200mm Diameter Section 1 | 17d | 2026-09-07 A | 2026-11-04 A | SDR-ST-CON-P1-1250 | 100% |  | 2026-08-30 | 2026-09-17 |  |  | SIC- Cost [10614.3]; Surveyor [37.98 h]; Labor [37.98 h]; Plumber [37.98 h]; Excavator [28.09 h]; Excavator Operator [128.18 h] | 10,614.33 | 10,402.04 | 30 | 0 | B4.33 31 00.01 | M3 | P1-S.N |
| SDR-ST-CON-P1-2530 |  | Excavation for GRP Pipe 200mm Diameter Section 2 | 17d | 2026-10-24 A | 2026-11-04 A | SDR-ST-CON-P1-1810 FS+3d | 100% |  | 2026-09-22 | 2026-10-12 |  |  | SIC- Cost [10614.3]; Surveyor [37.98 h]; Labor [128.18 h]; Plumber [128.18 h]; Excavator [20.79 h]; Excavator Operator [128.18 h] | 10,614.33 | 10,402.04 | 30 | 0 | B4.33 31 00.02 | M3 | P1-S.N |

| ID | WBS | Activity | Duration | Start | Finish | Predecessors | Complete | Remaining | Planned start | Planned finish | Total float | Free float | Resources | Cost | Actual cost | BOQ Qty | Variance | BOQ Line item | UOM | Activities Codes Sudair Station |
| --- | --- | --- | --- | --- | --- | --- | --- | --- | --- | --- | --- | --- | --- | --- | --- | --- | --- | --- | --- | --- |
|  | 5 | **bedding Works** |  | 2026-10-24 | 2026-12-02 |  |  |  |  |  |  |  |  |  |  |  |  |  |  |  |
| SDR-ST-CON-P1-3210 |  | Sand bedding for GRP Pipe 200mm Diameter | 14d | 2026-10-24 A | 2026-12-02 | SDR-ST-CON-P1-2530 | 95% | 4d | 2026-10-13 | 2026-10-28 | 9d | 0d | SIC- Cost [5307.16]; Surveyor [37.98 h]; Labor [37.98 h]; Plumber [37.98 h]; Excavator [40 h]; Excavator Operator [37.98 h] | 5,307.16 | 5,041.8 | 30 | -5 | B4.33 31 00.03 | M3 | P1-S.N |
|  | 2 | **Pipes Laying** |  | 2026-10-25 | 2026-12-03 |  |  |  |  |  |  |  |  |  |  |  |  |  |  |  |
| SDR-ST-CON-P1-3800 |  | 200 mm GRP Pipe Laying | 18d | 2026-10-25 A | 2026-12-03 | SDR-ST-PRO-MS-1130, SDR-ST-CON-P1-3210 | 99% | 1d | 2026-10-29 | 2026-11-18 | 9d | 0d | SIC- Cost [47764.5]; Surveyor [37.98 h]; Compactor [336.57 h]; Labor [37.98 h]; Plumber [37.98 h]; Excavator [15 h]; Excavator Operator [37.98 h] | 47,764.48 | 45,376.26 | 60 | 15.6666666666667 | B4.33 31 00.04 | M | P1-S.N |
|  | 3 | **Testing** |  | 2026-12-05 | 2026-12-28 |  |  |  |  |  |  |  |  |  |  |  |  |  |  |  |
| SDR-ST-CON-P1-4580 |  | Testing of 200 mm GRP Pipe. | 21d | 2026-12-05 | 2026-12-28 | SDR-ST-CON-P1-3800 |  |  |  |  | 9d | 0d | SIC- Cost [10614.3]; Surveyor [128.18 h]; Labor [128.18 h]; Plumber [128.18 h]; Excavator [30.43 h]; Excavator Operator [128.18 h] | 10,614.33 |  | 60 | 0 | B4.33 31 00.05 | M2 | P1-S.N |
|  | 6 | **Backfilling** |  | 2026-12-29 | 2027-01-21 |  |  |  |  |  |  |  |  |  |  |  |  |  |  |  |
| SDR-ST-CON-P1-5500 |  | Backfilling of 200 mm GRP Pipe. | 21d | 2026-12-29 | 2027-01-21 | SDR-ST-PRO-MS-1050, SDR-ST-CON-P1-4580 |  |  |  |  | 9d | 120d | SIC- Cost [21228.7]; Surveyor [39.97 h]; Labor [39.97 h]; Plumber [39.97 h]; Excavator [15 h]; Excavator Operator [39.97 h] | 21,228.66 |  | 60 | 0 | B4.33 31 00.06 | M3 | P1-S.N |
|  | 4 | **Manholes** |  | 2026-08-30 | 2027-03-20 |  |  |  |  |  |  |  |  |  |  |  |  |  |  |  |
|  | 1 | **Excavation** |  | 2026-08-30 | 2026-10-03 |  |  |  |  |  |  |  |  |  |  |  |  |  |  |  |
| SDR-ST-CON-P1-1820 |  | Excavation for manhole. Section 1 | 21d | 2026-08-30 A | 2026-10-03 A | SDR-ST-CON-P1-1810 SS | 100% |  | 2026-08-30 | 2026-09-22 |  |  | SIC- Cost [1359.27]; Surveyor [37.98 h]; Labor [37.98 h]; Plumber [37.98 h]; Excavator [40 h]; Excavator Operator [37.98 h] | 1,359.27 | 1,359.27 | 10 | 0 | B4.33 14 19.01 | M3 | P1-S.N |
| SDR-ST-CON-P1-2580 |  | Excavation for manhole. Section 2 | 21d | 2026-10-01 A | 2026-10-03 A | SDR-ST-CON-P1-1820 | 100% |  | 2026-09-24 | 2026-10-18 |  |  | SIC- Cost [1359.27]; Surveyor [37.98 h]; Labor [37.98 h]; Plumber [37.98 h]; Excavator [26.8 h]; Excavator Operator [37.98 h] | 1,359.27 | 1,359.27 | 10 | 0 | B4.33 14 19.02 | M3 | P1-S.N |
|  | 2 | **bedding Works** |  | 2026-10-04 | 2026-10-05 |  |  |  |  |  |  |  |  |  |  |  |  |  |  |  |
| SDR-ST-CON-P1-3410 |  | Sand bedding for manhole. | 21d | 2026-10-04 A | 2026-10-05 A | SDR-ST-CON-P1-2580 | 100% |  | 2026-10-19 | 2026-11-11 |  |  | SIC- Cost [1812.36]; Surveyor [37.98 h]; Labor [37.98 h]; Plumber [37.98 h]; Excavator [16.13 h]; Excavator Operator [37.98 h] | 1,812.36 | 1,812.36 | 9 | 0 | B4.33 14 19.03 | M3 | P1-S.N |
|  | 3 | **Install Manholes** |  | 2026-10-10 | 2026-10-13 |  |  |  |  |  |  |  |  |  |  |  |  |  |  |  |
| SDR-ST-CON-P1-4390 |  | Manhole Installation | 21d | 2026-10-10 A | 2026-10-13 A | SDR-ST-PRO-MS-1140, SDR-ST-CON-P1-2580, SDR-ST-CON-P1-3410 | 100% |  | 2026-11-12 | 2026-12-06 |  |  | SIC- Cost [8155.63]; Surveyor [128.18 h]; Compactor [200 h]; Labor [199.87 h]; Plumber [199.87 h]; Excavator [200 h]; Excavator Operator [199.87 h] | 8,155.63 | 8,155.63 | 2 | 85.7142857142857 | B4.33 14 19.014 | Number | P1-S.N |
|  | 4 | **Testing** |  | 2027-01-25 | 2027-02-17 |  |  |  |  |  |  |  |  |  |  |  |  |  |  |  |
| SDR-ST-CON-P1-5120 |  | Testing | 21d | 2027-01-25 | 2027-02-17 | SDR-ST-CON-P1-4390, SDR-ST-CON-P1-4390 FF |  |  |  |  | -35d | 0d | SIC- Cost [1812.36]; Surveyor [28.49 h]; Labor [39.97 h]; Plumber [39.97 h] | 1,812.36 |  | 2 | 0 | B4.33 14 19.05 | Number | P1-S.N |
|  | 5 | **Backfilling** |  | 2027-02-18 | 2027-03-20 |  |  |  |  |  |  |  |  |  |  |  |  |  |  |  |
| SDR-ST-CON-P1-5770 |  | Backfilling | 21d | 2027-02-18 | 2027-03-20 | SDR-ST-CON-P1-5140, SDR-ST-PRO-MS-1050, SDR-ST-CON-P1-5120 |  |  |  |  | -1d | 86d | SIC- Cost [3624.72]; Surveyor [71.21 h]; Labor [128.18 h]; Plumber [128.18 h]; Excavator [118.98 h]; Excavator Operator [128.18 h] | 3,624.72 |  | 9.5 | 0 | B4.33 14 19.06 | M3 | P1-S.N |
|  | 3 | **ROAD-01 From 900 to 1239 m (11) 110 mm HDPE** |  | 2026-09-07 | 2027-04-15 |  |  |  |  |  |  |  |  |  |  |  |  |  |  |  |
|  | 7 | **Pipes Work** |  | 2026-09-07 | 2027-02-27 |  |  |  |  |  |  |  |  |  |  |  |  |  |  |  |
|  | 1 | **Excavation** |  | 2026-09-07 | 2026-11-05 |  |  |  |  |  |  |  |  |  |  |  |  |  |  |  |
| SDR-ST-CON-P1-2030 |  | Excavation for GRP Pipe 200mm Diameter Section 1 | 16d | 2026-09-07 A | 2026-11-05 A | SDR-ST-CON-P1-1350 | 100% |  | 2026-09-09 | 2026-09-28 |  |  | SIC- Cost [10614.3]; Surveyor [37.98 h]; Labor [37.98 h]; Plumber [37.98 h]; Excavator [20 h]; Excavator Operator [128.18 h] | 10,614.33 | 9,022.18 | 30 | 0 | B4.33 31 00.01 | M3 | P1-S.N |
| SDR-ST-CON-P1-2700 |  | Excavation for GRP Pipe 200mm Diameter Section 2 | 16d | 2026-09-15 A | 2026-11-05 A | SDR-ST-CON-P1-2030 FS+3d | 100% |  | 2026-11-29 | 2026-12-16 |  |  | SIC- Cost [10614.3]; Surveyor [37.98 h]; Labor [37.98 h]; Plumber [37.98 h]; Excavator [30 h]; Excavator Operator [128.18 h] | 10,614.33 |  | 30 | 0 | B4.33 31 00.02 | M3 | P1-S.N |

| ID | WBS | Activity | Duration | Start | Finish | Predecessors | Complete | Planned start | Planned finish | Total float | Free float | Resources | Cost | Actual cost | BOQ Qty | Variance | BOQ Line item | UOM | Activities Codes Sudair Station |
| --- | --- | --- | --- | --- | --- | --- | --- | --- | --- | --- | --- | --- | --- | --- | --- | --- | --- | --- | --- |
|  | 5 | **bedding Works** |  | 2026-11-29 | 2026-12-09 |  |  |  |  |  |  |  |  |  |  |  |  |  |  |
| SDR-ST-CON-P1-3330 |  | Sand bedding for GRP Pipe 200mm Diameter | 10d | 2026-11-29 | 2026-12-09 | SDR-ST-CON-P1-2700 |  |  |  | -21d | 0d | SIC- Cost [5307.16]; Surveyor [37.98 h]; Labor [37.98 h]; Plumber [37.98 h]; Excavator [15 h]; Excavator Operator [37.98 h] | 5,307.16 |  | 30 | -100 | B4.33 31 00.03 | M3 | P1-S.N |
|  | 2 | **Pipes Laying** |  | 2026-12-10 | 2027-01-03 |  |  |  |  |  |  |  |  |  |  |  |  |  |  |
| SDR-ST-CON-P1-3750 |  | 200 mm GRP Pipe Laying | 21d | 2026-12-10 | 2027-01-03 | SDR-ST-PRO-MS-1130, SDR-ST-CON-P1-2700, SDR-ST-CON-P1-3330 |  |  |  | -21d | 0d | SIC- Cost [47764.5]; Surveyor [35.61 h]; Compactor [50 h]; Labor [128.18 h]; Plumber [128.18 h]; Excavator [15 h]; Excavator Operator [128.18 h] | 47,764.48 |  | 60 | -57.1428571428571 | B4.33 31 00.04 | M | P1-S.N |
|  | 3 | **Testing** |  | 2027-01-04 | 2027-01-27 |  |  |  |  |  |  |  |  |  |  |  |  |  |  |
| SDR-ST-CON-P1-4670 |  | Testing of 200 mm GRP Pipe. | 21d | 2027-01-04 | 2027-01-27 | SDR-ST-CON-P1-3750 |  |  |  | -21d | 0d | SIC- Cost [10614.3]; Surveyor [21.36 h]; Labor [128.18 h]; Plumber [128.18 h] | 10,614.33 |  | 60 | 0 | B4.33 31 00.05 | M2 | P1-S.N |
|  | 6 | **Backfilling** |  | 2027-02-02 | 2027-02-27 |  |  |  |  |  |  |  |  |  |  |  |  |  |  |
| SDR-ST-CON-P1-5670 |  | Backfilling of 200 mm GRP Pipe. | 21d | 2027-02-02 | 2027-02-27 | SDR-ST-PRO-MS-1050, SDR-ST-CON-P1-4670 FS+4d |  |  |  | -21d | 90d | SIC- Cost [21228.7]; Surveyor [21.36 h]; Labor [128.18 h]; Plumber [128.18 h]; Excavator [15 h]; Excavator Operator [128.18 h] | 21,228.66 |  | 60 | 0 | B4.33 31 00.06 | M3 | P1-S.N |
|  | 4 | **Manholes** |  | 2026-09-09 | 2027-04-15 |  |  |  |  |  |  |  |  |  |  |  |  |  |  |
|  | 1 | **Excavation** |  | 2026-09-09 | 2026-11-09 |  |  |  |  |  |  |  |  |  |  |  |  |  |  |
| SDR-ST-CON-P1-2040 |  | Excavation for manhole. Section 1 | 21d | 2026-09-09 A | 2026-10-24 A | SDR-ST-CON-P1-2030 SS | 100% | 2026-09-09 | 2026-10-04 |  |  | SIC- Cost [1359.27]; Surveyor [37.98 h]; Labor [37.98 h]; Plumber [37.98 h]; Excavator [20 h]; Excavator Operator [128.18 h] | 1,359.27 | 1,359.27 | 10 | 0 | B4.33 14 19.01 | M3 | P1-S.N |
| SDR-ST-CON-P1-2760 |  | Excavation for manhole. Section 2 | 21d | 2026-10-25 A | 2026-11-09 A | SDR-ST-CON-P1-2040 | 100% | 2026-10-05 | 2026-10-28 |  |  | SIC- Cost [1359.27]; Surveyor [37.98 h]; Labor [37.98 h]; Plumber [37.98 h]; Excavator [18.83 h]; Excavator Operator [128.18 h] | 1,359.27 | 1,155.38 | 10 | 0 | B4.33 14 19.02 | M3 | P1-S.N |
|  | 2 | **bedding Works** |  | 2026-10-25 | 2026-11-12 |  |  |  |  |  |  |  |  |  |  |  |  |  |  |
| SDR-ST-CON-P1-3620 |  | Sand bedding for manhole. | 21d | 2026-10-25 A | 2026-11-12 A | SDR-ST-CON-P1-2760 | 100% | 2026-11-29 | 2026-12-22 |  |  | SIC- Cost [1812.36]; Surveyor [35.61 h]; Labor [128.18 h]; Plumber [128.18 h]; Excavator [30 h]; Excavator Operator [128.18 h] | 1,812.36 |  | 9 | 28.5714285714286 | B4.33 14 19.03 | M3 | P1-S.N |
|  | 3 | **Install Manholes** |  | 2027-01-25 | 2027-02-17 |  |  |  |  |  |  |  |  |  |  |  |  |  |  |
| SDR-ST-CON-P1-4560 |  | Manhole Installation | 21d | 2027-01-25 | 2027-02-17 | SDR-ST-PRO-MS-1140, SDR-ST-CON-P1-2760, SDR-ST-CON-P1-3620 |  |  |  | -35d | 0d | SIC- Cost [8155.63]; Surveyor [35.61 h]; Compactor [65.68 h]; Labor [128.18 h]; Plumber [128.18 h]; Excavator [22.71 h]; Excavator Operator [128.18 h] | 8,155.63 |  | 2 | 0 | B4.33 14 19.014 | Number | P1-S.N |
|  | 4 | **Testing** |  | 2027-02-18 | 2027-03-20 |  |  |  |  |  |  |  |  |  |  |  |  |  |  |
| SDR-ST-CON-P1-5440 |  | Testing | 21d | 2027-02-18 | 2027-03-20 | SDR-ST-CON-P1-5120, SDR-ST-CON-P1-4560, SDR-ST-CON-P1-4560 FF |  |  |  | -35d | 0d | SIC- Cost [1812.36]; Surveyor [35.61 h]; Labor [39.97 h]; Plumber [39.97 h] | 1,812.36 |  | 2 | 0 | B4.33 14 19.05 | Number | P1-S.N |
|  | 5 | **Backfilling** |  | 2027-03-23 | 2027-04-15 |  |  |  |  |  |  |  |  |  |  |  |  |  |  |
| SDR-ST-CON-P1-5800 |  | Backfilling | 21d | 2027-03-23 | 2027-04-15 | SDR-ST-CON-P1-4240, SDR-ST-PRO-MS-1050, SDR-ST-CON-P1-5440 FS+2d |  |  |  | -35d | 0d | SIC- Cost [3624.72]; Surveyor [28.49 h]; Labor [128.18 h]; Plumber [128.18 h]; Excavator [30 h]; Excavator Operator [128.18 h] | 3,624.72 |  | 9.5 | 0 | B4.33 14 19.06 | M3 | P1-S.N |
|  | 11 | **STORM WATER** |  | 2026-08-09 | 2027-06-03 |  |  |  |  |  |  |  |  |  |  |  |  |  |  |
|  | 2 | **ROAD N...** |  | 2026-08-09 | 2027-06-03 |  |  |  |  |  |  |  |  |  |  |  |  |  |  |
|  | 8 | **Pipes Works** |  | 2026-08-09 | 2027-06-03 |  |  |  |  |  |  |  |  |  |  |  |  |  |  |
|  | 1 | **Excavation** |  | 2026-08-09 | 2026-08-31 |  |  |  |  |  |  |  |  |  |  |  |  |  |  |
| SDR-ST-CON-P1-1460 |  | Excavation for GRP Pipes Section 1 | 18d | 2026-08-09 A | 2026-08-31 A | SDR-ST-CON-P1-1200 | 100% | 2026-08-27 | 2026-09-16 |  |  | SIC- Cost [58808.1]; Labor [37.98 h]; Excavator [160.71 h]; Excavator Operator [37.98 h] | 58,808.05 | 58,808.05 | 110 | 0 |  | M3 | P1-S.W |

| ID | WBS | Activity | Duration | Start | Finish | Predecessors | Complete | Remaining | Planned start | Planned finish | Total float | Free float | Resources | Cost | Actual cost | BOQ Qty | Variance | UOM | Activities Codes Sudair Station | BOQ Line item |
| --- | --- | --- | --- | --- | --- | --- | --- | --- | --- | --- | --- | --- | --- | --- | --- | --- | --- | --- | --- | --- |
|  | 7 | **bedding Works** |  | 2026-09-22 | 2026-10-17 |  |  |  |  |  |  |  |  |  |  |  |  |  |  |  |
| SDR-ST-CON-P1-2170 |  | Sand bedding for GRP Pipes | 21d | 2026-09-22 A | 2026-10-17 A | SDR-ST-CON-P1-1460 FS+4d | 100% |  |  |  |  |  | SIC- Cost [14702]; Labor [37.98 h]; Excavator [15.95 h]; Excavator Operator [37.98 h]; Loader [40 h] | 14,702.01 | 14,702.01 | 60 | 0 | M3 | P1-S.W |  |
|  | 2 | **Pipes Laying** |  | 2026-09-15 | 2026-10-17 |  |  |  |  |  |  |  |  |  |  |  |  |  |  |  |
| SDR-ST-CON-P1-2910 |  | Install ST GRP Pipes | 21d | 2026-09-15 A | 2026-10-17 A | SDR-ST-PRO-MS-1010, SDR-ST-CON-P1-2170 | 100% |  | 2026-10-18 | 2026-11-10 |  |  | Pipe Fitter [37.98 h]; SIC- Cost [132318]; Labor [37.98 h] | 132,318.11 | 132,318.11 | 230 | 0 | M | P1-S.W |  |
|  | 6 | **Testing** |  | 2026-10-25 | 2027-01-03 |  |  |  |  |  |  |  |  |  |  |  |  |  |  |  |
| SDR-ST-CON-P1-3830 |  | Testing ST GRP Pipes | 21d | 2026-10-25 A | 2027-01-03 | SDR-ST-CON-P1-2910 FS+4d | 95% | 4d | 2026-11-16 | 2026-12-09 | -14d | 99d | Pipe Fitter [128.18 h]; SIC- Cost [29404]; Labor [128.18 h] | 29,404.02 | 27,933.82 | 230 | 95 | M | P1-S.W |  |
|  | 3 | **Backfilling** |  | 2026-10-26 | 2027-06-03 |  |  |  |  |  |  |  |  |  |  |  |  |  |  |  |
| SDR-ST-CON-P1-4760 |  | Backfilling ST GRP Pipes | 20d | 2026-10-26 A | 2027-06-03 | SDR-ST-PRO-MS-1050, SDR-ST-CON-P1-3830, SDR-ST-CON-P3-1170 | 95% | 3d | 2026-12-28 | 2027-01-19 | -84d | 0d | SIC- Cost [58808.1]; Labor [128.18 h]; Excavator [410 h]; Excavator Operator [128.18 h] | 58,808.05 | 55,867.65 | 60 | 95 | M3 | P1-S.W |  |
|  | 3 | **Package-3** |  | 2026-11-29 | 2027-12-12 |  |  |  |  |  |  |  |  |  |  |  |  |  |  |  |
|  | 1 | **Site Works** |  | 2026-11-29 | 2027-01-07 |  |  |  |  |  |  |  |  |  |  |  |  |  |  |  |
|  | 1 | **Earthworks** |  | 2026-11-29 | 2027-01-07 |  |  |  |  |  |  |  |  |  |  |  |  |  |  |  |
|  | 2 | **Excavation** |  | 2026-11-29 | 2026-12-21 |  |  |  |  |  |  |  |  |  |  |  |  |  |  |  |
| SDR-ST-CON-P3-1000 |  | Excavation in all types of soil to the required depth includes removal of waste material | 20d | 2026-11-29 | 2026-12-21 | SDR-ST-MILS-1000, SDR-ST-CON-P1-6060 |  |  |  |  | -119d | 0d | SIC- Cost [13800]; Excavator [92 h]; Excavator Operator [142.43 h]; Grader [200 h]; Grader Operator [142.43 h]; Loader [200 h]; Loader Operator [142.43 h]; Un-Skilled Labor [7975.12 h]; Supervisor [71.21 h]; Skilled Labor [284.85 h] | 13,800.01 |  | 575 | -100 | M3 | P3-P.W | B1.31 23 16.01 |
|  | 1 | **Fill** |  | 2026-12-22 | 2027-01-07 |  |  |  |  |  |  |  |  |  |  |  |  |  |  |  |
| SDR-ST-CON-P3-1010 |  | Backfilling with improved and select fill material from the site or imported | 15d | 2026-12-22 | 2027-01-07 | SDR-ST-CON-P3-1000, SDR-ST-MILS-1000 |  |  |  |  | -119d | 0d | SIC- Cost [7290.01]; Excavator [65 h]; Excavator Operator [142.43 h]; Grader [200 h]; Grader Operator [142.43 h]; Loader [200 h]; Loader Operator [142.43 h]; Un-Skilled Labor [142.43 h]; Supervisor [35.61 h]; Skilled Labor [142.43 h] | 7,290.01 |  | 405 | -100 | M3 | P3-P.W | B1.31 23 23.01 |
|  | 2 | **Platform Works** |  | 2027-01-09 | 2027-11-25 |  |  |  |  |  |  |  |  |  |  |  |  |  |  |  |
|  | 1 | **Platform** |  | 2027-01-09 | 2027-07-11 |  |  |  |  |  |  |  |  |  |  |  |  |  |  |  |
|  | 1 | **Earthworks** |  | 2027-01-09 | 2027-02-16 |  |  |  |  |  |  |  |  |  |  |  |  |  |  |  |
|  | 1 | **Excavation** |  | 2027-01-09 | 2027-01-26 |  |  |  |  |  |  |  |  |  |  |  |  |  |  |  |
| SDR-ST-CON-P3-1020 |  | Excavation in all types of soil to the required depth includes removal of waste material | 16d | 2027-01-09 | 2027-01-26 | SDR-ST-CON-P3-1010, SDR-ST-MILS-1000 |  |  |  |  | -119d | 0d | SIC- Cost [48000]; Excavator [15 h]; Excavator Operator [94.95 h]; Dumper Operator [94.95 h]; Dumper Truck [100 h]; Loader [100 h]; Loader Operator [94.95 h]; Supervisor [37.98 h]; Mason [94.95 h]; Mason Helper [94.95 h] | 48,000.04 |  | 2000 | -100 | M3 | P3-P.W | B4.31 23 16.01 |
|  | 2 | **Fill** |  | 2027-01-27 | 2027-02-16 |  |  |  |  |  |  |  |  |  |  |  |  |  |  |  |
| SDR-ST-CON-P3-1030 |  | Backfilling with improved and select fill material from the site or imported Part 1 | 18d | 2027-01-27 | 2027-02-16 | SDR-ST-CON-P3-1020, SDR-ST-MILS-1000 |  |  |  |  | -119d | 0d | SIC- Cost [53100]; Excavator [37.86 h]; Excavator Operator [94.95 h]; Dumper Operator [94.95 h]; Dumper Truck [100 h]; Loader [100 h]; Loader Operator [94.95 h]; Supervisor [37.98 h]; Mason [94.95 h]; Mason Helper [94.95 h] | 53,100.04 |  | 2950 | -100 | M3 | P3-P.W | B4.31 23 23.02 |
| SDR-ST-CON-P3-1040 |  | Backfilling with improved and select fill material from the site or imported Part 2 | 16d | 2027-01-27 | 2027-02-14 | SDR-ST-CON-P3-1020, SDR-ST-MILS-1000 |  |  |  |  | -119d | 0d | SIC- Cost [53100]; Excavator [16.25 h]; Excavator Operator [94.95 h]; Dumper Operator [94.95 h]; Dumper Truck [100 h]; Loader [100 h]; Loader Operator [94.95 h]; Supervisor [37.98 h]; Mason [94.95 h]; Mason Helper [94.95 h] | 53,100.04 |  | 2950 | -100 | M3 | P3-P.W | B4.31 23 23.01 |
|  | 3 | **Concrete Works** |  | 2027-02-17 | 2027-07-11 |  |  |  |  |  |  |  |  |  |  |  |  |  |  |  |
|  | 1 | **Foundations** |  | 2027-02-17 | 2027-04-27 |  |  |  |  |  |  |  |  |  |  |  |  |  |  |  |
| SDR-ST-CON-P3-1060 |  | Pouring Concrete under Foundation 100 mm thickness lean | 10d | 2027-02-17 | 2027-03-01 | SDR-ST-CON-P3-1030 FF, SDR-ST-CON-P3-1040 FS+2d, SDR-ST-CON-P3-1030, SDR-ST-MILS-1000 |  |  |  |  | -119d | 0d | SIC- Cost [82000.1]; Helper [94.95 h]; Supervisor [37.98 h]; Mason [94.95 h]; Mason Helper [94.95 h]; Carpenter [94.95 h] | 82,000.07 |  | 2050 | -100 | M2 | P3-P.W | B4.03 30 00.01 |
| SDR-ST-CON-P3-1080 |  | Provide and lay 2 layers of waterproofing bitumenous membrane 4mm below footings | 8d | 2027-03-02 | 2027-03-15 | SDR-ST-CON-P1-1860, SDR-ST-CON-P1-1800, SDR-ST-CON-P3-1060, SDR-ST-MILS-1000 |  |  |  |  | -119d | 0d | SIC- Cost [135300]; Plumbing Helper [94.95 h]; Plumber [94.95 h]; Mason [94.95 h]; Mason Helper [94.95 h] | 135,300.11 |  | 2050 | -100 | M2 | P3-P.W | B4.07 13 13.01 |
| SDR-ST-CON-P3-1100 |  | Pouring Concrete for protecting waterproofing under the foundation 50 mm thickness | 10d | 2027-03-17 | 2027-03-28 | SDR-ST-PRO-MS-1010, SDR-ST-PRO-MS-1010 FF, SDR-ST-CON-P3-1080 FS+1d, SDR-ST-MILS-1000, SDR-ST-PRO-MS-1260 |  |  |  |  | -119d | 0d | SIC- Cost [45100]; Helper [37.98 h]; Supervisor [37.98 h]; Mason [37.98 h]; Mason Helper [37.98 h]; Carpenter [37.98 h] | 45,100.04 |  | 4200 | -100 | M2 | P3-P.W | B4.03 53 00.01 |

| ID | WBS | Activity | Duration | Start | Finish | Predecessors | Total float | Free float | Resources | Cost | BOQ Qty | Variance | BOQ Line item | UOM | Activities Codes Sudair Station |
| --- | --- | --- | --- | --- | --- | --- | --- | --- | --- | --- | --- | --- | --- | --- | --- |
|  | 1 | **Footings** |  | 2027-03-29 | 2027-04-27 |  |  |  |  |  |  |  |  |  |  |
| SDR-ST-CON-P3-1130 |  | Pouring concrete for footings Part 1 | 10d | 2027-03-29 | 2027-04-08 | SDR-ST-CON-P3-1070, SDR-ST-CON-P3-1100, SDR-ST-MILS-1000 | -119d | 0d | SIC- Cost [309753]; Helper [37.98 h]; Supervisor [37.98 h]; Mason [37.98 h]; Mason Helper [37.98 h]; Carpenter [37.98 h] | 309,753.25 | 323 | -100 | B4.03 30 00.02 | M3 | P3-P.W |
| SDR-ST-CON-P3-1150 |  | Pouring concrete for footings Part 2 | 10d | 2027-04-10 | 2027-04-20 | SDR-ST-CON-P3-1130, SDR-ST-MILS-1000 | -119d | 0d | SIC- Cost [309753]; Helper [128.18 h]; Supervisor [128.18 h]; Mason [128.18 h]; Mason Helper [128.18 h]; Carpenter [128.18 h] | 309,753.25 | 323 | -40 | B4.03 30 00.02 | M3 | P3-P.W |
| SDR-ST-CON-P3-1180 |  | Pouring concrete for footings Part 3 | 16d | 2027-04-10 | 2027-04-27 | SDR-ST-CON-P3-1150 SS, SDR-ST-MILS-1000 | -119d | 0d | SIC- Cost [309754]; Helper [128.18 h]; Supervisor [128.18 h]; Mason [128.18 h]; Mason Helper [128.18 h]; Carpenter [128.18 h] | 309,754.25 | 324 | -25 | B4.03 30 00.02 | M3 | P3-P.W |
|  | 2 | **Substructure** |  | 2027-04-28 | 2027-06-01 |  |  |  |  |  |  |  |  |  |  |
|  | 1 | **Basement** |  | 2027-05-01 | 2027-05-15 |  |  |  |  |  |  |  |  |  |  |
| SDR-ST-CON-P3-1200 |  | Pouring concrete for Basement Part 1 | 10d | 2027-05-01 | 2027-05-11 | SDR-ST-CON-P1-3620, SDR-ST-CON-P3-1150, SDR-ST-CON-P3-1180 FS+2d, SDR-ST-MILS-1000 | -119d | 0d | SIC- Cost [214175]; Helper [199.87 h]; Supervisor [199.87 h]; Mason [199.87 h]; Mason Helper [199.87 h]; Carpenter [199.87 h] | 214,175.17 | 162.5 | 0 | B4.03 30 00.04 | M3 | P3-P.W |
| SDR-ST-CON-P3-1220 |  | Pouring concrete for Basement Part 2 | 8d | 2027-05-06 | 2027-05-15 | SDR-ST-CON-P3-1200 SS+5d, SDR-ST-MILS-1000 | -98d | 0d | SIC- Cost [200]; Helper [199.87 h]; Supervisor [128.18 h]; Mason [199.87 h]; Mason Helper [199.87 h]; Carpenter [199.87 h] | 214,175.17 | 162.5 | 0 | B4.03 30 00.04 | M3 | P3-P.W |
|  | 2 | **Tank** |  | 2027-04-28 | 2027-05-11 |  |  |  |  |  |  |  |  |  |  |
| SDR-ST-CON-P3-1210 |  | Pouring concrete for Tank Part 1 | 6d | 2027-04-28 | 2027-05-04 | SDR-ST-CON-P3-1180, SDR-ST-MILS-1000 | -95d | 0d | SIC- Cost [214175]; Helper [199.87 h]; Supervisor [199.87 h]; Mason [199.87 h]; Mason Helper [199.87 h]; Carpenter [199.87 h] | 214,175.17 | 162.5 | 0 | B4.03 30 00.04 | M3 | P3-P.W |
| SDR-ST-CON-P3-1230 |  | Pouring concrete for Tank Part 2 | 6d | 2027-05-05 | 2027-05-11 | SDR-ST-CON-P1-3830, SDR-ST-CON-P3-1210, SDR-ST-MILS-1000 | -95d | 3d | SIC- Cost [214175]; Helper [199.87 h]; Supervisor [199.87 h]; Mason [199.87 h]; Mason Helper [199.87 h]; Carpenter [199.87 h] | 214,175.17 | 162.5 | 0 | B4.03 30 00.04 | M3 | P3-P.W |
|  | 3 | **Retaining Walls** |  | 2027-05-12 | 2027-06-01 |  |  |  |  |  |  |  |  |  |  |
| SDR-ST-CON-P3-1190 |  | Pouring concrete for Retaining Walls Part 1 | 7d | 2027-05-12 | 2027-05-25 | SDR-ST-CON-P3-1200, SDR-ST-CON-P1-3830, SDR-ST-CON-P1-4460, SDR-ST-CON-P3-1180, SDR-ST-MILS-1000 | -119d | 0d | SIC- Cost [214175]; Helper [39.97 h]; Supervisor [39.97 h]; Mason [39.97 h]; Mason Helper [39.97 h]; Carpenter [39.97 h] | 214,175.17 | 162.5 | 0 | B4.03 30 00.04 | M3 | P3-P.W |
| SDR-ST-CON-P3-1250 |  | Pouring concrete for Retaining Walls Part 2 | 6d | 2027-05-26 | 2027-06-01 | SDR-ST-CON-P1-4330, SDR-ST-CON-P1-4020, SDR-ST-CON-P1-4270, SDR-ST-CON-P3-1190, SDR-ST-MILS-1000 | -119d | 0d | SIC- Cost [214175]; Helper [199.87 h]; Supervisor [199.87 h]; Mason [199.87 h]; Mason Helper [199.87 h]; Carpenter [199.87 h] | 214,175.17 | 162.5 | 0 | B4.03 30 00.04 | M3 | P3-P.W |
|  | 3 | **Waterproofing Vertical** |  | 2027-06-02 | 2027-06-15 |  |  |  |  |  |  |  |  |  |  |
| SDR-ST-CON-P3-1300 |  | lay 2 layers of waterproofing bitumenous membrane 4mm including protection board for substructure vertical Part 1 | 4d | 2027-06-02 | 2027-06-06 | SDR-ST-CON-P1-3640, SDR-ST-CON-P1-4210, SDR-ST-CON-P1-4160, SDR-ST-CON-P3-1250, SDR-ST-MILS-1000 | -119d | 0d | SIC- Cost [263720]; Plumbing Helper [1144.9 h]; Plumber [1144.9 h]; Mason [149.55 h]; Mason Helper [149.55 h] | 263,720.22 | 2313 | 0 | B4.07 13 13.02 | M2 | P3-P.W |
| SDR-ST-CON-P3-1370 |  | lay 2 layers of waterproofing bitumenous membrane 4mm including protection board for substructure vertical Part 2 | 4d | 2027-06-07 | 2027-06-10 | SDR-ST-CON-P1-4310, SDR-ST-CON-P1-4710, SDR-ST-CON-P1-4640, SDR-ST-CON-P3-1300, SDR-ST-MILS-1000 | -119d | 0d | SIC- Cost [263720]; Plumbing Helper [39.97 h]; Plumber [39.97 h]; Mason [39.97 h]; Mason Helper [39.97 h] | 263,720.22 | 2313 | 0 | B4.07 13 13.02 | M2 | P3-P.W |
| SDR-ST-CON-P3-1430 |  | lay 2 layers of waterproofing bitumenous membrane 4mm including protection board for substructure vertical Part 3 | 4d | 2027-06-12 | 2027-06-15 | SDR-ST-CON-P3-1370, SDR-ST-MILS-1000 | -119d | 0d | SIC- Cost [263720]; Plumbing Helper [128.18 h]; Plumber [128.18 h]; Mason [128.18 h]; Mason Helper [128.18 h] | 263,720.22 | 2314 | 0 | B4.07 13 13.02 | M2 | P3-P.W |
|  | 4 | **Neck Walls** |  | 2027-06-17 | 2027-06-23 |  |  |  |  |  |  |  |  |  |  |
| SDR-ST-CON-P3-1270 |  | Pouring concrete for Neck Walls Part 1 | 5d | 2027-06-17 | 2027-06-22 | SDR-ST-CON-P1-4270, SDR-ST-CON-P1-5020, SDR-ST-CON-P1-4970, SDR-ST-CON-P3-1230, SDR-ST-CON-P3-1220, SDR-ST-CON-P1-4950, SDR-ST-MILS-1000, SDR-ST-CON-P3-1430 FS+1d | -119d | 0d | SIC- Cost [214175]; Helper [39.97 h]; Supervisor [39.97 h]; Mason [39.97 h]; Mason Helper [39.97 h]; Carpenter [39.97 h] | 214,175.17 | 162.5 | 0 | B4.03 30 00.04 | M3 | P3-P.W |
| SDR-ST-CON-P3-1290 |  | Pouring concrete for Neck Walls Part 2 | 5d | 2027-06-19 | 2027-06-23 | SDR-ST-CON-P3-1270 SS+1d, SDR-ST-CON-P1-4660, SDR-ST-MILS-1000 SS | -119d | 0d | SIC- Cost [214175]; Helper [39.97 h]; Supervisor [1998.7 h]; Mason [4477.08 h]; Mason Helper [39.97 h]; Carpenter [39.97 h] | 214,175.17 | 162.5 | 0 | B4.03 30 00.04 | M3 | P3-P.W |
|  | 5 | **Preparation for Slab** |  | 2027-06-24 | 2027-06-28 |  |  |  |  |  |  |  |  |  |  |
| SDR-ST-CON-P3-1320 |  | Pouring Concrete under slab on grade and gound beams 50 mm thickness lean | 2d | 2027-06-24 | 2027-06-26 | SDR-ST-CON-P1-4610, SDR-ST-CON-P1-5670, SDR-ST-CON-P1-5500, SDR-ST-CON-P1-4340, SDR-ST-CON-P3-1270, SDR-ST-CON-P3-1290, SDR-ST-MILS-1000 | -112d | 0d | SIC- Cost [79800.1]; Helper [128.18 h]; Supervisor [128.18 h]; Mason [128.18 h]; Mason Helper [128.18 h]; Carpenter [128.18 h] | 79,800.07 | 4200 | 0 | B4.03 30 00.02 | M2 | P3-P.W |
| SDR-ST-CON-P3-1360 |  | Supply and lay 250 micron thk polyethylene sheet below slab on grade and ground beams | 2d | 2027-06-27 | 2027-06-28 | SDR-ST-CON-P1-6200, SDR-ST-CON-P3-1320, SDR-ST-MILS-1000 | -112d | 0d | SIC- Cost [21000]; Plumbing Helper [128.18 h]; Plumber [28.49 h]; Mason [49.77 h]; Mason Helper [49.77 h] | 21,000.02 | 4200 | 0 | B4.07 26 16.01 | M2 | P3-P.W |

| ID | WBS | Activity | Duration | Start | Finish | Predecessors | Total float | Free float | Resources | Cost | BOQ Qty | Variance | BOQ Line item | UOM | Activities Codes Sudair Station |
| --- | --- | --- | --- | --- | --- | --- | --- | --- | --- | --- | --- | --- | --- | --- | --- |
|  | 6 | **Slab on Grade** |  | 2027-06-29 | 2027-06-30 |  |  |  |  |  |  |  |  |  |  |
| SDR-ST-CON-P3-1380 |  | Pouring Concrete for Slab on grade | 2d | 2027-06-29 | 2027-06-30 | SDR-ST-CON-P1-4240, SDR-ST-CON-P1-5740, SDR-ST-CON-P3-1360, SDR-ST-MILS-1000 | -112d | 0d | SIC- Cost [44900]; Helper [128.18 h]; Supervisor [128.18 h]; Mason [4462.72 h]; Mason Helper [4462.72 h]; Carpenter [128.18 h] | 44,900.04 | 50 | 0 | B4.03 30 00.01 | M3 | P3-P.W |
|  | 7 | **Finishes** |  | 2027-07-05 | 2027-07-11 |  |  |  |  |  |  |  |  |  |  |
|  | 9 | **Troweled Finish** |  | 2027-07-05 | 2027-07-06 |  |  |  |  |  |  |  |  |  |  |
| SDR-ST-CON-P3-1400 |  | Pouring Concrete for Slab on grade with troweled finish Part 1 | 2d | 2027-07-05 | 2027-07-06 | SDR-ST-CON-P1-4700, SDR-ST-CON-P3-1380 FS+3d, SDR-ST-MILS-1000 | -112d | 0d | SIC- Cost [112030]; Helper [128.18 h]; Supervisor [128.18 h]; Mason [89.58 h]; Mason Helper [89.58 h]; Carpenter [128.18 h] | 112,030.09 | 85 | 0 | B4.03 30 00.01 | M3 | P3-P.W |
| SDR-ST-CON-P3-1500 |  | Pouring Concrete for Slab on grade with troweled finish Part 2 | 2d | 2027-07-05 | 2027-07-06 | SDR-ST-CON-P1-4820, SDR-ST-CON-P3-1400 SS, SDR-ST-MILS-1000 | -112d | 0d | SIC- Cost [112030]; Helper [128.18 h]; Supervisor [128.18 h]; Mason [128.18 h]; Mason Helper [128.18 h]; Carpenter [128.18 h] | 112,030.09 | 85 | 0 | B4.03 30 00.01 | M3 | P3-P.W |
|  | 8 | **Exposed Aggregate Finish** |  | 2027-07-07 | 2027-07-11 |  |  |  |  |  |  |  |  |  |  |
| SDR-ST-CON-P3-1420 |  | Pouring Concrete for Slab on grade with exposed aggregate finish Part 1 | 2d | 2027-07-07 | 2027-07-08 | SDR-ST-CON-P3-1500, SDR-ST-CON-P1-5020, SDR-ST-CON-P3-1380, SDR-ST-CON-P1-5500, SDR-ST-MILS-1000 | -112d | 0d | SIC- Cost [272386]; Helper [1123.53 h]; Supervisor [128.18 h]; Mason [2118.88 h]; Mason Helper [2118.88 h]; Carpenter [684.8 h] | 272,386.22 | 206 | 0 | B4.03 30 00.10 | M3 | P3-P.W |
| SDR-ST-CON-P3-1480 |  | Pouring Concrete for Slab on grade with exposed aggregate finish Part 2 | 2d | 2027-07-07 | 2027-07-08 | SDR-ST-CON-P3-1420 SS, SDR-ST-MILS-1000 | -112d | 0d | SIC- Cost [272387]; Helper [1123.53 h]; Supervisor [128.18 h]; Mason [2118.88 h]; Mason Helper [2118.88 h]; Carpenter [128.18 h] | 272,387.22 | 207 | 0 | B4.03 30 00.10 | M3 | P3-P.W |
| SDR-ST-CON-P3-1490 |  | Pouring Concrete for Slab on grade with exposed aggregate finish Part 3 | 2d | 2027-07-10 | 2027-07-11 | SDR-ST-CON-P3-1480 SS+2d, SDR-ST-MILS-1000 | -112d | 0d | SIC- Cost [272387]; Helper [128.18 h]; Supervisor [28.49 h]; Mason [2118.88 h]; Mason Helper [2118.88 h]; Carpenter [128.18 h] | 272,387.22 | 207 | 0 | B4.03 30 00.10 | M3 | P3-P.W |
|  | 3 | **Finishes & Architectural Works** |  | 2027-10-02 | 2027-11-25 |  |  |  |  |  |  |  |  |  |  |
| SDR-ST-CON-P3-1540 |  | Installation of metal steel 1200mm railing including all accessories Part 1 | 15d | 2027-10-02 | 2027-10-18 | SDR-ST-CON-P1-4070, SDR-ST-CON-P1-4320, SDR-ST-CON-P1-5460, SDR-ST-PRO-MS-1200, SDR-ST-CON-P3-1420, SDR-ST-CON-P3-1480, SDR-ST-CON-P3-1400, SDR-ST-CON-P3-1490, SDR-ST-MILS-1000, SDR-ST-CON-P1-5430 | -113d | 0d | SIC- Cost [210906]; Mason [2127.36 h]; Mason Helper [2269.79 h]; Steel Structure Subcontractor [10074.2 h]; Metal Fabricator [4119.41 h] | 210,906.17 | 220 | 0 | B4.05 52 00.01 | M | P3-P.W |
| SDR-ST-CON-P3-1590 |  | Installation of metal steel 1200mm railing including all accessories Part 2 | 15d | 2027-10-19 | 2027-11-04 | SDR-ST-CON-P1-5460, SDR-ST-CON-P1-3980, SDR-ST-PRO-MS-1200, SDR-ST-CON-P3-1540, SDR-ST-MILS-1000 | -113d | 0d | SIC- Cost [210907]; Mason [142.43 h]; Mason Helper [142.43 h]; Steel Structure Subcontractor [149.55 h]; Metal Fabricator [149.55 h] | 210,907.17 | 220 | 0 | B4.05 52 00.01 | M | P3-P.W |
| SDR-ST-CON-P3-1640 |  | Installation of metal steel 1200mm railing including all accessories Part3 | 8d | 2027-11-06 | 2027-11-14 | SDR-ST-PRO-MS-1200, SDR-ST-CON-P3-1590, SDR-ST-MILS-1000 | -113d | 0d | SIC- Cost [210907]; Mason [142.43 h]; Mason Helper [142.43 h]; Steel Structure Subcontractor [149.55 h]; Metal Fabricator [149.55 h] | 210,907.17 | 220 | 0 | B4.05 52 00.01 | M | P3-P.W |
| SDR-ST-CON-P3-1710 |  | Platform Paving & warning tiles | 4d | 2027-11-15 | 2027-11-18 | SDR-ST-CON-P1-5920, SDR-ST-CON-P3-1590, SDR-ST-CON-P3-1640, SDR-ST-MILS-1000 | -113d | 0d | SIC- Cost [46200]; Mason [135.31 h]; Mason Helper [135.31 h] | 46,200.04 | 350 | 0 | B4.32 14 00.01 | M2 | P3-P.W |
| SDR-ST-CON-P3-1760 |  | Painting Part 1 | 6d | 2027-11-20 | 2027-11-25 | SDR-ST-CON-P3-1710, SDR-ST-MILS-1000 | -113d | 0d | SIC- Cost [143758]; Helper [149.55 h]; Supervisor [149.55 h]; Painter [149.55 h] | 143,758.44 | 1 | 0 | B3.05 12 00.01 | Number | P3-P.W |
| SDR-ST-CON-P3-1840 |  | Painting Part 2 | 6d | 2027-11-20 | 2027-11-25 | SDR-ST-CON-P3-1760 SS, SDR-ST-MILS-1000 | -108d | 10d | SIC- Cost [143758]; Helper [149.55 h]; Supervisor [149.55 h]; Painter [149.55 h] | 143,758.44 | 1 | 0 | B3.05 12 00.01 | Number | P3-P.W |
|  | 5 | **Platform Electrical Works** |  | 2027-06-24 | 2027-07-19 |  |  |  |  |  |  |  |  |  |  |
| SDR-ST-CON-P3-1310 |  | cable conduits | 22d | 2027-06-24 | 2027-07-19 | SDR-ST-PRO-MS-1030, SDR-ST-CON-P3-1290, SDR-ST-MILS-1000 | -119d | 0d | SIC- Cost; Electrical Technician [199.07 h]; Electrical Helper [199.07 h] |  |  | 0 |  |  | P3-P.W |
|  | 3 | **Canopy works** |  | 2027-02-21 | 2027-12-01 |  |  |  |  |  |  |  |  |  |  |
|  | 1 | **Civil and Architectural Works** |  | 2027-02-21 | 2027-04-25 |  |  |  |  |  |  |  |  |  |  |
|  | 1 | **Concrete** |  | 2027-02-21 | 2027-04-25 |  |  |  |  |  |  |  |  |  |  |
| SDR-ST-CON-P3-1050 |  | Pouring Concrete under the foundation 100 mm thickness lean | 13d | 2027-02-21 | 2027-03-08 | SDR-ST-CON-P3-1060 SS+3d, SDR-ST-MILS-1000 | -111d | 0d | SIC- Cost [11200]; Civil Forman [37.98 h]; Labor [37.98 h]; charpenter [37.98 h]; Supervisor [37.98 h]; Mason [37.98 h]; Mason Helper [37.98 h] | 11,200.01 | 280 | -100 | B3.03 30 00.01 | M2 | P3-C.W |
| SDR-ST-CON-P3-1090 |  | Pouring Concrete for protecting waterproofing under the foundation 50 mm thickness | 12d | 2027-03-20 | 2027-04-01 | SDR-ST-CON-P3-1050, SDR-ST-CON-P3-1070, SDR-ST-MILS-1000 | -87d | 0d | SIC- Cost [6720.01]; Civil Forman [37.98 h]; Labor [37.98 h]; charpenter [37.98 h]; Supervisor [37.98 h]; Mason [37.98 h]; Mason Helper [37.98 h] | 6,720.01 | 280 | -100 | B3.03 53 00.01 | M2 | P3-C.W |
| SDR-ST-CON-P3-1110 |  | Pouring Concrete for Footings | 12d | 2027-04-03 | 2027-04-15 | SDR-ST-CON-P3-1090, SDR-ST-MILS-1000 | -87d | 0d | SIC- Cost [95800.1]; Civil Forman [37.98 h]; Labor [37.98 h]; charpenter [37.98 h]; Supervisor [37.98 h]; Mason [37.98 h]; Mason Helper [37.98 h] | 95,800.08 | 100 | -83.3333333333333 | B3.03 30 00.01 | M3 | P3-C.W |
| SDR-ST-CON-P3-1140 |  | Pouring Concrete for Coulumns necks | 8d | 2027-04-17 | 2027-04-25 | SDR-ST-CON-P1-3670, SDR-ST-CON-P3-1110, SDR-ST-MILS-1000 | -63d | 21d | SIC- Cost [52720]; Civil Forman [199.87 h]; Labor [199.87 h]; charpenter [199.87 h]; Supervisor [128.18 h]; Mason [199.87 h]; Mason Helper [199.87 h] | 52,720.04 | 40 | 0 | B3.03 30 00.02 | M3 | P3-C.W |

| ID | WBS | Activity | Duration | Start | Finish | Predecessors | Total float | Free float | Resources | Cost | BOQ Qty | Variance | BOQ Line item | UOM | Activities Codes Sudair Station |
| --- | --- | --- | --- | --- | --- | --- | --- | --- | --- | --- | --- | --- | --- | --- | --- |
|  | 4 | **Metals** |  | 2027-03-14 | 2027-12-01 |  |  |  |  |  |  |  |  |  |  |
|  | 2 | **Structural Steel Framing** |  | 2027-04-03 | 2027-08-06 |  |  |  |  |  |  |  |  |  |  |
| SDR-ST-CON-P3-1120 |  | Anchor Bolt Verification | 16d | 2027-04-03 | 2027-04-20 | SDR-ST-CON-P1-3480, SDR-ST-CON-P1-3360, SDR-ST-CON-P1-3700, SDR-ST-CON-P1-3940, SDR-ST-CON-P1-3670, SDR-ST-CON-P1-3810, SDR-ST-CON-P3-1110 SS, SDR-ST-MILS-1000 | -87d | 0d | SIC- Cost [17969.8]; Mason [99.7 h]; Mason Helper [99.7 h] | 17,969.8 | 1 | 0 | B3.05 12 00.01 | Number | P3-C.W |
| SDR-ST-CON-P3-1160 |  | Erection of Columns Part 1 | 20d | 2027-04-21 | 2027-05-13 | SDR-ST-CON-P1-3670, SDR-ST-CON-P1-4570, SDR-ST-CON-P3-1120, SDR-ST-MILS-1000 | -87d | 0d | SIC- Cost [161728]; Surveyor [135.31 h]; Helper [135.31 h]; charpenter [135.31 h]; Supervisor [135.31 h]; Mason [135.31 h]; Mason Helper [135.31 h] | 161,728.24 | 1 | 0 | B3.05 12 00.01 | Number | P3-C.W |
| SDR-ST-CON-P3-1240 |  | Erection of Columns Part 2 | 11d | 2027-05-15 | 2027-06-01 | SDR-ST-CON-P1-5200 FS+1d, SDR-ST-CON-P1-5040 FS+1d, SDR-ST-CON-P1-4170, SDR-ST-CON-P1-4160, SDR-ST-CON-P1-4270, SDR-ST-CON-P1-4240, SDR-ST-CON-P1-4020, SDR-ST-CON-P1-4610, SDR-ST-CON-P1-5130, SDR-ST-CON-P1-3490, SDR-ST-CON-P1-2330, SDR-ST-CON-P1-4160 FF, SDR-ST-CON-P3-1160, SDR-ST-MILS-1000 | -87d | 0d | SIC- Cost [161728]; Surveyor [135.31 h]; Helper [135.31 h]; charpenter [135.31 h]; Supervisor [135.31 h]; Mason [135.31 h]; Mason Helper [135.31 h] | 161,728.24 | 1 | 0 | B3.05 12 00.01 | Number | P3-C.W |
| SDR-ST-CON-P3-1260 |  | Erection of Rafters Part 1 | 16d | 2027-06-02 | 2027-06-20 | SDR-ST-CON-P1-2330, SDR-ST-CON-P1-5000, SDR-ST-CON-P1-4820, SDR-ST-CON-P1-4900, SDR-ST-CON-P1-5170, SDR-ST-CON-P1-5230, SDR-ST-CON-P3-1240, SDR-ST-MILS-1000 | -87d | 0d | SIC- Cost [125789]; Surveyor [128.18 h]; Helper [128.18 h]; charpenter [128.18 h]; Supervisor [128.18 h]; Mason [128.18 h]; Mason Helper [128.18 h] | 125,788.63 | 1 | 0 | B3.05 12 00.01 | Number | P3-C.W |
| SDR-ST-CON-P3-1280 |  | Erection of Rafters Part 2 | 16d | 2027-06-05 | 2027-06-22 | SDR-ST-CON-P1-5240, SDR-ST-CON-P1-2500, SDR-ST-PRO-MS-1240, SDR-ST-CON-P3-1260 SS+2d, SDR-ST-MILS-1000 | -87d | 0d | SIC- Cost [125789]; Surveyor [106.82 h]; Helper [106.82 h]; charpenter [106.82 h]; Supervisor [106.82 h]; Mason [106.82 h]; Mason Helper [106.82 h] | 125,788.63 | 1 | 0 | B3.05 12 00.01 | Number | P3-C.W |
| SDR-ST-CON-P3-1330 |  | Installation of Bracing System Part 1 | 15d | 2027-06-23 | 2027-07-10 | SDR-ST-CON-P1-5670, SDR-ST-CON-P1-5500, SDR-ST-CON-P1-5020, SDR-ST-CON-P1-4240, SDR-ST-CON-P1-4700, SDR-ST-CON-P1-4840, SDR-ST-CON-P1-6200, SDR-ST-PRO-MS-1240, SDR-ST-CON-P3-1260, SDR-ST-CON-P3-1280, SDR-ST-MILS-1000 | -84d | 0d | SIC- Cost [107819]; Surveyor [128.18 h]; Helper [128.18 h]; charpenter [128.18 h]; Supervisor [128.18 h]; Mason [128.18 h]; Mason Helper [128.18 h] | 107,818.83 | 1 | 0 | B3.05 12 00.01 | Number | P3-C.W |
| SDR-ST-CON-P3-1340 |  | Installation of Beams Part 1 | 10d | 2027-06-23 | 2027-07-04 | SDR-ST-CON-P1-4840, SDR-ST-CON-P1-6200, SDR-ST-PRO-MS-1240, SDR-ST-CON-P3-1280, SDR-ST-MILS-1000 | -87d | 0d | SIC- Cost [143758]; Surveyor [113.94 h]; Helper [113.94 h]; charpenter [113.94 h]; Supervisor [113.94 h]; Mason [2104.64 h]; Mason Helper [2104.64 h] | 143,758.44 | 1 | 0 | B3.05 12 00.01 | Number | P3-C.W |
| SDR-ST-CON-P3-1350 |  | Installation of Girders Part 1 | 20d | 2027-06-24 | 2027-07-17 | SDR-ST-CON-P1-3170, SDR-ST-PRO-MS-1240, SDR-ST-CON-P3-1280, SDR-ST-MILS-1000, SDR-ST-TC-1010 | -84d | 0d | SIC- Cost [89849]; Surveyor [99.7 h]; Helper [99.7 h]; charpenter [99.7 h]; Supervisor [99.7 h]; Mason [99.7 h]; Mason Helper [99.7 h] | 89,849.02 | 1 | 0 | B3.05 12 00.01 | Number | P3-C.W |
| SDR-ST-CON-P3-1390 |  | Installation of Beams Part 2 | 12d | 2027-07-05 | 2027-07-18 | SDR-ST-CON-P1-5770, SDR-ST-CON-P1-5740, SDR-ST-CON-P1-5700, SDR-ST-CON-P1-5100, SDR-ST-CON-P1-3180, SDR-ST-CON-P1-3170, SDR-ST-CON-P1-4780, SDR-ST-CON-P1-4870, SDR-ST-CON-P1-5730, SDR-ST-CON-P1-4910, SDR-ST-CON-P1-2430, SDR-ST-PRO-MS-1240, SDR-ST-CON-P3-1340, SDR-ST-MILS-1000 | -87d | 0d | SIC- Cost [143758]; Surveyor [113.94 h]; Helper [113.94 h]; charpenter [113.94 h]; Supervisor [113.94 h]; Mason [113.94 h]; Mason Helper [113.94 h] | 143,758.44 | 1 | 0 | B3.05 12 00.01 | Number | P3-C.W |
| SDR-ST-CON-P3-1410 |  | Installation of Bracing System Part 2 | 16d | 2027-07-11 | 2027-07-28 | SDR-ST-CON-P1-4520, SDR-ST-PRO-MS-1240, SDR-ST-CON-P3-1330, SDR-ST-MILS-1000 | -84d | 0d | SIC- Cost [107819]; Surveyor [128.18 h]; Helper [128.18 h]; charpenter [128.18 h]; Supervisor [128.18 h]; Mason [128.18 h]; Mason Helper [128.18 h] | 107,818.83 | 1 | 0 | B3.05 12 00.01 | Number | P3-C.W |
| SDR-ST-CON-P3-1440 |  | Installation of Girders Part 2 | 6d | 2027-07-18 | 2027-07-24 | SDR-ST-CON-P1-5800, SDR-ST-CON-P1-3900, SDR-ST-PRO-MS-1240, SDR-ST-CON-P3-1350, SDR-ST-MILS-1000 | -84d | 0d | SIC- Cost [89849]; Surveyor [99.7 h]; Helper [99.7 h]; charpenter [99.7 h]; Supervisor [99.7 h]; Mason [99.7 h]; Mason Helper [99.7 h] | 89,849.02 | 1 | 0 | B3.05 12 00.01 | Number | P3-C.W |
| SDR-ST-CON-P3-1460 |  | Installation of Connections (Bolting) | 12d | 2027-07-19 | 2027-08-01 | SDR-ST-PRO-MS-1240, SDR-ST-CON-P3-1390, SDR-ST-MILS-1000 | -87d | 0d | SIC- Cost [53909.4]; Surveyor [142.43 h]; Helper [142.43 h]; charpenter [142.43 h]; Supervisor [142.43 h]; Mason [142.43 h]; Mason Helper [142.43 h] | 53,909.41 | 1 | 0 | B3.05 12 00.01 | Number | P3-C.W |
| SDR-ST-CON-P3-1450 |  | Installation of Joists Part 1 | 12d | 2027-07-25 | 2027-08-06 | SDR-ST-CON-P1-5070, SDR-ST-CON-P1-3880, SDR-ST-PRO-MS-1240, SDR-ST-CON-P3-1390, SDR-ST-MILS-1000, SDR-ST-CON-P3-1440 | -80d | 4d | SIC- Cost [89849]; Surveyor [113.94 h]; Helper [113.94 h]; charpenter [113.94 h]; Supervisor [113.94 h]; Mason [113.94 h]; Mason Helper [113.94 h] | 89,849.02 | 1 | 0 | B3.05 12 00.01 | Number | P3-C.W |
| SDR-ST-CON-P3-1470 |  | Installation of Joists Part 2 | 8d | 2027-07-29 | 2027-08-06 | SDR-ST-CON-P3-1410, SDR-ST-CON-P1-4040, SDR-ST-PRO-MS-1240, SDR-ST-CON-P3-1450 SS, SDR-ST-MILS-1000 | -84d | 17d | SIC- Cost [89849]; Surveyor [113.94 h]; Helper [113.94 h]; charpenter [113.94 h]; Supervisor [113.94 h]; Mason [113.94 h]; Mason Helper [113.94 h] | 89,849.02 | 1 | 0 | B3.05 12 00.01 | Number | P3-C.W |
|  | 3 | **Aluminum Cladding Panels** |  | 2027-08-26 | 2027-12-01 |  |  |  |  |  |  |  |  |  |  |
|  | 1 | **Steel Subframe Installation** |  | 2027-08-26 | 2027-12-01 |  |  |  |  |  |  |  |  |  |  |
| SDR-ST-CON-P3-1530 |  | Survey & Setting Out for Cladding | 8d | 2027-08-26 | 2027-09-04 | SDR-ST-TC-1020, SDR-ST-CON-P1-4040, SDR-ST-CON-P1-3880, SDR-ST-CON-P1-4250, SDR-ST-CON-P1-4070, SDR-ST-CON-P1-4040 FF, SDR-ST-MILS-1090, SDR-ST-CON-P3-1470, SDR-ST-CON-P3-1410, SDR-ST-CON-P3-1430, SDR-ST-MILS-1000 | -101d | 4d | SIC- Cost [50280]; Surveyor [128.18 h] | 50,280.04 | 1 | 0 | B3.07 46 00.01 | Number | P3-C.W |
| SDR-ST-CON-P3-1560 |  | Install Steel Subframe Supports Part 1 | 14d | 2027-09-09 | 2027-09-25 | SDR-ST-CON-P1-4070, SDR-ST-CON-P1-5280, SDR-ST-CON-P1-5490, SDR-ST-CON-P1-3980, SDR-ST-CON-P3-1530, SDR-ST-MILS-1090, SDR-ST-MILS-1000 | -105d | 0d | SIC- Cost [234640]; Supervisor [142.43 h]; Steel Structure Subcontractor [427.28 h]; Carpenter [142.43 h]; Metal Fabricator [142.43 h]; Carpenter Helper [142.43 h] | 234,640.19 | 1 | 0 | B3.07 46 00.01 | Number | P3-C.W |
| SDR-ST-CON-P3-1620 |  | Install Steel Subframe Supports Part 2 | 18d | 2027-09-26 | 2027-10-16 | SDR-ST-CON-P1-5460, SDR-ST-CON-P1-3980, SDR-ST-CON-P1-4050, SDR-ST-CON-P1-5900, SDR-ST-CON-P3-1560, SDR-ST-MILS-1000 | -105d | 0d | SIC- Cost [234640]; Supervisor [142.43 h]; Steel Structure Subcontractor [427.28 h]; Carpenter [142.43 h]; Metal Fabricator [142.43 h]; Carpenter Helper [142.43 h] | 234,640.19 | 1 | 0 | B3.07 46 00.01 | Number | P3-C.W |
| SDR-ST-CON-P3-1690 |  | Install Steel Subframe Supports Part 3 | 13d | 2027-10-17 | 2027-10-31 | SDR-ST-CON-P3-1620, SDR-ST-MILS-1000 | -100d | 0d | SIC- Cost [234640]; Supervisor [142.43 h]; Steel Structure Subcontractor [427.28 h]; Carpenter [142.43 h]; Metal Fabricator [142.43 h]; Carpenter Helper [142.43 h] | 234,640.19 | 1 | 0 | B3.07 46 00.01 | Number | P3-C.W |
| SDR-ST-CON-P3-1720 |  | Alignment & Leveling of Subframe Part 1 | 11d | 2027-10-17 | 2027-10-28 | SDR-ST-CON-P3-1690 SS, SDR-ST-MILS-1000 | -98d | 2d | SIC- Cost [125700]; Supervisor [142.43 h]; Steel Structure Subcontractor [427.28 h]; Carpenter [142.43 h]; Metal Fabricator [142.43 h]; Carpenter Helper [142.43 h] | 125,700.1 | 1 | 0 | B3.07 46 00.01 | Number | P3-C.W |
| SDR-ST-CON-P3-1770 |  | Alignment & Leveling of Subframe Part 2 | 4d | 2027-11-01 | 2027-11-04 | SDR-ST-CON-P1-5980, SDR-ST-CON-P3-1690, SDR-ST-CON-P3-1720, SDR-ST-MILS-1000 | -100d | 0d | SIC- Cost [125700]; Supervisor [142.43 h]; Steel Structure Subcontractor [427.28 h]; Carpenter [142.43 h]; Metal Fabricator [142.43 h]; Carpenter Helper [142.43 h] | 125,700.1 | 1 | 0 | B3.07 46 00.01 | Number | P3-C.W |
| SDR-ST-CON-P3-1830 |  | Fixing & Tightening of Subframe Connections Part 1 | 5d | 2027-11-06 | 2027-11-10 | SDR-ST-CON-P3-1770, SDR-ST-MILS-1000 | -100d | 13d | SIC- Cost [125700]; Supervisor [142.43 h]; Steel Structure Subcontractor [427.28 h]; Carpenter [142.43 h]; Metal Fabricator [142.43 h]; Carpenter Helper [142.43 h] | 125,700.1 | 1 | 0 | B3.07 46 00.01 | Number | P3-C.W |
| SDR-ST-CON-P3-1880 |  | Fixing & Tightening of Subframe Connections Part 2 | 5d | 2027-11-27 | 2027-12-01 | SDR-ST-CON-P3-1760, SDR-ST-CON-P3-1830, SDR-ST-MILS-1000 | -113d | 5d | SIC- Cost [125700]; Supervisor [142.43 h]; Steel Structure Subcontractor [427.28 h]; Carpenter [142.43 h]; Metal Fabricator [142.43 h]; Carpenter Helper [142.43 h] | 125,700.1 | 1 | 0 | B3.07 46 00.01 | Number | P3-C.W |

| ID | WBS | Activity | Duration | Start | Finish | Predecessors | Total float | Free float | Resources | Cost | BOQ Qty | Variance | BOQ Line item | UOM | Activities Codes Sudair Station |
| --- | --- | --- | --- | --- | --- | --- | --- | --- | --- | --- | --- | --- | --- | --- | --- |
|  | 2 | **Aluminum Cladding Installation** |  | 2027-09-26 | 2027-11-18 |  |  |  |  |  |  |  |  |  |  |
| SDR-ST-CON-P3-1610 |  | Install Aluminum Panels (4mm Thick Part 1 | 13d | 2027-09-26 | 2027-10-10 | SDR-ST-CON-P3-1620 SS, SDR-ST-MILS-1000, SDR-ST-CON-P1-4320, SDR-ST-CON-P1-4010 | -105d | 0d | SIC- Cost [139666]; Steel Structure Subcontractor [427.28 h]; Carpenter [142.43 h]; Metal Fabricator [142.43 h]; Carpenter Helper [142.43 h]; Aluminum Cladding Subcontractor [142.43 h] | 139,666.11 | 1 | 0 | B3.07 46 00.01 | Number | P3-C.W |
| SDR-ST-CON-P3-1660 |  | Install Aluminum Panels (4mm Thick Part 2 | 12d | 2027-10-11 | 2027-10-24 | SDR-ST-CON-P3-1610, SDR-ST-MILS-1000 | -105d | 0d | SIC- Cost [139667]; Steel Structure Subcontractor [427.28 h]; Carpenter [142.43 h]; Metal Fabricator [142.43 h]; Carpenter Helper [142.43 h]; Aluminum Cladding Subcontractor [142.43 h] | 139,667.11 | 1 | 0 | B3.07 46 00.01 | Number | P3-C.W |
| SDR-ST-CON-P3-1700 |  | Install Aluminum Panels (4mm Thick Part 3 | 7d | 2027-10-25 | 2027-11-01 | SDR-ST-CON-P3-1660, SDR-ST-MILS-1000 | -105d | 0d | SIC- Cost [139667]; Steel Structure Subcontractor [427.28 h]; Carpenter [142.43 h]; Metal Fabricator [142.43 h]; Carpenter Helper [142.43 h]; Aluminum Cladding Subcontractor [142.43 h] | 139,667.11 | 1 | 0 | B3.07 46 00.01 | Number | P3-C.W |
| SDR-ST-CON-P3-1730 |  | Fix Panels with Snap Hooks & Fasteners Part 1 | 6d | 2027-11-02 | 2027-11-08 | SDR-ST-CON-P3-1700, SDR-ST-MILS-1000 | -105d | 0d | SIC- Cost [41900]; Steel Structure Subcontractor [427.28 h]; Carpenter [142.43 h]; Metal Fabricator [142.43 h]; Carpenter Helper [142.43 h]; Aluminum Cladding Subcontractor [142.43 h] | 41,900.03 | 1 | 0 | B3.07 46 00.01 | Number | P3-C.W |
| SDR-ST-CON-P3-1750 |  | Fix Panels with Snap Hooks & Fasteners Part 2 | 5d | 2027-11-02 | 2027-11-07 | SDR-ST-CON-P3-1730 SS, SDR-ST-CON-P1-5920, SDR-ST-MILS-1000 | -105d | 0d | SIC- Cost [41900]; Steel Structure Subcontractor [427.28 h]; Carpenter [142.43 h]; Metal Fabricator [142.43 h]; Carpenter Helper [142.43 h]; Aluminum Cladding Subcontractor [142.43 h] | 41,900.03 | 1 | 0 | B3.07 46 00.01 | Number | P3-C.W |
| SDR-ST-CON-P3-1810 |  | Install Drainage System Part 1 | 4d | 2027-11-08 | 2027-11-11 | SDR-ST-CON-P3-1750, SDR-ST-MILS-1000 | -105d | 0d | SIC- Cost [41900]; Steel Structure Subcontractor [427.28 h]; Carpenter [142.43 h]; Metal Fabricator [142.43 h]; Carpenter Helper [142.43 h]; Aluminum Cladding Subcontractor [142.43 h] | 41,900.03 | 1 | 0 | B3.07 46 00.01 | Number | P3-C.W |
| SDR-ST-CON-P3-1820 |  | Install Drainage System Part 2 | 2d | 2027-11-08 | 2027-11-09 | SDR-ST-CON-P3-1810 SS, SDR-ST-MILS-1000 | -105d | 0d | SIC- Cost [41900]; Steel Structure Subcontractor [427.28 h]; Carpenter [142.43 h]; Metal Fabricator [142.43 h]; Carpenter Helper [142.43 h]; Aluminum Cladding Subcontractor [142.43 h] | 41,900.03 | 1 | 0 | B3.07 46 00.01 | Number | P3-C.W |
| SDR-ST-CON-P3-1850 |  | Adjustment & Alignment of Panels Part 1 | 3d | 2027-11-10 | 2027-11-13 | SDR-ST-CON-P3-1730, SDR-ST-CON-P3-1820, SDR-ST-CON-P1-6000, SDR-ST-MILS-1000 | -102d | 0d | SIC- Cost [83800.1]; Steel Structure Subcontractor [427.28 h]; Carpenter [142.43 h]; Metal Fabricator [142.43 h]; Carpenter Helper [142.43 h]; Aluminum Cladding Subcontractor [142.43 h] | 83,800.07 | 1 | 0 | B3.07 46 00.01 | Number | P3-C.W |
| SDR-ST-CON-P3-1860 |  | Adjustment & Alignment of Panels Part 2 | 3d | 2027-11-10 | 2027-11-13 | SDR-ST-CON-P3-1850 SS, SDR-ST-MILS-1000 | -102d | 0d | SIC- Cost [83800.1]; Steel Structure Subcontractor [427.28 h]; Carpenter [142.43 h]; Metal Fabricator [142.43 h]; Carpenter Helper [142.43 h]; Aluminum Cladding Subcontractor [142.43 h] | 83,800.07 | 1 | 0 | B3.07 46 00.01 | Number | P3-C.W |
| SDR-ST-CON-P3-1890 |  | Sealant & Finishing Works | 5d | 2027-11-14 | 2027-11-18 | SDR-ST-CON-P3-1810, SDR-ST-CON-P3-1850, SDR-ST-CON-P3-1860, SDR-ST-MILS-1000 | -102d | 5d | SIC- Cost [83800.1]; Steel Structure Subcontractor [427.28 h]; Carpenter [142.43 h]; Metal Fabricator [142.43 h]; Carpenter Helper [142.43 h]; Aluminum Cladding Subcontractor [142.43 h] | 83,800.07 | 1 | 0 | B3.07 46 00.01 | Number | P3-C.W |
|  | 1 | **THERMAL & MOISTURE PROTECTION** |  | 2027-03-14 | 2027-05-31 |  |  |  |  |  |  |  |  |  |  |
|  | 1 | **Bituminous Sheet Waterproofing** |  | 2027-03-14 | 2027-05-31 |  |  |  |  |  |  |  |  |  |  |
| SDR-ST-CON-P3-1070 |  | Provide and lay 2 layers of waterproofing bitumenous membrane 4mm below footings | 5d | 2027-03-14 | 2027-03-18 | SDR-ST-CON-P3-1050, SDR-ST-MILS-1000 | -111d | 0d | SIC- Cost [15180]; Plumbing Helper [99.7 h]; Plumber [99.7 h] | 15,180.01 | 230 | -100 | B3.07 13 13.01 | M2 | P3-C.W |
| SDR-ST-CON-P3-1170 |  | Provide and lay 2 layers of waterproofing bitumenous membrane 4mm in contact with soil | 5d | 2027-05-26 | 2027-05-31 | SDR-ST-CON-P3-1190, SDR-ST-CON-P3-1230, SDR-ST-CON-P3-1220, SDR-ST-PRO-MS-1070, SDR-ST-CON-P3-1140, SDR-ST-CON-P1-3480, SDR-ST-CON-P1-3360, SDR-ST-CON-P1-3700, SDR-ST-CON-P1-3930, SDR-ST-CON-P1-3760, SDR-ST-CON-P1-3670, SDR-ST-CON-P1-3810, SDR-ST-MILS-1000 | -84d | 0d | SIC- Cost [77520.1]; Plumbing Helper [199.87 h]; Plumber [199.87 h] | 77,520.06 | 680 | 0 | B3.07 13 13.02 | M2 | P3-C.W |
|  | 4 | **Electrical Works** |  | 2027-07-25 | 2027-12-12 |  |  |  |  |  |  |  |  |  |  |
|  | 1 | **Low-Voltage Electrical Power Conductors and Cables** |  | 2027-07-25 | 2027-08-15 |  |  |  |  |  |  |  |  |  |  |
| SDR-ST-CON-P3-1510 |  | Installtion and test low voltage cable including pulling of cable 600/1000V . | 20d | 2027-07-25 | 2027-08-15 | SDR-ST-TC-1020, SDR-ST-CON-P3-1440, SDR-ST-MILS-1000 | -84d | 0d | SIC- Cost [36000]; Electrical Forman [71.21 h]; Electrical Technician [199.07 h]; Electrical Helper [199.07 h]; Labor [199.07 h] | 36,000.03 | 1500 | 0 | B2.26 05 19.01 | M | P3-El.W |
|  | 2 | **Ondoor Lighting Points** |  | 2027-08-16 | 2027-09-08 |  |  |  |  |  |  |  |  |  |  |
| SDR-ST-CON-P3-1580 |  | Install, test, and commission all necessary components for outdoor lighting points. | 21d | 2027-08-16 | 2027-09-08 | SDR-ST-CON-P3-1510, SDR-ST-MILS-1000 | -84d | 0d | SIC- Cost [62010.1]; Electrical Forman [96.35 h]; Electrical Technician [96.35 h]; Electrical Helper [96.35 h]; Labor [96.35 h] | 62,010.05 | 390 | 0 | B2.26 56 00.01 | Number | P3-El.W |
|  | 3 | **Outdoor Lighting Fixtures** |  | 2027-09-11 | 2027-11-03 |  |  |  |  |  |  |  |  |  |  |
| SDR-ST-CON-P3-1630 |  | Install of L10 recessed in ceiling light, lenght1535mmxwidth75mmxhieght105mm, LED 53.2w Part 1 | 21d | 2027-09-11 | 2027-10-04 | SDR-ST-PRO-MS-1170, SDR-ST-CON-P3-1580 FS+1d, SDR-ST-MILS-1000, SDR-ST-CON-P1-4050 | -84d | 27d | SIC- Cost [76245.1]; Electrical Forman [71.21 h]; Electrical Technician [5222.34 h]; Electrical Helper [5222.34 h]; Labor [5222.34 h] | 76,245.06 | 195 | 0 | B2.26 56 00.02 | Number | P3-El.W |
| SDR-ST-CON-P3-1650 |  | Install of L10 recessed in ceiling light, lenght1535mmxwidth75mmxhieght105mm, LED 53.2w Part 2 | 20d | 2027-10-12 | 2027-11-03 | SDR-ST-TC-1000, SDR-ST-PRO-MS-1170, SDR-ST-CON-P3-1630 SS, SDR-ST-MILS-1000 | -111d | 8d | SIC- Cost [76245.1]; Electrical Forman [71.21 h]; Electrical Technician [142.43 h]; Electrical Helper [142.43 h]; Labor [142.43 h] | 76,245.06 | 195 | 0 | B2.26 56 00.02 | Number | P3-El.W |
|  | 4 | **CCTV** |  | 2027-07-25 | 2027-12-12 |  |  |  |  |  |  |  |  |  |  |
| SDR-ST-CON-P3-1520 |  | Install of Handhole (600x600x730mm) | 5d | 2027-07-25 | 2027-07-29 | SDR-ST-CO-1030, SDR-ST-MILS-1090, SDR-ST-CON-P3-1440, SDR-ST-CON-P1-5790, SDR-ST-MILS-1000 | -84d | 0d | SIC- Cost [2418]; Electrical Forman [56.97 h]; Electrical Technician [56.97 h]; Electrical Helper [56.97 h]; Labor [56.97 h] | 2,418 | 2 | 0 | B2.28.20.00.08 | Number | P3-E. W |
| SDR-ST-CON-P3-1550 |  | Install of 2 core 9/125um indoor -outdoor central tube | 8d | 2027-07-31 | 2027-08-07 | SDR-ST-CON-P3-1520, SDR-ST-CO-1030, SDR-ST-MILS-1000 | -84d | 0d | SIC- Cost [11760]; Electrical Forman [78.34 h]; Electrical Technician [78.34 h]; Electrical Helper [78.34 h]; Labor [78.34 h] | 11,760.01 | 980 | 0 | B2.28.20.00.07 | Number | P3-E. W |
| SDR-ST-CON-P3-1570 |  | Install of 4 Port (2 duplex) LC/UPC OS2 fiber patch panel | 12d | 2027-08-08 | 2027-08-21 | SDR-ST-PRO-MS-1040, SDR-ST-CON-P3-1550, SDR-ST-MILS-1000 | -84d | 35d | SIC- Cost [16004]; Electrical Forman [85.46 h]; Electrical Technician [119.44 h]; Electrical Helper [119.44 h]; Labor [119.44 h] | 16,004.01 | 4 | 0 | B2.28.20.00.06 | Number | P3-E. W |
| SDR-ST-CON-P3-1600 |  | Install of Pole mounted Filed Equipment cabinet (FEC) , with fan and ventilation | 19d | 2027-10-02 | 2027-10-23 | SDR-ST-CON-P1-5430, SDR-ST-PRO-MS-1060, SDR-ST-CON-P3-1570, SDR-ST-MILS-1000 | -119d | 0d | SIC- Cost [29768]; Electrical Forman [142.43 h]; Electrical Technician [142.43 h]; Electrical Helper [142.43 h]; Labor [142.43 h] | 29,768.02 | 4 | 0 | B2.28.20.00.02 | Number | P3-E. W |
| SDR-ST-CON-P3-1670 |  | Install of 8 Port Industrial PoE Switch 10/1000BaseT | 19d | 2027-10-24 | 2027-11-14 | SDR-ST-CON-P3-1600, SDR-ST-CON-P1-5850, SDR-ST-MILS-1000 | -119d | 0d | SIC- Cost [20488]; Electrical Forman [142.43 h]; Electrical Technician [142.43 h]; Electrical Helper [142.43 h]; Labor [142.43 h] | 20,488.02 | 4 | 0 | B2.28.20.00.03 | Number | P3-E. W |
| SDR-ST-CON-P3-1680 |  | Install of 1.2KVA Industrial type UPS located at FEC | 19d | 2027-10-24 | 2027-11-14 | SDR-ST-CON-P3-1600, SDR-ST-MILS-1000, SDR-ST-CO-1010 | -119d | 0d | SIC- Cost [32012]; Electrical Forman [99.7 h]; Electrical Technician [99.7 h]; Electrical Helper [99.7 h]; Labor [99.7 h] | 32,012.03 | 4 | 0 | B2.28.20.00.05 | Number | P3-E. W |
| SDR-ST-CON-P3-1740 |  | Install of UTP CAT6 Patch Cord , connect the industrial switch with the cameras | 10d | 2027-11-15 | 2027-11-25 | SDR-ST-CON-P1-5920, SDR-ST-PRO-MS-1160, SDR-ST-CON-P3-1680, SDR-ST-CON-P3-1670, SDR-ST-CON-P3-1650 FS+1d, SDR-ST-MILS-1000 | -119d | 0d | SIC- Cost [896]; Electrical Forman [71.21 h]; Electrical Technician [99.54 h]; Electrical Helper [99.54 h]; Labor [99.54 h] | 896 | 16 | 0 | B2.28.20.00.04 | Number | P3-E. W |
| SDR-ST-CON-P3-1780 |  | Install of 5MP IP PoE Bullet Camera, outdoor mounted on canopy ceiling Part 1. | 12d | 2027-11-27 | 2027-12-09 | SDR-ST-PRO-MS-1160, SDR-ST-PRO-MS-1090, SDR-ST-CON-P3-1820, SDR-ST-CON-P3-1740, SDR-ST-MILS-1000 | -119d | 0d | SIC- Cost [106936]; Electrical Forman [142.43 h]; Electrical Technician [142.43 h]; Electrical Helper [142.43 h]; Labor [142.43 h] | 106,936.09 | 8 | 0 | B2.28.20.00.01 | Number | P3-E. W |
| SDR-ST-CON-P3-1790 |  | Install of 5MP IP PoE Bullet Camera, outdoor mounted on canopy ceiling Part 2. | 14d | 2027-11-27 | 2027-12-12 | SDR-ST-PRO-MS-1160, SDR-ST-CON-P3-1740, SDR-ST-MILS-1000 | -117d | 0d | SIC- Cost [106936]; Electrical Forman [142.43 h]; Electrical Technician [142.43 h]; Electrical Helper [142.43 h]; Labor [142.43 h] | 106,936.09 | 8 | 0 | B2.28.20.00.01 | Number | P3-E. W |

| ID | WBS | Activity | Duration | Start | Finish | Predecessors | Total float | Free float | Resources | Cost | BOQ Qty | Variance | BOQ Line item | UOM | Activities Codes Sudair Station |
| --- | --- | --- | --- | --- | --- | --- | --- | --- | --- | --- | --- | --- | --- | --- | --- |
|  | 5 | **Voice Evacuation System** |  | 2027-11-27 | 2027-12-05 |  |  |  |  |  |  |  |  |  |  |
| SDR-ST-CON-P3-1800 |  | install, test of Suspended ceiling outdoor projector speaker, bi-directional, 20w Part 1 | 8d | 2027-11-27 | 2027-12-05 | SDR-ST-PRO-MS-1150, SDR-ST-CON-P3-1740, SDR-ST-CON-P1-5910, SDR-ST-CON-P1-5980 SS, SDR-ST-CON-P1-5970, SDR-ST-MILS-1000 | -119d | 0d | SIC- Cost [61312.1]; Electrical Forman [142.43 h]; Electrical Technician [2183.89 h]; Electrical Helper [2183.89 h]; Labor [2183.89 h] | 61,312.05 | 16 | 0 | B2.28.20.00.08 | Number | P3-E. W |
| SDR-ST-CON-P3-1870 |  | install, test of Suspended ceiling outdoor projector speaker, bi-directional, 20w Part 2 | 8d | 2027-11-27 | 2027-12-05 | SDR-ST-PRO-MS-1150, SDR-ST-CON-P3-1800 SS, SDR-ST-CON-P3-1780 SS, SDR-ST-CON-P3-1650, SDR-ST-MILS-1000 | -119d | 0d | SIC- Cost [61312.1]; Electrical Forman [142.43 h]; Electrical Technician [142.43 h]; Electrical Helper [142.43 h]; Labor [142.43 h] | 61,312.05 | 16 | 0 | B2.28.20.00.08 | Number | P3-E. W |
|  | 6 | **Testing and Comissioning** |  | 2027-04-22 | 2027-12-20 |  |  |  |  |  |  |  |  |  |  |
|  | 1 | **Civil Works** |  | 2027-09-25 | 2027-10-11 |  |  |  |  |  |  |  |  |  |  |
| SDR-ST-TC-1000 |  | Testing & Commissioning of road works | 15d | 2027-09-25 | 2027-10-11 | SDR-ST-CON-P1-5530 FS+1d | -111d | 0d | Suppliers [1096.85 h]; SIC- Cost; Civil Forman [1096.85 h] |  |  | 0 |  |  |  |
|  | 2 | **Storm Water Drainage Network** |  | 2027-06-06 | 2027-06-23 |  |  |  |  |  |  |  |  |  |  |
| SDR-ST-TC-1010 |  | Testing & Commissioning of network work | 16d | 2027-06-06 | 2027-06-23 | SDR-ST-CON-P1-4760 FS+1d, SDR-ST-CON-P1-4760 FF | -84d | 0d | SIC- Cost; Mechanical Forman [1096.85 h]; Mechanical Engineer [1096.85 h] |  |  | 0 |  |  |  |
|  | 3 | **Sewerage Network** |  | 2027-04-22 | 2027-05-22 |  |  |  |  |  |  |  |  |  |  |
| SDR-ST-TC-1030 |  | Testing & Commissioning of Sewage Network | 21d | 2027-04-22 | 2027-05-22 | SDR-ST-CON-P1-5700, SDR-ST-CON-P1-5800 FS+5d | -29d | 50d | SIC- Cost; Civil Forman [1096.85 h]; Architecture [1096.85 h] |  |  | 0 |  |  |  |
|  | 5 | **Portable Water** |  | 2027-05-09 | 2027-06-06 |  |  |  |  |  |  |  |  |  |  |
| SDR-ST-TC-1020 |  | Testing & Commissioning of Potable Network | 20d | 2027-05-09 | 2027-06-06 | SDR-ST-CON-P1-5030 FS+1d, SDR-ST-CON-P1-5070 | -43d | 41d | SIC- Cost; Mechanical Forman [1096.87 h]; Mechanical Engineer [1096.87 h] |  |  | 0 |  |  |  |
|  | 6 | **Electrical Works** |  | 2027-11-25 | 2027-12-07 |  |  |  |  |  |  |  |  |  |  |
| SDR-ST-TC-1050 |  | Testing & Commissioning of Electrical Network | 11d | 2027-11-25 | 2027-12-07 | SDR-ST-CON-P3-1890, SDR-ST-CON-P1-6050 FS+1d | -106d | 12d | SIC- Cost; Electrical Engineer [2193.7 h] |  |  | 0 |  |  |  |
|  | 8 | **CCTV Works** |  | 2027-12-13 | 2027-12-20 |  |  |  |  |  |  |  |  |  |  |
| SDR-ST-TC-1040 |  | Testing & Commissioning of medium voltage works | 7d | 2027-12-13 | 2027-12-20 | SDR-ST-CON-P3-1800, SDR-ST-CON-P3-1870, SDR-ST-CON-P3-1790 | -117d | 1d | SIC- Cost; Electrical Forman [2193.7 h] |  |  | 0 |  |  |  |
|  | 7 | **Close Out** |  | 2027-05-01 | 2027-12-22 |  |  |  |  |  |  |  |  |  |  |
|  | 1 | **As Built Drawings** |  | 2027-05-01 | 2027-12-11 |  |  |  |  |  |  |  |  |  |  |
|  | 1 | **Civil** |  | 2027-09-23 | 2027-10-06 |  |  |  |  |  |  |  |  |  |  |
| SDR-ST-CO-1000 |  | Civil As-Built Drawing Submission | 7d | 2027-09-23 | 2027-09-30 | SDR-ST-CON-P1-5530 | -110d | 0d | Suppliers [301.39 h]; Civil Drafman [301.39 h] |  |  | 0 |  |  |  |
| SDR-ST-CO-1010 |  | Civil As-Built Drawing Approvals | 5d | 2027-10-02 | 2027-10-06 | SDR-ST-CO-1000 | -110d | 0d | Suppliers [301.39 h]; Civil Forman [301.39 h] |  |  | 0 |  |  |  |
|  | 2 | **Mechanical** |  | 2027-05-01 | 2027-06-10 |  |  |  |  |  |  |  |  |  |  |
| SDR-ST-CO-1020 |  | Mechanical As-Built Drawing Submission | 8d | 2027-05-01 | 2027-05-09 | SDR-ST-CON-P1-5070, SDR-ST-CON-P1-5800 | -47d | 0d | Mechanical Drafman [301.39 h]; Mechanical Engineer [301.39 h] |  |  | 0 |  |  |  |
| SDR-ST-CO-1030 |  | Mechanical As-Built Drawing Approvals | 8d | 2027-06-02 | 2027-06-10 | SDR-ST-CO-1020 FS+15d | -47d | 37d | Mechanical Forman [301.39 h]; Mechanical Engineer [301.39 h] |  |  | 0 |  |  |  |

| ID | WBS | Activity | Duration | Start | Finish | Predecessors | Total float | Free float | Resources | Variance |
| --- | --- | --- | --- | --- | --- | --- | --- | --- | --- | --- |
|  | 3 | **Electrical** |  | 2027-11-18 | 2027-12-11 |  |  |  |  |  |
| SDR-ST-CO-1040 |  | Electrical As-Built Drawing Submission | 10d | 2027-11-18 | 2027-11-29 | SDR-ST-CON-P1-6050 SS, SDR-ST-CO-1010 | -110d | 0d | Electrical Drafman [602.78 h] | 0 |
| SDR-ST-CO-1100 |  | Electrical As-Built Drawing Approvals | 9d | 2027-12-01 | 2027-12-11 | SDR-ST-CO-1040 FS+1d | -110d | 8d | Electrical Engineer [301.39 h]; Electrical Forman [301.39 h] | 0 |
|  | 2 | **Training and Manuals** |  | 2027-11-27 | 2027-12-22 |  |  |  |  |  |
| SDR-ST-CO-1050 |  | Training and Manuals | 23d | 2027-11-27 | 2027-12-22 | SDR-ST-CON-P3-1870 SS, SDR-ST-CON-P3-1630 | -119d | 0d | Suppliers [200.93 h]; Mechanical Engineer [200.93 h]; Architecture [200.93 h] | 0 |
|  | 3 | **Demobilize Manpower** |  | 2027-11-27 | 2027-12-19 |  |  |  |  |  |
| SDR-ST-CO-1060 |  | Manpower Demobilize | 20d | 2027-11-27 | 2027-12-19 | SDR-ST-CO-1050 SS, SDR-ST-CO-1020 | -118d | 0d | Labor [301.39 h]; Architecture [301.39 h] | 0 |
|  | 4 | **Demobilize Equipment** |  | 2027-11-27 | 2027-12-19 |  |  |  |  |  |
| SDR-ST-CO-1070 |  | Equipments Demobilize | 20d | 2027-11-27 | 2027-12-19 | SDR-ST-CO-1060 SS, SDR-ST-CO-1020 | -118d | 0d | Mechanical Forman [301.39 h]; Helper [301.39 h] | 0 |
|  | 5 | **Removal of Site Offices and Structures** |  | 2027-11-27 | 2027-12-21 |  |  |  |  |  |
| SDR-ST-CO-1090 |  | Site Office Removal | 22d | 2027-11-27 | 2027-12-21 | SDR-ST-CO-1070 SS, SDR-ST-CO-1020 | -118d | 0d | Helper [301.4 h]; Labor [301.4 h] | 0 |
|  | 6 | **Handover** |  | 2027-12-08 | 2027-12-21 |  |  |  |  |  |
| SDR-ST-CO-1080 |  | Project Handover | 12d | 2027-12-08 | 2027-12-21 | SDR-ST-CON-P1-5980, SDR-ST-CON-P1-6040, SDR-ST-CO-1070 SS, SDR-ST-CO-1090 FF, SDR-ST-CON-P3-1890, SDR-ST-CON-P3-1880, SDR-ST-CON-P3-1840, SDR-ST-CON-P1-6030, SDR-ST-CON-P1-6040 SS, SDR-ST-CON-P1-6000, SDR-ST-CO-1100 FF+1d, SDR-ST-TC-1050 FF, SDR-ST-MILS-1100, SDR-ST-MILS-1120 FF, SDR-ST-TC-1000 FF, SDR-ST-TC-1040 FF | -118d | 1d | Suppliers [86.11 h]; Civil Forman [86.11 h]; Electrical Forman [86.11 h]; Mechanical Forman [86.11 h]; Helper [86.11 h]; Labor [86.11 h]; Mechanical Engineer [86.11 h] | 0 |

## Activity codes

| Code | Value | Meaning |
| --- | --- | --- |
| Activities Codes Sudair Station | P1-L.V | Low Voltage |
| Activities Codes Sudair Station | P1-M.V | Medium Voltage |
| Activities Codes Sudair Station | P1-P.W | Portable Water |
| Activities Codes Sudair Station | P1-R.W | Road WORKS |
| Activities Codes Sudair Station | P1-S.L | Street Lighting |
| Activities Codes Sudair Station | P1-S.N | Sewarage Network |
| Activities Codes Sudair Station | P1-S.W | Storm Water |
| Activities Codes Sudair Station | P1-Tele | Telecommunication |
| Activities Codes Sudair Station | P3-C.W | Canopy Works |
| Activities Codes Sudair Station | P3-E. W | Electrical Works |
| Activities Codes Sudair Station | P3-El.W | Electrical Works |
| Activities Codes Sudair Station | P3-P.W | Platform Works |
| UOM | M | Meter |
| UOM | M2 | Meter sq |
| UOM | M3 | cubic mtr |
| UOM | Number | Numbers |
| UOM | lm | Linear Meter |
