# Dammam 3rd Industrial City Gates and Fence - B1

Schedule from Primavera P6, 2025-04-06 to 2026-10-12, data date 2026-10-06, costs in USD, A marks actual dates.
Must finish by 2026-08-05

## Calendars

- Abhor: Mon-Thu 08:00-16:00; Fri off; Sat-Sun 08:00-16:00. Exceptions (off unless hours are given): 2026-05-26 to 2026-05-28, 2026-05-30, 2026-09-23.

## Resources

| Resource | Group |
| --- | --- |
| Engineer | labor |
| Testing | material |
| Labors 1 | labor |
| Labors 2 | labor |
| SITE WORKS | material |
| CONCRETE | material |
| MASONRY UNIT | material |
| Metal | material |
| WOODS AND PLASTICS | material |
| THERMAL & MOISTURE PROTECTION | material |
| Doors & Windows | material |
| Finishes | material |
| SPECIALties | material |
| FURNISHINGS | material |
| SPECIAL CONSTRUCTION | material |
| Mechanical Works | material |
| Electrical Works | material |
| Material Delivery | material |
| Material Approval | material |

## Schedule

| ID | WBS | Activity | Type | Duration | Start | Finish | Predecessors | Complete | Resources |
| --- | --- | --- | --- | --- | --- | --- | --- | --- | --- |
|  | 1 | **Key Milestones** |  |  | 2026-07-13 | 2026-09-19 |  |  |  |
|  | 1 | **General Milestones** |  |  | 2026-07-13 | 2026-07-13 |  |  |  |
| DAM3-05-012-1080 |  | Project Start | milestone | 0d | 2026-07-13 A | 2026-07-13 A |  | 100% |  |
|  | 2 | **Contractual Milestones** |  |  | 2026-08-01 | 2026-09-19 |  |  |  |
| DAM3-05-012-4880 |  | Preliminary Submittals | milestone | 0d | 2026-08-01 A | 2026-08-01 A | DAM3-05-012-1010 | 100% |  |
| DAM3-05-012-4870 |  | Mobilization | milestone | 0d | 2026-08-02 A | 2026-08-02 A | DAM3-05-012-1460 | 100% |  |
| DAM3-05-012-4910 |  | Fabrication & Delivery | milestone | 0d | 2026-08-12 A | 2026-08-12 A | DAM3-05-012-4090 | 100% |  |
| DAM3-05-012-4890 |  | Shop Drawings | milestone | 0d | 2026-08-24 A | 2026-08-24 A | DAM3-05-012-3100 | 100% |  |
| DAM3-05-012-4860 |  | Project Finish | milestone | 0d | 2026-09-16 A | 2026-09-16 A | DAM3-05-012-4850 FF, DAM3-05-012-4660, DAM3-05-012-4390, DAM3-05-012-4160, DAM3-05-012-4140, DAM3-05-012-3960, DAM3-05-012-3910, DAM3-05-012-3710, DAM3-05-012-3100, DAM3-05-012-2660, DAM3-05-012-2190, DAM3-05-012-2960, DAM3-05-012-3670, DAM3-05-012-3740, DAM3-05-012-3760, DAM3-05-012-3770, DAM3-05-012-3800, DAM3-05-012-3810, DAM3-05-012-3820, DAM3-05-012-3840, DAM3-05-012-4170, DAM3-05-012-4180, DAM3-05-012-4190, DAM3-05-012-4200, DAM3-05-012-4210, DAM3-05-012-3830, DAM3-05-012-4280, DAM3-05-012-4290, DAM3-05-012-4480, DAM3-05-012-4490, DAM3-05-012-3720, DAM3-05-012-3750, DAM3-05-012-3850, DAM3-05-012-3940, DAM3-05-012-3960 FF, DAM3-05-012-4130, DAM3-05-012-2670, DAM3-05-012-2680, DAM3-05-012-2690, DAM3-05-012-2720, DAM3-05-012-2730, DAM3-05-012-4300, DAM3-05-012-4520, DAM3-05-012-4310, DAM3-05-012-4320, DAM3-05-012-4330, DAM3-05-012-4340, DAM3-05-012-4530, DAM3-05-012-4650, DAM3-05-012-4390 FF, DAM3-05-012-2700, DAM3-05-012-2710, DAM3-05-012-2740, DAM3-05-012-2750, DAM3-05-012-2760, DAM3-05-012-2770, DAM3-05-012-2780, DAM3-05-012-2790, DAM3-05-012-2800, DAM3-05-012-2810, DAM3-05-012-2820, DAM3-05-012-4360, DAM3-05-012-4370, DAM3-05-012-4380, DAM3-05-012-4540, DAM3-05-012-4550, DAM3-05-012-4350, DAM3-05-012-4560, DAM3-05-012-4570, DAM3-05-012-4580, DAM3-05-012-4590, DAM3-05-012-4600, DAM3-05-012-4610, DAM3-05-012-4620, DAM3-05-012-4630, DAM3-05-012-4640, DAM3-05-012-4660 FF, DAM3-05-012-4770, DAM3-05-012-4780, DAM3-05-012-4790, DAM3-05-012-4800, DAM3-05-012-4810, DAM3-05-012-4820, DAM3-05-012-4440, DAM3-05-012-4450, DAM3-05-012-4460, DAM3-05-012-4260, DAM3-05-012-4470, DAM3-05-012-4150, DAM3-05-012-4160 FF, DAM3-05-012-4270, DAM3-05-012-4500, DAM3-05-012-4510, DAM3-05-012-4730, DAM3-05-012-4740, DAM3-05-012-4750, DAM3-05-012-4760, DAM3-05-012-4870, DAM3-05-012-4880, DAM3-05-012-4890, DAM3-05-012-4900, DAM3-05-012-4910, DAM3-05-012-4920 | 100% |  |
| DAM3-05-012-4920 |  | Construction | milestone | 0d | 2026-09-16 A | 2026-09-16 A | DAM3-05-012-4760 | 100% |  |
| DAM3-05-012-4900 |  | Material Submittal & Approval | milestone | 0d | 2026-09-19 A | 2026-09-19 A | DAM3-05-012-3900 | 100% |  |
|  | 2 | **Mobilization** |  |  | 2026-07-13 | 2026-08-02 |  |  |  |
|  | 5 | **Site Survey** |  |  | 2026-07-13 | 2026-07-16 |  |  |  |
| DAM3-05-012-1020 |  | Site Survey |  | 2d | 2026-07-13 A | 2026-07-14 A | DAM3-05-012-1080 | 100% | Engineer [17.13 h] |
| DAM3-05-012-1090 |  | Survey Report |  | 2d | 2026-07-15 A | 2026-07-16 A | DAM3-05-012-1020 | 100% | Engineer [17.13 h] |
|  | 2 | **Site Layout Plan** |  |  | 2026-07-18 | 2026-07-20 |  |  |  |
| DAM3-05-012-1100 |  | Site Office Layout Drawing Proposal Submittal |  | 1d | 2026-07-18 A | 2026-07-18 A | DAM3-05-012-1090 | 100% | Engineer [17.13 h] |
| DAM3-05-012-1110 |  | Site Office Layout Drawing Review & Approval |  | 2d | 2026-07-19 A | 2026-07-20 A | DAM3-05-012-1100 | 100% | Engineer [17.13 h] |
|  | 6 | **Construct Site Access Roads** |  |  | 2026-07-21 | 2026-07-26 |  |  |  |
| DAM3-05-012-1120 |  | Site Preparation |  | 1d | 2026-07-21 A | 2026-07-21 A | DAM3-05-012-1110 | 100% | Engineer [17.13 h] |
| DAM3-05-012-1150 |  | Grading & Leveling |  | 2d | 2026-07-22 A | 2026-07-23 A | DAM3-05-012-1120 | 100% | Engineer [17.13 h] |
| DAM3-05-012-1160 |  | Temporary Access Road |  | 2d | 2026-07-23 A | 2026-07-26 A | DAM3-05-012-1150 SS+1.25d | 100% | Engineer [17.13 h] |
|  | 7 | **Construct Site Office Fence** |  |  | 2026-07-25 | 2026-08-02 |  |  |  |
| DAM3-05-012-1190 |  | Excavation for Fence Foundation |  | 4d | 2026-07-25 A | 2026-07-29 A | DAM3-05-012-1160 SS+1.25d, DAM3-05-012-1150 | 100% | Engineer [17.13 h] |
| DAM3-05-012-1220 |  | Installation of Fence Posts |  | 4d | 2026-07-26 A | 2026-07-30 A | DAM3-05-012-1190 SS+1.25d | 100% | Engineer [17.13 h] |
| DAM3-05-012-1460 |  | Installation of Fence Mesh |  | 3d | 2026-07-29 A | 2026-08-02 A | DAM3-05-012-1220 SS+2.5d, DAM3-05-012-1190 | 100% | Engineer [17.13 h] |

| ID | WBS | Activity | Duration | Start | Finish | Predecessors | Complete | Resources |
| --- | --- | --- | --- | --- | --- | --- | --- | --- |
|  | 8 | **Construct Site Offices** |  | 2026-07-25 | 2026-07-28 |  |  |  |
| DAM3-05-012-1170 |  | Installation of Site Offices | 3d | 2026-07-25 A | 2026-07-27 A | DAM3-05-012-1160 SS, DAM3-05-012-1110, DAM3-05-012-1150 | 100% | Engineer [17.13 h] |
| DAM3-05-012-1200 |  | MEP Works | 2d | 2026-07-25 A | 2026-07-27 A | DAM3-05-012-1170 FS-2.5d | 100% | Engineer [17.13 h] |
| DAM3-05-012-1210 |  | Installation of Furniture | 2d | 2026-07-26 A | 2026-07-28 A | DAM3-05-012-1170 FS-1.25d, DAM3-05-012-1200 SS | 100% | Engineer [17.13 h] |
|  | 3 | **Mobilization of Manpower** |  | 2026-07-21 | 2026-07-27 |  |  |  |
| DAM3-05-012-1130 |  | Mobilization of Manpower | 6d | 2026-07-21 A | 2026-07-27 A | DAM3-05-012-1120 SS | 100% | Engineer [17.13 h] |
|  | 4 | **Mobilization of Equipment** |  | 2026-07-21 | 2026-07-27 |  |  |  |
| DAM3-05-012-1140 |  | Mobilization of Tools & Equipment | 6d | 2026-07-21 A | 2026-07-27 A | DAM3-05-012-1130 SS | 100% | Engineer [17.13 h] |
|  | 3 | **Preliminary Submittals** |  | 2026-07-13 | 2026-08-01 |  |  |  |
| DAM3-05-012-1000 |  | Insurances | 17d | 2026-07-13 A | 2026-08-01 A | DAM3-05-012-1080 | 100% | Engineer [6.21 h] |
| DAM3-05-012-1010 |  | Performance Bonds | 17d | 2026-07-13 A | 2026-08-01 A | DAM3-05-012-1080 | 100% | Engineer [6.21 h] |
| DAM3-05-012-1030 |  | Contract Schedule (Baseline Program) | 13d | 2026-07-13 A | 2026-07-27 A | DAM3-05-012-1080 | 100% | Engineer [6.21 h] |
| DAM3-05-012-1040 |  | HSE Plan | 12d | 2026-07-13 A | 2026-07-26 A | DAM3-05-012-1080 | 100% | Engineer [6.21 h] |
| DAM3-05-012-1050 |  | Quality Control Plan | 10d | 2026-07-13 A | 2026-07-23 A | DAM3-05-012-1080 | 100% | Engineer [6.21 h] |
| DAM3-05-012-1060 |  | Project Organization Chart | 12d | 2026-07-13 A | 2026-07-26 A | DAM3-05-012-1080 | 100% | Engineer [6.21 h] |
| DAM3-05-012-1070 |  | Submission of Staff CVs | 10d | 2026-07-13 A | 2026-07-23 A | DAM3-05-012-1080 | 100% | Engineer [6.21 h] |
|  | 8 | **Engineering** |  | 2026-07-25 | 2026-09-19 |  |  |  |
|  | 3 | **Shop Drawings** |  | 2026-07-25 | 2026-08-24 |  |  |  |
|  | 2 | **Prepare & Submit** |  | 2026-07-25 | 2026-08-10 |  |  |  |
| DAM3-05-012-1180 |  | Fence Type 1 - Shopdrawings - ( Prepare & Submit) | 10.5d | 2026-07-25 A | 2026-08-05 A | DAM3-05-012-1070 | 100% | Engineer [80 h] |
| DAM3-05-012-1340 |  | Fence Type 2 - Shopdrawings - (Prepare & Submit) | 9d | 2026-07-28 A | 2026-08-06 A | DAM3-05-012-1180 SS+3d, DAM3-05-012-1200, DAM3-05-012-1130 | 100% | Engineer [80 h] |
| DAM3-05-012-1620 |  | Guard Room - Shopdrawings - (Prepare & Submit) | 9d | 2026-08-01 A | 2026-08-10 A | DAM3-05-012-1340 SS+3d, DAM3-05-012-1220 | 100% | Engineer [80 h] |
|  | 7 | **Review & Approve** |  | 2026-08-05 | 2026-08-24 |  |  |  |
| DAM3-05-012-2190 |  | Fence Type 1 - Shopdrawings - ( Prepare & Submit) | 12d | 2026-08-05 A | 2026-08-19 A | DAM3-05-012-1180 | 100% | Engineer [96 h] |
| DAM3-05-012-2660 |  | Fence Type 2 - Shopdrawings - (Prepare & Submit) | 12d | 2026-08-08 A | 2026-08-20 A | DAM3-05-012-1340 | 100% | Engineer [96 h] |
| DAM3-05-012-3100 |  | Guard Room - Shopdrawings - (Prepare & Submit) | 12d | 2026-08-11 A | 2026-08-24 A | DAM3-05-012-1620 | 100% | Engineer [96 h] |

| ID | WBS | Activity | Duration | Start | Finish | Predecessors | Complete | Resources |
| --- | --- | --- | --- | --- | --- | --- | --- | --- |
|  | 1 | **Material Submittal** |  | 2026-07-27 | 2026-09-19 |  |  |  |
|  | 1 | **Material Prepare & Submit** |  | 2026-07-27 | 2026-09-12 |  |  |  |
|  | 3 | **Civil & Arch** |  | 2026-07-28 | 2026-09-12 |  |  |  |
| DAM3-05-012-1240 |  | Backfilling for guard rooms under G.Beams (Material Prepare & Submit) | 4d | 2026-07-28 A | 2026-08-02 A | DAM3-05-012-1080 SS+13d, DAM3-05-012-1230 SS+1d, DAM3-05-012-1210 FS-1d, DAM3-05-012-1160 FS+2d | 100% | Engineer [40 h] |
| DAM3-05-012-1250 |  | interlocking paving blocks (Material Prepare & Submit) | 4d | 2026-07-28 A | 2026-08-02 A | DAM3-05-012-1080 SS+13d, DAM3-05-012-1240 SS | 100% | Engineer [40 h] |
| DAM3-05-012-1260 |  | Concrete Masonry Unit (CMU) for walls (Material Prepare & Submit) | 4d | 2026-07-28 A | 2026-08-02 A | DAM3-05-012-1080 SS+13d, DAM3-05-012-1250 SS | 100% | Engineer [40 h] |
| DAM3-05-012-1270 |  | overflow galvanized steel roof scupper with gray color with angular secondary support(Material Prepare & Submit) | 4d | 2026-07-28 A | 2026-08-02 A | DAM3-05-012-1080 SS+13d, DAM3-05-012-1260 SS | 100% | Engineer [40 h] |
| DAM3-05-012-1280 |  | aluminum framed double glazed windows (Material Prepare & Submit) | 4d | 2026-07-28 A | 2026-08-02 A | DAM3-05-012-1080 SS+13d, DAM3-05-012-1270 SS | 100% | Engineer [40 h] |
| DAM3-05-012-1290 |  | Riyadh stone cladding (Material Prepare & Submit) | 4d | 2026-07-28 A | 2026-08-02 A | DAM3-05-012-1080 SS+13d, DAM3-05-012-1280 SS | 100% | Engineer [40 h] |
| DAM3-05-012-1300 |  | PANEL SIGNAGE (Material Prepare & Submit) | 4d | 2026-07-28 A | 2026-08-02 A | DAM3-05-012-1080 SS+13d, DAM3-05-012-1290 SS | 100% | Engineer [40 h] |
| DAM3-05-012-1360 |  | Aluminum Door (Material Prepare & Submit) | 4d | 2026-07-29 A | 2026-08-03 A | DAM3-05-012-1080 SS+14d, DAM3-05-012-1330 SS+1d | 100% | Engineer [40 h] |
| DAM3-05-012-1370 |  | structural steel members for gate frame (Material Prepare & Submit) | 4d | 2026-07-29 A | 2026-08-03 A | DAM3-05-012-1080 SS+14d, DAM3-05-012-1360 SS | 100% | Engineer [40 h] |
| DAM3-05-012-1380 |  | structural steel members and plates for main gates (Material Prepare & Submit) | 4d | 2026-07-29 A | 2026-08-03 A | DAM3-05-012-1080 SS+14d, DAM3-05-012-1370 SS | 100% | Engineer [40 h] |
| DAM3-05-012-1480 |  | plant trees, plants, and ground covers including fixations, sweet soil (Material Prepare & Submit) | 4d | 2026-07-30 A | 2026-08-04 A | DAM3-05-012-1080 SS+15d, DAM3-05-012-1450 SS+1d | 100% | Engineer [40 h] |
| DAM3-05-012-1500 |  | precast concrete curbstone (Material Prepare & Submit) | 4d | 2026-08-01 A | 2026-08-05 A | DAM3-05-012-1080 SS+16d, DAM3-05-012-1490 SS+1d | 100% | Engineer [40 h] |
| DAM3-05-012-1510 |  | stone gravel (Material Prepare & Submit) | 4d | 2026-08-01 A | 2026-08-05 A | DAM3-05-012-1080 SS+16d, DAM3-05-012-1500 SS | 100% | Engineer [40 h] |
| DAM3-05-012-1520 |  | PANTRY CABINET (Material Prepare & Submit) | 4d | 2026-08-01 A | 2026-08-05 A | DAM3-05-012-1080 SS+16d, DAM3-05-012-1510 SS | 100% | Engineer [40 h] |
| DAM3-05-012-1530 |  | COUNTER DESK (Material Prepare & Submit) | 4d | 2026-08-01 A | 2026-08-05 A | DAM3-05-012-1080 SS+16d, DAM3-05-012-1520 SS | 100% | Engineer [40 h] |
| DAM3-05-012-1540 |  | Roller blind (Material Prepare & Submit) | 4d | 2026-08-01 A | 2026-08-05 A | DAM3-05-012-1080 SS+16d, DAM3-05-012-1530 SS | 100% | Engineer [40 h] |
| DAM3-05-012-1550 |  | structural steel members and plates for pedestrian gates (Material Prepare & Submit) | 4d | 2026-08-01 A | 2026-08-05 A | DAM3-05-012-1080 SS+16d, DAM3-05-012-1540 SS | 100% | Engineer [40 h] |
| DAM3-05-012-1640 |  | Backfilling for Roads (Material Prepare & Submit) | 4d | 2026-08-02 A | 2026-08-05 A | DAM3-05-012-1080 SS+17d, DAM3-05-012-1610 SS | 100% | Engineer [40 h] |
| DAM3-05-012-1650 |  | interlocking pedstrian paving blocks (Material Prepare & Submit) | 4d | 2026-08-02 A | 2026-08-05 A | DAM3-05-012-1080 SS+17d, DAM3-05-012-1640 SS | 100% | Engineer [40 h] |
| DAM3-05-012-1660 |  | folding & sliding mounter combination ladder for building maintenance purpose (Material Prepare & Submit) | 4d | 2026-08-02 A | 2026-08-05 A | DAM3-05-012-1080 SS+17d, DAM3-05-012-1650 SS | 100% | Engineer [40 h] |
| DAM3-05-012-1670 |  | heavy steel cover with frame including all necessary fixings(Material Prepare & Submit) | 4d | 2026-08-02 A | 2026-08-05 A | DAM3-05-012-1080 SS+17d, DAM3-05-012-1660 SS | 100% | Engineer [40 h] |
| DAM3-05-012-1680 |  | hollow metal door (Material Prepare & Submit) | 4d | 2026-08-02 A | 2026-08-05 A | DAM3-05-012-1080 SS+17d, DAM3-05-012-1670 SS | 100% | Engineer [40 h] |
| DAM3-05-012-1690 |  | granite saddles and thresholds (Material Prepare & Submit) | 4d | 2026-08-02 A | 2026-08-05 A | DAM3-05-012-1080 SS+17d, DAM3-05-012-1680 SS | 100% | Engineer [40 h] |
| DAM3-05-012-1700 |  | ceramic wall tiles (Material Prepare & Submit) | 4d | 2026-08-02 A | 2026-08-05 A | DAM3-05-012-1080 SS+17d, DAM3-05-012-1690 SS | 100% | Engineer [40 h] |
| DAM3-05-012-1710 |  | acrylic paint on internal walls (Material Prepare & Submit) | 4d | 2026-08-02 A | 2026-08-05 A | DAM3-05-012-1080 SS+17d, DAM3-05-012-1700 SS | 100% | Engineer [40 h] |
| DAM3-05-012-1720 |  | two coats of acrylic paint (suitable for exterior use) on external (Material Prepare & Submit) | 4d | 2026-08-02 A | 2026-08-05 A | DAM3-05-012-1080 SS+17d, DAM3-05-012-1710 SS | 100% | Engineer [40 h] |
| DAM3-05-012-1730 |  | aluminum cladding (Material Prepare & Submit) | 4d | 2026-08-02 A | 2026-08-05 A | DAM3-05-012-1080 SS+17d, DAM3-05-012-1720 SS | 100% | Engineer [40 h] |
| DAM3-05-012-1740 |  | gypsum board suspended ceiling (Material Prepare & Submit) | 4d | 2026-08-02 A | 2026-08-05 A | DAM3-05-012-1080 SS+17d, DAM3-05-012-1730 SS | 100% | Engineer [40 h] |
| DAM3-05-012-1750 |  | Waste Receptacle(Material Prepare & Submit) | 4d | 2026-08-02 A | 2026-08-05 A | DAM3-05-012-1080 SS+17d, DAM3-05-012-1740 SS | 100% | Engineer [40 h] |
| DAM3-05-012-1760 |  | structural steel members and steel hollow sections for wall fence (Material Prepare & Submit) | 4d | 2026-08-02 A | 2026-08-05 A | DAM3-05-012-1080 SS+17d, DAM3-05-012-1750 SS | 100% | Engineer [40 h] |
| DAM3-05-012-1770 |  | galvanized steel chain link gate (Material Prepare & Submit) | 4d | 2026-08-02 A | 2026-08-05 A | DAM3-05-012-1080 SS+17d, DAM3-05-012-1760 SS | 100% | Engineer [40 h] |
| DAM3-05-012-1780 |  | gully traps with heavy duty cover (Material Prepare & Submit) | 4d | 2026-08-02 A | 2026-08-05 A | DAM3-05-012-1080 SS+17d, DAM3-05-012-1770 SS | 100% | Engineer [40 h] |
| DAM3-05-012-1790 |  | chamber with heavy duty cover (Material Prepare & Submit) | 4d | 2026-08-02 A | 2026-08-05 A | DAM3-05-012-1080 SS+17d, DAM3-05-012-1780 SS | 100% | Engineer [40 h] |
| DAM3-05-012-2000 |  | ceramic floor tiles (Material Prepare & Submit) | 5d | 2026-08-03 A | 2026-08-08 A | DAM3-05-012-1080 SS+18d, DAM3-05-012-1890 SS+1d | 100% | Engineer [40 h] |
| DAM3-05-012-2130 |  | matt stainless steel flag pole (Material Prepare & Submit) (Material Prepare & Submit) | 5d | 2026-08-04 A | 2026-08-09 A | DAM3-05-012-1080 SS+19d, DAM3-05-012-2020 SS+1d | 100% | Engineer [40 h] |
| DAM3-05-012-2140 |  | galvanized steel chain link ,steel tube framing and posts, turn buckle, tension wir.etc(Material Prepare & Submit) | 5d | 2026-08-04 A | 2026-08-09 A | DAM3-05-012-1080 SS+19d, DAM3-05-012-2130 SS | 100% | Engineer [40 h] |
| DAM3-05-012-3070 |  | granite flooring (Material Prepare & Submit) | 5d | 2026-08-11 A | 2026-08-16 A | DAM3-05-012-1080 SS+25d, DAM3-05-012-2150 | 100% | Engineer [40 h] |
| DAM3-05-012-3780 |  | Workstation chair (Material Prepare & Submit) | 5d | 2026-09-07 A | 2026-09-12 A | DAM3-05-012-1080 SS+48d, DAM3-05-012-2150 | 100% | Engineer [40 h] |
| DAM3-05-012-3790 |  | Workstation table (Material Prepare & Submit) | 5d | 2026-09-07 A | 2026-09-12 A | DAM3-05-012-1080 SS+48d, DAM3-05-012-3780 SS | 100% | Engineer [40 h] |

| ID | WBS | Activity | Duration | Start | Finish | Predecessors | Complete | Resources |
| --- | --- | --- | --- | --- | --- | --- | --- | --- |
|  | 1 | **Mechanical** |  | 2026-07-27 | 2026-08-05 |  |  |  |
| DAM3-05-012-1230 |  | Fire extinguishers as per drawings, specifications (Material Prepare & Submit) | 5d | 2026-07-27 A | 2026-08-01 A | DAM3-05-012-1080 SS+12d, DAM3-05-012-1160 | 100% | Engineer [40 h] |
| DAM3-05-012-1310 |  | HEATING, VENTILATION AND AIR CONDITIONING - (Material Prepare & Submit) | 4d | 2026-07-28 A | 2026-08-02 A | DAM3-05-012-1080 SS+13d, DAM3-05-012-1300 SS | 100% | Engineer [40 h] |
| DAM3-05-012-1390 |  | Bulbblers and Spreyers of IRRIGATION SYSTEM (Material Prepare & Submit) | 4d | 2026-07-29 A | 2026-08-03 A | DAM3-05-012-1080 SS+14d, DAM3-05-012-1380 SS | 100% | Engineer [40 h] |
| DAM3-05-012-1490 |  | TOILET ACCESSROIES (Material Prepare & Submit) | 4d | 2026-07-30 A | 2026-08-04 A | DAM3-05-012-1080 SS+15d, DAM3-05-012-1480 SS | 100% | Engineer [40 h] |
| DAM3-05-012-1560 |  | Exhaust fans - (Material Prepare & Submit) | 4d | 2026-08-01 A | 2026-08-05 A | DAM3-05-012-1080 SS+16d, DAM3-05-012-1550 SS | 100% | Engineer [40 h] |
| DAM3-05-012-1610 |  | IRRIGATION SYSTEM (Material Prepare & Submit) | 4d | 2026-08-01 A | 2026-08-05 A | DAM3-05-012-1080 SS+16d, DAM3-05-012-1600 SS | 100% | Engineer [40 h] |
| DAM3-05-012-1800 |  | PLUMBING FIXTURES (Material Prepare & Submit) | 4d | 2026-08-02 A | 2026-08-05 A | DAM3-05-012-1080 SS+17d, DAM3-05-012-1790 SS | 100% | Engineer [40 h] |
| DAM3-05-012-1890 |  | WATER SUPPLY SYSTEM (Material Prepare & Submit) | 4d | 2026-08-02 A | 2026-08-05 A | DAM3-05-012-1080 SS+17d, DAM3-05-012-1880 SS | 100% | Engineer [40 h] |
|  | 2 | **Electrical** |  | 2026-07-28 | 2026-08-09 |  |  |  |
| DAM3-05-012-1320 |  | Central (Headend) System Components; (Material Prepare & Submit) | 4d | 2026-07-28 A | 2026-08-02 A | DAM3-05-012-1080 SS+13d, DAM3-05-012-1310 SS | 100% | Engineer [40 h] |
| DAM3-05-012-1330 |  | Analog addressable fire alarm control panel with battery (Material Prepare & Submit) | 4d | 2026-07-28 A | 2026-08-02 A | DAM3-05-012-1080 SS+13d, DAM3-05-012-1320 SS | 100% | Engineer [40 h] |
| DAM3-05-012-1400 |  | LIGHTING FIXTURES (Material Prepare & Submit) | 4d | 2026-07-29 A | 2026-08-03 A | DAM3-05-012-1080 SS+14d, DAM3-05-012-1390 SS | 100% | Engineer [40 h] |
| DAM3-05-012-1410 |  | COMPUTERS AND RELATED PERIPHERALS (Material Prepare & Submit) | 4d | 2026-07-29 A | 2026-08-03 A | DAM3-05-012-1080 SS+14d, DAM3-05-012-1400 SS | 100% | Engineer [40 h] |
| DAM3-05-012-1420 |  | CCTV storage system, as specified(Material Prepare & Submit) | 4d | 2026-07-29 A | 2026-08-03 A | DAM3-05-012-1080 SS+14d, DAM3-05-012-1410 SS | 100% | Engineer [40 h] |
| DAM3-05-012-1430 |  | ELECTRICAL GATE BARRIER (Material Prepare & Submit) | 4d | 2026-07-29 A | 2026-08-03 A | DAM3-05-012-1080 SS+14d, DAM3-05-012-1420 SS | 100% | Engineer [40 h] |
| DAM3-05-012-1440 |  | LIGHTNING PROTECTION (Material Prepare & Submit) | 4d | 2026-07-29 A | 2026-08-03 A | DAM3-05-012-1080 SS+14d, DAM3-05-012-1430 SS | 100% | Engineer [40 h] |
| DAM3-05-012-1450 |  | Intelligent Ionization / Photoelectric smoke and heat detector with base (Material Prepare & Submit) | 4d | 2026-07-29 A | 2026-08-03 A | DAM3-05-012-1080 SS+14d, DAM3-05-012-1440 SS | 100% | Engineer [40 h] |
| DAM3-05-012-1570 |  | power source with built-in photocell sensor for automatic electrical connection (Material Prepare & Submit) | 4d | 2026-08-01 A | 2026-08-05 A | DAM3-05-012-1080 SS+16d, DAM3-05-012-1560 SS | 100% | Engineer [40 h] |
| DAM3-05-012-1580 |  | UNDERGROUND DISTRIBUTION SYSTEM -(Material Prepare & Submit) | 4d | 2026-08-01 A | 2026-08-05 A | DAM3-05-012-1080 SS+16d, DAM3-05-012-1570 SS | 100% | Engineer [40 h] |
| DAM3-05-012-1590 |  | GROUNDING - (Material Prepare & Submit) | 4d | 2026-08-01 A | 2026-08-05 A | DAM3-05-012-1080 SS+16d, DAM3-05-012-1580 SS | 100% | Engineer [40 h] |
| DAM3-05-012-1600 |  | card reader IN/OUT (Material Prepare & Submit) | 4d | 2026-08-01 A | 2026-08-05 A | DAM3-05-012-1080 SS+16d, DAM3-05-012-1590 SS | 100% | Engineer [40 h] |
| DAM3-05-012-1810 |  | switches and Receptacle outlets complete with device boxes (Material Prepare & Submit) | 4d | 2026-08-02 A | 2026-08-05 A | DAM3-05-012-1080 SS+17d, DAM3-05-012-1800 SS | 100% | Engineer [40 h] |
| DAM3-05-012-1820 |  | 12-Port CAT6A UTP fully loaded patch panel (Material Prepare & Submit) | 4d | 2026-08-02 A | 2026-08-05 A | DAM3-05-012-1080 SS+17d, DAM3-05-012-1810 SS | 100% | Engineer [40 h] |
| DAM3-05-012-1830 |  | (Material Prepare & Submit)Port, SMF, Fiber Optic Patch Panels | 4d | 2026-08-02 A | 2026-08-05 A | DAM3-05-012-1080 SS+17d, DAM3-05-012-1820 SS | 100% | Engineer [40 h] |
| DAM3-05-012-1840 |  | VIDEO SURVEILLANCE (Material Prepare & Submit) | 4d | 2026-08-02 A | 2026-08-05 A | DAM3-05-012-1080 SS+17d, DAM3-05-012-1830 SS | 100% | Engineer [40 h] |
| DAM3-05-012-1850 |  | VSS System, as specified; (Material Prepare & Submit) | 4d | 2026-08-02 A | 2026-08-05 A | DAM3-05-012-1080 SS+17d, DAM3-05-012-1840 SS | 100% | Engineer [40 h] |
| DAM3-05-012-1860 |  | CCTV cameras (Material Prepare & Submit) | 4d | 2026-08-02 A | 2026-08-05 A | DAM3-05-012-1080 SS+17d, DAM3-05-012-1850 SS | 100% | Engineer [40 h] |
| DAM3-05-012-1870 |  | 20A , ATS ( Automatic transfer switch) for UPS (Material Prepare & Submit) | 4d | 2026-08-02 A | 2026-08-05 A | DAM3-05-012-1080 SS+17d, DAM3-05-012-1860 SS | 100% | Engineer [40 h] |
| DAM3-05-012-1880 |  | fire alarm system including wires, conduit and other materials - (Material Prepare & Submit) | 4d | 2026-08-02 A | 2026-08-05 A | DAM3-05-012-1080 SS+17d, DAM3-05-012-1870 SS | 100% | Engineer [40 h] |
| DAM3-05-012-2010 |  | 3mm steel CNC laser cut panels (Material Prepare & Submit) | 5d | 2026-08-03 A | 2026-08-08 A | DAM3-05-012-1080 SS+18d, DAM3-05-012-2000 SS | 100% | Engineer [40 h] |
| DAM3-05-012-2020 |  | Access control panel - (Material Prepare & Submit) | 5d | 2026-08-03 A | 2026-08-08 A | DAM3-05-012-1080 SS+18d, DAM3-05-012-2010 SS | 100% | Engineer [40 h] |
| DAM3-05-012-2150 |  | LIGHTING AND POWER TYPE PANELBOARDS (Material Prepare & Submit) | 5d | 2026-08-04 A | 2026-08-09 A | DAM3-05-012-1080 SS+19d, DAM3-05-012-2140 SS | 100% | Engineer [40 h] |

| ID | WBS | Activity | Duration | Start | Finish | Predecessors | Complete | Resources | Cost |
| --- | --- | --- | --- | --- | --- | --- | --- | --- | --- |
|  | 2 | **Material Review & Approve** |  | 2026-08-02 | 2026-09-19 |  |  |  |  |
|  | 3 | **Civil & Arch** |  | 2026-08-02 | 2026-09-19 |  |  |  |  |
| DAM3-05-012-1900 |  | Backfilling for guard rooms under G.Beams (Material Review & Approve) | 2d | 2026-08-02 A | 2026-08-04 A | DAM3-05-012-1240 | 100% | Material Approval [48]; Engineer [48 h] | 7,071.43 |
| DAM3-05-012-1910 |  | interlocking paving blocks (Material Review & Approve) | 6d | 2026-08-02 A | 2026-08-09 A | DAM3-05-012-1250 | 100% | Material Approval [48]; Engineer [48 h] | 7,071.43 |
| DAM3-05-012-1920 |  | Concrete Masonry Unit (CMU) for walls (Material Review & Approve) | 6d | 2026-08-02 A | 2026-08-09 A | DAM3-05-012-1260 | 100% | Material Approval [48]; Engineer [48 h] | 7,071.43 |
| DAM3-05-012-1930 |  | overflow galvanized steel roof scupper with gray color with angular secondary support(Material Review & Approve) | 6d | 2026-08-02 A | 2026-08-09 A | DAM3-05-012-1270 | 100% | Material Approval [48]; Engineer [48 h] | 7,071.43 |
| DAM3-05-012-1940 |  | aluminum framed double glazed windows (Material Review & Approve) | 6d | 2026-08-02 A | 2026-08-09 A | DAM3-05-012-1280 | 100% | Material Approval [48]; Engineer [48 h] | 7,071.43 |
| DAM3-05-012-1950 |  | Riyadh stone cladding (Material Review & Approve) | 6d | 2026-08-02 A | 2026-08-09 A | DAM3-05-012-1290 | 100% | Material Approval [48]; Engineer [48 h] | 7,071.43 |
| DAM3-05-012-1960 |  | PANEL SIGNAGE (Material Review & Approve) | 6d | 2026-08-02 A | 2026-08-09 A | DAM3-05-012-1300 | 100% | Material Approval [48]; Engineer [48 h] | 7,071.43 |
| DAM3-05-012-2030 |  | Aluminum Door (Material Review & Approve) | 6d | 2026-08-03 A | 2026-08-10 A | DAM3-05-012-1360 | 100% | Material Approval [48]; Engineer [48 h] | 7,071.43 |
| DAM3-05-012-2040 |  | structural steel members for gate frame (Material Review & Approve) | 6d | 2026-08-03 A | 2026-08-10 A | DAM3-05-012-1370 | 100% | Material Approval [48]; Engineer [48 h] | 7,071.43 |
| DAM3-05-012-2050 |  | installation of structural steel members and plates for main gates (Material Review & Approve) | 6d | 2026-08-03 A | 2026-08-10 A | DAM3-05-012-1380 | 100% | Material Approval [48]; Engineer [48 h] | 7,071.43 |
| DAM3-05-012-2170 |  | plant trees, plants, and ground covers including fixations, sweet soil (Material Review & Approve) | 6d | 2026-08-04 A | 2026-08-11 A | DAM3-05-012-1480 | 100% | Material Approval [48]; Engineer [48 h] | 7,071.43 |
| DAM3-05-012-2200 |  | precast concrete curbstone (Material Review & Approve) | 6d | 2026-08-05 A | 2026-08-12 A | DAM3-05-012-1500 | 100% | Material Approval [48]; Engineer [48 h] | 7,071.43 |
| DAM3-05-012-2210 |  | 19 to 38mm locally available stone gravel (Material Review & Approve) | 6d | 2026-08-05 A | 2026-08-12 A | DAM3-05-012-1510 | 100% | Material Approval [48]; Engineer [48 h] | 7,071.43 |
| DAM3-05-012-2220 |  | PANTRY CABINET (Material Review & Approve) | 6d | 2026-08-05 A | 2026-08-12 A | DAM3-05-012-1520 | 100% | Material Approval [48]; Engineer [48 h] | 7,071.43 |
| DAM3-05-012-2230 |  | COUNTER DESK (Material Review & Approve) | 6d | 2026-08-05 A | 2026-08-12 A | DAM3-05-012-1530 | 100% | Material Approval [48]; Engineer [48 h] | 7,071.43 |
| DAM3-05-012-2240 |  | Roller blind (Material Review & Approve) | 6d | 2026-08-05 A | 2026-08-12 A | DAM3-05-012-1540 | 100% | Material Approval [48]; Engineer [48 h] | 7,071.43 |
| DAM3-05-012-2250 |  | installation of structural steel members and plates for pedestrian gates (Material Review & Approve) | 6d | 2026-08-05 A | 2026-08-12 A | DAM3-05-012-1550 | 100% | Material Approval [48]; Engineer [48 h] | 7,071.43 |
| DAM3-05-012-2340 |  | Backfilling for Roads (Material Review & Approve) | 6d | 2026-08-06 A | 2026-08-12 A | DAM3-05-012-1640 | 100% | Material Approval [48]; Engineer [48 h] | 7,071.43 |
| DAM3-05-012-2350 |  | interlocking pedstrian paving blocks (Material Review & Approve) | 6d | 2026-08-06 A | 2026-08-12 A | DAM3-05-012-1650 | 100% | Material Approval [48]; Engineer [48 h] | 7,071.43 |
| DAM3-05-012-2360 |  | folding & sliding mounter combination ladder for building maintenance purpose (Material Review & Approve) | 6d | 2026-08-06 A | 2026-08-12 A | DAM3-05-012-1660 | 100% | Material Approval [48]; Engineer [48 h] | 7,071.43 |
| DAM3-05-012-2380 |  | hollow metal door (Material Review & Approve) | 6d | 2026-08-06 A | 2026-08-12 A | DAM3-05-012-1680 | 100% | Material Approval [48]; Engineer [48 h] | 7,071.43 |
| DAM3-05-012-2390 |  | granite saddles and thresholds (Material Review & Approve) | 6d | 2026-08-06 A | 2026-08-12 A | DAM3-05-012-1690 | 100% | Material Approval [48]; Engineer [48 h] | 7,071.43 |
| DAM3-05-012-2400 |  | ceramic wall tiles (Material Review & Approve) | 6d | 2026-08-06 A | 2026-08-12 A | DAM3-05-012-1700 | 100% | Material Approval [48]; Engineer [48 h] | 7,071.43 |
| DAM3-05-012-2410 |  | two coats of acrylic paint on internal walls (Material Review & Approve) | 6d | 2026-08-06 A | 2026-08-12 A | DAM3-05-012-1710 | 100% | Material Approval [48]; Engineer [48 h] | 7,071.43 |
| DAM3-05-012-2420 |  | two coats of acrylic paint (suitable for exterior use) on external (Material Review & Approve) | 6d | 2026-08-06 A | 2026-08-12 A | DAM3-05-012-1720 | 100% | Material Approval [48]; Engineer [48 h] | 7,071.43 |
| DAM3-05-012-2430 |  | aluminum cladding (Material Review & Approve) | 6d | 2026-08-06 A | 2026-08-12 A | DAM3-05-012-1730 | 100% | Material Approval [48]; Engineer [48 h] | 7,071.43 |
| DAM3-05-012-2440 |  | gypsum board suspended ceiling (Material Review & Approve) | 6d | 2026-08-06 A | 2026-08-12 A | DAM3-05-012-1740 | 100% | Material Approval [48]; Engineer [48 h] | 7,071.43 |
| DAM3-05-012-2450 |  | Waste Receptacle(Material Review & Approve) | 6d | 2026-08-06 A | 2026-08-12 A | DAM3-05-012-1750 | 100% | Material Approval [48]; Engineer [48 h] | 7,071.43 |
| DAM3-05-012-2460 |  | structural steel members and steel hollow sections for wall fence (Material Review & Approve) | 6d | 2026-08-06 A | 2026-08-12 A | DAM3-05-012-1760 | 100% | Material Approval [48]; Engineer [48 h] | 7,071.43 |
| DAM3-05-012-2470 |  | fix galvanized steel chain link gate (Material Review & Approve) | 6d | 2026-08-06 A | 2026-08-12 A | DAM3-05-012-1770 | 100% | Material Approval [48]; Engineer [48 h] | 7,071.43 |
| DAM3-05-012-2480 |  | gully traps with heavy duty cover (Material Review & Approve) | 6d | 2026-08-06 A | 2026-08-12 A | DAM3-05-012-1780 | 100% | Material Approval [48]; Engineer [48 h] | 7,071.43 |
| DAM3-05-012-2490 |  | chamber with heavy duty cover (Material Review & Approve) | 6d | 2026-08-06 A | 2026-08-12 A | DAM3-05-012-1790 | 100% | Material Approval [48]; Engineer [48 h] | 7,071.43 |
| DAM3-05-012-2630 |  | ceramic floor tiles (Material Review & Approve) | 6d | 2026-08-09 A | 2026-08-15 A | DAM3-05-012-2000 | 100% | Material Approval [48]; Engineer [48 h] | 7,071.43 |
| DAM3-05-012-2640 |  | 3mm steel CNC laser cut panels (Material Review & Approve) | 6d | 2026-08-09 A | 2026-08-15 A | DAM3-05-012-2010 | 100% | Material Approval [48]; Engineer [48 h] | 7,071.43 |
| DAM3-05-012-2920 |  | matt stainless steel flag pole (Material Review & Approve) (Material Review & Approve) | 6d | 2026-08-10 A | 2026-08-16 A | DAM3-05-012-2130 | 100% | Material Approval [48]; Engineer [48 h] | 7,071.43 |
| DAM3-05-012-2930 |  | galvanized steel chain link ,steel tube framing and posts, turn buckle, tension wir.etc(Material Review & Approve) | 6d | 2026-08-10 A | 2026-08-16 A | DAM3-05-012-2140 | 100% | Material Approval [48]; Engineer [48 h] | 7,071.43 |
| DAM3-05-012-3590 |  | granite flooring (Material Review & Approve) | 6d | 2026-08-17 A | 2026-08-23 A | DAM3-05-012-3070 | 100% | Material Approval [48]; Engineer [48 h] | 7,071.43 |
| DAM3-05-012-3890 |  | Workstation chair (Material Review & Approve) | 6d | 2026-09-13 A | 2026-09-19 A | DAM3-05-012-3780 | 100% | Material Approval [48]; Engineer [48 h] | 7,071.43 |
| DAM3-05-012-3900 |  | Workstation table (Material Review & Approve) | 6d | 2026-09-13 A | 2026-09-19 A | DAM3-05-012-3790 | 100% | Material Approval [48]; Engineer [48 h] | 7,071.43 |

| ID | WBS | Activity | Duration | Start | Finish | Predecessors | Complete | Resources | Cost |
| --- | --- | --- | --- | --- | --- | --- | --- | --- | --- |
|  | 1 | **Mechanical** |  | 2026-08-02 | 2026-08-12 |  |  |  |  |
| DAM3-05-012-1630 |  | installation of Fire extinguishers as per drawings, specifications (Material Review & Approve) | 5d | 2026-08-02 A | 2026-08-06 A | DAM3-05-012-1230 | 100% | Material Approval [48]; Engineer [48 h] | 7,071.43 |
| DAM3-05-012-2060 |  | Bulbblers and Spreyers of IRRIGATION SYSTEM (Material Review & Approve) | 6d | 2026-08-03 A | 2026-08-10 A | DAM3-05-012-1390 | 100% | Material Approval [48]; Engineer [48 h] | 7,071.43 |
| DAM3-05-012-2180 |  | TOILET ACCESSROIES (Material Review & Approve) | 6d | 2026-08-04 A | 2026-08-11 A | DAM3-05-012-1490 | 100% | Material Approval [48]; Engineer [48 h] | 7,071.43 |
| DAM3-05-012-2290 |  | GROUNDING - (Material Review & Approve) | 6d | 2026-08-05 A | 2026-08-12 A | DAM3-05-012-1590 | 100% | Material Approval [48]; Engineer [48 h] | 7,071.43 |
| DAM3-05-012-2310 |  | IRRIGATION SYSTEM (Material Review & Approve) | 6d | 2026-08-05 A | 2026-08-12 A | DAM3-05-012-1610 | 100% | Material Approval [48]; Engineer [48 h] | 7,071.43 |
| DAM3-05-012-2370 |  | heavy steel cover with frame including all necessary fixings(Material Review & Approve) | 6d | 2026-08-06 A | 2026-08-12 A | DAM3-05-012-1670 | 100% | Material Approval [48]; Engineer [48 h] | 7,071.43 |
| DAM3-05-012-2500 |  | PLUMBING FIXTURES (Material Review & Approve) | 6d | 2026-08-06 A | 2026-08-12 A | DAM3-05-012-1800 | 100% | Material Approval [48]; Engineer [48 h] | 7,071.43 |
| DAM3-05-012-2590 |  | WATER SUPPLY SYSTEM (Material Review & Approve) | 6d | 2026-08-06 A | 2026-08-12 A | DAM3-05-012-1890 | 100% | Material Approval [48]; Engineer [48 h] | 7,071.43 |
|  | 2 | **Electrical** |  | 2026-08-02 | 2026-08-16 |  |  |  |  |
| DAM3-05-012-1970 |  | HEATING, VENTILATION AND AIR CONDITIONING - (Material Review & Approve) | 6d | 2026-08-02 A | 2026-08-09 A | DAM3-05-012-1310 | 100% | Material Approval [48]; Engineer [48 h] | 7,071.43 |
| DAM3-05-012-1980 |  | Central (Headend) System Components; (Material Review & Approve) | 6d | 2026-08-02 A | 2026-08-09 A | DAM3-05-012-1320 | 100% | Material Approval [48]; Engineer [48 h] | 7,071.43 |
| DAM3-05-012-1990 |  | Analog addressable fire alarm control panel with battery (Material Review & Approve) | 6d | 2026-08-02 A | 2026-08-09 A | DAM3-05-012-1330 | 100% | Material Approval [48]; Engineer [48 h] | 7,071.43 |
| DAM3-05-012-2070 |  | LIGHTING FIXTURES (Material Review & Approve) | 6d | 2026-08-03 A | 2026-08-10 A | DAM3-05-012-1400 | 100% | Material Approval [48]; Engineer [48 h] | 7,071.43 |
| DAM3-05-012-2080 |  | COMPUTERS AND RELATED PERIPHERALS (Material Review & Approve) | 6d | 2026-08-03 A | 2026-08-10 A | DAM3-05-012-1410 | 100% | Material Approval [48]; Engineer [48 h] | 7,071.43 |
| DAM3-05-012-2090 |  | CCTV storage system, as specified(Material Review & Approve) | 6d | 2026-08-03 A | 2026-08-10 A | DAM3-05-012-1420 | 100% | Material Approval [48]; Engineer [48 h] | 7,071.43 |
| DAM3-05-012-2100 |  | ELECTRICAL GATE BARRIER (Material Review & Approve) | 6d | 2026-08-03 A | 2026-08-10 A | DAM3-05-012-1430 | 100% | Material Approval [48]; Engineer [48 h] | 7,071.43 |
| DAM3-05-012-2110 |  | LIGHTNING PROTECTION (Material Review & Approve) | 6d | 2026-08-03 A | 2026-08-10 A | DAM3-05-012-1440 | 100% | Material Approval [48]; Engineer [48 h] | 7,071.43 |
| DAM3-05-012-2120 |  | Intelligent Ionization / Photoelectric smoke and heat detector with base (Material Review & Approve) | 6d | 2026-08-03 A | 2026-08-10 A | DAM3-05-012-1450 | 100% | Material Approval [48]; Engineer [48 h] | 7,071.43 |
| DAM3-05-012-2260 |  | Exhaust fans - (Material Review & Approve) | 6d | 2026-08-05 A | 2026-08-12 A | DAM3-05-012-1560 | 100% | Material Approval [48]; Engineer [48 h] | 7,071.43 |
| DAM3-05-012-2270 |  | power source with built-in photocell sensor for automatic electrical connection (Material Review & Approve) | 6d | 2026-08-05 A | 2026-08-12 A | DAM3-05-012-1570 | 100% | Material Approval [48]; Engineer [48 h] | 7,071.43 |
| DAM3-05-012-2280 |  | UNDERGROUND DISTRIBUTION SYSTEM -(Material Review & Approve) | 6d | 2026-08-05 A | 2026-08-12 A | DAM3-05-012-1580 | 100% | Material Approval [48]; Engineer [48 h] | 7,071.43 |
| DAM3-05-012-2300 |  | card reader IN/OUT (Material Review & Approve) | 6d | 2026-08-05 A | 2026-08-12 A | DAM3-05-012-1600 | 100% | Material Approval [48]; Engineer [48 h] | 7,071.43 |
| DAM3-05-012-2510 |  | switches and Receptacle outlets complete with device boxes (Material Review & Approve) | 6d | 2026-08-06 A | 2026-08-12 A | DAM3-05-012-1810 | 100% | Material Approval [48]; Engineer [48 h] | 7,071.43 |
| DAM3-05-012-2520 |  | 12-Port CAT6A UTP fully loaded patch panel (Material Review & Approve) | 6d | 2026-08-06 A | 2026-08-12 A | DAM3-05-012-1820 | 100% | Material Approval [48]; Engineer [48 h] | 7,071.43 |
| DAM3-05-012-2530 |  | (Material Review & Approve)Port, SMF, Fiber Optic Patch Panels | 6d | 2026-08-06 A | 2026-08-12 A | DAM3-05-012-1830 | 100% | Material Approval [48]; Engineer [48 h] | 7,071.43 |
| DAM3-05-012-2540 |  | VIDEO SURVEILLANCE (Material Review & Approve) | 6d | 2026-08-06 A | 2026-08-12 A | DAM3-05-012-1840 | 100% | Material Approval [48]; Engineer [48 h] | 7,071.43 |
| DAM3-05-012-2550 |  | VSS System, as specified; (Material Review & Approve) | 6d | 2026-08-06 A | 2026-08-12 A | DAM3-05-012-1850 | 100% | Material Approval [48]; Engineer [48 h] | 7,071.43 |
| DAM3-05-012-2560 |  | CCTV cameras (Material Review & Approve) | 6d | 2026-08-06 A | 2026-08-12 A | DAM3-05-012-1860 | 100% | Material Approval [48]; Engineer [48 h] | 7,071.43 |
| DAM3-05-012-2570 |  | 20A , ATS ( Automatic transfer switch) for UPS (Material Review & Approve) | 6d | 2026-08-06 A | 2026-08-12 A | DAM3-05-012-1870 | 100% | Material Approval [48]; Engineer [48 h] | 7,071.43 |
| DAM3-05-012-2580 |  | fire alarm system including wires, conduit and other materials - (Material Review & Approve) | 6d | 2026-08-06 A | 2026-08-12 A | DAM3-05-012-1880 | 100% | Material Approval [48]; Engineer [48 h] | 7,071.43 |
| DAM3-05-012-2650 |  | Access control panel - (Material Review & Approve) | 6d | 2026-08-09 A | 2026-08-15 A | DAM3-05-012-2020 | 100% | Material Approval [48]; Engineer [48 h] | 7,071.43 |
| DAM3-05-012-2940 |  | LIGHTING AND POWER TYPE PANELBOARDS (Material Review & Approve) | 6d | 2026-08-10 A | 2026-08-16 A | DAM3-05-012-2150 | 100% | Material Approval [48]; Engineer [48 h] | 7,071.43 |

| ID | WBS | Activity | Duration | Start | Finish | Predecessors | Complete | Planned start | Planned finish | Resources | Cost |
| --- | --- | --- | --- | --- | --- | --- | --- | --- | --- | --- | --- |
|  | 7 | **Procurement** |  | 2026-03-01 | 2026-09-12 |  |  |  |  |  |  |
|  | 5 | **Fabrication & Delivery** |  | 2026-03-01 | 2026-09-12 |  |  |  |  |  |  |
|  | 3 | **Civil & Arch** |  | 2026-06-07 | 2026-09-12 |  |  |  |  |  |  |
| DAM3-05-012-2850 |  | overflow galvanized steel roof scupper with gray color with angular secondary support(Fabrication & Delivery) | 15d | 2026-06-07 A | 2026-08-12 A | DAM3-05-012-1930 | 100% | 2026-08-09 | 2026-08-26 | Material Delivery [120]; Labors 1 [120 h] | 58,928.58 |
| DAM3-05-012-2860 |  | aluminum framed double glazed windows (Fabrication & Delivery) | 13d | 2026-06-07 A | 2026-08-12 A | DAM3-05-012-1940 | 100% | 2026-08-09 | 2026-08-24 | Material Delivery [104]; Labors 1 [104 h] | 58,928.58 |
| DAM3-05-012-2870 |  | Riyadh stone cladding (Fabrication & Delivery) | 12d | 2026-06-07 A | 2026-07-22 A | DAM3-05-012-1950 | 100% | 2026-08-09 | 2026-08-23 | Material Delivery [96]; Labors 1 [96 h] | 58,928.58 |
| DAM3-05-012-2880 |  | PANEL SIGNAGE (Fabrication & Delivery) | 12d | 2026-06-07 A | 2026-08-12 A | DAM3-05-012-1960 | 100% | 2026-08-09 | 2026-08-23 | Material Delivery [96]; Labors 1 [96 h] | 58,928.58 |
| DAM3-05-012-2970 |  | Aluminum Door (Fabrication & Delivery) | 15d | 2026-06-07 A | 2026-08-12 A | DAM3-05-012-2030 | 100% | 2026-08-10 | 2026-08-27 | Material Delivery [120]; Labors 1 [120 h] | 58,928.58 |
| DAM3-05-012-2980 |  | structural steel members for gate frame (Fabrication & Delivery) | 15d | 2026-06-07 A | 2026-08-12 A | DAM3-05-012-2040 | 100% | 2026-08-10 | 2026-08-27 | Material Delivery [120]; Labors 1 [120 h] | 58,928.58 |
| DAM3-05-012-2990 |  | installation of structural steel members and plates for main gates (Fabrication & Delivery) | 12d | 2026-06-07 A | 2026-08-12 A | DAM3-05-012-2050 | 100% | 2026-08-10 | 2026-08-24 | Material Delivery [96]; Labors 1 [96 h] | 58,928.58 |
| DAM3-05-012-3090 |  | TOILET ACCESSROIES (Fabrication & Delivery) | 14d | 2026-06-07 A | 2026-08-12 A | DAM3-05-012-2180 | 100% | 2026-08-11 | 2026-08-27 | Material Delivery [112]; Labors 1 [112 h] | 58,928.58 |
| DAM3-05-012-3130 |  | precast concrete curbstone (Fabrication & Delivery) | 5d | 2026-06-07 A | 2026-08-12 A | DAM3-05-012-2200 | 100% | 2026-08-12 | 2026-08-18 | Material Delivery [40]; Labors 1 [40 h] | 58,928.58 |
| DAM3-05-012-3140 |  | 19 to 38mm locally available stone gravel (Fabrication & Delivery) | 5d | 2026-06-07 A | 2026-08-12 A | DAM3-05-012-2210 | 100% | 2026-08-12 | 2026-08-18 | Material Delivery [40]; Labors 1 [40 h] | 58,928.58 |
| DAM3-05-012-3150 |  | PANTRY CABINET (Fabrication & Delivery) | 14d | 2026-06-07 A | 2026-08-12 A | DAM3-05-012-2220 | 100% | 2026-08-12 | 2026-08-29 | Material Delivery [112]; Labors 1 [112 h] | 58,928.58 |
| DAM3-05-012-3160 |  | COUNTER DESK (Fabrication & Delivery) | 12d | 2026-06-07 A | 2026-08-12 A | DAM3-05-012-2230 | 100% | 2026-08-12 | 2026-08-26 | Material Delivery [96]; Labors 1 [96 h] | 58,928.58 |
| DAM3-05-012-3170 |  | Roller blind (Fabrication & Delivery) | 10d | 2026-06-07 A | 2026-08-12 A | DAM3-05-012-2240 | 100% | 2026-08-12 | 2026-08-24 | Material Delivery [80]; Labors 1 [80 h] | 58,928.58 |
| DAM3-05-012-3180 |  | installation of structural steel members and plates for pedestrian gates (Fabrication & Delivery) | 14d | 2026-06-07 A | 2026-08-12 A | DAM3-05-012-2250 | 100% | 2026-08-12 | 2026-08-29 | Material Delivery [112]; Labors 1 [112 h] | 58,928.58 |
| DAM3-05-012-3250 |  | Backfilling for Roads (Fabrication & Delivery) | 4d | 2026-06-07 A | 2026-08-12 A | DAM3-05-012-2340 | 100% | 2026-08-13 | 2026-08-17 | Material Delivery [32]; Labors 1 [32 h] | 58,928.58 |
| DAM3-05-012-3260 |  | interlocking pedstrian paving blocks (Fabrication & Delivery) | 5d | 2026-06-07 A | 2026-08-12 A | DAM3-05-012-2350 | 100% | 2026-08-13 | 2026-08-18 | Material Delivery [40]; Labors 1 [40 h] | 58,928.58 |
| DAM3-05-012-3270 |  | folding & sliding mounter combination ladder for building maintenance purpose (Fabrication & Delivery) | 15d | 2026-06-07 A | 2026-08-12 A | DAM3-05-012-2360 | 100% | 2026-08-13 | 2026-08-30 | Material Delivery [120]; Labors 1 [120 h] | 58,928.58 |
| DAM3-05-012-3280 |  | heavy steel cover with frame including all necessary fixings(Fabrication & Delivery) | 12d | 2026-06-07 A | 2026-08-12 A | DAM3-05-012-2370 | 100% | 2026-08-13 | 2026-08-26 | Material Delivery [96]; Labors 1 [96 h] | 58,928.58 |
| DAM3-05-012-3290 |  | hollow metal door (Fabrication & Delivery) | 15d | 2026-06-07 A | 2026-08-12 A | DAM3-05-012-2380 | 100% | 2026-08-13 | 2026-08-30 | Material Delivery [120]; Labors 1 [120 h] | 58,928.58 |
| DAM3-05-012-3300 |  | granite saddles and thresholds (Fabrication & Delivery) | 12d | 2026-06-07 A | 2026-08-12 A | DAM3-05-012-2390 | 100% | 2026-08-13 | 2026-08-26 | Material Delivery [96]; Labors 1 [96 h] | 58,928.58 |
| DAM3-05-012-3310 |  | ceramic wall tiles (Fabrication & Delivery) | 15d | 2026-06-07 A | 2026-08-12 A | DAM3-05-012-2400 | 100% | 2026-08-13 | 2026-08-30 | Material Delivery [120]; Labors 1 [120 h] | 58,928.58 |
| DAM3-05-012-3320 |  | two coats of acrylic paint on internal walls (Fabrication & Delivery) | 10d | 2026-06-07 A | 2026-08-12 A | DAM3-05-012-2410 | 100% | 2026-08-13 | 2026-08-24 | Material Delivery [80]; Labors 1 [80 h] | 58,928.58 |
| DAM3-05-012-3330 |  | two coats of acrylic paint (suitable for exterior use) on external (Fabrication & Delivery) | 5d | 2026-06-07 A | 2026-08-12 A | DAM3-05-012-2420 | 100% | 2026-08-13 | 2026-08-18 | Material Delivery [40]; Labors 1 [40 h] | 58,928.58 |
| DAM3-05-012-3340 |  | aluminum cladding (Fabrication & Delivery) | 13d | 2026-06-07 A | 2026-08-12 A | DAM3-05-012-2430 | 100% | 2026-08-13 | 2026-08-27 | Material Delivery [104]; Labors 1 [104 h] | 58,928.58 |
| DAM3-05-012-3350 |  | gypsum board suspended ceiling (Fabrication & Delivery) | 4d | 2026-06-07 A | 2026-08-12 A | DAM3-05-012-2440 | 100% | 2026-08-13 | 2026-08-17 | Material Delivery [32]; Labors 1 [32 h] | 58,928.58 |
| DAM3-05-012-3370 |  | structural steel members and steel hollow sections for wall fence (Fabrication & Delivery) | 15d | 2026-06-07 A | 2026-08-12 A | DAM3-05-012-2460 | 100% | 2026-08-13 | 2026-08-30 | Material Delivery [120]; Labors 1 [120 h] | 58,928.58 |
| DAM3-05-012-3380 |  | fix galvanized steel chain link gate (Fabrication & Delivery) | 10d | 2026-06-07 A | 2026-08-12 A | DAM3-05-012-2470 | 100% | 2026-08-13 | 2026-08-24 | Material Delivery [80]; Labors 1 [80 h] | 58,928.58 |
| DAM3-05-012-3390 |  | gully traps with heavy duty cover (Fabrication & Delivery) | 14d | 2026-06-07 A | 2026-08-12 A | DAM3-05-012-2480 | 100% | 2026-08-13 | 2026-08-29 | Material Delivery [112]; Labors 1 [112 h] | 58,928.58 |
| DAM3-05-012-3400 |  | chamber with heavy duty cover (Fabrication & Delivery) | 12d | 2026-06-07 A | 2026-08-12 A | DAM3-05-012-2490 | 100% | 2026-08-13 | 2026-08-26 | Material Delivery [96]; Labors 1 [96 h] | 58,928.58 |
| DAM3-05-012-3410 |  | PLUMBING FIXTURES (Fabrication & Delivery) | 10d | 2026-06-07 A | 2026-08-12 A | DAM3-05-012-2500 | 100% | 2026-08-13 | 2026-08-24 | Material Delivery [80]; Labors 1 [80 h] | 58,928.58 |
| DAM3-05-012-3510 |  | ceramic floor tiles (Fabrication & Delivery) | 10d | 2026-06-07 A | 2026-08-12 A | DAM3-05-012-2630 | 100% | 2026-08-16 | 2026-08-26 | Material Delivery [80]; Labors 1 [80 h] | 58,928.58 |
| DAM3-05-012-3520 |  | 3mm steel CNC laser cut panels (Fabrication & Delivery) | 12d | 2026-06-07 A | 2026-08-12 A | DAM3-05-012-2640 | 100% | 2026-08-16 | 2026-08-29 | Material Delivery [96]; Labors 1 [96 h] | 58,928.58 |
| DAM3-05-012-3560 |  | matt stainless steel flag pole (Fabrication & Delivery) (Fabrication & Delivery) | 10d | 2026-06-07 A | 2026-08-12 A | DAM3-05-012-2920 | 100% | 2026-08-17 | 2026-08-27 | Material Delivery [80]; Labors 1 [80 h] | 58,928.58 |
| DAM3-05-012-3570 |  | galvanized steel chain link ,steel tube framing and posts, turn buckle, tension wir.etc(Fabrication & Delivery) | 15d | 2026-06-07 A | 2026-08-12 A | DAM3-05-012-2930 | 100% | 2026-08-17 | 2026-09-02 | Material Delivery [120]; Labors 1 [120 h] | 58,928.58 |
| DAM3-05-012-4080 |  | Workstation chair (Fabrication & Delivery) | 15d | 2026-06-07 A | 2026-08-12 A | DAM3-05-012-3890 | 100% | 2026-09-20 | 2026-10-07 | Material Delivery [120]; Labors 1 [120 h] | 58,928.58 |
| DAM3-05-012-4090 |  | Workstation table (Fabrication & Delivery) | 15d | 2026-06-07 A | 2026-08-12 A | DAM3-05-012-3900 | 100% | 2026-09-20 | 2026-10-07 | Material Delivery [120]; Labors 1 [120 h] | 58,928.58 |
| DAM3-05-012-4120 |  | granite flooring (Fabrication & Delivery) | 10d | 2026-06-07 A | 2026-09-12 A | DAM3-05-012-3590 FS+26d | 100% | 2026-09-24 | 2026-10-05 | Material Delivery [80]; Labors 1 [80 h] | 58,928.58 |
| DAM3-05-012-2160 |  | Backfilling for guard rooms under G.Beams (Fabrication & Delivery) | 2d | 2026-08-04 A | 2026-08-06 A | DAM3-05-012-1900 | 100% |  |  | Material Delivery [32]; Labors 1 [32 h] | 58,928.58 |
| DAM3-05-012-2830 |  | interlocking paving blocks (Fabrication & Delivery) | 5d | 2026-08-09 A | 2026-08-15 A | DAM3-05-012-1910 | 100% |  |  | Material Delivery [40]; Labors 1 [40 h] | 58,928.58 |
| DAM3-05-012-2840 |  | Concrete Masonry Unit (CMU) for walls (Fabrication & Delivery) | 4d | 2026-08-09 A | 2026-08-13 A | DAM3-05-012-1920 | 100% |  |  | Material Delivery [32]; Labors 1 [32 h] | 58,928.58 |

| ID | WBS | Activity | Duration | Start | Finish | Predecessors | Complete | Planned start | Planned finish | Resources | Cost |
| --- | --- | --- | --- | --- | --- | --- | --- | --- | --- | --- | --- |
|  | 1 | **Mechanical** |  | 2026-03-01 | 2026-08-12 |  |  |  |  |  |  |
| DAM3-05-012-3360 |  | Waste Receptacle(Fabrication & Delivery) | 15d | 2026-03-01 A | 2026-08-12 A | DAM3-05-012-2450 | 100% | 2026-08-13 | 2026-08-30 | Material Delivery [120]; Labors 1 [120 h] | 58,928.58 |
| DAM3-05-012-3020 |  | COMPUTERS AND RELATED PERIPHERALS (Fabrication & Delivery) | 12d | 2026-04-05 A | 2026-08-12 A | DAM3-05-012-2080 | 100% | 2026-08-10 | 2026-08-24 | Material Delivery [96]; Labors 1 [96 h] | 58,928.58 |
| DAM3-05-012-3190 |  | Exhaust fans - (Fabrication & Delivery) | 14d | 2026-04-06 A | 2026-08-12 A | DAM3-05-012-2260 | 100% | 2026-08-12 | 2026-08-29 | Material Delivery [112]; Labors 1 [112 h] | 58,928.58 |
| DAM3-05-012-3240 |  | IRRIGATION SYSTEM (Fabrication & Delivery) | 15d | 2026-04-13 A | 2026-08-12 A | DAM3-05-012-2310 | 100% | 2026-08-12 | 2026-08-30 | Material Delivery [120]; Labors 1 [120 h] | 58,928.58 |
| DAM3-05-012-3080 |  | plant trees, plants, and ground covers including fixations, sweet soil (Fabrication & Delivery) | 12d | 2026-05-05 A | 2026-08-12 A | DAM3-05-012-2170 | 100% | 2026-08-11 | 2026-08-25 | Material Delivery [96]; Labors 1 [96 h] | 58,928.58 |
| DAM3-05-012-3000 |  | Bulbblers and Spreyers of IRRIGATION SYSTEM (Fabrication & Delivery) | 12d | 2026-05-10 A | 2026-08-12 A | DAM3-05-012-2060 | 100% | 2026-08-10 | 2026-08-24 | Material Delivery [96]; Labors 1 [96 h] | 58,928.58 |
| DAM3-05-012-3500 |  | WATER SUPPLY SYSTEM (Fabrication & Delivery) | 12d | 2026-06-08 A | 2026-08-12 A | DAM3-05-012-2590 | 100% | 2026-08-13 | 2026-08-26 | Material Delivery [96]; Labors 1 [96 h] | 58,928.58 |
| DAM3-05-012-2890 |  | HEATING, VENTILATION AND AIR CONDITIONING - (Fabrication & Delivery) | 12d | 2026-07-05 A | 2026-08-12 A | DAM3-05-012-1970 | 100% | 2026-08-09 | 2026-08-23 | Material Delivery [96]; Labors 1 [96 h] | 58,928.58 |
| DAM3-05-012-3060 |  | Intelligent Ionization / Photoelectric smoke and heat detector with base (Fabrication & Delivery) | 14d | 2026-07-05 A | 2026-08-12 A | DAM3-05-012-2120 | 100% | 2026-08-10 | 2026-08-26 | Material Delivery [112]; Labors 1 [112 h] | 58,928.58 |
| DAM3-05-012-2620 |  | installation of Fire extinguishers as per drawings, specifications (Fabrication & Delivery) | 12d | 2026-07-12 A | 2026-08-12 A | DAM3-05-012-1630 | 100% | 2026-08-08 | 2026-08-20 | Material Delivery [96]; Labors 1 [96 h] | 58,928.58 |
|  | 2 | **Electrical** |  | 2026-07-21 | 2026-08-12 |  |  |  |  |  |  |
| DAM3-05-012-2900 |  | Central (Headend) System Components; (Fabrication & Delivery) | 12d | 2026-07-21 A | 2026-08-12 A | DAM3-05-012-1980 | 100% | 2026-08-09 | 2026-08-23 | Material Delivery [96]; Labors 1 [96 h] | 58,928.58 |
| DAM3-05-012-2910 |  | Analog addressable fire alarm control panel with battery (Fabrication & Delivery) | 12d | 2026-07-21 A | 2026-08-12 A | DAM3-05-012-1990 | 100% | 2026-08-09 | 2026-08-23 | Material Delivery [96]; Labors 1 [96 h] | 58,928.58 |
| DAM3-05-012-3010 |  | LIGHTING FIXTURES (Fabrication & Delivery) | 10d | 2026-07-21 A | 2026-08-12 A | DAM3-05-012-2070 | 100% | 2026-08-10 | 2026-08-22 | Material Delivery [80]; Labors 1 [80 h] | 58,928.58 |
| DAM3-05-012-3030 |  | CCTV storage system, as specified(Fabrication & Delivery) | 14d | 2026-07-21 A | 2026-08-12 A | DAM3-05-012-2090 | 100% | 2026-08-10 | 2026-08-26 | Material Delivery [112]; Labors 1 [112 h] | 58,928.58 |
| DAM3-05-012-3040 |  | ELECTRICAL GATE BARRIER (Fabrication & Delivery) | 12d | 2026-07-21 A | 2026-08-12 A | DAM3-05-012-2100 | 100% | 2026-08-10 | 2026-08-24 | Material Delivery [96]; Labors 1 [96 h] | 58,928.58 |
| DAM3-05-012-3050 |  | LIGHTNING PROTECTION (Fabrication & Delivery) | 14d | 2026-07-21 A | 2026-08-12 A | DAM3-05-012-2110 | 100% | 2026-08-10 | 2026-08-26 | Material Delivery [112]; Labors 1 [112 h] | 58,928.58 |
| DAM3-05-012-3200 |  | power source with built-in photocell sensor for automatic electrical connection (Fabrication & Delivery) | 10d | 2026-07-21 A | 2026-08-12 A | DAM3-05-012-2270 | 100% | 2026-08-12 | 2026-08-24 | Material Delivery [80]; Labors 1 [80 h] | 58,928.58 |
| DAM3-05-012-3210 |  | UNDERGROUND DISTRIBUTION SYSTEM -(Fabrication & Delivery) | 12d | 2026-07-21 A | 2026-08-12 A | DAM3-05-012-2280 | 100% | 2026-08-12 | 2026-08-26 | Material Delivery [96]; Labors 1 [96 h] | 58,928.58 |
| DAM3-05-012-3220 |  | GROUNDING - (Fabrication & Delivery) | 8d | 2026-07-21 A | 2026-08-12 A | DAM3-05-012-2290 | 100% | 2026-08-12 | 2026-08-22 | Material Delivery [64]; Labors 1 [64 h] | 58,928.58 |
| DAM3-05-012-3230 |  | card reader IN/OUT (Fabrication & Delivery) | 15d | 2026-07-21 A | 2026-08-12 A | DAM3-05-012-2300 | 100% | 2026-08-12 | 2026-08-30 | Material Delivery [120]; Labors 1 [120 h] | 58,928.58 |
| DAM3-05-012-3420 |  | switches and Receptacle outlets complete with device boxes (Fabrication & Delivery) | 12d | 2026-07-21 A | 2026-08-12 A | DAM3-05-012-2510 | 100% | 2026-08-13 | 2026-08-26 | Material Delivery [96]; Labors 1 [96 h] | 58,928.58 |
| DAM3-05-012-3430 |  | 12-Port CAT6A UTP fully loaded patch panel (Fabrication & Delivery) | 15d | 2026-07-21 A | 2026-08-12 A | DAM3-05-012-2520 | 100% | 2026-08-13 | 2026-08-30 | Material Delivery [120]; Labors 1 [120 h] | 58,928.58 |
| DAM3-05-012-3440 |  | (Fabrication & Delivery)Port, SMF, Fiber Optic Patch Panels | 15d | 2026-07-21 A | 2026-08-12 A | DAM3-05-012-2530 | 100% | 2026-08-13 | 2026-08-30 | Material Delivery [120]; Labors 1 [120 h] | 58,928.58 |
| DAM3-05-012-3450 |  | VIDEO SURVEILLANCE (Fabrication & Delivery) | 15d | 2026-07-21 A | 2026-08-12 A | DAM3-05-012-2540 | 100% | 2026-08-13 | 2026-08-30 | Material Delivery [120]; Labors 1 [120 h] | 58,928.58 |
| DAM3-05-012-3460 |  | VSS System, as specified; (Fabrication & Delivery) | 15d | 2026-07-21 A | 2026-08-12 A | DAM3-05-012-2550 | 100% | 2026-08-13 | 2026-08-30 | Material Delivery [120]; Labors 1 [120 h] | 58,928.58 |
| DAM3-05-012-3470 |  | CCTV cameras (Fabrication & Delivery) | 14d | 2026-07-21 A | 2026-08-12 A | DAM3-05-012-2560 | 100% | 2026-08-13 | 2026-08-29 | Material Delivery [112]; Labors 1 [112 h] | 58,928.58 |
| DAM3-05-012-3480 |  | 20A , ATS ( Automatic transfer switch) for UPS (Fabrication & Delivery) | 15d | 2026-07-21 A | 2026-08-12 A | DAM3-05-012-2570 | 100% | 2026-08-13 | 2026-08-30 | Material Delivery [120]; Labors 1 [120 h] | 58,928.58 |
| DAM3-05-012-3490 |  | fire alarm system including wires, conduit and other materials - (Fabrication & Delivery) | 15d | 2026-07-21 A | 2026-08-12 A | DAM3-05-012-2580 | 100% | 2026-08-13 | 2026-08-30 | Material Delivery [120]; Labors 1 [120 h] | 58,928.58 |
| DAM3-05-012-3530 |  | Access control panel - (Fabrication & Delivery) | 15d | 2026-07-21 A | 2026-08-12 A | DAM3-05-012-2650 | 100% | 2026-08-16 | 2026-09-01 | Material Delivery [120]; Labors 1 [120 h] | 58,928.58 |
| DAM3-05-012-3580 |  | LIGHTING AND POWER TYPE PANELBOARDS (Fabrication & Delivery) | 14d | 2026-07-21 A | 2026-08-12 A | DAM3-05-012-2940 | 100% | 2026-08-17 | 2026-09-01 | Material Delivery [112]; Labors 1 [112 h] | 58,928.58 |

| ID | WBS | Activity | Duration | Start | Finish | Predecessors | Complete | Planned start | Planned finish | Resources | Cost |
| --- | --- | --- | --- | --- | --- | --- | --- | --- | --- | --- | --- |
|  | 4 | **Construction** |  | 2025-04-06 | 2026-10-11 |  |  |  |  |  |  |
|  | 1 | **SITE WORKS** |  | 2025-07-14 | 2026-10-08 |  |  |  |  |  |  |
|  | 4 | **Guard Rooms & Gates** |  | 2026-07-28 | 2026-08-17 |  |  |  |  |  |  |
| DAM3-05-012-1350 |  | Excavation for guard rooms | 8d | 2026-07-28 A | 2026-08-05 A | DAM3-05-012-1080, DAM3-05-012-1100, DAM3-05-012-1140, DAM3-05-012-1060, DAM3-05-012-1030, DAM3-05-012-1040, DAM3-05-012-1050, DAM3-05-012-1060 FF | 100% |  |  | SITE WORKS [40]; Labors 1 [40 h]; Labors 2 [40 h] | 42,569.76 |
| DAM3-05-012-2600 |  | Replacment Under Foundation | 2d | 2026-08-06 A | 2026-08-09 A | DAM3-05-012-1350, DAM3-05-012-2160 | 100% |  |  | SITE WORKS [24]; Labors 1 [24 h]; Labors 2 [24 h] | 42,569.76 |
| DAM3-05-012-3540 |  | Backfilling Under G.Beam | 2d | 2026-08-15 A | 2026-08-17 A | DAM3-05-012-2950 | 100% |  |  | SITE WORKS [16] | 42,569.76 |
| DAM3-05-012-3550 |  | Backfilling Under S.O.G | 2d | 2026-08-15 A | 2026-08-17 A | DAM3-05-012-2950 | 100% |  |  | SITE WORKS [24] | 42,569.76 |
|  | 5 | **Guard Rooms & Gates (CONCRETE Works)** |  | 2026-07-06 | 2026-09-28 |  |  |  |  |  |  |
| DAM3-05-012-3930 |  | Tanks Walls | 5d | 2026-07-06 A | 2026-07-21 A | DAM3-05-012-3880, DAM3-05-012-3860, DAM3-05-012-3870 | 100% | 2026-09-15 | 2026-09-21 | CONCRETE [40]; Labors 1 [40 h]; Labors 2 [40 h] | 61,657.28 |
| DAM3-05-012-2610 |  | 50 mm thickness lean concrete under the foundation. | 3d | 2026-08-06 A | 2026-08-10 A | DAM3-05-012-2600 SS, DAM3-05-012-1010, DAM3-05-012-1000 | 100% |  |  | CONCRETE [24]; Labors 1 [24 h]; Labors 2 [24 h] | 61,657.28 |
| DAM3-05-012-2950 |  | Isolated Footings & Column Neck | 5d | 2026-08-09 A | 2026-08-15 A | DAM3-05-012-2610 SS+2d, DAM3-05-012-2600 | 100% |  |  | CONCRETE [64]; Labors 1 [64 h]; Labors 2 [64 h] | 61,657.28 |
| DAM3-05-012-3600 |  | 50 mm thickness lean concrete under grade beams. | 3d | 2026-08-17 A | 2026-08-20 A | DAM3-05-012-3540 | 100% |  |  | CONCRETE [24]; Labors 1 [24 h]; Labors 2 [24 h] | 61,657.28 |
| DAM3-05-012-3610 |  | Grade beams | 5d | 2026-08-20 A | 2026-08-26 A | DAM3-05-012-3600, DAM3-05-012-2190 | 100% |  |  | CONCRETE [64]; Labors 1 [64 h]; Labors 2 [64 h] | 61,657.28 |
| DAM3-05-012-3640 |  | Columns | 4d | 2026-08-26 A | 2026-08-31 A | DAM3-05-012-3610, DAM3-05-012-2660, DAM3-05-012-3100 | 100% |  |  | CONCRETE [56]; Labors 1 [56 h]; Labors 2 [56 h] | 61,657.28 |
| DAM3-05-012-3660 |  | Raft and R.C. walls | 5d | 2026-08-29 A | 2026-09-03 A | DAM3-05-012-3640 SS+2d | 100% |  |  | CONCRETE [64]; Labors 1 [64 h]; Labors 2 [64 h] | 61,657.28 |
| DAM3-05-012-3690 |  | Roof Slab | 8d | 2026-08-31 A | 2026-09-09 A | DAM3-05-012-3700 SS, DAM3-05-012-3640 | 100% |  |  | CONCRETE [64]; Labors 1 [64 h]; Labors 2 [64 h] | 61,657.28 |
| DAM3-05-012-3700 |  | Beams | 8d | 2026-08-31 A | 2026-09-09 A | DAM3-05-012-3640 | 100% |  |  | CONCRETE [64]; Labors 1 [64 h]; Labors 2 [64 h] | 61,657.28 |
| DAM3-05-012-3860 |  | Provide and cast concrete floor slab on grade | 5d | 2026-09-09 A | 2026-09-15 A | DAM3-05-012-3610 SS+2d, DAM3-05-012-3550, DAM3-05-012-3700 | 100% |  |  | CONCRETE [40]; Labors 1 [40 h]; Labors 2 [40 h] | 61,657.28 |
| DAM3-05-012-3870 |  | Concrete Pad | 3d | 2026-09-09 A | 2026-09-13 A | DAM3-05-012-3700 | 100% |  |  | CONCRETE [24]; Labors 1 [24 h]; Labors 2 [24 h] | 61,657.28 |
| DAM3-05-012-3880 |  | Tanks Raft | 5d | 2026-09-09 A | 2026-09-09 A | DAM3-05-012-3690 | 100% | 2026-09-09 | 2026-09-15 | CONCRETE [72]; Labors 1 [72 h]; Labors 2 [72 h] | 61,657.28 |
| DAM3-05-012-4140 |  | Tanks Slab | 4d | 2026-09-28 A | 2026-09-28 A | DAM3-05-012-3930, DAM3-05-012-4110 | 100% | 2026-09-28 | 2026-10-03 | CONCRETE [48]; Labors 1 [48 h]; Labors 2 [48 h] | 61,657.28 |
|  | 14 | **Fence Type 1** |  | 2026-07-29 | 2026-08-24 |  |  |  |  |  |  |
| DAM3-05-012-1470 |  | Excavation | 6d | 2026-07-29 A | 2026-08-05 A | DAM3-05-012-1460 SS, DAM3-05-012-1160 | 100% |  |  | SITE WORKS [40]; Labors 1 [40 h]; Labors 2 [40 h] | 56,759.68 |
| DAM3-05-012-2330 |  | Replacment Under Foundation | 3d | 2026-08-06 A | 2026-08-10 A | DAM3-05-012-1470, DAM3-05-012-2160 | 100% |  |  | SITE WORKS [24]; Labors 1 [24 h]; Labors 2 [24 h] | 56,759.68 |
| DAM3-05-012-3620 |  | Backfilling Under G.Beam | 2d | 2026-08-22 A | 2026-08-24 A | DAM3-05-012-3120, DAM3-05-012-2950 | 100% |  |  | SITE WORKS [16] | 56,759.68 |

| ID | WBS | Activity | Duration | Start | Finish | Predecessors | Complete | Remaining | Planned start | Planned finish | Total float | Free float | Resources | Cost |
| --- | --- | --- | --- | --- | --- | --- | --- | --- | --- | --- | --- | --- | --- | --- |
|  | 1 | **Fence Type 1 (CONCRETE Works)** |  | 2026-08-10 | 2026-09-06 |  |  |  |  |  |  |  |  |  |
| DAM3-05-012-2960 |  | 50 mm thickness lean concrete under the foundation. | 3d | 2026-08-10 A | 2026-08-13 A | DAM3-05-012-2330 SS+3d, DAM3-05-012-2600 SS+3d, DAM3-05-012-2330 | 100% |  |  |  |  |  | CONCRETE [24]; Labors 1 [24 h]; Labors 2 [24 h] | 200,386.17 |
| DAM3-05-012-3120 |  | Isolated Footings & Column Neck | 8d | 2026-08-12 A | 2026-08-22 A | DAM3-05-012-2960 SS+2d | 100% |  |  |  |  |  | CONCRETE [64]; Labors 1 [64 h]; Labors 2 [64 h] | 200,386.17 |
| DAM3-05-012-3630 |  | 50 mm thickness lean concrete under grade beams. | 3d | 2026-08-24 A | 2026-08-27 A | DAM3-05-012-3120, DAM3-05-012-3620, DAM3-05-012-3540 | 100% |  |  |  |  |  | CONCRETE [24]; Labors 1 [24 h]; Labors 2 [24 h] | 200,386.17 |
| DAM3-05-012-3650 |  | Grade beams | 8d | 2026-08-27 A | 2026-09-06 A | DAM3-05-012-3630 | 100% |  |  |  |  |  | CONCRETE [64]; Labors 1 [64 h]; Labors 2 [64 h] | 200,386.17 |
|  | 2 | **Fence Type 2** |  | 2026-06-08 | 2026-10-07 |  |  |  |  |  |  |  |  |  |
| DAM3-05-012-2320 |  | Excavation for Fence Type 2 | 20d | 2026-06-08 A | 2026-10-07 | DAM3-05-012-1080 SS, DAM3-05-012-1470 | 95% | 1d | 2026-08-05 | 2026-08-29 | -55.5d | 0d | SITE WORKS [224]; Labors 1 [224 h]; Labors 2 [224 h] | 170,279.06 |
|  | 3 | **Roads** |  | 2025-07-14 | 2026-10-08 |  |  |  |  |  |  |  |  |  |
| DAM3-05-012-3760 |  | install precast concrete curbstone | 2d | 2025-07-14 A | 2026-10-07 | DAM3-05-012-3800 FF, DAM3-05-012-3130 | 97% | 0.06d | 2026-10-06 | 2026-10-08 | -55.5d | 0d | SITE WORKS [40]; Labors 1 [40 h]; Labors 2 [40 h] | 170,279.06 |
| DAM3-05-012-3740 |  | install interlocking paving blocks | 2d | 2026-04-06 A | 2026-09-09 A | DAM3-05-012-3110, DAM3-05-012-3670 FF, DAM3-05-012-2830 | 100% |  | 2026-07-26 | 2026-07-27 |  |  | SITE WORKS [48]; Labors 1 [48 h]; Labors 2 [48 h] | 170,279.06 |
| DAM3-05-012-3800 |  | install interlocking pedstrian paving blocks | 2d | 2026-06-07 A | 2026-10-07 | DAM3-05-012-3740 FF, DAM3-05-012-3260 | 95% | 0.1d | 2026-07-26 | 2026-07-27 | -55.5d | 0d | SITE WORKS [32]; Labors 1 [32 h]; Labors 2 [32 h] | 170,279.06 |
| DAM3-05-012-3710 |  | Backfilling for Roads | 8d | 2026-07-12 A | 2026-10-07 | DAM3-05-012-3670 FF, DAM3-05-012-3250 | 95% | 0.4d | 2026-09-29 | 2026-10-08 | -53d | 4d | SITE WORKS [64]; Labors 1 [64 h]; Labors 2 [64 h] | 170,279.06 |
| DAM3-05-012-3110 |  | Demolition of the existing asphalt layers to reach the foundation level of interlock layers | 2d | 2026-07-23 A | 2026-09-09 A | DAM3-05-012-2320 SS+5d | 100% |  | 2026-07-23 | 2026-07-25 |  |  | SITE WORKS [16]; Labors 1 [16 h]; Labors 2 [16 h] | 170,279.06 |
| DAM3-05-012-3820 |  | install matt stainless steel flag pole | 3d | 2026-07-25 A | 2026-09-12 A | DAM3-05-012-3810 FF, DAM3-05-012-3560 | 100% |  | 2026-07-25 | 2026-07-27 |  |  | SITE WORKS [32]; Labors 1 [32 h]; Labors 2 [32 h] | 170,279.06 |
| DAM3-05-012-3770 |  | install 19 to 38mm locally available stone gravel | 4d | 2026-08-12 A | 2026-09-09 A | DAM3-05-012-3760 FF-1d, DAM3-05-012-3140 | 100% |  | 2026-08-12 | 2026-08-17 |  |  | SITE WORKS [40]; Labors 1 [40 h]; Labors 2 [40 h] | 170,279.06 |
| DAM3-05-012-3810 |  | plant trees, plants, and ground covers including fixations, sweet soil | 3d | 2026-09-16 A | 2026-10-07 | DAM3-05-012-3770 FF, DAM3-05-012-3080 | 95% | 0.15d | 2026-09-16 | 2026-09-19 | -56.19d | 0d | SITE WORKS [32]; Labors 1 [32 h]; Labors 2 [32 h] | 170,279.06 |
| DAM3-05-012-3670 |  | Excavation for Roads | 10d | 2026-09-27 A | 2026-10-08 A | DAM3-05-012-2320, DAM3-05-012-2320 FF, DAM3-05-012-3110, DAM3-05-012-3930 FS+4d | 100% |  |  |  |  |  | SITE WORKS [80]; Labors 1 [80 h]; Labors 2 [80 h] | 170,279.06 |
|  | 3 | **MASONRY UNIT** |  | 2026-04-19 | 2026-07-26 |  |  |  |  |  |  |  |  |  |
| DAM3-05-012-3730 |  | install Concrete Masonry Unit (CMU) for walls | 3d | 2026-04-19 A | 2026-07-26 A | DAM3-05-012-2840, DAM3-05-012-3690 SS+3d, DAM3-05-012-3660 | 100% |  | 2026-09-03 | 2026-09-07 |  |  | MASONRY UNIT [64]; Labors 1 [64 h]; Labors 2 [64 h] | 22,604.84 |
|  | 6 | **THERMAL & MOISTURE PROTECTION** |  | 2026-09-09 | 2026-09-21 |  |  |  |  |  |  |  |  |  |
|  | 1 | **THERMAL & MOISTURE PROTECTION - Foundation** |  | 2026-09-09 | 2026-09-17 |  |  |  |  |  |  |  |  |  |
| DAM3-05-012-3950 |  | lay epoxy 2 coating for inner surfaces for RC walls, RC footings | 2d | 2026-09-09 A | 2026-09-10 A | DAM3-05-012-3920 | 100% |  |  |  |  |  | THERMAL & MOISTURE PROTECTION [16]; Labors 1 [16 h]; Labors 2 [16 h] | 7,424.54 |
| DAM3-05-012-3910 |  | apply 2 coats of bitumen waterproofing paint on concrete surface in contact with soil | 2d | 2026-09-15 A | 2026-09-17 A | DAM3-05-012-3920 SS | 100% |  |  |  |  |  | THERMAL & MOISTURE PROTECTION [16]; Labors 1 [16 h]; Labors 2 [16 h] | 7,424.54 |
| DAM3-05-012-3920 |  | install of waterproofing membrane 4mm including protection board for RC footings and RC walls | 2d | 2026-09-15 A | 2026-09-15 A | DAM3-05-012-3600 FS+22d | 100% |  | 2026-09-15 | 2026-09-17 |  |  | THERMAL & MOISTURE PROTECTION [16]; Labors 1 [16 h]; Labors 2 [16 h] | 7,424.54 |

| ID | WBS | Activity | Duration | Start | Finish | Predecessors | Complete | Remaining | Planned start | Planned finish | Total float | Free float | Resources | Cost |
| --- | --- | --- | --- | --- | --- | --- | --- | --- | --- | --- | --- | --- | --- | --- |
|  | 3 | **THERMAL & MOISTURE PROTECTION - Tanks** |  | 2026-09-09 | 2026-09-21 |  |  |  |  |  |  |  |  |  |
| DAM3-05-012-4070 |  | lay epoxy 2 coating for inner surfaces for bottom of the roof | 11d | 2026-09-09 A | 2026-09-21 A | DAM3-05-012-3970 SS | 100% |  |  |  |  |  | THERMAL & MOISTURE PROTECTION [88]; Labors 1 [88 h]; Labors 2 [88 h] | 7,424.54 |
| DAM3-05-012-4110 |  | install water stop for tanks according to the drawings and specification | 5d | 2026-09-21 A | 2026-09-21 A | DAM3-05-012-3930, DAM3-05-012-3950 | 100% |  | 2026-09-21 | 2026-09-28 |  |  | THERMAL & MOISTURE PROTECTION [40]; Labors 1 [40 h]; Labors 2 [40 h] | 7,424.54 |
|  | 7 | **ROOFING SYSTEM** |  | 2026-08-02 | 2026-08-24 |  |  |  |  |  |  |  |  |  |
| DAM3-05-012-4010 |  | install 300 micron polyethylene sheet | 11d | 2026-08-02 A | 2026-08-13 A | DAM3-05-012-4000 SS | 100% |  |  |  |  |  | THERMAL & MOISTURE PROTECTION [88]; Labors 1 [88 h]; Labors 2 [88 h] | 7,424.54 |
| DAM3-05-012-4040 |  | install UV resistant geotextile sheet | 11d | 2026-08-02 A | 2026-08-13 A | DAM3-05-012-4030 SS | 100% |  |  |  |  |  | THERMAL & MOISTURE PROTECTION [88]; Labors 1 [88 h]; Labors 2 [88 h] | 7,424.54 |
| DAM3-05-012-3970 |  | install liquid applied waterproofing coating single-component pitch modified polyurethane based elastomeric | 11d | 2026-08-02 A | 2026-08-18 A | DAM3-05-012-3840 SS+10d | 100% |  | 2026-08-02 | 2026-08-15 |  |  | THERMAL & MOISTURE PROTECTION [88]; Labors 1 [88 h]; Labors 2 [88 h] | 7,424.54 |
| DAM3-05-012-3980 |  | install 4mm thick APP modified bituminous membrane - single layer | 11d | 2026-08-02 A | 2026-08-18 A | DAM3-05-012-4070 SS | 100% |  | 2026-08-02 | 2026-08-15 |  |  | THERMAL & MOISTURE PROTECTION [88]; Labors 1 [88 h]; Labors 2 [88 h] | 7,424.54 |
| DAM3-05-012-4060 |  | install Terrazzo tiles | 11d | 2026-08-03 A | 2026-08-20 A | DAM3-05-012-4050 SS | 100% |  | 2026-08-03 | 2026-08-16 |  |  | THERMAL & MOISTURE PROTECTION [88]; Labors 1 [88 h]; Labors 2 [88 h] | 7,424.54 |
| DAM3-05-012-4000 |  | cast in place foam concrete screed, 50mm thick minimum; laid to fall and cross fall | 11d | 2026-08-06 A | 2026-08-19 A | DAM3-05-012-3990 SS | 100% |  |  |  |  |  | THERMAL & MOISTURE PROTECTION [88]; Labors 1 [88 h]; Labors 2 [88 h] | 7,424.54 |
| DAM3-05-012-3990 |  | install 75mm thick rigid insulation (extruded polystyrene) | 11d | 2026-08-10 A | 2026-08-13 A | DAM3-05-012-3980 SS | 100% |  | 2026-08-10 | 2026-08-22 |  |  | THERMAL & MOISTURE PROTECTION [88]; Labors 1 [88 h]; Labors 2 [88 h] | 7,424.54 |
| DAM3-05-012-4030 |  | install high density polyisocynurate cover board | 11d | 2026-08-10 A | 2026-08-13 A | DAM3-05-012-4020 SS | 100% |  | 2026-08-10 | 2026-08-22 |  |  | THERMAL & MOISTURE PROTECTION [88]; Labors 1 [88 h]; Labors 2 [88 h] | 7,424.54 |
| DAM3-05-012-4050 |  | fixing 3mm thick extruded aluminum flashing 40mm with sealant and all other accessories | 11d | 2026-08-10 A | 2026-08-13 A | DAM3-05-012-4040 SS | 100% |  | 2026-08-10 | 2026-08-22 |  |  | THERMAL & MOISTURE PROTECTION [88]; Labors 1 [88 h]; Labors 2 [88 h] | 7,424.54 |
| DAM3-05-012-4020 |  | install 50mm thick loose gravel toppings | 11d | 2026-08-12 A | 2026-08-24 A | DAM3-05-012-4010 SS | 100% |  |  |  |  |  | THERMAL & MOISTURE PROTECTION [88]; Labors 1 [88 h]; Labors 2 [88 h] | 7,424.54 |
|  | 9 | **FINISHES** |  | 2025-04-06 | 2026-10-07 |  |  |  |  |  |  |  |  |  |
| DAM3-05-012-3830 |  | install ceramic floor tiles | 3d | 2025-04-06 A | 2026-07-27 A | DAM3-05-012-2820 FF, DAM3-05-012-3510, DAM3-05-012-3820 FF-1d | 100% |  | 2026-10-03 | 2026-10-06 |  |  | Finishes [24]; Labors 1 [24 h]; Labors 2 [24 h] | 28,998.33 |
| DAM3-05-012-4190 |  | install 3mm steel CNC laser cut panels | 3d | 2026-04-12 A | 2026-08-29 A | DAM3-05-012-4210 FF, DAM3-05-012-3520 | 100% |  | 2026-10-03 | 2026-10-05 |  |  | Finishes [24]; Labors 1 [24 h]; Labors 2 [24 h] | 28,998.33 |
| DAM3-05-012-4180 |  | install Riyadh stone cladding | 3d | 2026-06-08 A | 2026-09-06 A | DAM3-05-012-4190 FF, DAM3-05-012-2870, DAM3-05-012-4070 | 100% |  | 2026-10-03 | 2026-10-06 |  |  | Finishes [24]; Labors 1 [24 h]; Labors 2 [24 h] | 28,998.33 |
| DAM3-05-012-4210 |  | install aluminum cladding | 2d | 2026-07-05 A | 2026-09-13 A | DAM3-05-012-4170 FF, DAM3-05-012-3340 | 100% |  | 2026-10-04 | 2026-10-05 |  |  | Finishes [16]; Labors 1 [16 h]; Labors 2 [16 h] | 28,998.33 |
| DAM3-05-012-4290 |  | install ceramic wall tiles | 3d | 2026-07-12 A | 2026-08-24 A | DAM3-05-012-4280 SS, DAM3-05-012-3310 | 100% |  | 2026-10-06 | 2026-10-08 |  |  | Finishes [24]; Labors 1 [24 h]; Labors 2 [24 h] | 28,998.33 |
| DAM3-05-012-4480 |  | install two coats of acrylic paint on internal walls | 2d | 2026-08-23 A | 2026-09-12 A | DAM3-05-012-4290 FF, DAM3-05-012-3320 | 100% |  | 2026-08-23 | 2026-08-25 |  |  | Finishes [16]; Labors 1 [16 h]; Labors 2 [16 h] | 28,998.33 |
| DAM3-05-012-4490 |  | install two coats of acrylic paint (suitable for exterior use) on external | 2d | 2026-08-23 A | 2026-10-07 | DAM3-05-012-4480 SS, DAM3-05-012-3330 | 97% | 0.06d | 2026-08-23 | 2026-08-25 | -56.19d | 0d | Finishes [16]; Labors 1 [16 h]; Labors 2 [16 h] | 28,998.33 |
| DAM3-05-012-4280 |  | install granite flooring | 2d | 2026-08-24 A | 2026-10-07 | DAM3-05-012-3830 SS, DAM3-05-012-4120 | 90% | 0.2d | 2026-08-24 | 2026-08-25 | -56.19d | 0d | Finishes [16]; Labors 1 [16 h]; Labors 2 [16 h] | 28,998.33 |
| DAM3-05-012-4170 |  | install granite saddles and thresholds | 3d | 2026-08-27 A | 2026-09-13 A | DAM3-05-012-4200 SS, DAM3-05-012-3300, DAM3-05-012-4110 | 100% |  | 2026-08-27 | 2026-08-31 |  |  | Finishes [24]; Labors 1 [24 h]; Labors 2 [24 h] | 28,998.33 |
| DAM3-05-012-3840 |  | install concrete plastering | 4d | 2026-09-07 A | 2026-09-07 A | DAM3-05-012-3730, DAM3-05-012-3650 | 100% |  | 2026-09-07 | 2026-09-12 |  |  | Finishes [32]; Labors 1 [32 h]; Labors 2 [32 h] | 28,998.33 |
| DAM3-05-012-4200 |  | gypsum board suspended ceiling | 4d | 2026-10-03 A | 2026-10-03 A | DAM3-05-012-4490 SS-4d, DAM3-05-012-3350 | 100% |  | 2026-10-03 | 2026-10-06 |  |  | Finishes [32]; Labors 1 [32 h]; Labors 2 [32 h] | 28,998.33 |

| ID | WBS | Activity | Duration | Start | Finish | Predecessors | Complete | Remaining | Planned start | Planned finish | Total float | Free float | Resources | Cost |
| --- | --- | --- | --- | --- | --- | --- | --- | --- | --- | --- | --- | --- | --- | --- |
|  | 12 | **SPECIAL CONSTRUCTION- STRUCTURAL STEEL (Fence Type 2)** |  | 2025-04-06 | 2026-10-08 |  |  |  |  |  |  |  |  |  |
| DAM3-05-012-3720 |  | fix galvanized steel chain link fence wall including steel tube framing and posts, turn buckle, tension wir...etc | 30d | 2025-04-06 A | 2026-10-08 | DAM3-05-012-2320 SS+8d, DAM3-05-012-3570 | 95% | 1.5d | 2026-09-03 | 2026-10-08 | -53.5d | 0d | SPECIAL CONSTRUCTION [240]; Labors 1 [240 h]; Labors 2 [240 h] | 794,108.4 |
| DAM3-05-012-3850 |  | installation of structural steel members and plates for main gates | 26d | 2026-08-15 A | 2026-10-07 A | DAM3-05-012-3750 SS+2d, DAM3-05-012-2990 | 100% |  | 2026-08-15 | 2026-09-14 |  |  | SPECIAL CONSTRUCTION [208]; Labors 1 [208 h]; Labors 2 [208 h] | 794,108.4 |
| DAM3-05-012-4130 |  | fix galvanized steel chain link gate | 11d | 2026-09-01 A | 2026-10-07 | DAM3-05-012-3940 SS+7d, DAM3-05-012-3380 | 95% | 0.55d | 2026-09-01 | 2026-09-14 | -52.55d | 0d | SPECIAL CONSTRUCTION [96]; Labors 1 [96 h]; Labors 2 [96 h] | 794,108.4 |
| DAM3-05-012-3750 |  | install structural steel members for gate frame | 25d | 2026-09-06 A | 2026-10-05 A | DAM3-05-012-3720 SS+2d, DAM3-05-012-2980 | 100% |  |  |  |  |  | SPECIAL CONSTRUCTION [200]; Labors 1 [200 h]; Labors 2 [200 h] | 794,108.4 |
| DAM3-05-012-3940 |  | installation of structural steel members and plates for pedestrian gates | 18d | 2026-09-09 A | 2026-09-30 A | DAM3-05-012-3850 SS+8d, DAM3-05-012-3180 | 100% |  |  |  |  |  | SPECIAL CONSTRUCTION [144]; Labors 1 [144 h]; Labors 2 [144 h] | 794,108.4 |
| DAM3-05-012-3960 |  | Install structural steel members and steel hollow sections for wall fence | 17d | 2026-09-19 A | 2026-10-08 A | DAM3-05-012-4130 FF, DAM3-05-012-3370 | 100% |  |  |  |  |  | SPECIAL CONSTRUCTION [144]; Labors 1 [144 h]; Labors 2 [144 h] | 794,108.4 |
|  | 13 | **MECHANICAL WORKS** |  | 2025-07-06 | 2026-10-06 |  |  |  |  |  |  |  |  |  |
|  | 1 | **MECHANICAL WORKS - 1st Fix** |  | 2025-07-06 | 2026-08-20 |  |  |  |  |  |  |  |  |  |
| DAM3-05-012-2690 |  | IRRIGATION SYSTEM - 1st Fix | 10d | 2025-07-06 A | 2026-08-02 A | DAM3-05-012-2950 SS | 100% |  | 2026-08-09 | 2026-08-20 |  |  | Mechanical Works [24]; Labors 1 [24 h]; Labors 2 [24 h] | 13,215.34 |
| DAM3-05-012-2670 |  | WATER SUPPLY SYSTEM - 1st Fix | 10d | 2026-08-09 A | 2026-08-20 A | DAM3-05-012-2690 SS | 100% |  |  |  |  |  | Mechanical Works [32]; Labors 1 [32 h]; Labors 2 [32 h] | 13,215.34 |
| DAM3-05-012-2680 |  | SEWER AND DRAINAGE SYSTEM - 1st Fix | 10d | 2026-08-09 A | 2026-08-20 A | DAM3-05-012-2670 SS | 100% |  |  |  |  |  | Mechanical Works [32]; Labors 1 [32 h]; Labors 2 [32 h] | 13,215.34 |
| DAM3-05-012-2720 |  | HEATING, VENTILATION AND AIR CONDITIONING - 1st Fix | 10d | 2026-08-09 A | 2026-08-20 A | DAM3-05-012-2680 SS | 100% |  |  |  |  |  | Mechanical Works [32]; Labors 1 [32 h]; Labors 2 [32 h] | 13,215.34 |
| DAM3-05-012-2730 |  | Exhaust fans - 1st Fix | 10d | 2026-08-09 A | 2026-08-20 A | DAM3-05-012-2720 SS | 100% |  |  |  |  |  | Mechanical Works [32]; Labors 1 [32 h]; Labors 2 [32 h] | 13,215.34 |
|  | 2 | **MECHANICAL WORKS - Final Fix** |  | 2026-06-07 | 2026-10-06 |  |  |  |  |  |  |  |  |  |
| DAM3-05-012-4520 |  | gully traps with heavy duty cover | 3d | 2026-06-07 A | 2026-09-13 A | DAM3-05-012-4300 FF, DAM3-05-012-3390 | 100% |  | 2026-10-06 | 2026-10-08 |  |  | Mechanical Works [24]; Labors 1 [24 h]; Labors 2 [24 h] | 13,215.34 |
| DAM3-05-012-4340 |  | Exhaust fans - Final Fix | 3d | 2026-08-26 A | 2026-09-16 A | DAM3-05-012-4330 FF, DAM3-05-012-3190 | 100% |  | 2026-08-26 | 2026-08-30 |  |  | Mechanical Works [32]; Labors 1 [32 h]; Labors 2 [32 h] | 13,215.34 |
| DAM3-05-012-4390 |  | IRRIGATION SYSTEM - Final Fix | 3d | 2026-08-26 A | 2026-09-13 A | DAM3-05-012-4650 FF, DAM3-05-012-3240 | 100% |  | 2026-08-26 | 2026-08-30 |  |  | Mechanical Works [32]; Labors 1 [32 h]; Labors 2 [32 h] | 13,215.34 |
| DAM3-05-012-4530 |  | Bulbblers and Spreyers of IRRIGATION SYSTEM | 3d | 2026-08-26 A | 2026-09-13 A | DAM3-05-012-4340 FF, DAM3-05-012-3000 | 100% |  | 2026-08-26 | 2026-08-30 |  |  | Mechanical Works [24]; Labors 1 [24 h]; Labors 2 [24 h] | 13,215.34 |
| DAM3-05-012-4330 |  | HEATING, VENTILATION AND AIR CONDITIONING - Final Fix | 3d | 2026-08-29 A | 2026-09-16 A | DAM3-05-012-4320 FF, DAM3-05-012-2890 | 100% |  | 2026-08-29 | 2026-09-01 |  |  | Mechanical Works [32]; Labors 1 [32 h]; Labors 2 [32 h] | 13,215.34 |
| DAM3-05-012-4310 |  | chamber with heavy duty cover | 3d | 2026-09-02 A | 2026-09-13 A | DAM3-05-012-4520 FF, DAM3-05-012-3400 | 100% |  | 2026-09-02 | 2026-09-06 |  |  | Mechanical Works [32]; Labors 1 [32 h]; Labors 2 [32 h] | 13,215.34 |
| DAM3-05-012-4650 |  | WATER SUPPLY SYSTEM - Final Fix | 3d | 2026-09-02 A | 2026-09-13 A | DAM3-05-012-4530 FF, DAM3-05-012-3500 | 100% |  | 2026-09-02 | 2026-09-06 |  |  | Mechanical Works [24]; Labors 1 [24 h]; Labors 2 [24 h] | 13,215.34 |
| DAM3-05-012-4300 |  | installation of Fire extinguishers as per drawings, specifications | 3d | 2026-09-13 A | 2026-09-16 A | DAM3-05-012-4200 FS-1d, DAM3-05-012-2620, DAM3-05-012-2730, DAM3-05-012-4210, DAM3-05-012-4190, DAM3-05-012-4060 FS+2d | 100% |  |  |  |  |  | Mechanical Works [24]; Labors 1 [24 h]; Labors 2 [24 h] | 13,215.34 |
| DAM3-05-012-4320 |  | INSTALL PLUMBING FIXTURES | 3d | 2026-10-06 A | 2026-10-06 A | DAM3-05-012-4310 FF, DAM3-05-012-3410 | 100% |  | 2026-10-06 | 2026-10-08 |  |  | Mechanical Works [32]; Labors 1 [32 h]; Labors 2 [32 h] | 13,215.34 |

| ID | WBS | Activity | Duration | Start | Finish | Predecessors | Complete | Remaining | Planned start | Planned finish | Total float | Free float | Resources | Cost |
| --- | --- | --- | --- | --- | --- | --- | --- | --- | --- | --- | --- | --- | --- | --- |
|  | 15 | **ELECTRICAL WORKS** |  | 2025-07-20 | 2026-10-11 |  |  |  |  |  |  |  |  |  |
|  | 1 | **ELECTRICAL WORKS - 1st Fix** |  | 2026-08-09 | 2026-08-20 |  |  |  |  |  |  |  |  |  |
| DAM3-05-012-2700 |  | LIGHTING AND POWER TYPE PANELBOARDS - 1st Fix | 10d | 2026-08-09 A | 2026-08-13 A | DAM3-05-012-2730 SS | 100% |  | 2026-08-09 | 2026-08-20 |  |  | Electrical Works [32]; Labors 1 [32 h]; Labors 2 [32 h] | 29,199.98 |
| DAM3-05-012-2710 |  | UPS 3KVA (installed inside the rack) - 1st Fix | 10d | 2026-08-09 A | 2026-08-20 A | DAM3-05-012-2700 SS | 100% |  |  |  |  |  | Electrical Works [32]; Labors 1 [32 h]; Labors 2 [32 h] | 29,199.98 |
| DAM3-05-012-2740 |  | power source with built-in photocell sensor for automatic electrical connection during day/light times - 1st Fix | 10d | 2026-08-09 A | 2026-08-20 A | DAM3-05-012-2710 SS | 100% |  |  |  |  |  | Electrical Works [32]; Labors 1 [32 h]; Labors 2 [32 h] | 29,199.98 |
| DAM3-05-012-2750 |  | UNDERGROUND DISTRIBUTION SYSTEM - 1st Fix | 10d | 2026-08-09 A | 2026-08-20 A | DAM3-05-012-2740 SS | 100% |  |  |  |  |  | Electrical Works [32]; Labors 1 [32 h]; Labors 2 [32 h] | 29,199.98 |
| DAM3-05-012-2760 |  | LIGHTING FIXTURES - 1st Fix | 10d | 2026-08-09 A | 2026-08-20 A | DAM3-05-012-2750 SS | 100% |  |  |  |  |  | Electrical Works [32]; Labors 1 [32 h]; Labors 2 [32 h] | 29,199.98 |
| DAM3-05-012-2770 |  | installation of Wiring devices includes switches and Receptacle outlets complete with device boxes - 1st Fix | 10d | 2026-08-09 A | 2026-08-20 A | DAM3-05-012-2760 SS | 100% |  |  |  |  |  | Electrical Works [32]; Labors 1 [32 h]; Labors 2 [32 h] | 29,199.98 |
| DAM3-05-012-2780 |  | GROUNDING - 1st Fix | 10d | 2026-08-09 A | 2026-08-20 A | DAM3-05-012-2770 SS | 100% |  |  |  |  |  | Electrical Works [32]; Labors 1 [32 h]; Labors 2 [32 h] | 29,199.98 |
| DAM3-05-012-2790 |  | card reader IN/OUT - 1st Fix | 10d | 2026-08-09 A | 2026-08-20 A | DAM3-05-012-2780 SS | 100% |  |  |  |  |  | Electrical Works [32]; Labors 1 [32 h]; Labors 2 [32 h] | 29,199.98 |
| DAM3-05-012-2800 |  | CCTV cameras - 1st Fix | 10d | 2026-08-09 A | 2026-08-20 A | DAM3-05-012-2790 SS | 100% |  |  |  |  |  | Electrical Works [32]; Labors 1 [32 h]; Labors 2 [32 h] | 29,199.98 |
| DAM3-05-012-2810 |  | Access control panel - 1st Fix | 10d | 2026-08-09 A | 2026-08-20 A | DAM3-05-012-2800 SS | 100% |  |  |  |  |  | Electrical Works [32]; Labors 1 [32 h]; Labors 2 [32 h] | 29,199.98 |
| DAM3-05-012-2820 |  | fire alarm system including wires, conduit and other materials - 1st Fix | 10d | 2026-08-09 A | 2026-08-20 A | DAM3-05-012-2810 SS | 100% |  |  |  |  |  | Electrical Works [32]; Labors 1 [32 h]; Labors 2 [32 h] | 29,199.98 |
|  | 2 | **ELECTRICAL WORKS - Final Fix** |  | 2025-07-20 | 2026-10-11 |  |  |  |  |  |  |  |  |  |
| DAM3-05-012-4630 |  | fire alarm system including wires, conduit and other materials - Final Fix | 2d | 2025-07-20 A | 2026-09-14 A | DAM3-05-012-4810 FF, DAM3-05-012-3490 | 100% |  | 2026-09-14 | 2026-09-16 |  |  | Electrical Works [24]; Labors 1 [24 h]; Labors 2 [24 h] | 29,199.98 |
| DAM3-05-012-4780 |  | installation of Wiring devices includes switches and Receptacle outlets complete with device boxes - Final Fix | 3d | 2026-04-05 A | 2026-09-06 A | DAM3-05-012-4550 FF, DAM3-05-012-3420 | 100% |  | 2026-09-13 | 2026-09-16 |  |  | Electrical Works [16]; Labors 1 [16 h]; Labors 2 [16 h] | 29,199.98 |
| DAM3-05-012-4790 |  | Access control panel - Final Fix | 2d | 2026-04-05 A | 2026-09-14 A | DAM3-05-012-4560 FF, DAM3-05-012-3530 | 100% |  | 2026-09-14 | 2026-09-16 |  |  | Electrical Works [16]; Labors 1 [16 h]; Labors 2 [16 h] | 29,199.98 |
| DAM3-05-012-4620 |  | ELECTRICAL GATE BARRIER | 2d | 2026-04-12 A | 2026-10-07 | DAM3-05-012-4800 FF, DAM3-05-012-3040 | 95% | 0.1d | 2026-09-14 | 2026-09-16 | -56.19d | 0d | Electrical Works [24]; Labors 1 [24 h]; Labors 2 [24 h] | 29,199.98 |
| DAM3-05-012-4610 |  | CCTV cameras - Final Fix | 2d | 2026-07-05 A | 2026-09-14 A | DAM3-05-012-4380 FF, DAM3-05-012-3470 | 100% |  | 2026-09-14 | 2026-09-16 |  |  | Electrical Works [24]; Labors 1 [24 h]; Labors 2 [24 h] | 29,199.98 |
| DAM3-05-012-4640 |  | Analog addressable fire alarm control panel with battery | 2d | 2026-07-12 A | 2026-09-14 A | DAM3-05-012-4630 FF, DAM3-05-012-2910 | 100% |  | 2026-09-14 | 2026-09-16 |  |  | Electrical Works [24]; Labors 1 [24 h]; Labors 2 [24 h] | 29,199.98 |
| DAM3-05-012-4660 |  | LIGHTING AND POWER TYPE PANELBOARDS - Final Fix | 2d | 2026-07-12 A | 2026-08-31 A | DAM3-05-012-4820 FF, DAM3-05-012-3580 | 100% |  | 2026-09-14 | 2026-09-16 |  |  | Electrical Works [24]; Labors 1 [24 h]; Labors 2 [24 h] | 29,199.98 |
| DAM3-05-012-4770 |  | UNDERGROUND DISTRIBUTION SYSTEM - Final Fix | 3d | 2026-07-12 A | 2026-08-23 A | DAM3-05-012-4540 FF, DAM3-05-012-3210 | 100% |  | 2026-09-13 | 2026-09-16 |  |  | Electrical Works [16]; Labors 1 [16 h]; Labors 2 [16 h] | 29,199.98 |
| DAM3-05-012-4550 |  | LIGHTING FIXTURES - Final Fix | 3d | 2026-08-11 A | 2026-10-07 | DAM3-05-012-4770 FF, DAM3-05-012-3010 | 90% | 0.3d | 2026-09-13 | 2026-09-16 | -56.19d | 0d | Electrical Works [24]; Labors 1 [24 h]; Labors 2 [24 h] | 29,199.98 |
| DAM3-05-012-4350 |  | GROUNDING - Final Fix | 2d | 2026-09-14 A | 2026-09-16 A | DAM3-05-012-4780 FF, DAM3-05-012-3220, DAM3-05-012-2820, DAM3-05-012-4180 | 100% |  |  |  |  |  | Electrical Works [32]; Labors 1 [32 h]; Labors 2 [32 h] | 29,199.98 |
| DAM3-05-012-4360 |  | 12-Port, SMF, Fiber Optic Patch Panels; | 2d | 2026-09-14 A | 2026-09-21 A | DAM3-05-012-4570 FF, DAM3-05-012-3440 | 100% |  | 2026-09-14 | 2026-09-16 |  |  | Electrical Works [32]; Labors 1 [32 h]; Labors 2 [32 h] | 29,199.98 |
| DAM3-05-012-4370 |  | VIDEO SURVEILLANCE | 2d | 2026-09-14 A | 2026-09-21 A | DAM3-05-012-4580 FF, DAM3-05-012-3450 | 100% |  | 2026-09-14 | 2026-09-16 |  |  | Electrical Works [32]; Labors 1 [32 h]; Labors 2 [32 h] | 29,199.98 |
| DAM3-05-012-4380 |  | CCTV storage system, as specified; | 2d | 2026-09-14 A | 2026-09-21 A | DAM3-05-012-4600 FF, DAM3-05-012-3030 | 100% |  | 2026-09-14 | 2026-09-16 |  |  | Electrical Works [32]; Labors 1 [32 h]; Labors 2 [32 h] | 29,199.98 |
| DAM3-05-012-4540 |  | power source with built-in photocell sensor for automatic electrical connection during day/light times - Final Fix | 2d | 2026-09-14 A | 2026-09-14 A | DAM3-05-012-4650 FF, DAM3-05-012-3200 | 100% |  | 2026-09-14 | 2026-09-16 |  |  | Electrical Works [24]; Labors 1 [24 h]; Labors 2 [24 h] | 29,199.98 |
| DAM3-05-012-4560 |  | card reader IN/OUT - Final Fix | 2d | 2026-09-14 A | 2026-09-21 A | DAM3-05-012-4350 FF, DAM3-05-012-3230 | 100% |  | 2026-09-14 | 2026-09-16 |  |  | Electrical Works [24]; Labors 1 [24 h]; Labors 2 [24 h] | 29,199.98 |
| DAM3-05-012-4570 |  | 12-Port CAT6A UTP fully loaded patch panel | 2d | 2026-09-14 A | 2026-09-21 A | DAM3-05-012-4790 FF, DAM3-05-012-3430 | 100% |  | 2026-09-14 | 2026-09-16 |  |  | Electrical Works [24]; Labors 1 [24 h]; Labors 2 [24 h] | 29,199.98 |
| DAM3-05-012-4580 |  | COMPUTERS AND RELATED PERIPHERALS | 2d | 2026-09-14 A | 2026-09-21 A | DAM3-05-012-4360 FF, DAM3-05-012-3020 | 100% |  | 2026-09-14 | 2026-09-16 |  |  | Electrical Works [24]; Labors 1 [24 h]; Labors 2 [24 h] | 29,199.98 |
| DAM3-05-012-4590 |  | Central (Headend) System Components; | 2d | 2026-09-14 A | 2026-09-21 A | DAM3-05-012-4370 FF, DAM3-05-012-2900 | 100% |  | 2026-09-14 | 2026-09-16 |  |  | Electrical Works [24]; Labors 1 [24 h]; Labors 2 [24 h] | 29,199.98 |
| DAM3-05-012-4800 |  | 20A , ATS ( Automatic transfer switch) for UPS | 2d | 2026-09-14 A | 2026-09-14 A | DAM3-05-012-4610 FF, DAM3-05-012-3480 | 100% |  | 2026-09-14 | 2026-09-16 |  |  | Electrical Works [16]; Labors 1 [16 h]; Labors 2 [16 h] | 29,199.98 |
| DAM3-05-012-4810 |  | LIGHTNING PROTECTION | 2d | 2026-09-14 A | 2026-09-16 A | DAM3-05-012-4620 FF, DAM3-05-012-3050 | 100% |  |  |  |  |  | Electrical Works [16]; Labors 1 [16 h]; Labors 2 [16 h] | 29,199.98 |
| DAM3-05-012-4820 |  | Intelligent Ionization / Photoelectric smoke and heat detector with base | 2d | 2026-09-14 A | 2026-10-07 | DAM3-05-012-4640 FF, DAM3-05-012-3060 | 85% | 0.3d | 2026-09-14 | 2026-09-16 | -56.19d | 0d | Electrical Works [16]; Labors 1 [16 h]; Labors 2 [16 h] | 29,199.98 |
| DAM3-05-012-4600 |  | VSS System, as specified; | 2d | 2026-10-11 A | 2026-10-11 A | DAM3-05-012-4590 FF, DAM3-05-012-3460 | 100% |  | 2026-09-14 | 2026-09-16 |  |  | Electrical Works [24]; Labors 1 [24 h]; Labors 2 [24 h] | 29,199.98 |

| ID | WBS | Activity | Duration | Start | Finish | Predecessors | Complete | Remaining | Planned start | Planned finish | Total float | Free float | Resources | Cost | BOQ Mapping |
| --- | --- | --- | --- | --- | --- | --- | --- | --- | --- | --- | --- | --- | --- | --- | --- |
|  | 4 | **METALS** |  | 2026-08-27 | 2026-10-08 |  |  |  |  |  |  |  |  |  |  |
| DAM3-05-012-4460 |  | install heavy steel cover with frame including all necessary fixings | 2d | 2026-08-27 A | 2026-09-05 A | DAM3-05-012-4450 SS, DAM3-05-012-3280 | 100% |  | 2026-08-27 | 2026-08-30 |  |  | Metal [16]; Labors 1 [16 h]; Labors 2 [16 h] | 4,374.33 |  |
| DAM3-05-012-4440 |  | folding & sliding mounter combination ladder for building maintenance purpose | 2d | 2026-10-07 A | 2026-10-08 A | DAM3-05-012-4200, DAM3-05-012-3270 | 100% |  |  |  |  |  | Metal [16]; Labors 1 [16 h]; Labors 2 [16 h] | 4,374.33 |  |
| DAM3-05-012-4450 |  | install of overflow galvanized steel roof scupper with gray color with angular secondary support | 2d | 2026-10-07 A | 2026-10-07 A | DAM3-05-012-4440 SS, DAM3-05-012-2850 | 100% |  | 2026-10-07 | 2026-10-08 |  |  | Metal [16]; Labors 1 [16 h]; Labors 2 [16 h] | 4,374.33 |  |
|  | 5 | **WOODS AND PLASTICS** |  | 2026-08-15 | 2026-08-29 |  |  |  |  |  |  |  |  |  |  |
| DAM3-05-012-4260 |  | COUNTER DESK | 3d | 2026-08-15 A | 2026-08-29 A | DAM3-05-012-4470 FF, DAM3-05-012-3160 | 100% |  | 2026-08-15 | 2026-08-18 |  |  | WOODS AND PLASTICS [24]; Labors 1 [24 h]; Labors 2 [24 h] | 13,979.72 |  |
| DAM3-05-012-4470 |  | PANTRY CABINET | 2d | 2026-08-16 A | 2026-08-29 A | DAM3-05-012-4460 SS, DAM3-05-012-3150 | 100% |  | 2026-08-16 | 2026-08-18 |  |  | WOODS AND PLASTICS [16]; Labors 1 [16 h]; Labors 2 [16 h] | 13,979.72 |  |
|  | 8 | **DOORS & WINDOWS** |  | 2026-09-05 | 2026-09-09 |  |  |  |  |  |  |  |  |  |  |
| DAM3-05-012-4150 |  | install hollow metal door | 4d | 2026-09-05 A | 2026-09-09 A | DAM3-05-012-4270 SF, DAM3-05-012-3290 | 100% |  |  |  |  |  | Doors & Windows [32]; Labors 1 [32 h]; Labors 2 [32 h] | 9,837.12 |  |
| DAM3-05-012-4160 |  | Install aluminum framed double glazed windows | 3d | 2026-09-05 A | 2026-09-05 A | DAM3-05-012-4150 SS, DAM3-05-012-2860 | 100% |  | 2026-09-05 | 2026-09-08 |  |  | Doors & Windows [24]; Labors 1 [24 h]; Labors 2 [24 h] | 9,837.12 |  |
| DAM3-05-012-4270 |  | Install Aluminum Door | 3d | 2026-09-09 A | 2026-09-09 A | DAM3-05-012-4260 SS, DAM3-05-012-2970 | 100% |  | 2026-09-09 | 2026-09-13 |  |  | Doors & Windows [24]; Labors 1 [24 h]; Labors 2 [24 h] | 9,837.12 |  |
|  | 10 | **SPECIALTIES** |  | 2026-08-29 | 2026-09-16 |  |  |  |  |  |  |  |  |  |  |
| DAM3-05-012-4500 |  | TOILET ACCESSROIES | 2d | 2026-08-29 A | 2026-09-15 A | DAM3-05-012-4650 SS, DAM3-05-012-3090, DAM3-05-012-4270 FF | 100% |  | 2026-08-29 | 2026-08-31 |  |  | SPECIALties [16]; Labors 1 [16 h]; Labors 2 [16 h] | 64,128.14 |  |
| DAM3-05-012-4510 |  | PANEL SIGNAGE | 2d | 2026-09-14 A | 2026-09-16 A | DAM3-05-012-4500 SS, DAM3-05-012-2880, DAM3-05-012-4820 FF | 100% |  |  |  |  |  | SPECIALties [24]; Labors 1 [24 h]; Labors 2 [24 h] | 64,128.14 |  |
|  | 11 | **FURNISHINGS** |  | 2026-08-26 | 2026-09-16 |  |  |  |  |  |  |  |  |  |  |
| DAM3-05-012-4730 |  | Workstation chair | 1d | 2026-08-26 A | 2026-08-26 A | DAM3-05-012-4510 FF, DAM3-05-012-4080 | 100% |  |  |  |  |  | FURNISHINGS [16]; Labors 1 [16 h]; Labors 2 [16 h] | 4,623.54 |  |
| DAM3-05-012-4740 |  | Workstation table | 1d | 2026-08-26 A | 2026-09-08 A | DAM3-05-012-4730 SS, DAM3-05-012-4090 | 100% |  | 2026-08-26 | 2026-08-26 |  |  | FURNISHINGS [16]; Labors 1 [16 h]; Labors 2 [16 h] | 4,623.54 |  |
| DAM3-05-012-4750 |  | Roller blind | 1d | 2026-09-15 A | 2026-09-16 A | DAM3-05-012-4740 SS, DAM3-05-012-3170 | 100% |  |  |  |  |  | FURNISHINGS [16]; Labors 1 [16 h]; Labors 2 [16 h] | 4,623.54 |  |
| DAM3-05-012-4760 |  | Waste Receptacle | 1d | 2026-09-15 A | 2026-09-16 A | DAM3-05-012-4750 SS, DAM3-05-012-3360 | 100% |  |  |  |  |  | FURNISHINGS [16]; Labors 1 [16 h]; Labors 2 [16 h] | 4,623.54 |  |
|  | 6 | **Testing & Commissioning** |  | 2026-08-30 | 2026-10-11 |  |  |  |  |  |  |  |  |  |  |
| DAM3-05-012-4400 |  | Testing & Commissioning - Electrical Systems | 1.5d | 2026-08-30 A | 2026-10-08 | DAM3-05-012-4760 FF-2d, DAM3-05-012-4460 FF-2d | 68% | 1.5d | 2026-08-30 | 2026-08-31 | -57d | 0d | Testing [8]; Labors 1 [8 h]; Labors 2 [8 h] | 97,058.83 | 28.1.1, 28.1.2, 28.2.1 |
| DAM3-05-012-4720 |  | Testing & Commissioning - Mechanical Systems | 2d | 2026-09-01 A | 2026-10-11 | DAM3-05-012-4400 | 60% | 2d | 2026-09-01 | 2026-09-02 | -55.5d | 0.5d | Testing [24]; Labors 1 [24 h]; Labors 2 [24 h] | 97,058.83 |  |
|  | 5 | **Handing Over** |  | 2026-09-06 | 2026-10-12 |  |  |  |  |  |  |  |  |  |  |
|  | 1 | **Engineering** |  | 2026-09-06 | 2026-10-12 |  |  |  |  |  |  |  |  |  |  |
|  | 1 | **As-Built Drawings** |  | 2026-09-06 | 2026-10-12 |  |  |  |  |  |  |  |  |  |  |
| DAM3-05-012-4220 |  | Prepare & Submit | 3d | 2026-09-06 A | 2026-10-10 | DAM3-05-012-4400 SS-2d, DAM3-05-012-3970, DAM3-05-012-3980, DAM3-05-012-3990, DAM3-05-012-4000, DAM3-05-012-4010, DAM3-05-012-4020, DAM3-05-012-4030, DAM3-05-012-4040, DAM3-05-012-4050, DAM3-05-012-4060 |  | 3d | 2026-09-06 | 2026-09-09 | -57d | 0d | Testing [16]; Labors 1 [16 h]; Labors 2 [16 h] | 97,058.83 |  |
| DAM3-05-012-4230 |  | Review & Approve | 4d | 2026-09-07 A | 2026-10-12 | DAM3-05-012-4220 FF+2d |  | 4d | 2026-09-07 | 2026-09-12 | -57d | 0d | Testing [16]; Labors 1 [16 h]; Labors 2 [16 h] | 97,058.83 |  |

| ID | WBS | Activity | Duration | Start | Finish | Predecessors | Remaining | Planned start | Planned finish | Total float | Free float | Resources | Cost | BOQ Mapping |
| --- | --- | --- | --- | --- | --- | --- | --- | --- | --- | --- | --- | --- | --- | --- |
|  | 2 | **Operational Spares** |  | 2026-09-06 | 2026-10-11 |  |  |  |  |  |  |  |  |  |
| DAM3-05-012-4240 |  | Prepare & Submit | 2d | 2026-09-06 A | 2026-10-08 | DAM3-05-012-4400 FF | 2d | 2026-09-06 | 2026-09-07 | -56d | 0d | Testing [16]; Labors 1 [16 h]; Labors 2 [16 h] | 97,058.83 | 16.11 |
| DAM3-05-012-4430 |  | Acceptance | 3d | 2026-09-07 A | 2026-10-11 | DAM3-05-012-4690 FF | 3d | 2026-09-07 | 2026-09-09 | -56d | 1d | Testing [16]; Labors 1 [16 h]; Labors 2 [16 h] | 97,058.83 |  |
| DAM3-05-012-4690 |  | Inspection | 2d | 2026-09-08 A | 2026-10-11 | DAM3-05-012-4240 | 2d | 2026-09-08 | 2026-09-09 | -56d | 0d | Testing [16]; Labors 1 [16 h]; Labors 2 [16 h] | 97,058.83 |  |
|  | 3 | **Warranties and Guarantees** |  | 2026-09-06 | 2026-10-11 |  |  |  |  |  |  |  |  |  |
| DAM3-05-012-4250 |  | Review & Approve | 2d | 2026-09-06 A | 2026-10-08 | DAM3-05-012-4400 FF | 2d | 2026-09-06 | 2026-09-07 | -56d | 0d | Testing [24]; Labors 1 [24 h]; Labors 2 [24 h] | 97,058.83 |  |
| DAM3-05-012-4700 |  | Prepare & Submit | 2d | 2026-09-08 A | 2026-10-11 | DAM3-05-012-4250, DAM3-05-012-4720 FF | 2d | 2026-09-08 | 2026-09-09 | -56d | 1d | Testing [24]; Labors 1 [24 h]; Labors 2 [24 h] | 97,058.71 |  |
|  | 2 | **Training and Manuals** |  | 2026-09-06 | 2026-10-11 |  |  |  |  |  |  |  |  |  |
|  | 1 | **Training** |  | 2026-09-06 | 2026-10-11 |  |  |  |  |  |  |  |  |  |
| DAM3-05-012-4410 |  | Prepare & Submit | 1.5d | 2026-09-06 A | 2026-10-08 | DAM3-05-012-4400 SS | 1.5d | 2026-09-06 | 2026-09-07 | -55.5d | 0d | Testing [16]; Labors 1 [16 h]; Labors 2 [16 h] | 97,058.83 |  |
| DAM3-05-012-4830 |  | Review & Approve | 2d | 2026-09-08 A | 2026-10-11 | DAM3-05-012-4410 | 2d | 2026-09-08 | 2026-09-09 | -55.5d | 0d | Testing [8]; Labors 1 [8 h]; Labors 2 [8 h] | 97,058.83 |  |
| DAM3-05-012-4840 |  | Fabrication & Delivery | 2d | 2026-09-08 A | 2026-10-11 | DAM3-05-012-4830 FF | 2d | 2026-09-08 | 2026-09-09 | -55.5d | 1.5d | Testing [16]; Labors 1 [16 h]; Labors 2 [16 h] | 97,058.83 |  |
|  | 2 | **Manuals** |  | 2026-09-06 | 2026-10-11 |  |  |  |  |  |  |  |  |  |
| DAM3-05-012-4420 |  | Prepare & Submit | 1.5d | 2026-09-06 A | 2026-10-08 | DAM3-05-012-4400 SS | 1.5d | 2026-09-06 | 2026-09-07 | -55.5d | 0d | Testing [16]; Labors 1 [16 h]; Labors 2 [16 h] | 97,058.83 |  |
| DAM3-05-012-4710 |  | Review & Approve | 2d | 2026-09-08 A | 2026-10-11 | DAM3-05-012-4420 | 2d | 2026-09-08 | 2026-09-09 | -55.5d | 0d | Testing [24]; Labors 1 [24 h]; Labors 2 [24 h] | 97,058.83 |  |
|  | 3 | **Demobilization** |  | 2026-09-08 | 2026-10-11 |  |  |  |  |  |  |  |  |  |
| DAM3-05-012-4670 |  | Demobilize | 2d | 2026-09-08 A | 2026-10-11 | DAM3-05-012-4710 FF | 2d | 2026-09-08 | 2026-09-09 | -55.5d | 0d | Testing [24]; Labors 1 [24 h]; Labors 2 [24 h] | 97,058.83 |  |
|  | 5 | **Snaglist Rectification** |  | 2026-09-08 | 2026-10-12 |  |  |  |  |  |  |  |  |  |
| DAM3-05-012-4680 |  | Snaglist Rectification | 2d | 2026-09-08 A | 2026-10-11 | DAM3-05-012-4400 FF, DAM3-05-012-4670 FF | 2d | 2026-09-08 | 2026-09-09 | -55.5d | 1.5d | Testing [24]; Labors 1 [24 h]; Labors 2 [24 h] | 97,058.83 |  |
| DAM3-05-012-4850 |  | Initial Handing Over | 1d | 2026-09-10 A | 2026-10-12 | DAM3-05-012-4230 FF, DAM3-05-012-4430 FF, DAM3-05-012-4700 FF, DAM3-05-012-4840 FF, DAM3-05-012-4710 FF, DAM3-05-012-4680 FF | 1d | 2026-09-10 | 2026-09-12 | -57d | 0d | Testing [24]; Labors 1 [24 h]; Labors 2 [24 h] | 97,058.83 |  |
