# MLTX-02-004 - Playground Initiative for Western Region (Asir - Jazan - Jeddah) - Update 23-11-2026

Schedule from Primavera P6, 2026-03-26 to 2027-05-10, data date 2026-11-23, costs in USD, A marks actual dates.
Must finish by 2027-01-25

## Calendars

- MLTX-02-004 - Playground Initiative for Western Region (Asir - Jazan - Jeddah): Mon-Thu 07:00-17:00; Fri off; Sat-Sun 07:00-17:00. Exceptions (off unless hours are given): 2026-04-03, 2026-04-10, 2026-04-17, 2026-04-24, 2026-05-01, 2026-05-08, 2026-05-15, 2026-05-22, 2026-05-26 to 2026-05-29, 2026-06-05, 2026-06-12, 2026-06-19, 2026-06-26, 2026-07-03, 2026-07-10, 2026-07-17, 2026-07-24, 2026-07-31, 2026-09-23, 2027-02-22, 2027-03-10 to 2027-03-11, 2027-03-13.

## Resources

| Resource | Group | Rate |
| --- | --- | --- |
| QA/QC Engineer | labor |  |
| Consultant Staff | labor |  |
| Draftsman | labor |  |
| Labor | labor |  |
| Driver | labor |  |
| Excavator | equipment |  |
| Loader | equipment |  |
| Water Tanker | equipment |  |
| Dump Truck | equipment |  |
| Milling machine | equipment |  |
| Excavation in any type of soil from existing level | material | 63.38 |
| Compactor | equipment |  |
| Backfilling with selected fill material | material | 34.12 |
| Skilled Labor | labor |  |
| Forklift | equipment |  |
| Supply and install interlock tiles for parking 8cm | material | 146.25 |
| Interlock tiles grey scale with black marble chips 600*300*60mm zero joint | material | 126.75 |
| Steel Fixer | labor |  |
| Stamped concrete floor | material | 234 |
| Compacted Natural ground soil | material | 14.62 |
| Bobcat | equipment |  |
| Bike path | material | 170.62 |
| Walking path | material | 170.62 |
| Kerb type K1A | material | 58.5 |
| Kerb type K1B | material | 195 |
| Kerb type K4 | material | 43.88 |
| Traffic signs aluminum sheet, (breakaway) Single post I.P.E. | material | 4875 |
| Cassia Glauca | material | 1218.75 |
| Plumeria Alba | material | 1218.75 |
| Neem | material | 2730 |
| Lawn | material | 53.62 |
| Football playground | material | 287.62 |
| Crane | equipment |  |
| Painter | labor |  |
| Padel playgound | material | 1072.5 |
| Basketball playground | material | 585 |
| Supply and install of padel playground fence | material | 82875 |
| Design, supply, install, testing and commissioning of air dome | material | 5606250 |
| Mechanical | labor |  |
| Electrician | labor |  |
| Supply and install playground benches consists of 6 seats | material | 17276 |
| Supply and install recycled precast concrete rectangular seats | material | 1170 |
| Supply and install recycled precast concrete circular seats | material | 536.25 |
| Supply and install recycled precast concrete trash bins | material | 1462.5 |
| lean concrete under foundation | material | 780 |
| The autoclaved aerated panel for slabs, external and internal walls and parapet | material | 321.75 |
| Provide and cast 35 Mpa concrete floor slab on grade | material | 2145 |
| Supply and lay 250 micron thk polyethylene sheet under grade slab | material | 24.38 |
| Supply and apply anti termite under all concrete in contact with soil. | material | 48.75 |
| Provide and lay epoxy 2 coating for inner surfaces for RC walls, RC footings and bottom of the roof | material | 146.25 |
| Mason | labor |  |
| Concrete masonry unit, 100 mm thick wall | material | 273 |
| Supply and install Galvanized steel ladder | material | 5850 |
| Plumber | labor |  |
| Supply and install liquid applied waterproofing membrane for toilets according to drawings and specifications. | material | 146.25 |
| Supply and cast in place foam concrete screed 50mm thk minimum laid to fall and cross fall | material | 29.25 |
| Supply and install 4mm thick APP modified bituminous membrane for roof insulation | material | 146.25 |
| Supply and install 300 micron polyethylene sheet | material | 29.25 |
| Supply and install 50mm thk rigid insulation (extruded polystyrene) with density of 35 kg./m3 | material | 53.62 |
| Supply and install 50mm thk loose gravel toppings | material | 39 |
| Supplying and fixing 3mm thk extruded aluminum flashing | material | 58.5 |
| Provide and lay 2 layers of waterproofing membrane 4mm | material | 243.75 |
| Metal Door D2 : | material | 9750 |
| Tile Fixer | labor |  |
| Floor Finishes Anti-slip glazed grey ceramic tiles, 600*600 mm | material | 195 |
| Floor Finishes Light grey Ceramic tiles, 300*300 mm | material | 195 |
| Wall Finishes Supply and install plastering to walls | material | 117 |
| Supply and install toilet Accessories | material | 14625 |
| Supply and install MODON logo | material | 19506.5 |
| Square Exhaust Diffuser 6"X6 " | material | 585 |
| Supply, install, test and commission indoor ductwork | material | 48.75 |
| Door Grilles 18"X6 " | material | 975 |
| Supply and install split air conditioning unit (DX-MINI SPLIT UNIT) | material | 14625 |
| Supply, install, test and commission inline exhaust fans duct | material | 3900 |
| PPR Pipe with 65 mm ? Cold water | material | 243.75 |
| PPR Pipe with 50 mm ? Cold water | material | 224.25 |
| PPR Pipe with 40 mm ? Cold water | material | 185.25 |
| PPR Pipe with 32 mm ? Cold water | material | 165.75 |
| PPR Pipe with 25 mm ? Cold water | material | 126.75 |
| PPR Pipe with 20 mm ? Cold water | material | 107.25 |
| PPR Pipe with 20 mm ? Hot water | material | 126.75 |
| SERVICE CONNECTIONS 50 mm | material | 487.5 |
| (2W+1S Pumps) - flow of each pump 5 L/S @ 30 Meters | material | 136500 |
| Hot Press GRP Sectional Panel Water Tanks (4x3x3m) | material | 156000 |
| uPVC Sewer pipes Pipe with ? 4" (110mm) | material | 243.75 |
| uPVC Sewer pipes Pipe Pipe with ? 3" (75mm) | material | 185.25 |
| uPVC Sewer pipes Pipe Pipe with ? 2" (50mm) | material | 126.75 |
| uPVC Sewer pipes Pipe Pipe with ? 1" (25mm) | material | 341.25 |
| galvanized iron vent stack Vent Cap with 3" ? | material | 3412.5 |
| Supply and installation of Floor drain | material | 487.5 |
| FCO 4" ? (110mm) | material | 853.12 |
| FCO 3" ? (75mm) | material | 609.38 |
| Supply, installation,testing and commissioning of Gully Traps | material | 1096.88 |
| Supply and install, PFE-1, Portable dry powder fire extinguisher 4.5 Kg capacity | material | 487.5 |
| Supply and install, PFE-2, Portable Carbon Dioxide fire extinguisher. | material | 1462.5 |
| Analog addressable fire alarm control panel | material | 24375 |
| Intelligent Photoelectric smoke and heat detector with base | material | 536.25 |
| Addressable Manual Pull Station, wall mounted | material | 536.25 |
| Addressable Fire Alarm Strobe with Sounder, wall mounted | material | 975 |
| Addressable Fire Alarm Strobe with Sounder, wall mounted water proof IP66 | material | 1462.5 |
| Recessed mounted LED downlight luminaire 40 watt with reflector; IP44 ,230V , 4000k, 4200 LUMEN ,CRI > 80; Low glare | material | 487.5 |
| LED flood light outdoor type 96 watt, 4000k, 12720 LUMEN | material | 1170 |
| Wall mounted emergency LED luminaire, 230V, 60 Hz., 3 hour back up time 1800 lumen,CRI>80, 2*18 watt, IP 65 | material | 1170 |
| LED Exit light fixture 4.5 watt with battery for 3 hours, and a visibility of 30 meters | material | 975 |
| Wall mounted outdoor LED luminaire, 17 watt, 2000 lumens, with light emission from two sides | material | 1170 |
| Wall mounted outdoor LED luminaire, 13 watt, 1000 LUMEN, CR>80, for roof lighting | material | 688.35 |
| 1 way, One Gang Switch | material | 487.5 |
| 1 way, Two Gang Switch | material | 487.5 |
| 1 way, One Gang Switch, weatherproof | material | 487.5 |
| Exaust fan DP switch weatherproof | material | 487.5 |
| Indoor AC DP switch weatherproof | material | 487.5 |
| High level Single Receptacle outlet | material | 812.17 |
| Duplex Receptacle outlet | material | 1137.83 |
| Hand Dryer switch weatherproof | material | 1137.83 |
| Water heater switch | material | 1137.83 |
| Outdoor Disconnect Switch for air conditioiner | material | 2600.32 |
| Outdoor Disconnect Switch for exhaust fans | material | 2600.32 |
| For Building | material | 24375 |
| Wall telephone outlet | material | 487.5 |
| Wall mounted data outlet | material | 487.5 |
| Telecom/IT rack complete with switch, router and patch Panel | material | 24375 |
| AV floor box outlet (1 HDMI) | material | 1950 |
| AV wall outlet (1 HDMI) | material | 1462.5 |
| Supply, install, testing, and commissioning of ground mounted decorated landscape LED lighting with 6.0m height pole | material | 6288.75 |
| 1 CCTV cabinet (Rack) | material | 4431.38 |
| NVR | material | 13295.1 |
| 21" LED monitor | material | 1329.9 |
| Indoor dome type Camera IP-20 ,IK-10, POE type with infra red feature, minimum coverage 20 meters, ONVIF supported | material | 1560 |
| Outdoor fixed camera weahter proof IP-65, POE type | material | 1950 |
| Pull box for fiber optic cable pulling from provider | material | 1950 |
| Distribution boards, panelboards, lighting installations and wiring accessories | material | 9750 |
| Telecom equipment | material | 9750 |
| KWHM | material | 9750 |
| Supply and install and testing of overflow galvanized steel roof scupper | material | 3900 |
| Wall Finishes Supply and install acrylic paint for external elevations | material | 175.5 |
| Wall Finishes Supply and spray decorative paint ( profile ) for external elevations | material | 1950 |
| Wall Finishes Supply and install 300*300 mm ceramic | material | 136.5 |
| Wall Finishes Supply and install solid phenolic toilets partition board | material | 780 |
| Supply and install curtain wall with structural glass | material | 58500 |
| Floor Finishes Anti-slip granite tiles for entrance | material | 487.5 |
| Floor Finishes Epoxy paint on concrete slab on grade | material | 195 |
| Floor Finishes Anti-slip glazed ceramic skirting tiles 600*100*10 mm | material | 97.5 |
| Tank Slab | material | 2925 |
| Tank foundation | material | 2535 |
| Tank Walls | material | 2730 |
| Wall Finishes Supply and install 12 mm glass partition | material | 1755 |
| Wall Finishes Supply and install granite capping for parapet | material | 214.5 |
| phenolic locker Size 2400*550*2200 mm | material | 9750 |
| phenolic locker Size 3500*550*2200 mm | material | 14625 |
| Supply and install 150 mm uPVC pipes to external wastewater network | material | 853.12 |
| HDPE Pipes pipe line O.D 90 mm PN 10, in depth 0 to 1.5 m | material | 214.5 |
| HDPE Pipes pipe line O.D 50 mm PN 10, in depth 0 to 1.5 m | material | 68.25 |
| HDPE Pipes pipe line O.D 32 mm PN 10, in depth 0 to 1.5 m | material | 48.75 |
| HDPE Pipes pipe line O.D 25 mm PN 10, in depth 0 to 1.5 m | material | 43.88 |
| Electrical Solenoid Valve ( 1") inside PVC box | material | 1950 |
| Gate valve 100 mm PN16 | material | 4875 |
| Gate valve 50 mm PN16 | material | 2437.5 |
| Gate valve 32 mm PN16 | material | 975 |
| Flushing Bronze gate valve dia 1.5" inside PVC box | material | 1462.5 |
| Air release valve 1.5" inside PVC box | material | 1950 |
| Pressureâ€“compensating bubblers 110 Lit/Hr | material | 78 |
| Pressureâ€“ bubblers 60 Lit/Hr | material | 29.25 |
| Pop up sprayer 90?- 210?, Radius 3.0 mtr | material | 39 |
| Pop up sprayer 360?,Radius 3.0 mtr. | material | 39 |
| Wall Finishes Supply and install 2 coats of acrylic paint at internal walls and columns | material | 19.5 |
| Supply, installation, testing and commissioning of Inspection chamber | material | 12187.5 |
| 50 Liter Capacity | material | 1755 |
| Supply and installation of western water closet | material | 2437.5 |
| Supply and installation of western water closet | material | 3412.5 |
| Supply and installation of Bib tap with Perenial Hose (BPH) | material | 146.25 |
| Supply, installation, testing and commissioning of Lavatory / wash basin | material | 6337.5 |
| Supply, installation, testing and commissioning of wall hung Lavatory / wash basin | material | 3900 |
| Supply and install Complete stainless steel 316 Handicap Rails Grab Bars | material | 4875 |
| Supply and install roof drain (RD) dome typ | material | 1462.5 |
| Supply and install shower mixer | material | 877.5 |
| Purchaser | labor |  |
| CEILING FINISHES Supply and install 2 coats of acrylic paint at under side slab | material | 117 |
| CEILING FINISHES Supply and install 12.5mm thk, moisture resistant gypsum board suspended ceiling | material | 214.5 |
| CEILING FINISHES Supply and install 12.5mm thk, gypsum board suspended ceiling | material | 195 |
| Main Distribution Board including all related works to install power meter (power meter is excluded) | material | 136500 |
| Power Panel for pump room | material | 29250 |
| Power Panel for street lighting | material | 24375 |
| Supply and install heavy duty ductile iron steel cover | material | 3900 |
| Wall Finishes Supply and install Riyadh stone cladding (300x600mm) | material | 195 |

## Schedule

| ID | WBS | Activity | Type | Duration | Start | Finish | Predecessors | Complete | Planned start | Planned finish | Total float | Free float | Resources | New Activity ID | Old Activity ID - MK | % Variance | Delay | On Schedule | Flag | Moblization | WBS-Project |
| --- | --- | --- | --- | --- | --- | --- | --- | --- | --- | --- | --- | --- | --- | --- | --- | --- | --- | --- | --- | --- | --- |
|  | KEY | **KEY MILESTONES** |  |  | 2026-03-26 | 2027-05-10 |  |  |  |  |  |  |  |  |  |  |  |  |  |  |  |
|  | GEN | **GENERAL MILESTONES** |  |  | 2026-03-26 | 2027-05-10 |  |  |  |  |  |  |  |  |  |  |  |  |  |  |  |
| MLTX-02-004-MS-1010 |  | Project Commencement Date | milestone | 0d | 2026-03-26 A | 2026-03-26 A |  | 100% |  |  |  |  |  | MOD-02-MS-1010 | MAK-01-MS-1000 | 0 | 0 | 0 |  |  |  |
| MLTX-02-004-MS-1030 |  | Project Completion | milestone | 0d | 2027-05-10 | 2027-05-10 | MLTX-02-004-CN-12040 FF, MLTX-02-004-CN-12480 FF, MLTX-02-004-CN-13470 FF, MLTX-02-004-CN-13910 FF, MLTX-02-004-MS-1160 FF, MLTX-02-004-MS-1170 FF, MLTX-02-004-MS-1180 FF, MLTX-02-004-MS-1140 FF, MLTX-02-004-CO-12110 FF, MLTX-02-004-MS-1070 FF, MLTX-02-004-MS-1130 FF, MLTX-02-004-PR-9640 FF, MLTX-02-004-CN-10660 FF, MLTX-02-004-CN-11800 FF, MLTX-02-004-EN-4460 FF, MLTX-02-004-CN-10610 FF, MLTX-02-004-CN-10670 FF |  |  |  | -86d | 0d |  | MOD-02-MS-1030 | MAK-01-MS-1020 | 0 | -38 | 0 |  |  |  |
|  | OVER ALL | **CONTRACTUAL MILESTONE** |  |  | 2026-04-29 | 2027-05-10 |  |  |  |  |  |  |  |  |  |  |  |  |  |  |  |
| MLTX-02-004-MS-1060 |  | Baseline Programme Approval | milestone | 0d | 2026-04-29 A | 2026-04-29 A | MLTX-02-004-MB-2160 FF, MLTX-02-004-MB-1680 FF, MLTX-02-004-MB-1920 FF | 100% |  |  |  |  |  | MOD-02-MS-1060 | A1140 | 0 | -4 | 0 |  |  |  |
| MLTX-02-004-MS-1050 |  | Completion of Mobilization | milestone | 0d | 2026-06-02 A | 2026-06-02 A | MLTX-02-004-MB-1770 FF, MLTX-02-004-MB-1990 FF, MLTX-02-004-MB-1980 FF, MLTX-02-004-MB-2080 FF, MLTX-02-004-MB-2090 FF, MLTX-02-004-MB-2170 FF, MLTX-02-004-MB-2180 FF, MLTX-02-004-MB-2190 FF, MLTX-02-004-MB-2200 FF, MLTX-02-004-MB-2210 FF, MLTX-02-004-MB-2050 FF, MLTX-02-004-MB-2010 FF, MLTX-02-004-MB-1430 FF, MLTX-02-004-MB-1440 FF, MLTX-02-004-MB-1410 FF, MLTX-02-004-MB-1420 FF, MLTX-02-004-MB-1690 FF, MLTX-02-004-MB-1700 FF, MLTX-02-004-MB-1710 FF, MLTX-02-004-MB-1720 FF, MLTX-02-004-MB-1730 FF, MLTX-02-004-MB-1380 FF, MLTX-02-004-MB-1340 FF, MLTX-02-004-MB-1750 FF, MLTX-02-004-MB-1740 FF, MLTX-02-004-MB-1840 FF, MLTX-02-004-MB-1850 FF, MLTX-02-004-MB-1930 FF, MLTX-02-004-MB-1940 FF, MLTX-02-004-MB-1950 FF, MLTX-02-004-MB-1960 FF, MLTX-02-004-MB-1970 FF, MLTX-02-004-MB-1810 FF | 100% |  |  |  |  |  | MOD-02-MS-1050 | A1130 | -100 | -27 | -100 | UDF_G1 |  |  |
| MLTX-02-004-MS-1120 |  | Completion of Levelling Works | milestone | 0d | 2026-11-24 | 2026-11-24 | MLTX-02-004-CN-13360 FF, MLTX-02-004-CN-9980 FF, MLTX-02-004-CN-13860 FF, MLTX-02-004-CN-14740 FF, MLTX-02-004-CN-14750 FF, MLTX-02-004-CN-9980R FF, MLTX-02-004-CN-11930 FF |  |  |  | 54d | 140d |  | MOD-02-MS-1120 | A1180 | 0 | -1.26 | 0 |  |  |  |
| MLTX-02-004-MS-1100 |  | Completion of Engineering | milestone | 0d | 2026-12-05 | 2026-12-05 | MLTX-02-004-EN-1840, MLTX-02-004-EN-2280, MLTX-02-004-EN-2670, MLTX-02-004-EN-3770, MLTX-02-004-EN-4510 FF, MLTX-02-004-EN-11710 FF, MLTX-02-004-EN-11870 FF, MLTX-02-004-EN-11790 FF, MLTX-02-004-EN-8170 FF, MLTX-02-004-EN-11140 FF, MLTX-02-004-EN-15980 FF, MLTX-02-004-EN-16140 FF, MLTX-02-004-EN-16060 FF, MLTX-02-004-EN-12440, MLTX-02-004-EN-15410, MLTX-02-004-EN-3760, MLTX-02-004-EN-16340 FF, MLTX-02-004-EN-2240, MLTX-02-004-EN-2650, MLTX-02-004-EN-3730 FF, MLTX-02-004-EN-11820, MLTX-02-004-EN-11830, MLTX-02-004-EN-11850, MLTX-02-004-EN-11860, MLTX-02-004-EN-11870, MLTX-02-004-EN-11650, MLTX-02-004-EN-11700, MLTX-02-004-EN-11710, MLTX-02-004-EN-11780, MLTX-02-004-EN-11790, MLTX-02-004-EN-11110, MLTX-02-004-EN-11120, MLTX-02-004-EN-11130, MLTX-02-004-EN-11140, MLTX-02-004-EN-15340, MLTX-02-004-EN-15380, MLTX-02-004-EN-15390, MLTX-02-004-EN-15400, MLTX-02-004-EN-15920 FF, MLTX-02-004-EN-15970 FF, MLTX-02-004-EN-16090 FF, MLTX-02-004-EN-16100 FF, MLTX-02-004-EN-16110 FF, MLTX-02-004-EN-16120 FF, MLTX-02-004-EN-16130 FF, MLTX-02-004-EN-16140, MLTX-02-004-EN-16050 FF, MLTX-02-004-EN-12350, MLTX-02-004-EN-12470, MLTX-02-004-EN-12430, MLTX-02-004-EN-15290, MLTX-02-004-EN-15300, MLTX-02-004-EN-15500 FF, MLTX-02-004-EN-15510 FF, MLTX-02-004-EN-15490, MLTX-02-004-EN-15520 FF, MLTX-02-004-EN-15480, MLTX-02-004-EN-14150, MLTX-02-004-EN-14160, MLTX-02-004-EN-14170 |  |  |  | 44d | 17d |  | MOD-02-MS-1100 | A1150 | -100 | -38 | -100 | UDF_G1 |  |  |
| MLTX-02-004-MS-1130 |  | Completion of Toilet Building | milestone | 0d | 2026-12-24 | 2026-12-24 | MLTX-02-004-MS-1100, MLTX-02-004-CN-12670 FF, MLTX-02-004-CN-13040 FF, MLTX-02-004-CN-12990 FF, MLTX-02-004-CN-13060 FF, MLTX-02-004-CN-14140 FF, MLTX-02-004-CN-14100 FF, MLTX-02-004-CN-14470 FF, MLTX-02-004-CN-14420 FF, MLTX-02-004-CN-14490 FF, MLTX-02-004-CN-11780 FF, MLTX-02-004-CN-14250 FF, MLTX-02-004-CN-11120 FF, MLTX-02-004-CN-11130 FF, MLTX-02-004-PR-10340 FF, MLTX-02-004-CN-13240 FF, MLTX-02-004-CN-12820 FF, MLTX-02-004-PR-8170 FF, MLTX-02-004-CN-11840 FF, MLTX-02-004-CN-11170 FF, MLTX-02-004-CN-11220 FF |  |  |  | 27d | 113d |  | MOD-02-MS-1130 |  | 0 | -17 | 0 |  |  |  |
| MLTX-02-004-MS-1150 |  | Completion of Natural Landscape Works | milestone | 0d | 2027-01-23 | 2027-01-23 | MLTX-02-004-CN-13490 FF, MLTX-02-004-CN-10550 FF, MLTX-02-004-CN-10580 FF, MLTX-02-004-CN-12060 FF |  |  |  | -16d | 0d |  | MOD-02-MS-1150 |  | 0 | -38 | 0 |  |  |  |
| MLTX-02-004-MS-1180 |  | Completion of Jeddah Works | milestone | 0d | 2027-02-06 | 2027-02-06 | MLTX-02-004-TC-11940 FF, MLTX-02-004-CN-13550 FF, MLTX-02-004-CN-13910 FF |  |  |  | -10d | 76d |  | MOD-02-MS-1070 | A1200 | 0 | -38 | 0 |  |  |  |
| MLTX-02-004-MS-1160 |  | Completion of Asir Works | milestone | 0d | 2027-02-09 | 2027-02-09 | MLTX-02-004-TC-11880 FF, MLTX-02-004-PR-9640 FF, MLTX-02-004-CN-10660 FF, MLTX-02-004-CN-11800 FF, MLTX-02-004-EN-4460 FF, MLTX-02-004-CN-10610 FF |  |  |  | -13d | 73d |  | MOD-02-MS-1070 | A1200 | 0 | -38 | 0 |  |  |  |
| MLTX-02-004-MS-1070 |  | Completion of Testing & Commissioning | milestone | 0d | 2027-03-16 | 2027-03-16 | MLTX-02-004-TC-11910 FF, MLTX-02-004-TC-11860 FF |  |  |  | -39d | 47d |  | MOD-02-MS-1070 | A1200 | 0 | -38 | 0 |  |  |  |
| MLTX-02-004-MS-1140 |  | Completion of Playground Area | milestone | 0d | 2027-05-01 | 2027-05-01 | MLTX-02-004-CN-12170 FF, MLTX-02-004-CN-11960 FF, MLTX-02-004-CN-13600 FF, MLTX-02-004-CN-13390 FF, MLTX-02-004-CN-10140 FF, MLTX-02-004-CN-10280, MLTX-02-004-CN-12270 FF, MLTX-02-004-CN-13700 FF |  |  |  | -78d | 8d |  | MOD-02-MS-1140 |  | 0 | -38 | 0 |  |  |  |
| MLTX-02-004-MS-1170 |  | Completion of Jazan Works | milestone | 0d | 2027-05-10 | 2027-05-10 | MLTX-02-004-CN-12270 FF, MLTX-02-004-CN-12480 FF |  |  |  | -86d | 0d |  | MOD-02-MS-1070 | A1200 | 0 | -38 | 0 |  |  |  |
|  | 3 | **JEDDAH** |  |  | 2026-03-26 | 2027-04-21 |  |  |  |  |  |  |  |  |  |  |  |  |  |  |  |
|  | MOB | **MOBILIZATION** |  |  | 2026-03-26 | 2026-06-10 |  |  |  |  |  |  |  |  |  |  |  |  |  |  |  |
|  | SURV | **TOPOGRAPHIC SURVEY** |  |  | 2026-03-26 | 2026-03-30 |  |  |  |  |  |  |  |  |  |  |  |  |  |  |  |
| MLTX-02-004-MB-2100 |  | Site Survey Works |  | 4d | 2026-03-26 A | 2026-03-30 A | MLTX-02-004-MS-1010 SS | 100% |  |  |  |  | QA/QC Engineer [60 h] | MOD-02-MB-1320 | MAK-01-TPS-1000 | 0 | 0 | 0 |  | JAD | Mob |
|  | OFFICE | **SITE FACILITIES & OFFICES** |  |  | 2026-03-26 | 2026-06-02 |  |  |  |  |  |  |  |  |  |  |  |  |  |  |  |
| MLTX-02-004-MB-2010 |  | Site Layout Plan |  | 4d | 2026-03-26 A | 2026-03-30 A | MLTX-02-004-MS-1010 SS | 100% |  |  |  |  | Labor [230 h] | MOD-02-MB-1340 | MAK-01-MOB-1000 | 0 | 0 | 0 |  | JAD | Mob |
| MLTX-02-004-MB-2020 |  | Clear & Grub for Offices & Access Road |  | 5d | 2026-04-07 A | 2026-04-12 A | MLTX-02-004-MB-2010 | 100% |  |  |  |  | Labor [200 h] | MOD-02-MB-1350 | MAK-01-MOB-1010 | 0 | -8 | 0 |  | JAD | Mob |
| MLTX-02-004-MB-2070 |  | Install Site Facilities |  | 28.72d | 2026-04-08 A | 2026-05-11 A | MLTX-02-004-MB-2040 | 100% |  |  |  |  | Labor [300 h] | MOD-02-MB-1400 | MAK-01-MOB-1060 | 0 | -21.72 | 0 |  | JAD | Mob |
| MLTX-02-004-MB-2030 |  | Construct Site Access Roads |  | 2d | 2026-04-10 A | 2026-04-12 A | MLTX-02-004-MB-2010 | 100% | 2026-04-11 | 2026-04-12 |  |  | Labor [200 h] | MOD-02-MB-1360 | MAK-01-MOB-1020 | 0 | -7 | 0 |  | JAD | Mob |
| MLTX-02-004-MB-2090 |  | Construct Parking Sheds |  | 6d | 2026-04-12 A | 2026-04-18 A | MLTX-02-004-MB-2040 | 100% |  |  |  |  | Labor [300 h] | MOD-02-MB-1420 | MAK-01-MOB-1080 | 0 | 0 | 0 |  | JAD | Mob |
| MLTX-02-004-MB-1990 |  | Equipment Mobalization |  | 1.4d | 2026-04-14 A | 2026-04-15 A | MLTX-02-004-MB-2060 | 100% |  |  |  |  | Labor [282.9 h] | MOD-02-MB-1430 | MAK-01-MOB-1100 | 0 | 5.6 | 0 |  | JAD | Mob |
| MLTX-02-004-MB-2040 |  | Construct Temporary Fence |  | 39.75d | 2026-04-14 A | 2026-06-02 A | MLTX-02-004-MB-2020 | 100% |  |  |  |  | Labor [200 h] | MOD-02-MB-1370 | MAK-01-MOB-1030 | -25 | -29.75 | -25 | UDF_G1 | JAD | Mob |
| MLTX-02-004-MB-2050 |  | Construct Site Offices & Storage |  | 23.33d | 2026-04-15 A | 2026-05-12 A | MLTX-02-004-MB-2030 | 100% |  |  |  |  | Labor [200 h] | MOD-02-MB-1380 | MAK-01-MOB-1040 | 0 | -18.33 | 0 |  | JAD | Mob |
| MLTX-02-004-MB-2080 |  | Electrical Works & Connections |  | 23.4d | 2026-04-15 A | 2026-05-12 A | MLTX-02-004-MB-2040 | 100% |  |  |  |  | Labor [300 h] | MOD-02-MB-1410 | MAK-01-MOB-1070 | 0 | -20.4 | 0 |  | JAD | Mob |
| MLTX-02-004-MB-1980 |  | Manpower Mobalization |  | 31.5d | 2026-04-16 A | 2026-05-23 A | MLTX-02-004-MB-2070 | 100% |  |  |  |  | Labor [250 h] | MOD-02-MB-1440 | MAK-01-MOB-1090 | -10 | -19.5 | -10 | UDF_G1 | JAD | Mob |
| MLTX-02-004-MB-2060 |  | Install Project Signs |  | 4.6d | 2026-04-26 A | 2026-04-30 A | MLTX-02-004-MB-2030 | 100% |  |  |  |  | Labor [200 h] | MOD-02-MB-1390 | MAK-01-MOB-1050 | 0 | -14.6 | 0 |  | JAD | Mob |

| ID | WBS | Activity | Duration | Start | Finish | Predecessors | Complete | Resources | New Activity ID | Old Activity ID - MK | % Variance | Delay | On Schedule | Moblization | WBS-Project | Flag | Shop Drawings | Engineering |
| --- | --- | --- | --- | --- | --- | --- | --- | --- | --- | --- | --- | --- | --- | --- | --- | --- | --- | --- |
|  | PRELI | **PRELIMINARY SUBMITTALS** |  | 2026-03-31 | 2026-06-10 |  |  |  |  |  |  |  |  |  |  |  |  |  |
|  | P&S | **PREPARATIONS & SUBMITTAL BY CONTRACTORS** |  | 2026-03-31 | 2026-04-30 |  |  |  |  |  |  |  |  |  |  |  |  |  |
| MLTX-02-004-MB-2000 |  | Preparation and Submittal of Detailed Work Order Programme (Baseline) | 25d | 2026-03-31 A | 2026-04-28 A | MLTX-02-004-MB-2010 | 100% | QA/QC Engineer [150 h] | MOD-02-MB-1540 | MAK-01-PS-1070 | 0 | -15 | 0 | JAD | Mob |  |  |  |
| MLTX-02-004-MB-2110 |  | Preparation and Submittal of Project Execution Plan | 27d | 2026-03-31 A | 2026-04-30 A | MLTX-02-004-MB-2010 | 100% | QA/QC Engineer [120 h] | MOD-02-MB-1550 | MAK-01-PS-1080 | 0 | -19 | 0 | JAD | Mob |  |  |  |
| MLTX-02-004-MB-2120 |  | Submission of Contractor Project Quality Plan | 10d | 2026-03-31 A | 2026-04-11 A | MLTX-02-004-MB-2010 | 100% | QA/QC Engineer [120 h] | MOD-02-MB-1560 | MAK-01-PS-1090 | 0 | -2 | 0 | JAD | Mob |  |  |  |
| MLTX-02-004-MB-2130 |  | Submission of Construction Safety & Environmental Management Plan | 10d | 2026-03-31 A | 2026-04-11 A | MLTX-02-004-MB-2010 | 100% | QA/QC Engineer [120 h] | MOD-02-MB-1570 | MAK-01-PS-1100 | 0 | -2 | 0 | JAD | Mob |  |  |  |
| MLTX-02-004-MB-2140 |  | Preparation and Submittal of Organization Chart | 8d | 2026-03-31 A | 2026-04-08 A | MLTX-02-004-MB-2010 | 100% | QA/QC Engineer [120 h] | MOD-02-MB-1580 | MAK-01-PS-1110 | 0 | 0 | 0 | JAD | Mob |  |  |  |
| MLTX-02-004-MB-2150 |  | Preparation and Submittal of Communication Plan | 8d | 2026-03-31 A | 2026-04-08 A | MLTX-02-004-MB-2010 | 100% | QA/QC Engineer [120 h] | MOD-02-MB-1590 | MAK-01-PS-1120 | 0 | 0 | 0 | JAD | Mob |  |  |  |
|  | APP | **APPROVALS BY EMPLOYERS** |  | 2026-04-09 | 2026-06-10 |  |  |  |  |  |  |  |  |  |  |  |  |  |
| MLTX-02-004-MB-2180 |  | Approval of Contractor Project Quality Plan | 19d | 2026-04-09 A | 2026-04-30 A | MLTX-02-004-MB-2120 | 100% | Consultant Staff [120 h] | MOD-02-MB-1700 | MAK-01-PS-1220 | 0 | -9 | 0 | JAD | Mob |  |  |  |
| MLTX-02-004-MB-2200 |  | Approval of Organization Chart | 10d | 2026-04-09 A | 2026-04-20 A | MLTX-02-004-MB-2140 | 100% | Consultant Staff [120 h] | MOD-02-MB-1720 | MAK-01-PS-1240 | 0 | 0 | 0 | JAD | Mob |  |  |  |
| MLTX-02-004-MB-2210 |  | Approval of Communication Plan | 10d | 2026-04-09 A | 2026-04-20 A | MLTX-02-004-MB-2150 | 100% | Consultant Staff [120 h] | MOD-02-MB-1730 | MAK-01-PS-1250 | 0 | 0 | 0 | JAD | Mob |  |  |  |
| MLTX-02-004-MB-2160 |  | Approval of Detailed Work Order Programme (Baseline) | 1d | 2026-04-29 A | 2026-04-29 A | MLTX-02-004-MB-2000 | 100% | Consultant Staff [120 h] | MOD-02-MB-1680 | MAK-01-PS-1200 | 0 | -6 | 0 | JAD | Mob |  |  |  |
| MLTX-02-004-MB-2170 |  | Approval of Project Execution Plan | 1d | 2026-05-13 A | 2026-05-13 A | MLTX-02-004-MB-2110 | 100% | Consultant Staff [120 h] | MOD-02-MB-1690 | MAK-01-PS-1210 | 0 | -20 | 0 | JAD | Mob |  |  |  |
| MLTX-02-004-MB-2190 |  | Approval of Construction Safety & Environmental Management Plan | 1d | 2026-06-10 A | 2026-06-10 A | MLTX-02-004-MB-2130 | 100% | Consultant Staff [120 h] | MOD-02-MB-1710 | MAK-01-PS-1230 | -100 | -30 | -100 | JAD | Mob | UDF_G1 |  |  |
|  | ENGG | **ENGINEERING** |  | 2026-03-31 | 2026-12-05 |  |  |  |  |  |  |  |  |  |  |  |  |  |
|  | SD | **SHOP DRAWINGS** |  | 2026-03-31 | 2026-08-26 |  |  |  |  |  |  |  |  |  |  |  |  |  |
|  | SUB | **SHOP DRAWINGS SUBMISSION** |  | 2026-03-31 | 2026-08-25 |  |  |  |  |  |  |  |  |  |  |  |  |  |
|  | 2 | **SHOP DRAWING SUBMITTALS FOR EARTHING WORKS** |  | 2026-03-31 | 2026-06-09 |  |  |  |  |  |  |  |  |  |  |  |  |  |
| MLTX-02-004-EN-12100 |  | Shop DWG Submittal for Layout Plan | 20d | 2026-03-31 A | 2026-04-22 A | MLTX-02-004-MB-2100 | 100% | Draftsman [18 h] | MOD-02-EN-1790 | MAK-01-EN-1010 | 0 | -14 | 0 |  | Engi |  | ER | JEDENG |
| MLTX-02-004-EN-12110 |  | Shop DWG Submittal for Setting Out | 22d | 2026-03-31 A | 2026-04-25 A | MLTX-02-004-MB-2100 | 100% | Draftsman [17.8 h] | MOD-02-EN-1800 | MAK-01-EN-1030 | 0 | -16 | 0 |  | Engi |  | ER | JEDENG |
| MLTX-02-004-EN-12120 |  | Shop DWG Submittal for Grading Layout Plan | 23d | 2026-03-31 A | 2026-04-26 A | MLTX-02-004-EN-15540 | 100% | Draftsman [16.1 h] | MOD-02-EN-1810 | MAK-01-EN-1050 | 0 | -17 | 0 |  | Engi |  | ER | JEDENG |
| MLTX-02-004-EN-12130 |  | Shop DWG Submittal for Curb Setting Out Points | 1d | 2026-05-21 A | 2026-05-21 A | MLTX-02-004-MB-2100 | 100% | Draftsman [16.1 h] | MOD-02-EN-1820 | MAK-01-EN-1060 | -100 | -38 | -100 |  | Engi | UDF_G1 | ER | JEDENG |
| MLTX-02-004-EN-12150 |  | Shop DWG Submittal for Standards Details | 1d | 2026-05-21 A | 2026-05-21 A | MLTX-02-004-MB-2100 | 100% | Draftsman [16.1 h] | MOD-02-EN-1840 | MAK-01-EN-1080 | -100 | -38 | -100 |  | Engi | UDF_G1 | ER | JEDENG |
| MLTX-02-004-EN-12140 |  | Shop DWG Submittal for Signing & Marking Layout Plan | 1d | 2026-06-09 A | 2026-06-09 A | MLTX-02-004-MB-2100 | 100% | Draftsman [16.1 h] | MOD-02-EN-1830 | MAK-01-EN-1070 | -100 | -38 | -100 |  | Engi | UDF_G1 | ER | JEDENG |

| ID | WBS | Activity | Duration | Start | Finish | Predecessors | Complete | Resources | New Activity Code | New Activity ID | % Variance | Delay | On Schedule | Shop Drawings | Engineering | WBS-Project | Flag |
| --- | --- | --- | --- | --- | --- | --- | --- | --- | --- | --- | --- | --- | --- | --- | --- | --- | --- |
|  | ROAD | **SHOP DRAWING SUBMITTALS FOR SERVICE/TOILET WORKS** |  | 2026-03-31 | 2026-08-25 |  |  |  |  |  |  |  |  |  |  |  |  |
|  | 2 | **ARCHITECTURE WORKS** |  | 2026-03-31 | 2026-04-13 |  |  |  |  |  |  |  |  |  |  |  |  |
| MLTX-02-004-EN-12480 |  | Shop DWG Submittal for Floor Plan | 12d | 2026-03-31 A | 2026-04-13 A | MLTX-02-004-EN-12100 SS, MLTX-02-004-EN-12110 SS | 100% | Draftsman [16.1 h] | EN.MB.SD.AR.PR.1110 | MOD-02-EN-1870 | 0 | -5 | 0 | TO | JEDENG | Engi |  |
| MLTX-02-004-EN-12490 |  | Shop DWG Submittal for Elevations | 12d | 2026-03-31 A | 2026-04-13 A | MLTX-02-004-EN-12480 SS | 100% | Draftsman [16.1 h] | EN.MB.SD.AR.PR.1140 | MOD-02-EN-1880 | 0 | -5 | 0 | TO | JEDENG | Engi |  |
| MLTX-02-004-EN-12500 |  | Shop DWG Submittal for Sections | 12d | 2026-03-31 A | 2026-04-13 A | MLTX-02-004-EN-12490 SS, MLTX-02-004-EN-12120 SS | 100% | Draftsman [16.1 h] | EN.MB.SD.AR.PR.1150 | MOD-02-EN-1890 | 0 | -5 | 0 | TO | JEDENG | Engi |  |
| MLTX-02-004-EN-12510 |  | Shop DWG Submittal for Ceiling Plan | 12d | 2026-03-31 A | 2026-04-13 A | MLTX-02-004-EN-12500 SS | 100% | Draftsman [16.1 h] | EN.MB.SD.AR.PR.1160 | MOD-02-EN-1900 | 0 | -5 | 0 | TO | JEDENG | Engi |  |
| MLTX-02-004-EN-12520 |  | Shop DWG Submittal for Finishes Plan | 12d | 2026-03-31 A | 2026-04-13 A | MLTX-02-004-EN-12510 SS, MLTX-02-004-EN-15570 | 100% | Draftsman [16.1 h] | EN.MB.SD.AR.PR.1190 | MOD-02-EN-1910 | 0 | -5 | 0 | TO | JEDENG | Engi |  |
| MLTX-02-004-EN-12530 |  | Shop DWG Submittal for Toilet Details | 12d | 2026-03-31 A | 2026-04-13 A | MLTX-02-004-EN-12520 SS | 100% | Draftsman [16.1 h] | EN.MB.SD.AR.PR.1210 | MOD-02-EN-1920 | 0 | -5 | 0 | TO | JEDENG | Engi |  |
| MLTX-02-004-EN-12540 |  | Shop DWG Submittal for Doors/Windows Schedule | 12d | 2026-03-31 A | 2026-04-13 A | MLTX-02-004-EN-12530 SS | 100% | Draftsman [16.1 h] | EN.MB.SD.AR.PR.1220 | MOD-02-EN-1930 | 0 | -5 | 0 | TO | JEDENG | Engi |  |
|  | 1 | **STRUCTURE WORKS** |  | 2026-04-08 | 2026-04-18 |  |  |  |  |  |  |  |  |  |  |  |  |
| MLTX-02-004-EN-12550 |  | Shop DWG Submittal for Foundation Plan | 9d | 2026-04-08 A | 2026-04-18 A | MLTX-02-004-EN-12540, MLTX-02-004-EN-15580 | 100% | Draftsman [16.1 h] | EN.MB.SD.CV.PR.1460 | MOD-02-EN-1950 | 0 | -3 | 0 | TO | JEDENG | Engi |  |
| MLTX-02-004-EN-12560 |  | Shop DWG Submittal for Ground Floor Framing Plan | 9d | 2026-04-08 A | 2026-04-18 A | MLTX-02-004-EN-12550 SS | 100% | Draftsman [16.1 h] | EN.MB.SD.CV.PR.1480 | MOD-02-EN-1960 | 0 | -3 | 0 | TO | JEDENG | Engi |  |
| MLTX-02-004-EN-12570 |  | Shop DWG Submittal for Sections/Details | 9d | 2026-04-08 A | 2026-04-18 A | MLTX-02-004-EN-12540 | 100% | Draftsman [16.1 h] | EN.MB.SD.CV.PR.1530 | MOD-02-EN-1970 | 0 | -3 | 0 | TO | JEDENG | Engi |  |
|  | 3 | **MECHANCAL WORKS** |  | 2026-04-08 | 2026-05-21 |  |  |  |  |  |  |  |  |  |  |  |  |
| MLTX-02-004-EN-12580 |  | Shop DWG Submittal for HVAC Plan | 6d | 2026-04-08 A | 2026-04-14 A | MLTX-02-004-EN-12540, MLTX-02-004-EN-15550 | 100% | Draftsman [16.1 h] | EN.MB.SD.MC.PR.1740 | MOD-02-EN-1990 | 0 | 0 | 0 | TO | JEDENG | Engi |  |
| MLTX-02-004-EN-12590 |  | Shop DWG Submittal for Exhaust Air Plan | 6d | 2026-04-08 A | 2026-04-14 A | MLTX-02-004-EN-12540 | 100% | Draftsman [16.1 h] | EN.MB.SD.MC.PR.1750 | MOD-02-EN-2000 | 0 | 0 | 0 | TO | JEDENG | Engi |  |
| MLTX-02-004-EN-12600 |  | Shop DWG Submittal for HVAC Equipment Schedule | 6d | 2026-04-08 A | 2026-04-14 A | MLTX-02-004-EN-12540 | 100% | Draftsman [16.1 h] | EN.MB.SD.MC.PR.1770 | MOD-02-EN-2010 | 0 | 0 | 0 | TO | JEDENG | Engi |  |
| MLTX-02-004-EN-12610 |  | Shop DWG Submittal for Fire Fighting Layout | 6d | 2026-04-08 A | 2026-04-14 A | MLTX-02-004-EN-12540 | 100% | Draftsman [16.1 h] | EN.MB.SD.MC.PR.1780 | MOD-02-EN-2060 | 0 | 0 | 0 | TO | JEDENG | Engi |  |
| MLTX-02-004-EN-12630 |  | Shop DWG Submittal for Water Supply Details | 6d | 2026-04-08 A | 2026-04-14 A | MLTX-02-004-EN-12540 | 100% | Draftsman [16.1 h] | EN.MB.SD.MC.PR.1800 | MOD-02-EN-2080 | 0 | 0 | 0 | TO | JEDENG | Engi |  |
| MLTX-02-004-EN-12640 |  | Shop DWG Submittal for Drainage Layout | 6d | 2026-04-08 A | 2026-04-14 A | MLTX-02-004-EN-12540 | 100% | Draftsman [16.1 h] | EN.MB.SD.MC.PR.1710 | MOD-02-EN-2020 | 0 | 0 | 0 | TO | JEDENG | Engi |  |
| MLTX-02-004-EN-12620 |  | Shop DWG Submittal for Water Supply Layout | 1d | 2026-05-06 A | 2026-05-06 A | MLTX-02-004-EN-12540 | 100% | Draftsman [16.1 h] | EN.MB.SD.MC.PR.1790 | MOD-02-EN-2070 | 0 | -19 | 0 | TO | JEDENG | Engi |  |
| MLTX-02-004-EN-13190 |  | Shop DWG Submittal for Dut Routing Layout | 1d | 2026-05-06 A | 2026-05-06 A | MLTX-02-004-EN-12540 | 100% | Draftsman [16.1 h] | EN.MB.SD.MC.PR.1770 | MOD-02-EN-2040 | 0 | -19 | 0 | TO | JEDENG | Engi |  |
| MLTX-02-004-EN-12650 |  | Shop DWG Submittal for Drainage Details | 1d | 2026-05-21 A | 2026-05-21 A | MLTX-02-004-EN-12540 | 100% | Draftsman [16.1 h] | EN.MB.SD.MC.PR.1720 | MOD-02-EN-2030 | -100 | -31 | -100 | TO | JEDENG | Engi | UDF_G1 |
| MLTX-02-004-EN-13200 |  | Shop DWG Submittal for Diffusers Layout | 1d | 2026-05-21 A | 2026-05-21 A | MLTX-02-004-EN-12540 | 100% | Draftsman [16.1 h] | EN.MB.SD.MC.PR.1770 | MOD-02-EN-2050 | -100 | -31 | -100 | TO | JEDENG | Engi | UDF_G1 |

| ID | WBS | Activity | Duration | Start | Finish | Predecessors | Complete | Planned start | Planned finish | Resources | New Activity Code | New Activity ID | % Variance | Delay | On Schedule | Shop Drawings | Engineering | WBS-Project | Flag |
| --- | --- | --- | --- | --- | --- | --- | --- | --- | --- | --- | --- | --- | --- | --- | --- | --- | --- | --- | --- |
|  | 4 | **ELECTRICAL WORKS** |  | 2026-04-08 | 2026-08-25 |  |  |  |  |  |  |  |  |  |  |  |  |  |  |
| MLTX-02-004-EN-12660 |  | Shop DWG Submittal for Lighting Layout | 6d | 2026-04-08 A | 2026-04-14 A | MLTX-02-004-EN-12540 | 100% |  |  | Draftsman [16.1 h] | EN.MB.SD.EL.PR.1980 | MOD-02-EN-2100 | 0 | 0 | 0 | TO | JEDENG | Engi |  |
| MLTX-02-004-EN-12670 |  | Shop DWG Submittal for Power Layout | 6d | 2026-04-08 A | 2026-04-14 A | MLTX-02-004-EN-12540 | 100% |  |  | Draftsman [16.1 h] | EN.MB.SD.EL.PR.2000 | MOD-02-EN-2110 | 0 | 0 | 0 | TO | JEDENG | Engi |  |
| MLTX-02-004-EN-12700 |  | Shop DWG Submittal for Lighting Installation Details | 6d | 2026-04-08 A | 2026-04-14 A | MLTX-02-004-EN-12710 SS | 100% |  |  | Draftsman [16.1 h] | EN.MB.SD.EL.PR.2040 | MOD-02-EN-2140 | 0 | 0 | 0 | TO | JEDENG | Engi |  |
| MLTX-02-004-EN-12710 |  | Shop DWG Submittal for Power Installation Details | 6d | 2026-04-08 A | 2026-04-14 A | MLTX-02-004-EN-12690 SS | 100% |  |  | Draftsman [16.1 h] | EN.MB.SD.EL.PR.2050 | MOD-02-EN-2150 | 0 | 0 | 0 | TO | JEDENG | Engi |  |
| MLTX-02-004-EN-12750 |  | Shop DWG Submittal for Lightning Protection Details | 6d | 2026-04-08 A | 2026-04-14 A | MLTX-02-004-EN-12740 SS | 100% |  |  | Draftsman [16.1 h] | EN.MB.SD.EL.PR.2110 | MOD-02-EN-2210 | 0 | 0 | 0 | TO | JEDENG | Engi |  |
| MLTX-02-004-EN-12760 |  | Shop DWG Submittal for Fire Alarm Installation Details | 11d | 2026-04-08 A | 2026-04-20 A | MLTX-02-004-EN-12750 SS | 100% |  |  | Draftsman [16.1 h] | EN.MB.SD.EL.PR.2090 | MOD-02-EN-2190 | 0 | -5 | 0 | TO | JEDENG | Engi |  |
| MLTX-02-004-EN-12790 |  | Shop DWG Submittal for Lightning Protection System Layout | 6d | 2026-04-08 A | 2026-04-14 A | MLTX-02-004-EN-12780 SS | 100% |  |  | Draftsman [16.1 h] | EN.MB.SD.EL.PR.2120 | MOD-02-EN-2220 | 0 | 0 | 0 | TO | JEDENG | Engi |  |
| MLTX-02-004-EN-12800 |  | Shop DWG Submittal for Fire Alarm Layout | 11d | 2026-04-08 A | 2026-04-20 A | MLTX-02-004-EN-12790 SS | 100% |  |  | Draftsman [16.1 h] | EN.MB.SD.EL.PR.2100 | MOD-02-EN-2200 | 0 | -5 | 0 | TO | JEDENG | Engi |  |
| MLTX-02-004-EN-12810 |  | Shop DWG Submittal for Fire Alarm Riser Diagram | 11d | 2026-04-08 A | 2026-04-20 A | MLTX-02-004-EN-12800 SS | 100% |  |  | Draftsman [16.1 h] | EN.MB.SD.EL.PR.2130 | MOD-02-EN-2230 | 0 | -5 | 0 | TO | JEDENG | Engi |  |
| MLTX-02-004-EN-12840 |  | Shop DWG Submittal for Telephone & Data Layout | 11d | 2026-04-08 A | 2026-04-20 A | MLTX-02-004-MS-1010 SS | 100% |  |  | Draftsman [16.1 h] | EN.MB.SD.EL.PR.2160 | MOD-02-EN-2260 | 0 | -5 | 0 | TO | JEDENG | Engi |  |
| MLTX-02-004-EN-12850 |  | Shop DWG Submittal for Telephone & Data Riser Diagram | 11d | 2026-04-08 A | 2026-04-20 A | MLTX-02-004-EN-12840 SS, MLTX-02-004-EN-12540 | 100% |  |  | Draftsman [16.1 h] | EN.MB.SD.EL.PR.2190 | MOD-02-EN-2290 | 0 | -5 | 0 | TO | JEDENG | Engi |  |
| MLTX-02-004-EN-12680 |  | Shop DWG Submittal for Power Single Line Diagram | 1d | 2026-05-06 A | 2026-05-06 A | MLTX-02-004-EN-12540 | 100% |  |  | Draftsman [16.1 h] | EN.MB.SD.EL.PR.2020 | MOD-02-EN-2120 | 0 | -19 | 0 | TO | JEDENG | Engi |  |
| MLTX-02-004-EN-12690 |  | Shop DWG Submittal for Panel Board Schedules | 1d | 2026-05-06 A | 2026-05-06 A | MLTX-02-004-EN-12540 | 100% |  |  | Draftsman [16.1 h] | EN.MB.SD.EL.PR.2030 | MOD-02-EN-2130 | 0 | -19 | 0 | TO | JEDENG | Engi |  |
| MLTX-02-004-EN-12720 |  | Shop DWG Submittal for Cable Tray Installation Details | 1d | 2026-05-06 A | 2026-05-06 A | MLTX-02-004-EN-12710 SS, MLTX-02-004-EN-15560 | 100% |  |  | Draftsman [16.1 h] | EN.MB.SD.EL.PR.2060 | MOD-02-EN-2160 | 0 | -19 | 0 | TO | JEDENG | Engi |  |
| MLTX-02-004-EN-12730 |  | Shop DWG Submittal for Manhole & Ductbank Details | 1d | 2026-05-06 A | 2026-05-06 A | MLTX-02-004-EN-12720 SS | 100% |  |  | Draftsman [16.1 h] | EN.MB.SD.EL.PR.2070 | MOD-02-EN-2170 | 0 | -19 | 0 | TO | JEDENG | Engi |  |
| MLTX-02-004-EN-12740 |  | Shop DWG Submittal for Grounding Details | 1d | 2026-05-06 A | 2026-05-06 A | MLTX-02-004-EN-12730 SS | 100% |  |  | Draftsman [16.1 h] | EN.MB.SD.EL.PR.2080 | MOD-02-EN-2180 | 0 | -19 | 0 | TO | JEDENG | Engi |  |
| MLTX-02-004-EN-12780 |  | Shop DWG Submittal for Grounding Layout | 1d | 2026-05-06 A | 2026-05-06 A | MLTX-02-004-EN-15530 | 100% |  |  | Draftsman [16.1 h] | EN.MB.SD.EL.PR.2170 | MOD-02-EN-2270 | 0 | -19 | 0 | TO | JEDENG | Engi |  |
| MLTX-02-004-EN-12770 |  | Shop DWG Submittal for CCTV Details | 3d | 2026-08-25 A | 2026-08-25 A | MLTX-02-004-EN-12760 SS, MLTX-02-004-EN-12980 | 100% | 2026-09-06 | 2026-09-08 | Draftsman [16.1 h] | EN.MB.SD.EL.PR.2140 | MOD-02-EN-2240 | -100 | -31 | -100 | TO | JEDENG | Engi | UDF_G1 |
| MLTX-02-004-EN-12820 |  | Shop DWG Submittal for CCTV Layout | 5d | 2026-08-25 A | 2026-08-25 A | MLTX-02-004-EN-12810 SS | 100% | 2026-09-01 | 2026-09-06 | Draftsman [16.1 h] | EN.MB.SD.EL.PR.2150 | MOD-02-EN-2250 | -100 | -31 | -100 | TO | JEDENG | Engi | UDF_G1 |
| MLTX-02-004-EN-12830 |  | Shop DWG Submittal for CCTV Riser Diagram | 5d | 2026-08-25 A | 2026-08-25 A | MLTX-02-004-EN-12820 SS | 100% | 2026-09-01 | 2026-09-06 | Draftsman [16.1 h] | EN.MB.SD.EL.PR.2180 | MOD-02-EN-2280 | -100 | -31 | -100 | TO | JEDENG | Engi | UDF_G1 |
|  | ELE | **SHOP DRAWINGS SUBMITTALS FOR PLAYGROUND WORKS** |  | 2026-03-31 | 2026-08-25 |  |  |  |  |  |  |  |  |  |  |  |  |  |  |
|  | 3 | **ARCHITECTURE WORKS** |  | 2026-03-31 | 2026-05-14 |  |  |  |  |  |  |  |  |  |  |  |  |  |  |
| MLTX-02-004-EN-13050 |  | Shop DWG Submittal for Playground Plan/Layout | 16d | 2026-03-31 A | 2026-04-18 A | MLTX-02-004-MB-2100 | 100% |  |  | Draftsman [16.1 h] | EN.MB.SD.AR.PR.1110 | MOD-02-EN-2320 | 0 | -9 | 0 | PL | JEDENG | Engi |  |
| MLTX-02-004-EN-13070 |  | Shop DWG Submittal for Sections | 16d | 2026-03-31 A | 2026-04-18 A | MLTX-02-004-EN-13060 SS | 100% |  |  | Draftsman [16.1 h] | EN.MB.SD.AR.PR.1150 | MOD-02-EN-2340 | 0 | -9 | 0 | PL | JEDENG | Engi |  |
| MLTX-02-004-EN-13080 |  | Shop DWG Submittal for Interlock Pattern Plan | 7d | 2026-03-31 A | 2026-04-07 A | MLTX-02-004-EN-13070 SS | 100% |  |  | Draftsman [16.1 h] | EN.MB.SD.AR.PR.1190 | MOD-02-EN-2350 | 0 | 0 | 0 | PL | JEDENG | Engi |  |
| MLTX-02-004-EN-13060 |  | Shop DWG Submittal for Furniture & Marking | 2d | 2026-05-13 A | 2026-05-14 A | MLTX-02-004-EN-13050 SS | 100% |  |  | Draftsman [16.1 h] | EN.MB.SD.AR.PR.1140 | MOD-02-EN-2330 | 0 | -38 | 0 | PL | JEDENG | Engi | UDF_G1 |
| MLTX-02-004-EN-13090 |  | Shop DWG Submittal for Doors/Windows Schedule | 2d | 2026-05-13 A | 2026-05-14 A | MLTX-02-004-EN-13080 SS | 100% |  |  | Draftsman [16.1 h] | EN.MB.SD.AR.PR.1220 | MOD-02-EN-2360 | 0 | -38 | 0 | PL | JEDENG | Engi | UDF_G1 |
| MLTX-02-004-EN-13120 |  | Shop DWG Submittal for Dome Internal Layout | 2d | 2026-05-13 A | 2026-05-14 A | MLTX-02-004-EN-13090 SS | 100% |  |  | Draftsman [16.1 h] | EN.MB.SD.AR.PR.1110 | MOD-02-EN-2370 | 0 | -38 | 0 | PL | JEDENG | Engi | UDF_G1 |

| ID | WBS | Activity | Duration | Start | Finish | Predecessors | Complete | Planned start | Planned finish | Resources | New Activity Code | New Activity ID | % Variance | Delay | Flag | On Schedule | Shop Drawings | Engineering | WBS-Project |
| --- | --- | --- | --- | --- | --- | --- | --- | --- | --- | --- | --- | --- | --- | --- | --- | --- | --- | --- | --- |
|  | 4 | **STRUCTURE WORKS** |  | 2026-05-13 | 2026-05-14 |  |  |  |  |  |  |  |  |  |  |  |  |  |  |
| MLTX-02-004-EN-13100 |  | Shop DWG Submittal for Air Dome System | 2d | 2026-05-13 A | 2026-05-14 A | MLTX-02-004-EN-13120 | 100% |  |  | Draftsman [16.1 h] | EN.MB.SD.AR.PR.1110 | MOD-02-EN-2390 | 0 | -38 | UDF_G1 | 0 | PL | JEDENG | Engi |
| MLTX-02-004-EN-13110 |  | Shop DWG Submittal for Foundation of Air Dome | 2d | 2026-05-13 A | 2026-05-14 A | MLTX-02-004-EN-13100 SS | 100% |  |  | Draftsman [16.1 h] | EN.MB.SD.AR.PR.1140 | MOD-02-EN-2400 | 0 | -38 | UDF_G1 | 0 | PL | JEDENG | Engi |
| MLTX-02-004-EN-13130 |  | Shop DWG Submittal for Anchor Bolt Layout of Air Dome | 2d | 2026-05-13 A | 2026-05-14 A | MLTX-02-004-EN-13110 SS | 100% |  |  | Draftsman [16.1 h] | EN.MB.SD.AR.PR.1140 | MOD-02-EN-2420 | 0 | -38 | UDF_G1 | 0 | PL | JEDENG | Engi |
|  | 5 | **AIR DOME SYSTEM** |  | 2026-05-13 | 2026-05-14 |  |  |  |  |  |  |  |  |  |  |  |  |  |  |
| MLTX-02-004-EN-13140 |  | Shop DWG Submittal for Air Dome Structural Layout | 2d | 2026-05-13 A | 2026-05-14 A | MLTX-02-004-EN-13130 SS | 100% |  |  | Draftsman [16.1 h] | EN.MB.SD.AR.PR.1110 | MOD-02-EN-2440 | 0 | -38 | UDF_G1 | 0 | PL | JEDENG | Engi |
| MLTX-02-004-EN-13150 |  | Shop DWG Submittal for Membrane Panel Layout | 2d | 2026-05-13 A | 2026-05-14 A | MLTX-02-004-EN-13140 SS | 100% |  |  | Draftsman [16.1 h] | EN.MB.SD.AR.PR.1140 | MOD-02-EN-2450 | 0 | -38 | UDF_G1 | 0 | PL | JEDENG | Engi |
| MLTX-02-004-EN-13160 |  | Shop DWG Submittal for Cable Tension Layout | 2d | 2026-05-13 A | 2026-05-14 A | MLTX-02-004-EN-13150 SS | 100% |  |  | Draftsman [16.1 h] | EN.MB.SD.AR.PR.1150 | MOD-02-EN-2460 | 0 | -38 | UDF_G1 | 0 | PL | JEDENG | Engi |
| MLTX-02-004-EN-13170 |  | Shop DWG Submittal for Airlock Door Details | 2d | 2026-05-13 A | 2026-05-14 A | MLTX-02-004-EN-13160 SS | 100% |  |  | Draftsman [16.1 h] | EN.MB.SD.AR.PR.1140 | MOD-02-EN-2470 | 0 | -38 | UDF_G1 | 0 | PL | JEDENG | Engi |
| MLTX-02-004-EN-13180 |  | Shop DWG Submittal for Emergency Exit Details | 2d | 2026-05-13 A | 2026-05-14 A | MLTX-02-004-EN-13170 SS | 100% |  |  | Draftsman [16.1 h] | EN.MB.SD.AR.PR.1140 | MOD-02-EN-2480 | 0 | -38 | UDF_G1 | 0 | PL | JEDENG | Engi |
|  | 6 | **SPORTS EQUIPMENT** |  | 2026-05-13 | 2026-05-14 |  |  |  |  |  |  |  |  |  |  |  |  |  |  |
| MLTX-02-004-EN-13210 |  | Shop DWG Submittal for Football Turf Installation | 2d | 2026-05-13 A | 2026-05-14 A | MLTX-02-004-EN-13180 SS | 100% |  |  | Draftsman [16.1 h] | EN.MB.SD.EL.PR.2170 | MOD-02-EN-2500 | 0 | -38 | UDF_G1 | 0 | PL | JEDENG | Engi |
| MLTX-02-004-EN-13220 |  | Shop DWG Submittal for Basketball Court Marking | 2d | 2026-05-13 A | 2026-05-14 A | MLTX-02-004-EN-13210 SS | 100% |  |  | Draftsman [16.1 h] | EN.MB.SD.EL.PR.2180 | MOD-02-EN-2510 | 0 | -38 | UDF_G1 | 0 | PL | JEDENG | Engi |
| MLTX-02-004-EN-13230 |  | Shop DWG Submittal for Padel Court Structure | 2d | 2026-05-13 A | 2026-05-14 A | MLTX-02-004-EN-13220 SS | 100% |  |  | Draftsman [16.1 h] | EN.MB.SD.EL.PR.2160 | MOD-02-EN-2520 | 0 | -38 | UDF_G1 | 0 | PL | JEDENG | Engi |
|  | 1 | **MECHANCAL WORKS** |  | 2026-04-08 | 2026-04-30 |  |  |  |  |  |  |  |  |  |  |  |  |  |  |
| MLTX-02-004-EN-13030 |  | Shop DWG Submittal for HVAC Plan | 20d | 2026-04-08 A | 2026-04-30 A | MLTX-02-004-EN-13230 SS | 100% |  |  | Draftsman [16.1 h] | EN.MB.SD.MC.PR.1740 | MOD-02-EN-2540 | 0 | -14 |  | 0 | PL | JEDENG | Engi |
| MLTX-02-004-EN-13040 |  | Shop DWG Submittal for Exhaust Air Plan | 20d | 2026-04-08 A | 2026-04-30 A | MLTX-02-004-EN-13030 SS | 100% |  |  | Draftsman [16.1 h] | EN.MB.SD.MC.PR.1750 | MOD-02-EN-2550 | 0 | -14 |  | 0 | PL | JEDENG | Engi |
|  | 2 | **ELECTRICAL WORKS** |  | 2026-05-20 | 2026-08-25 |  |  |  |  |  |  |  |  |  |  |  |  |  |  |
| MLTX-02-004-EN-12920 |  | Shop DWG Submittal for Lighting Layout | 1d | 2026-05-20 A | 2026-05-20 A | MLTX-02-004-EN-13040 SS | 100% |  |  | Draftsman [16.1 h] | EN.MB.SD.EL.PR.1980 | MOD-02-EN-2570 | -100 | -31 | UDF_G1 | -100 | PL | JEDENG | Engi |
| MLTX-02-004-EN-12970 |  | Shop DWG Submittal for Fire Alarm Installation Details | 1d | 2026-05-23 A | 2026-05-23 A | MLTX-02-004-EN-12960 SS | 100% |  |  | Draftsman [16.1 h] | EN.MB.SD.EL.PR.2090 | MOD-02-EN-2600 | -100 | -31 | UDF_G1 | -100 | PL | JEDENG | Engi |
| MLTX-02-004-EN-12990 |  | Shop DWG Submittal for Fire Alarm Layout | 1d | 2026-05-23 A | 2026-05-23 A | MLTX-02-004-EN-12970 SS | 100% |  |  | Draftsman [16.1 h] | EN.MB.SD.EL.PR.2100 | MOD-02-EN-2610 | -100 | -31 | UDF_G1 | -100 | PL | JEDENG | Engi |
| MLTX-02-004-EN-13000 |  | Shop DWG Submittal for Fire Alarm Riser Diagram | 1d | 2026-05-23 A | 2026-05-23 A | MLTX-02-004-EN-12970 SS | 100% |  |  | Draftsman [16.1 h] | EN.MB.SD.EL.PR.2130 | MOD-02-EN-2640 | -100 | -31 | UDF_G1 | -100 | PL | JEDENG | Engi |
| MLTX-02-004-EN-12930 |  | Shop DWG Submittal for Power Layout | 1d | 2026-07-01 A | 2026-07-01 A | MLTX-02-004-MS-1010 SS | 100% |  |  | Draftsman [16.1 h] | EN.MB.SD.EL.PR.2000 | MOD-02-EN-2580 | -100 | -31 | UDF_G1 | -100 | PL | JEDENG | Engi |
| MLTX-02-004-EN-12940 |  | Shop DWG Submittal for Power Single Line Diagram | 1d | 2026-07-01 A | 2026-07-01 A | MLTX-02-004-MS-1010 SS | 100% |  |  | Draftsman [16.1 h] | EN.MB.SD.EL.PR.2020 | MOD-02-EN-2620 | -100 | -31 | UDF_G1 | -100 | PL | JEDENG | Engi |
| MLTX-02-004-EN-12950 |  | Shop DWG Submittal for Panel Board Schedules | 1d | 2026-07-01 A | 2026-07-01 A | MLTX-02-004-EN-12940 SS | 100% |  |  | Draftsman [16.1 h] | EN.MB.SD.EL.PR.2030 | MOD-02-EN-2630 | -100 | -31 | UDF_G1 | -100 | PL | JEDENG | Engi |
| MLTX-02-004-EN-12960 |  | Shop DWG Submittal for Power Installation Details | 1d | 2026-07-01 A | 2026-07-01 A | MLTX-02-004-EN-12950 SS | 100% |  |  | Draftsman [16.1 h] | EN.MB.SD.EL.PR.2050 | MOD-02-EN-2590 | -100 | -31 | UDF_G1 | -100 | PL | JEDENG | Engi |
| MLTX-02-004-EN-12980 |  | Shop DWG Submittal for CCTV Details | 4d | 2026-08-25 A | 2026-08-25 A | MLTX-02-004-EN-12920 SS | 100% | 2026-09-01 | 2026-09-05 | Draftsman [16.1 h] | EN.MB.SD.EL.PR.2140 | MOD-02-EN-2650 | -100 | -31 | UDF_G1 | -100 | PL | JEDENG | Engi |
| MLTX-02-004-EN-13010 |  | Shop DWG Submittal for CCTV Layout | 5d | 2026-08-25 A | 2026-08-25 A | MLTX-02-004-EN-13000 SS | 100% | 2026-09-01 | 2026-09-06 | Draftsman [16.1 h] | EN.MB.SD.EL.PR.2150 | MOD-02-EN-2660 | -100 | -31 | UDF_G1 | -100 | PL | JEDENG | Engi |
| MLTX-02-004-EN-13020 |  | Shop DWG Submittal for CCTV Riser Diagram | 5d | 2026-08-25 A | 2026-08-25 A | MLTX-02-004-EN-13010 SS | 100% | 2026-09-01 | 2026-09-06 | Draftsman [16.1 h] | EN.MB.SD.EL.PR.2180 | MOD-02-EN-2670 | -100 | -31 | UDF_G1 | -100 | PL | JEDENG | Engi |

| ID | WBS | Activity | Duration | Start | Finish | Predecessors | Complete | Planned start | Planned finish | Resources | New Activity ID | Old Activity ID - MK | % Variance | Delay | On Schedule | Shop Drawings | Engineering | WBS-Project | Flag | New Activity Code |
| --- | --- | --- | --- | --- | --- | --- | --- | --- | --- | --- | --- | --- | --- | --- | --- | --- | --- | --- | --- | --- |
|  | EAR | **SHOP DRAWINGS SUBMITTALS FOR LANDSCAPE WORKS** |  | 2026-03-31 | 2026-06-17 |  |  |  |  |  |  |  |  |  |  |  |  |  |  |  |
|  | 3 | **ARCHITECTURE WORKS** |  | 2026-03-31 | 2026-05-18 |  |  |  |  |  |  |  |  |  |  |  |  |  |  |  |
| MLTX-02-004-EN-12860 |  | Shop DWG Submittal for Landscape Layout | 20d | 2026-03-31 A | 2026-04-22 A | MLTX-02-004-MB-2100 | 100% |  |  | Draftsman [16.1 h] | MOD-02-EN-2700 | MAK-01-EN-1120 | 0 | -14 | 0 | LS | JEDENG | Engi |  |  |
| MLTX-02-004-EN-12870 |  | Shop DWG Submittal for Hardscape Plan | 5d | 2026-05-13 A | 2026-05-18 A | MLTX-02-004-MB-2100 | 100% |  |  | Draftsman [16.1 h] | MOD-02-EN-2710 | MAK-01-EN-1130 | 0 | -38 | 0 | LS | JEDENG | Engi | UDF_G1 |  |
| MLTX-02-004-EN-12880 |  | Shop DWG Submittal for Planting Plan | 5d | 2026-05-13 A | 2026-05-18 A | MLTX-02-004-EN-12890 | 100% |  |  | Draftsman [16.1 h] | MOD-02-EN-2720 | MAK-01-EN-1140 | 0 | -38 | 0 | LS | JEDENG | Engi | UDF_G1 |  |
| MLTX-02-004-EN-12890 |  | Shop DWG Submittal for Landscape Details | 5d | 2026-05-13 A | 2026-05-18 A | MLTX-02-004-MB-2100 | 100% |  |  | Draftsman [16.1 h] | MOD-02-EN-2730 | MAK-01-EN-1150 | 0 | -38 | 0 | LS | JEDENG | Engi | UDF_G1 |  |
|  | 1 | **MECHANCAL WORKS** |  | 2026-06-17 | 2026-06-17 |  |  |  |  |  |  |  |  |  |  |  |  |  |  |  |
| MLTX-02-004-EN-12900 |  | Shop DWG Submittal for Irrigation Details | 1d | 2026-06-17 A | 2026-06-17 A | MLTX-02-004-MB-2100 | 100% |  |  | Draftsman [16.1 h] | MOD-02-EN-2770 | MAK-01-EN-1140 | -100 | -38 | -100 | LS | JEDENG | Engi | UDF_G1 |  |
| MLTX-02-004-EN-12910 |  | Shop DWG Submittal for Irrigation Layout | 1d | 2026-06-17 A | 2026-06-17 A | MLTX-02-004-MB-2100 | 100% |  |  | Draftsman [16.1 h] | MOD-02-EN-2810 | MAK-01-EN-1140 | -100 | -38 | -100 | LS | JEDENG | Engi | UDF_G1 |  |
|  | 2 | **ELECTRICAL WORKS** |  | 2026-05-23 | 2026-05-23 |  |  |  |  |  |  |  |  |  |  |  |  |  |  |  |
| MLTX-02-004-EN-12160 |  | Shop DWG Submittal for Lighting General Arrangement | 1d | 2026-05-23 A | 2026-05-23 A | MLTX-02-004-MB-2100 | 100% |  |  | Draftsman [16.1 h] | MOD-02-EN-2860 | MAK-01-EN-1120 | -100 | -38 | -100 | LS | JEDENG | Engi | UDF_G1 |  |
| MLTX-02-004-EN-12170 |  | Shop DWG Submittal for Lighting Network Layout | 1d | 2026-05-23 A | 2026-05-23 A | MLTX-02-004-MB-2100 | 100% |  |  | Draftsman [16.1 h] | MOD-02-EN-2870 | MAK-01-EN-1130 | -100 | -38 | -100 | LS | JEDENG | Engi | UDF_G1 |  |
| MLTX-02-004-EN-12180 |  | Shop DWG Submittal for Lighting Details | 1d | 2026-05-23 A | 2026-05-23 A | MLTX-02-004-MB-2100 | 100% |  |  | Draftsman [16.1 h] | MOD-02-EN-2840 | MAK-01-EN-1140 | -100 | -38 | -100 | LS | JEDENG | Engi | UDF_G1 |  |
| MLTX-02-004-EN-12190 |  | Shop DWG Submittal for Lighting Single Line Diagram | 1d | 2026-05-23 A | 2026-05-23 A | MLTX-02-004-MB-2100 | 100% |  |  | Draftsman [16.1 h] | MOD-02-EN-2850 | MAK-01-EN-1150 | -100 | -38 | -100 | LS | JEDENG | Engi | UDF_G1 |  |
|  | APP | **SHOP DRAWINGS APPROVALS** |  | 2026-04-07 | 2026-08-26 |  |  |  |  |  |  |  |  |  |  |  |  |  |  |  |
|  | 2 | **SHOP DRAWING APPROVAL FOR EARTHING WORKS** |  | 2026-04-07 | 2026-06-24 |  |  |  |  |  |  |  |  |  |  |  |  |  |  |  |
| MLTX-02-004-EN-15540 |  | Shop DWG Approval for Setting Out | 17d | 2026-04-07 A | 2026-04-26 A | MLTX-02-004-EN-12110 | 100% |  |  | Draftsman [12.71 h]; Consultant Staff [3.39 h] | MOD-02-EN-2910 | MAK-01-EN-1030 | 0 | -7 | 0 | ER | JEDENG | Engi |  |  |
| MLTX-02-004-EN-15530 |  | Shop DWG Approval for Layout Plan | 4d | 2026-04-22 A | 2026-04-26 A | MLTX-02-004-EN-12100 | 100% |  |  | Draftsman [12.71 h]; Consultant Staff [3.39 h] | MOD-02-EN-2900 | MAK-01-EN-1010 | 0 | -7 | 0 | ER | JEDENG | Engi |  |  |
| MLTX-02-004-EN-15550 |  | Shop DWG Approval for Grading Layout Plan | 1d | 2026-04-26 A | 2026-04-26 A | MLTX-02-004-EN-12120 | 100% |  |  | Draftsman [12.71 h]; Consultant Staff [3.39 h] | MOD-02-EN-2920 | MAK-01-EN-1050 | 0 | -7 | 0 | ER | JEDENG | Engi |  |  |
| MLTX-02-004-EN-15560 |  | Shop DWG Approval for Curb Setting Out Points | 1d | 2026-05-21 A | 2026-05-21 A | MLTX-02-004-EN-12130 | 100% |  |  | Draftsman [12.71 h]; Consultant Staff [3.39 h] | MOD-02-EN-2930 | MAK-01-EN-1060 | -100 | -38 | -100 | ER | JEDENG | Engi | UDF_G1 |  |
| MLTX-02-004-EN-15580 |  | Shop DWG Approval for Standards Details | 1d | 2026-05-21 A | 2026-05-21 A | MLTX-02-004-EN-12150 | 100% |  |  | Draftsman [12.71 h]; Consultant Staff [3.39 h] | MOD-02-EN-2950 | MAK-01-EN-1080 | -100 | -38 | -100 | ER | JEDENG | Engi | UDF_G1 |  |
| MLTX-02-004-EN-15570 |  | Shop DWG Approval for Signing & Marking Layout Plan | 1d | 2026-06-24 A | 2026-06-24 A | MLTX-02-004-EN-12140 | 100% |  |  | Draftsman [12.71 h]; Consultant Staff [3.39 h] | MOD-02-EN-2940 | MAK-01-EN-1070 | -100 | -38 | -100 | ER | JEDENG | Engi | UDF_G1 |  |
|  | ROAD | **SHOP DRAWING APPROVAL FOR SERVICE/TOILET WORKS** |  | 2026-04-14 | 2026-08-26 |  |  |  |  |  |  |  |  |  |  |  |  |  |  |  |
|  | 2 | **ARCHITECTURE WORKS** |  | 2026-04-14 | 2026-04-24 |  |  |  |  |  |  |  |  |  |  |  |  |  |  |  |
| MLTX-02-004-EN-15640 |  | Shop DWG Approval for Elevations | 9d | 2026-04-14 A | 2026-04-24 A | MLTX-02-004-EN-12490 | 100% | 2026-04-14 | 2026-04-23 | Draftsman [12.71 h]; Consultant Staff [3.39 h] | MOD-02-EN-2990 |  | 0 | -4 | 0 | TO | JEDENG | Engi |  | EN.MB.SD.AR.PR.1140 |
| MLTX-02-004-EN-15650 |  | Shop DWG Approval for Sections | 9d | 2026-04-14 A | 2026-04-24 A | MLTX-02-004-EN-12500 | 100% | 2026-04-14 | 2026-04-23 | Draftsman [12.71 h]; Consultant Staff [3.39 h] | MOD-02-EN-3000 |  | 0 | -4 | 0 | TO | JEDENG | Engi |  | EN.MB.SD.AR.PR.1150 |
| MLTX-02-004-EN-15660 |  | Shop DWG Approval for Ceiling Plan | 5d | 2026-04-14 A | 2026-04-19 A | MLTX-02-004-EN-12510 | 100% |  |  | Draftsman [12.71 h]; Consultant Staff [3.39 h] | MOD-02-EN-3010 |  | 0 | 0 | 0 | TO | JEDENG | Engi |  | EN.MB.SD.AR.PR.1160 |
| MLTX-02-004-EN-15630 |  | Shop DWG Approval for Floor Plan | 9d | 2026-04-14 A | 2026-04-24 A | MLTX-02-004-EN-12480 | 100% | 2026-04-14 | 2026-04-23 | Draftsman [12.71 h]; Consultant Staff [3.39 h] | MOD-02-EN-2980 |  | 0 | -4 | 0 | TO | JEDENG | Engi |  | EN.MB.SD.AR.PR.1110 |
| MLTX-02-004-EN-15670 |  | Shop DWG Approval for Finishes Plan | 9d | 2026-04-14 A | 2026-04-24 A | MLTX-02-004-EN-12520 | 100% | 2026-04-14 | 2026-04-23 | Draftsman [12.71 h]; Consultant Staff [3.39 h] | MOD-02-EN-3020 |  | 0 | -4 | 0 | TO | JEDENG | Engi |  | EN.MB.SD.AR.PR.1190 |
| MLTX-02-004-EN-15680 |  | Shop DWG Approval for Toilet Details | 9d | 2026-04-14 A | 2026-04-24 A | MLTX-02-004-EN-12530 | 100% | 2026-04-14 | 2026-04-23 | Draftsman [12.71 h]; Consultant Staff [3.39 h] | MOD-02-EN-3030 |  | 0 | -4 | 0 | TO | JEDENG | Engi |  | EN.MB.SD.AR.PR.1210 |
| MLTX-02-004-EN-15690 |  | Shop DWG Approval for Doors/Windows Schedule | 9d | 2026-04-14 A | 2026-04-24 A | MLTX-02-004-EN-12540 | 100% | 2026-04-14 | 2026-04-23 | Draftsman [12.71 h]; Consultant Staff [3.39 h] | MOD-02-EN-3040 |  | 0 | -4 | 0 | TO | JEDENG | Engi |  | EN.MB.SD.AR.PR.1220 |

| ID | WBS | Activity | Duration | Start | Finish | Predecessors | Complete | Planned start | Planned finish | Resources | New Activity Code | New Activity ID | % Variance | Delay | On Schedule | Shop Drawings | Engineering | WBS-Project | Flag |
| --- | --- | --- | --- | --- | --- | --- | --- | --- | --- | --- | --- | --- | --- | --- | --- | --- | --- | --- | --- |
|  | 1 | **STRUCTURE WORKS** |  | 2026-04-18 | 2026-04-23 |  |  |  |  |  |  |  |  |  |  |  |  |  |  |
| MLTX-02-004-EN-15700 |  | Shop DWG Approval for Foundation Plan | 6d | 2026-04-18 A | 2026-04-23 A | MLTX-02-004-EN-12550 | 100% |  |  | Draftsman [12.71 h]; Consultant Staff [3.39 h] | EN.MB.SD.CV.PR.1460 | MOD-02-EN-3060 | 0 | 2 | 0 | TO | JEDENG | Engi |  |
| MLTX-02-004-EN-15710 |  | Shop DWG Approval for Ground Floor Framing Plan | 6d | 2026-04-18 A | 2026-04-23 A | MLTX-02-004-EN-12560 | 100% |  |  | Draftsman [12.71 h]; Consultant Staff [3.39 h] | EN.MB.SD.CV.PR.1480 | MOD-02-EN-3070 | 0 | 2 | 0 | TO | JEDENG | Engi |  |
| MLTX-02-004-EN-15720 |  | Shop DWG Approval for Sections/Details | 6d | 2026-04-18 A | 2026-04-23 A | MLTX-02-004-EN-12570 | 100% |  |  | Draftsman [12.71 h]; Consultant Staff [3.39 h] | EN.MB.SD.CV.PR.1530 | MOD-02-EN-3080 | 0 | 2 | 0 | TO | JEDENG | Engi |  |
|  | 3 | **MECHANCAL WORKS** |  | 2026-05-06 | 2026-05-21 |  |  |  |  |  |  |  |  |  |  |  |  |  |  |
| MLTX-02-004-EN-15730 |  | Shop DWG Approval for HVAC Plan | 1d | 2026-05-06 A | 2026-05-06 A | MLTX-02-004-EN-12580 | 100% |  |  | Draftsman [12.71 h]; Consultant Staff [3.39 h] | EN.MB.SD.MC.PR.1740 | MOD-02-EN-3100 | 0 | -9 | 0 | TO | JEDENG | Engi |  |
| MLTX-02-004-EN-15750 |  | Shop DWG Approval for HVAC Equipment Schedule | 1d | 2026-05-06 A | 2026-05-06 A | MLTX-02-004-EN-12600 | 100% |  |  | Draftsman [12.71 h]; Consultant Staff [3.39 h] | EN.MB.SD.MC.PR.1770 | MOD-02-EN-3120 | 0 | -9 | 0 | TO | JEDENG | Engi |  |
| MLTX-02-004-EN-15740 |  | Shop DWG Approval for Exhaust Air Plan | 1d | 2026-05-07 A | 2026-05-07 A | MLTX-02-004-EN-12590 | 100% |  |  | Draftsman [12.71 h]; Consultant Staff [3.39 h] | EN.MB.SD.MC.PR.1750 | MOD-02-EN-3110 | 0 | -10 | 0 | TO | JEDENG | Engi |  |
| MLTX-02-004-EN-15760 |  | Shop DWG Approval for Fire Fighting Layout | 1d | 2026-05-07 A | 2026-05-07 A | MLTX-02-004-EN-12610 | 100% |  |  | Draftsman [12.71 h]; Consultant Staff [3.39 h] | EN.MB.SD.MC.PR.1780 | MOD-02-EN-3170 | 0 | -10 | 0 | TO | JEDENG | Engi |  |
| MLTX-02-004-EN-15770 |  | Shop DWG Approval for Water Supply Layout | 0d | 2026-05-07 A | 2026-05-07 A | MLTX-02-004-EN-12620 | 100% |  |  | Draftsman; Consultant Staff | EN.MB.SD.MC.PR.1790 | MOD-02-EN-3180 | 0 | -9 | 0 | TO | JEDENG | Engi |  |
| MLTX-02-004-EN-15780 |  | Shop DWG Approval for Water Supply Details | 1d | 2026-05-07 A | 2026-05-07 A | MLTX-02-004-EN-12630 | 100% |  |  | Draftsman [12.71 h]; Consultant Staff [3.39 h] | EN.MB.SD.MC.PR.1800 | MOD-02-EN-3190 | 0 | -10 | 0 | TO | JEDENG | Engi |  |
| MLTX-02-004-EN-15790 |  | Shop DWG Approval for Drainage Layout | 1d | 2026-05-07 A | 2026-05-07 A | MLTX-02-004-EN-12640 | 100% |  |  | Draftsman [12.71 h]; Consultant Staff [3.39 h] | EN.MB.SD.MC.PR.1710 | MOD-02-EN-3130 | 0 | -10 | 0 | TO | JEDENG | Engi |  |
| MLTX-02-004-EN-16320 |  | Shop DWG Approval for Duct Routing Layout | 1d | 2026-05-07 A | 2026-05-07 A | MLTX-02-004-EN-13190 | 100% |  |  | Draftsman [12.71 h]; Consultant Staff [3.39 h] | EN.MB.SD.MC.PR.1770 | MOD-02-EN-3150 | 0 | -10 | 0 | TO | JEDENG | Engi |  |
| MLTX-02-004-EN-15800 |  | Shop DWG Approval for Drainage Details | 1d | 2026-05-21 A | 2026-05-21 A | MLTX-02-004-EN-12650 | 100% |  |  | Draftsman [12.71 h]; Consultant Staff [3.39 h] | EN.MB.SD.MC.PR.1720 | MOD-02-EN-3140 | -100 | -31 | -100 | TO | JEDENG | Engi | UDF_G1 |
| MLTX-02-004-EN-16330 |  | Shop DWG Approval for Diffusers Layout | 1d | 2026-05-21 A | 2026-05-21 A | MLTX-02-004-EN-13200 | 100% |  |  | Draftsman [12.71 h]; Consultant Staff [3.39 h] | EN.MB.SD.MC.PR.1770 | MOD-02-EN-3160 | -100 | -31 | -100 | TO | JEDENG | Engi | UDF_G1 |
|  | 4 | **ELECTRICAL WORKS** |  | 2026-04-15 | 2026-08-26 |  |  |  |  |  |  |  |  |  |  |  |  |  |  |
| MLTX-02-004-EN-15810 |  | Shop DWG Approval for Lighting Layout | 10d | 2026-04-15 A | 2026-04-26 A | MLTX-02-004-EN-12660 | 100% |  |  | Draftsman [12.71 h]; Consultant Staff [3.39 h] | EN.MB.SD.EL.PR.1980 | MOD-02-EN-3210 | 0 | 0 | 0 | TO | JEDENG | Engi |  |
| MLTX-02-004-EN-15820 |  | Shop DWG Approval for Power Layout | 10d | 2026-04-15 A | 2026-04-26 A | MLTX-02-004-EN-12670 | 100% |  |  | Draftsman [12.71 h]; Consultant Staff [3.39 h] | EN.MB.SD.EL.PR.2000 | MOD-02-EN-3220 | 0 | 0 | 0 | TO | JEDENG | Engi |  |
| MLTX-02-004-EN-15850 |  | Shop DWG Approval for Lighting Installation Details | 10d | 2026-04-15 A | 2026-04-26 A | MLTX-02-004-EN-12700 | 100% |  |  | Draftsman [12.71 h]; Consultant Staff [3.39 h] | EN.MB.SD.EL.PR.2040 | MOD-02-EN-3250 | 0 | 0 | 0 | TO | JEDENG | Engi |  |
| MLTX-02-004-EN-15860 |  | Shop DWG Approval for Power Installation Details | 10d | 2026-04-15 A | 2026-04-26 A | MLTX-02-004-EN-12710 | 100% |  |  | Draftsman [12.71 h]; Consultant Staff [3.39 h] | EN.MB.SD.EL.PR.2050 | MOD-02-EN-3260 | 0 | 0 | 0 | TO | JEDENG | Engi |  |
| MLTX-02-004-EN-15900 |  | Shop DWG Approval for Lightning Protection Details | 10d | 2026-04-15 A | 2026-04-26 A | MLTX-02-004-EN-12750 | 100% |  |  | Draftsman [12.71 h]; Consultant Staff [3.39 h] | EN.MB.SD.EL.PR.2110 | MOD-02-EN-3320 | 0 | 0 | 0 | TO | JEDENG | Engi |  |
| MLTX-02-004-EN-15940 |  | Shop DWG Approval for Lightning Protection System Layout | 10d | 2026-04-15 A | 2026-04-26 A | MLTX-02-004-EN-12790 | 100% |  |  | Draftsman [12.71 h]; Consultant Staff [3.39 h] | EN.MB.SD.EL.PR.2120 | MOD-02-EN-3330 | 0 | 0 | 0 | TO | JEDENG | Engi |  |
| MLTX-02-004-EN-16000 |  | Shop DWG Approval for Telephone & Data Riser Diagram | 7d | 2026-04-20 A | 2026-04-27 A | MLTX-02-004-EN-12850 | 100% |  |  | Draftsman [12.71 h]; Consultant Staff [3.39 h] | EN.MB.SD.EL.PR.2190 | MOD-02-EN-3400 | 0 | -1 | 0 | TO | JEDENG | Engi |  |
| MLTX-02-004-EN-15910 |  | Shop DWG Approval for Fire Alarm Installation Details | 6d | 2026-04-21 A | 2026-04-27 A | MLTX-02-004-EN-12760 | 100% |  |  | Draftsman [12.71 h]; Consultant Staff [3.39 h] | EN.MB.SD.EL.PR.2090 | MOD-02-EN-3300 | 0 | -1 | 0 | TO | JEDENG | Engi |  |
| MLTX-02-004-EN-15950 |  | Shop DWG Approval for Fire Alarm Layout | 6d | 2026-04-21 A | 2026-04-27 A | MLTX-02-004-EN-12800 | 100% |  |  | Draftsman [12.71 h]; Consultant Staff [3.39 h] | EN.MB.SD.EL.PR.2100 | MOD-02-EN-3310 | 0 | -1 | 0 | TO | JEDENG | Engi |  |
| MLTX-02-004-EN-15960 |  | Shop DWG Approval for Fire Alarm Riser Diagram | 6d | 2026-04-21 A | 2026-04-27 A | MLTX-02-004-EN-12810 | 100% |  |  | Draftsman [12.71 h]; Consultant Staff [3.39 h] | EN.MB.SD.EL.PR.2130 | MOD-02-EN-3340 | 0 | -1 | 0 | TO | JEDENG | Engi |  |
| MLTX-02-004-EN-15990 |  | Shop DWG Approval for Telephone & Data Layout | 6d | 2026-04-21 A | 2026-04-27 A | MLTX-02-004-EN-12840 | 100% |  |  | Draftsman [12.71 h]; Consultant Staff [3.39 h] | EN.MB.SD.EL.PR.2160 | MOD-02-EN-3370 | 0 | -1 | 0 | TO | JEDENG | Engi |  |
| MLTX-02-004-EN-15830 |  | Shop DWG Approval for Power Single Line Diagram | 1d | 2026-05-23 A | 2026-05-23 A | MLTX-02-004-EN-12680 | 100% |  |  | Draftsman [12.71 h]; Consultant Staff [3.39 h] | EN.MB.SD.EL.PR.2020 | MOD-02-EN-3230 | -100 | -25 | -100 | TO | JEDENG | Engi | UDF_G1 |
| MLTX-02-004-EN-15840 |  | Shop DWG Approval for Panel Board Schedules | 1d | 2026-05-23 A | 2026-05-23 A | MLTX-02-004-EN-12690 | 100% |  |  | Draftsman [12.71 h]; Consultant Staff [3.39 h] | EN.MB.SD.EL.PR.2030 | MOD-02-EN-3240 | -100 | -25 | -100 | TO | JEDENG | Engi | UDF_G1 |
| MLTX-02-004-EN-15870 |  | Shop DWG Approval for Cable Tray Installation Details | 1d | 2026-05-23 A | 2026-05-23 A | MLTX-02-004-EN-12720 | 100% |  |  | Draftsman [12.71 h]; Consultant Staff [3.39 h] | EN.MB.SD.EL.PR.2060 | MOD-02-EN-3270 | -100 | -25 | -100 | TO | JEDENG | Engi | UDF_G1 |
| MLTX-02-004-EN-15880 |  | Shop DWG Approval for Manhole & Ductbank Details | 1d | 2026-05-23 A | 2026-05-23 A | MLTX-02-004-EN-12730 | 100% |  |  | Draftsman [12.71 h]; Consultant Staff [3.39 h] | EN.MB.SD.EL.PR.2070 | MOD-02-EN-3280 | -100 | -25 | -100 | TO | JEDENG | Engi | UDF_G1 |
| MLTX-02-004-EN-15890 |  | Shop DWG Approval for Grounding Details | 1d | 2026-05-23 A | 2026-05-23 A | MLTX-02-004-EN-12740 | 100% |  |  | Draftsman [12.71 h]; Consultant Staff [3.39 h] | EN.MB.SD.EL.PR.2080 | MOD-02-EN-3290 | -100 | -25 | -100 | TO | JEDENG | Engi | UDF_G1 |
| MLTX-02-004-EN-15930 |  | Shop DWG Approval for Grounding Layout | 1d | 2026-05-23 A | 2026-05-23 A | MLTX-02-004-EN-12780 | 100% |  |  | Draftsman [12.71 h]; Consultant Staff [3.39 h] | EN.MB.SD.EL.PR.2170 | MOD-02-EN-3380 | -100 | -25 | -100 | TO | JEDENG | Engi | UDF_G1 |
| MLTX-02-004-EN-15920 |  | Shop DWG Approval for CCTV Details | 8d | 2026-08-26 A | 2026-08-26 A | MLTX-02-004-EN-12770 | 100% | 2026-09-09 | 2026-09-17 | Draftsman [12.71 h]; Consultant Staff [3.39 h] | EN.MB.SD.EL.PR.2140 | MOD-02-EN-3350 | -100 | -31 | -100 | TO | JEDENG | Engi | UDF_G1 |
| MLTX-02-004-EN-15970 |  | Shop DWG Approval for CCTV Layout | 8d | 2026-08-26 A | 2026-08-26 A | MLTX-02-004-EN-12820, MLTX-02-004-EN-12770 | 100% | 2026-09-09 | 2026-09-17 | Draftsman [12.71 h]; Consultant Staff [3.39 h] | EN.MB.SD.EL.PR.2150 | MOD-02-EN-3360 | -100 | -31 | -100 | TO | JEDENG | Engi | UDF_G1 |
| MLTX-02-004-EN-15980 |  | Shop DWG Approval for CCTV Riser Diagram | 10d | 2026-08-26 A | 2026-08-26 A | MLTX-02-004-EN-12830 | 100% | 2026-09-07 | 2026-09-17 | Draftsman [12.71 h]; Consultant Staff [3.39 h] | EN.MB.SD.EL.PR.2180 | MOD-02-EN-3390 | -100 | -31 | -100 | TO | JEDENG | Engi | UDF_G1 |

| ID | WBS | Activity | Duration | Start | Finish | Predecessors | Complete | Planned start | Planned finish | Resources | New Activity Code | New Activity ID | % Variance | Delay | On Schedule | Shop Drawings | Engineering | WBS-Project | Flag |
| --- | --- | --- | --- | --- | --- | --- | --- | --- | --- | --- | --- | --- | --- | --- | --- | --- | --- | --- | --- |
|  | ELE | **SHOP DRAWINGS APPROVAL FOR PLAYGROUND WORKS** |  | 2026-04-08 | 2026-08-26 |  |  |  |  |  |  |  |  |  |  |  |  |  |  |
|  | 3 | **ARCHITECTURE WORKS** |  | 2026-04-08 | 2026-06-13 |  |  |  |  |  |  |  |  |  |  |  |  |  |  |
| MLTX-02-004-EN-16200 |  | Shop DWG Approval for Interlock Pattern Plan | 10d | 2026-04-08 A | 2026-04-19 A | MLTX-02-004-EN-13080 | 100% |  |  | Draftsman [12.71 h]; Consultant Staff [3.39 h] | EN.MB.SD.AR.PR.1190 | MOD-02-EN-3460 | 0 | 0 | 0 | PL | JEDENG | Engi |  |
| MLTX-02-004-EN-16170 |  | Shop DWG Approval for Playground Plan/Layout | 5d | 2026-04-19 A | 2026-04-24 A | MLTX-02-004-EN-13050 | 100% | 2026-04-19 | 2026-04-23 | Draftsman [12.71 h]; Consultant Staff [3.39 h] | EN.MB.SD.AR.PR.1110 | MOD-02-EN-3430 | 0 | -4 | 0 | PL | JEDENG | Engi |  |
| MLTX-02-004-EN-16190 |  | Shop DWG Approval for Sections | 5d | 2026-04-19 A | 2026-04-24 A | MLTX-02-004-EN-13070 | 100% | 2026-04-19 | 2026-04-23 | Draftsman [12.71 h]; Consultant Staff [3.39 h] | EN.MB.SD.AR.PR.1150 | MOD-02-EN-3450 | 0 | -4 | 0 | PL | JEDENG | Engi |  |
| MLTX-02-004-EN-16180 |  | Shop DWG Approval for Furniture & Marking | 1d | 2026-06-13 A | 2026-06-13 A | MLTX-02-004-EN-13060 | 100% |  |  | Draftsman [12.71 h]; Consultant Staff [3.39 h] | EN.MB.SD.AR.PR.1140 | MOD-02-EN-3440 | -100 | -38 | -100 | PL | JEDENG | Engi | UDF_G1 |
| MLTX-02-004-EN-16210 |  | Shop DWG Approval for Doors/Windows Schedule | 1d | 2026-06-13 A | 2026-06-13 A | MLTX-02-004-EN-13090 | 100% |  |  | Draftsman [12.71 h]; Consultant Staff [3.39 h] | EN.MB.SD.AR.PR.1220 | MOD-02-EN-3470 | -100 | -38 | -100 | PL | JEDENG | Engi | UDF_G1 |
| MLTX-02-004-EN-16250 |  | Shop DWG Approval for Dome Internal Layout | 1d | 2026-06-13 A | 2026-06-13 A | MLTX-02-004-EN-13120 | 100% |  |  | Draftsman [12.71 h]; Consultant Staff [3.39 h] | EN.MB.SD.AR.PR.1110 | MOD-02-EN-3480 | -100 | -38 | -100 | PL | JEDENG | Engi | UDF_G1 |
|  | 4 | **STRUCTURE WORKS** |  | 2026-06-24 | 2026-06-24 |  |  |  |  |  |  |  |  |  |  |  |  |  |  |
| MLTX-02-004-EN-16220 |  | Shop DWG Approval for Air Dome System | 1d | 2026-06-24 A | 2026-06-24 A | MLTX-02-004-EN-13100 | 100% |  |  | Draftsman [12.71 h]; Consultant Staff [3.39 h] | EN.MB.SD.AR.PR.1110 | MOD-02-EN-3500 | -100 | -38 | -100 | PL | JEDENG | Engi | UDF_G1 |
| MLTX-02-004-EN-16230 |  | Shop DWG Approval for Foundation of Air Dome | 1d | 2026-06-24 A | 2026-06-24 A | MLTX-02-004-EN-13110 | 100% |  |  | Draftsman [12.71 h]; Consultant Staff [3.39 h] | EN.MB.SD.AR.PR.1140 | MOD-02-EN-3510 | -100 | -38 | -100 | PL | JEDENG | Engi | UDF_G1 |
| MLTX-02-004-EN-16240 |  | Shop DWG Approval for Foundation of Air Dome | 1d | 2026-06-24 A | 2026-06-24 A | MLTX-02-004-EN-16230 SS | 100% |  |  | Draftsman [12.71 h]; Consultant Staff [3.39 h] | EN.MB.SD.AR.PR.1150 | MOD-02-EN-3520 | -100 | -38 | -100 | PL | JEDENG | Engi | UDF_G1 |
| MLTX-02-004-EN-16260 |  | Shop DWG Approval for Anchor Bolt Layout of Air Dome | 1d | 2026-06-24 A | 2026-06-24 A | MLTX-02-004-EN-13130 | 100% |  |  | Draftsman [12.71 h]; Consultant Staff [3.39 h] | EN.MB.SD.AR.PR.1140 | MOD-02-EN-3530 | -100 | -38 | -100 | PL | JEDENG | Engi | UDF_G1 |
|  | 5 | **AIR DOME SYSTEM** |  | 2026-06-13 | 2026-06-13 |  |  |  |  |  |  |  |  |  |  |  |  |  |  |
| MLTX-02-004-EN-16270 |  | Shop DWG Approval for Air Dome Structural Layout | 1d | 2026-06-13 A | 2026-06-13 A | MLTX-02-004-EN-13140 | 100% |  |  | Draftsman [12.71 h]; Consultant Staff [3.39 h] | EN.MB.SD.AR.PR.1110 | MOD-02-EN-3550 | -100 | -38 | -100 | PL | JEDENG | Engi | UDF_G1 |
| MLTX-02-004-EN-16280 |  | Shop DWG Approval for Membrane Panel Layout | 1d | 2026-06-13 A | 2026-06-13 A | MLTX-02-004-EN-13150 | 100% |  |  | Draftsman [12.71 h]; Consultant Staff [3.39 h] | EN.MB.SD.AR.PR.1140 | MOD-02-EN-3560 | -100 | -38 | -100 | PL | JEDENG | Engi | UDF_G1 |
| MLTX-02-004-EN-16290 |  | Shop DWG Approval for Cable Tension Layout | 1d | 2026-06-13 A | 2026-06-13 A | MLTX-02-004-EN-16280 SS, MLTX-02-004-EN-13160 | 100% |  |  | Draftsman [12.71 h]; Consultant Staff [3.39 h] | EN.MB.SD.AR.PR.1150 | MOD-02-EN-3570 | -100 | -38 | -100 | PL | JEDENG | Engi | UDF_G1 |
| MLTX-02-004-EN-16300 |  | Shop DWG Approval for Airlock Door Details | 1d | 2026-06-13 A | 2026-06-13 A | MLTX-02-004-EN-13170 | 100% |  |  | Draftsman [12.71 h]; Consultant Staff [3.39 h] | EN.MB.SD.AR.PR.1140 | MOD-02-EN-3580 | -100 | -38 | -100 | PL | JEDENG | Engi | UDF_G1 |
| MLTX-02-004-EN-16310 |  | Shop DWG Approval for Emergency Exit Details | 1d | 2026-06-13 A | 2026-06-13 A | MLTX-02-004-EN-13180 | 100% |  |  | Draftsman [12.71 h]; Consultant Staff [3.39 h] | EN.MB.SD.AR.PR.1140 | MOD-02-EN-3590 | -100 | -38 | -100 | PL | JEDENG | Engi | UDF_G1 |
|  | 6 | **SPORTS EQUIPMENT** |  | 2026-06-13 | 2026-06-13 |  |  |  |  |  |  |  |  |  |  |  |  |  |  |
| MLTX-02-004-EN-16340 |  | Shop DWG Approval for Football Turf Installation | 1d | 2026-06-13 A | 2026-06-13 A | MLTX-02-004-EN-13210 | 100% |  |  | Draftsman [12.71 h]; Consultant Staff [3.39 h] | EN.MB.SD.EL.PR.2170 | MOD-02-EN-3610 | -100 | -38 | -100 | PL | JEDENG | Engi | UDF_G1 |
| MLTX-02-004-EN-16350 |  | Shop DWG Approval for Basketball Court Marking | 1d | 2026-06-13 A | 2026-06-13 A | MLTX-02-004-EN-13220 | 100% |  |  | Draftsman [12.71 h]; Consultant Staff [3.39 h] | EN.MB.SD.EL.PR.2180 | MOD-02-EN-3620 | -100 | -38 | -100 | PL | JEDENG | Engi | UDF_G1 |
| MLTX-02-004-EN-16360 |  | Shop DWG Approval for Padel Court Structure | 1d | 2026-06-13 A | 2026-06-13 A | MLTX-02-004-EN-13230 | 100% |  |  | Draftsman [12.71 h]; Consultant Staff [3.39 h] | EN.MB.SD.EL.PR.2160 | MOD-02-EN-3630 | -100 | -38 | -100 | PL | JEDENG | Engi | UDF_G1 |
|  | 1 | **MECHANCAL WORKS** |  | 2026-05-06 | 2026-05-07 |  |  |  |  |  |  |  |  |  |  |  |  |  |  |
| MLTX-02-004-EN-16150 |  | Shop DWG Approval for HVAC Plan | 1d | 2026-05-06 A | 2026-05-06 A | MLTX-02-004-EN-13030 | 100% |  |  | Draftsman [12.71 h]; Consultant Staff [3.39 h] | EN.MB.SD.MC.PR.1740 | MOD-02-EN-3650 | 0 | -9 | 0 | PL | JEDENG | Engi |  |
| MLTX-02-004-EN-16160 |  | Shop DWG Approval for Exhaust Air Plan | 1d | 2026-05-07 A | 2026-05-07 A | MLTX-02-004-EN-13040 | 100% |  |  | Draftsman [12.71 h]; Consultant Staff [3.39 h] | EN.MB.SD.MC.PR.1750 | MOD-02-EN-3660 | 0 | -10 | 0 | PL | JEDENG | Engi |  |

| ID | WBS | Activity | Duration | Start | Finish | Predecessors | Complete | Planned start | Planned finish | Resources | New Activity Code | New Activity ID | % Variance | Delay | On Schedule | Shop Drawings | Engineering | WBS-Project | Flag | Old Activity ID - MK |
| --- | --- | --- | --- | --- | --- | --- | --- | --- | --- | --- | --- | --- | --- | --- | --- | --- | --- | --- | --- | --- |
|  | 2 | **ELECTRICAL WORKS** |  | 2026-04-15 | 2026-08-26 |  |  |  |  |  |  |  |  |  |  |  |  |  |  |  |
| MLTX-02-004-EN-16070 |  | Shop DWG Approval for Lighting Layout | 10d | 2026-04-15 A | 2026-04-26 A | MLTX-02-004-EN-12920 | 100% |  |  | Draftsman [12.71 h]; Consultant Staff [3.39 h] | EN.MB.SD.EL.PR.1980 | MOD-02-EN-3680 | 0 | 0 | 0 | PL | JEDENG | Engi |  |  |
| MLTX-02-004-EN-16080 |  | Shop DWG Approval for Power Layout | 10d | 2026-04-15 A | 2026-04-26 A | MLTX-02-004-EN-12930 | 100% |  |  | Draftsman [12.71 h]; Consultant Staff [3.39 h] | EN.MB.SD.EL.PR.2000 | MOD-02-EN-3690 | 0 | 0 | 0 | PL | JEDENG | Engi |  |  |
| MLTX-02-004-EN-16090 |  | Shop DWG Approval for Power Single Line Diagram | 6d | 2026-07-15 A | 2026-07-15 A | MLTX-02-004-EN-12940 | 100% | 2026-07-15 | 2026-07-21 | Draftsman [12.71 h]; Consultant Staff [3.39 h] | EN.MB.SD.EL.PR.2020 | MOD-02-EN-3730 | -100 | -31 | -100 | PL | JEDENG | Engi | UDF_G1 |  |
| MLTX-02-004-EN-16100 |  | Shop DWG Approval for Panel Board Schedules | 6d | 2026-07-15 A | 2026-07-15 A | MLTX-02-004-EN-12950 | 100% | 2026-07-15 | 2026-07-21 | Draftsman [12.71 h]; Consultant Staff [3.39 h] | EN.MB.SD.EL.PR.2030 | MOD-02-EN-3740 | -100 | -31 | -100 | PL | JEDENG | Engi | UDF_G1 |  |
| MLTX-02-004-EN-16110 |  | Shop DWG Approval for Power Installation Details | 6d | 2026-07-15 A | 2026-07-15 A | MLTX-02-004-EN-12960 | 100% | 2026-07-15 | 2026-07-21 | Draftsman [12.71 h]; Consultant Staff [3.39 h] | EN.MB.SD.EL.PR.2050 | MOD-02-EN-3700 | -100 | -31 | -100 | PL | JEDENG | Engi | UDF_G1 |  |
| MLTX-02-004-EN-16120 |  | Shop DWG Approval for CCTV Details | 10d | 2026-08-26 A | 2026-08-26 A | MLTX-02-004-EN-12980 | 100% | 2026-09-06 | 2026-09-16 | Draftsman [12.71 h]; Consultant Staff [3.39 h] | EN.MB.SD.EL.PR.2140 | MOD-02-EN-3760 | -100 | -31 | -100 | PL | JEDENG | Engi | UDF_G1 |  |
| MLTX-02-004-EN-16130 |  | Shop DWG Approval for CCTV Layout | 10d | 2026-08-26 A | 2026-08-26 A | MLTX-02-004-EN-13010 | 100% | 2026-09-07 | 2026-09-17 | Draftsman [12.71 h]; Consultant Staff [3.39 h] | EN.MB.SD.EL.PR.2150 | MOD-02-EN-3770 | -100 | -31 | -100 | PL | JEDENG | Engi | UDF_G1 |  |
| MLTX-02-004-EN-16140 |  | Shop DWG Approval for CCTV Riser Diagram | 10d | 2026-08-26 A | 2026-08-26 A | MLTX-02-004-EN-13020 | 100% | 2026-09-07 | 2026-09-17 | Draftsman [12.71 h]; Consultant Staff [3.39 h] | EN.MB.SD.EL.PR.2180 | MOD-02-EN-3780 | -100 | -31 | -100 | PL | JEDENG | Engi | UDF_G1 |  |
|  | EAR | **SHOP DRAWINGS APPROVAL FOR LANDSCAPE WORKS** |  | 2026-04-11 | 2026-07-18 |  |  |  |  |  |  |  |  |  |  |  |  |  |  |  |
|  | 3 | **ARCHITECTURE WORKS** |  | 2026-04-22 | 2026-05-14 |  |  |  |  |  |  |  |  |  |  |  |  |  |  |  |
| MLTX-02-004-EN-16010 |  | Shop DWG Approval for Landscape Layout | 4d | 2026-04-22 A | 2026-04-26 A | MLTX-02-004-EN-12860 | 100% |  |  | Draftsman [12.71 h]; Consultant Staff [3.39 h] |  | MOD-02-EN-3810 | 0 | -7 | 0 | LS | JEDENG | Engi |  | MAK-01-EN-1120 |
| MLTX-02-004-EN-16020 |  | Shop DWG Approval for Hardscape Plan | 2d | 2026-05-13 A | 2026-05-14 A | MLTX-02-004-EN-12870 | 100% |  |  | Draftsman [12.71 h]; Consultant Staff [3.39 h] |  | MOD-02-EN-3820 | 0 | -38 | 0 | LS | JEDENG | Engi | UDF_G1 | MAK-01-EN-1130 |
| MLTX-02-004-EN-16030 |  | Shop DWG Approval for Planting Plan | 2d | 2026-05-13 A | 2026-05-14 A | MLTX-02-004-EN-12880 | 100% |  |  | Draftsman [12.71 h]; Consultant Staff [3.39 h] |  | MOD-02-EN-3830 | 0 | -38 | 0 | LS | JEDENG | Engi | UDF_G1 | MAK-01-EN-1140 |
| MLTX-02-004-EN-16040 |  | Shop DWG Approval for Landscape Details | 2d | 2026-05-13 A | 2026-05-14 A | MLTX-02-004-EN-12890 | 100% |  |  | Draftsman [12.71 h]; Consultant Staff [3.39 h] |  | MOD-02-EN-3840 | 0 | -38 | 0 | LS | JEDENG | Engi | UDF_G1 | MAK-01-EN-1150 |
|  | 1 | **MECHANCAL WORKS** |  | 2026-07-18 | 2026-07-18 |  |  |  |  |  |  |  |  |  |  |  |  |  |  |  |
| MLTX-02-004-EN-16050 |  | Shop DWG Approval for Irrigation Details | 6d | 2026-07-18 A | 2026-07-18 A | MLTX-02-004-EN-12900 | 100% | 2026-07-18 | 2026-07-23 | Draftsman [12.71 h]; Consultant Staff [3.39 h] |  | MOD-02-EN-3880 | -100 | -38 | -100 | LS | JEDENG | Engi | UDF_G1 | MAK-01-EN-1140 |
| MLTX-02-004-EN-16060 |  | Shop DWG Approval for Irrigation Layout | 6d | 2026-07-18 A | 2026-07-18 A | MLTX-02-004-EN-12910 | 100% | 2026-07-18 | 2026-07-23 | Draftsman [12.71 h]; Consultant Staff [3.39 h] |  | MOD-02-EN-3920 | -100 | -38 | -100 | LS | JEDENG | Engi | UDF_G1 | MAK-01-EN-1140 |
|  | 2 | **ELECTRICAL WORKS** |  | 2026-04-11 | 2026-05-23 |  |  |  |  |  |  |  |  |  |  |  |  |  |  |  |
| MLTX-02-004-EN-15590 |  | Shop DWG Approval for Lighting General Arrangement | 10d | 2026-04-11 A | 2026-04-21 A | MLTX-02-004-EN-12160 | 100% |  |  | Draftsman [12.71 h]; Consultant Staff [3.39 h] |  | MOD-02-EN-3970 | 0 | 0 | 0 | LS | JEDENG | Engi |  | MAK-01-EN-1120 |
| MLTX-02-004-EN-15600 |  | Shop DWG Approval for Lighting Network Layout | 10d | 2026-04-11 A | 2026-04-21 A | MLTX-02-004-EN-12170 | 100% |  |  | Draftsman [12.71 h]; Consultant Staff [3.39 h] |  | MOD-02-EN-3980 | 0 | 0 | 0 | LS | JEDENG | Engi |  | MAK-01-EN-1130 |
| MLTX-02-004-EN-15610 |  | Shop DWG Approval for Lighting Details | 10d | 2026-04-11 A | 2026-04-21 A | MLTX-02-004-EN-12180 | 100% |  |  | Draftsman [12.71 h]; Consultant Staff [3.39 h] |  | MOD-02-EN-3950 | 0 | 0 | 0 | LS | JEDENG | Engi |  | MAK-01-EN-1140 |
| MLTX-02-004-EN-15620 |  | Shop DWG Approval for Lighting Single Line Diagram | 1d | 2026-05-23 A | 2026-05-23 A | MLTX-02-004-EN-12190 | 100% |  |  | Draftsman [12.71 h]; Consultant Staff [3.39 h] |  | MOD-02-EN-3960 | -100 | -38 | -100 | LS | JEDENG | Engi | UDF_G1 | MAK-01-EN-1150 |
|  | MTS | **METHOD STATEMENTS** |  | 2026-03-31 | 2026-12-05 |  |  |  |  |  |  |  |  |  |  |  |  |  |  |  |
|  | 1 | **METHOD STATEMENT SUBMITTAL** |  | 2026-03-31 | 2026-11-21 |  |  |  |  |  |  |  |  |  |  |  |  |  |  |  |
|  | 4 | **CIVIL WORKS** |  | 2026-03-31 | 2026-05-21 |  |  |  |  |  |  |  |  |  |  |  |  |  |  |  |
| MLTX-02-004-EN-12200 |  | Preparation & Submission of Method Statement for Earthwork | 17d | 2026-03-31 A | 2026-04-19 A | MLTX-02-004-MB-2010 | 100% |  |  | QA/QC Engineer [16.1 h] |  | MOD-02-EN-4020 | 0 | -11 | 0 |  | JEDENG | Engi |  | A1010 |
| MLTX-02-004-EN-12220 |  | Preparation & Submission of Method Statement for Waterproofing | 22d | 2026-03-31 A | 2026-04-25 A | MLTX-02-004-MB-2010 | 100% |  |  | QA/QC Engineer [16.1 h] |  | MOD-02-EN-4040 | 0 | -16 | 0 |  | JEDENG | Engi |  |  |
| MLTX-02-004-EN-12210 |  | Preparation & Submission of Method Statement for Concrete Works | 1d | 2026-05-21 A | 2026-05-21 A | MLTX-02-004-MB-2010 | 100% |  |  | QA/QC Engineer [16.1 h] |  | MOD-02-EN-4030 | -100 | -38 | -100 |  | JEDENG | Engi | UDF_G1 | A1020 |

| ID | WBS | Activity | Duration | Start | Finish | Predecessors | Complete | Planned start | Planned finish | Resources | New Activity ID | % Variance | Delay | Flag | On Schedule | Engineering | WBS-Project | Old Activity ID - MK |
| --- | --- | --- | --- | --- | --- | --- | --- | --- | --- | --- | --- | --- | --- | --- | --- | --- | --- | --- |
|  | 1 | **ARCHITECTURE WORKS** |  | 2026-05-31 | 2026-11-21 |  |  |  |  |  |  |  |  |  |  |  |  |  |
| MLTX-02-004-EN-12300 |  | Preparation & Submission of Method Statement for Interlock/Curbstone Works | 1d | 2026-05-31 A | 2026-05-31 A | MLTX-02-004-MB-2010 | 100% |  |  | QA/QC Engineer [16.1 h] | MOD-02-EN-4110 | -100 | -38 | UDF_G1 | -100 | JEDENG | Engi |  |
| MLTX-02-004-EN-12310 |  | Preparation & Submission of Method Statement for Parking Works | 1d | 2026-05-31 A | 2026-05-31 A | MLTX-02-004-MB-2010 | 100% |  |  | QA/QC Engineer [16.1 h] | MOD-02-EN-4120 | -100 | -38 | UDF_G1 | -100 | JEDENG | Engi |  |
| MLTX-02-004-EN-12270 |  | Preparation & Submission of Method Statement for Tilling Works | 1d | 2026-06-06 A | 2026-06-06 A | MLTX-02-004-MB-2010 | 100% |  |  | QA/QC Engineer [16.1 h] | MOD-02-EN-4080 | -100 | -38 | UDF_G1 | -100 | JEDENG | Engi |  |
| MLTX-02-004-EN-12290 |  | Preparation & Submission of Method Statement for Doors/Windows Works | 1d | 2026-06-06 A | 2026-06-06 A | MLTX-02-004-MB-2010 | 100% |  |  | QA/QC Engineer [16.1 h] | MOD-02-EN-4100 | -100 | -38 | UDF_G1 | -100 | JEDENG | Engi | A1020 |
| MLTX-02-004-EN-12370 |  | Preparation & Submission of Method Statement for Gypsum Board Works | 1d | 2026-06-14 A | 2026-06-14 A | MLTX-02-004-MB-2010 | 100% |  |  | QA/QC Engineer [16.1 h] | MOD-02-EN-4180 | -100 | -38 | UDF_G1 | -100 | JEDENG | Engi |  |
| MLTX-02-004-EN-12250 |  | Preparation & Submission of Method Statement for Plastering Works | 1d | 2026-06-16 A | 2026-06-16 A | MLTX-02-004-MB-2010 | 100% |  |  | QA/QC Engineer [16.1 h] | MOD-02-EN-4060 | -100 | -38 | UDF_G1 | -100 | JEDENG | Engi | A1010 |
| MLTX-02-004-EN-12260 |  | Preparation & Submission of Method Statement for Masonary Works | 1d | 2026-06-16 A | 2026-06-16 A | MLTX-02-004-MB-2010 | 100% |  |  | QA/QC Engineer [16.1 h] | MOD-02-EN-4070 | -100 | -38 | UDF_G1 | -100 | JEDENG | Engi | A1020 |
| MLTX-02-004-EN-12280 |  | Preparation & Submission of Method Statement for Seats/Benches Works | 1d | 2026-06-18 A | 2026-06-18 A | MLTX-02-004-MB-2010 | 100% |  |  | QA/QC Engineer [16.1 h] | MOD-02-EN-4090 | -100 | -38 | UDF_G1 | -100 | JEDENG | Engi | A1010 |
| MLTX-02-004-EN-12320 |  | Preparation & Submission of Method Statement for Soft Scape Works | 5d | 2026-07-11 A | 2026-07-11 A | MLTX-02-004-MB-2010 | 100% | 2026-07-11 | 2026-07-15 | QA/QC Engineer [16.1 h] | MOD-02-EN-4130 | -100 | -38 | UDF_G1 | -100 | JEDENG | Engi |  |
| MLTX-02-004-EN-12350 |  | Preparation & Submission of Method Statement for Metal Works | 6d | 2026-07-11 A | 2026-07-11 A | MLTX-02-004-MB-2010 | 100% | 2026-07-11 | 2026-07-16 | QA/QC Engineer [16.1 h] | MOD-02-EN-4160 | -100 | -38 | UDF_G1 | -100 | JEDENG | Engi |  |
| MLTX-02-004-EN-12360 |  | Preparation & Submission of Method Statement for Partitions Works | 5d | 2026-07-15 A | 2026-07-15 A | MLTX-02-004-MB-2010 | 100% | 2026-07-15 | 2026-07-20 | QA/QC Engineer [16.1 h] | MOD-02-EN-4170 | -100 | -38 | UDF_G1 | -100 | JEDENG | Engi |  |
| MLTX-02-004-EN-12340 |  | Preparation & Submission of Method Statement for Air Dome Works | 5d | 2026-08-19 A | 2026-08-19 A | MLTX-02-004-MB-2010 | 100% | 2026-09-29 | 2026-10-04 | QA/QC Engineer [16.1 h] | MOD-02-EN-4150 | -100 | -38 | UDF_G1 | -100 | JEDENG | Engi |  |
| MLTX-02-004-EN-12330 |  | Preparation & Submission of Method Statement for Fence Works | 5d | 2026-11-19 A | 2026-11-21 A | MLTX-02-004-MB-2010 | 100% | 2026-11-23 | 2026-11-28 | QA/QC Engineer [16.1 h] | MOD-02-EN-4140 | -100 | -38 | UDF_G1 | -100 | JEDENG | Engi |  |
|  | 2 | **MECHANICAL WORKS** |  | 2026-04-07 | 2026-06-04 |  |  |  |  |  |  |  |  |  |  |  |  |  |
| MLTX-02-004-EN-12400 |  | Preparation & Submission of Method Statement for Fire Fighting System | 7d | 2026-04-07 A | 2026-04-14 A | MLTX-02-004-EN-12220 | 100% |  |  | QA/QC Engineer [16.1 h] | MOD-02-EN-4220 | 0 | 0 |  | 0 | JEDENG | Engi |  |
| MLTX-02-004-EN-12380 |  | Preparation & Submission of Method Statement for Sewage/Drainage System | 1d | 2026-05-31 A | 2026-05-31 A | MLTX-02-004-EN-12200 | 100% |  |  | QA/QC Engineer [16.1 h] | MOD-02-EN-4200 | -100 | -32 | UDF_G1 | -100 | JEDENG | Engi | A1010 |
| MLTX-02-004-EN-12390 |  | Preparation & Submission of Method Statement for Water Supply System | 1d | 2026-06-04 A | 2026-06-04 A | MLTX-02-004-EN-12210 | 100% |  |  | QA/QC Engineer [16.1 h] | MOD-02-EN-4210 | -100 | -38 | UDF_G1 | -100 | JEDENG | Engi | A1020 |
| MLTX-02-004-EN-12410 |  | Preparation & Submission of Method Statement for Irrigation System | 1d | 2026-06-04 A | 2026-06-04 A | MLTX-02-004-EN-12250 | 100% |  |  | QA/QC Engineer [16.1 h] | MOD-02-EN-4230 | -100 | -38 | UDF_G1 | -100 | JEDENG | Engi | A1010 |
| MLTX-02-004-EN-12420 |  | Preparation & Submission of Method Statement for HVAC System | 1d | 2026-06-04 A | 2026-06-04 A | MLTX-02-004-EN-12260 | 100% |  |  | QA/QC Engineer [16.1 h] | MOD-02-EN-4240 | -100 | -38 | UDF_G1 | -100 | JEDENG | Engi | A1020 |
|  | 5 | **ELECTRICAL WORKS** |  | 2026-06-13 | 2026-07-22 |  |  |  |  |  |  |  |  |  |  |  |  |  |
| MLTX-02-004-EN-12460 |  | Preparation & Submission of Method Statement for Earthing/Lightning Works | 1d | 2026-06-13 A | 2026-06-13 A | MLTX-02-004-MS-1010 SS | 100% |  |  | QA/QC Engineer [16.1 h] | MOD-02-EN-4290 | -100 | -38 | UDF_G1 | -100 | JEDENG | Engi |  |
| MLTX-02-004-EN-12230 |  | Preparation & Submission of Method Statement for Electrical Conduits/Pulling Works | 1d | 2026-06-16 A | 2026-06-16 A | MLTX-02-004-EN-12300 | 100% |  |  | QA/QC Engineer [16.1 h] | MOD-02-EN-4310 | -100 | -38 | UDF_G1 | -100 | JEDENG | Engi |  |
| MLTX-02-004-EN-12240 |  | Preparation & Submission of Method Statement for Lighting Poles Installation | 1d | 2026-06-17 A | 2026-06-17 A | MLTX-02-004-MS-1010 SS | 100% |  |  | QA/QC Engineer [16.1 h] | MOD-02-EN-4330 | -100 | -38 | UDF_G1 | -100 | JEDENG | Engi |  |
| MLTX-02-004-EN-12450 |  | Preparation & Submission of Method Statement for Lighting Works | 1d | 2026-06-18 A | 2026-06-18 A | MLTX-02-004-MS-1010 SS | 100% |  |  | QA/QC Engineer [16.1 h] | MOD-02-EN-4280 | -100 | -38 | UDF_G1 | -100 | JEDENG | Engi |  |
| MLTX-02-004-EN-12430 |  | Preparation & Submission of Method Statement for Telecommunication & Data System | 10d | 2026-07-15 A | 2026-07-15 A | MLTX-02-004-EN-12230 | 100% | 2026-07-21 | 2026-08-01 | QA/QC Engineer [16.1 h] | MOD-02-EN-4260 | -100 | -38 | UDF_G1 | -100 | JEDENG | Engi |  |
| MLTX-02-004-EN-12470 |  | Preparation & Submission of Method Statement for Panel Boards Works | 9d | 2026-07-18 A | 2026-07-18 A | MLTX-02-004-EN-12370 | 100% | 2026-07-18 | 2026-07-27 | QA/QC Engineer [16.1 h] | MOD-02-EN-4300 | -100 | -38 | UDF_G1 | -100 | JEDENG | Engi |  |
| MLTX-02-004-EN-12440 |  | Preparation & Submission of Method Statement for CCTV System | 10d | 2026-07-22 A | 2026-07-22 A | MLTX-02-004-EN-12340 | 100% | 2026-07-28 | 2026-08-08 | QA/QC Engineer [16.1 h] | MOD-02-EN-4270 | -100 | -38 | UDF_G1 | -100 | JEDENG | Engi |  |

| ID | WBS | Activity | Duration | Start | Finish | Predecessors | Complete | Planned start | Planned finish | Total float | Free float | Resources | New Activity ID | Old Activity ID - MK | % Variance | Delay | Flag | On Schedule | Engineering | WBS-Project |
| --- | --- | --- | --- | --- | --- | --- | --- | --- | --- | --- | --- | --- | --- | --- | --- | --- | --- | --- | --- | --- |
|  | 2 | **METHOD STATEMENT APPROVAL** |  | 2026-04-15 | 2026-12-05 |  |  |  |  |  |  |  |  |  |  |  |  |  |  |  |
|  | 4 | **CIVIL WORKS** |  | 2026-05-21 | 2026-05-31 |  |  |  |  |  |  |  |  |  |  |  |  |  |  |  |
| MLTX-02-004-EN-15260 |  | Approval of Method Statement for Earthwork | 1d | 2026-05-21 A | 2026-05-21 A | MLTX-02-004-EN-12200 | 100% |  |  |  |  | Consultant Staff [16.1 h] | MOD-02-EN-4360 | A1010 | -100 | -32 | UDF_G1 | -100 | JEDENG | Engi |
| MLTX-02-004-EN-15270 |  | Approval of Method Statement for Concrete Works | 1d | 2026-05-31 A | 2026-05-31 A | MLTX-02-004-EN-12210 | 100% |  |  |  |  | Consultant Staff [16.1 h] | MOD-02-EN-4370 | A1020 | -100 | -38 | UDF_G1 | -100 | JEDENG | Engi |
| MLTX-02-004-EN-15280 |  | Approval of Method Statement for Waterproofing | 1d | 2026-05-31 A | 2026-05-31 A | MLTX-02-004-EN-12220 | 100% |  |  |  |  | Consultant Staff [16.1 h] | MOD-02-EN-4380 |  | -100 | -32 | UDF_G1 | -100 | JEDENG | Engi |
|  | 1 | **ARCHITECTURE WORKS** |  | 2026-05-31 | 2026-12-05 |  |  |  |  |  |  |  |  |  |  |  |  |  |  |  |
| MLTX-02-004-EN-15360 |  | Approval of Method Statement for Interlock/Curbstone Works | 1d | 2026-05-31 A | 2026-05-31 A | MLTX-02-004-EN-12300 | 100% |  |  |  |  | Consultant Staff [16.1 h] | MOD-02-EN-4450 |  | -100 | -38 | UDF_G1 | -100 | JEDENG | Engi |
| MLTX-02-004-EN-15370 |  | Approval of Method Statement for Parking Works | 1d | 2026-05-31 A | 2026-05-31 A | MLTX-02-004-EN-12310 | 100% |  |  |  |  | Consultant Staff [16.1 h] | MOD-02-EN-4460 |  | -100 | -38 | UDF_G1 | -100 | JEDENG | Engi |
| MLTX-02-004-EN-15330 |  | Approval of Method Statement for Tilling Works | 1d | 2026-06-06 A | 2026-06-06 A | MLTX-02-004-EN-12270 | 100% |  |  |  |  | Consultant Staff [16.1 h] | MOD-02-EN-4420 |  | -100 | -38 | UDF_G1 | -100 | JEDENG | Engi |
| MLTX-02-004-EN-15350 |  | Approval of Method Statement for Doors/Windows Works | 1d | 2026-06-06 A | 2026-06-06 A | MLTX-02-004-EN-12290 | 100% |  |  |  |  | Consultant Staff [16.1 h] | MOD-02-EN-4440 | A1020 | -100 | -38 | UDF_G1 | -100 | JEDENG | Engi |
| MLTX-02-004-EN-15310 |  | Approval of Method Statement for Plastering Works | 1d | 2026-06-18 A | 2026-06-18 A | MLTX-02-004-EN-12250 | 100% |  |  |  |  | Consultant Staff [16.1 h] | MOD-02-EN-4400 | A1010 | -100 | -38 | UDF_G1 | -100 | JEDENG | Engi |
| MLTX-02-004-EN-15320 |  | Approval of Method Statement for Masonary Works | 1d | 2026-06-18 A | 2026-06-18 A | MLTX-02-004-EN-12260 | 100% |  |  |  |  | Consultant Staff [16.1 h] | MOD-02-EN-4410 | A1020 | -100 | -38 | UDF_G1 | -100 | JEDENG | Engi |
| MLTX-02-004-EN-15420 |  | Approval of Method Statement for Gypsum Board Works | 1d | 2026-06-18 A | 2026-06-18 A | MLTX-02-004-EN-12370 | 100% |  |  |  |  | Consultant Staff [16.1 h] | MOD-02-EN-4520 |  | -100 | -38 | UDF_G1 | -100 | JEDENG | Engi |
| MLTX-02-004-EN-15340 |  | Approval of Method Statement for Seats/Benches Works | 6d | 2026-07-11 A | 2026-07-11 A | MLTX-02-004-EN-12280 | 100% | 2026-07-11 | 2026-07-16 |  |  | Consultant Staff [16.1 h] | MOD-02-EN-4430 | A1010 | -100 | -38 | UDF_G1 | -100 | JEDENG | Engi |
| MLTX-02-004-EN-15380 |  | Approval of Method Statement for Soft Scape Works | 10d | 2026-07-11 A | 2026-07-11 A | MLTX-02-004-EN-12320 | 100% | 2026-07-11 | 2026-07-21 |  |  | Consultant Staff [16.1 h] | MOD-02-EN-4470 |  | -100 | -38 | UDF_G1 | -100 | JEDENG | Engi |
| MLTX-02-004-EN-15410 |  | Approval of Method Statement for Partitions Works | 10d | 2026-07-15 A | 2026-07-15 A | MLTX-02-004-EN-12360 | 100% | 2026-07-15 | 2026-07-26 |  |  | Consultant Staff [16.1 h] | MOD-02-EN-4510 |  | -100 | -38 | UDF_G1 | -100 | JEDENG | Engi |
| MLTX-02-004-EN-15400 |  | Approval of Method Statement for Air Dome Works | 10d | 2026-08-27 A | 2026-08-27 A | MLTX-02-004-EN-12340 | 100% | 2026-10-05 | 2026-10-15 |  |  | Consultant Staff [16.1 h] | MOD-02-EN-4490 |  | -100 | -38 | UDF_G1 | -100 | JEDENG | Engi |
| MLTX-02-004-EN-15390 |  | Approval of Method Statement for Fence Works | 10d | 2026-11-24 | 2026-12-05 | MLTX-02-004-EN-12330 |  |  |  | 44d | 0d | Consultant Staff [16.1 h] | MOD-02-EN-4480 |  | -100 | -38 | UDF_G1 | -100 | JEDENG | Engi |
|  | 2 | **MECHANICAL WORKS** |  | 2026-04-15 | 2026-06-11 |  |  |  |  |  |  |  |  |  |  |  |  |  |  |  |
| MLTX-02-004-EN-15450 |  | Approval of Method Statement for Fire Fighting System | 10d | 2026-04-15 A | 2026-04-26 A | MLTX-02-004-EN-12400 | 100% |  |  |  |  | Consultant Staff [26.1 h] | MOD-02-EN-4560 |  | 0 | 0 |  | 0 | JEDENG | Engi |
| MLTX-02-004-EN-15430 |  | Approval of Method Statement for Sewage/Drainage System | 1d | 2026-06-11 A | 2026-06-11 A | MLTX-02-004-EN-12380 | 100% |  |  |  |  | Consultant Staff [26.1 h] | MOD-02-EN-4540 | A1010 | -100 | -32 | UDF_G1 | -100 | JEDENG | Engi |
| MLTX-02-004-EN-15440 |  | Approval of Method Statement for Water Supply System | 1d | 2026-06-11 A | 2026-06-11 A | MLTX-02-004-EN-12390 | 100% |  |  |  |  | Consultant Staff [26.1 h] | MOD-02-EN-4550 | A1020 | -100 | -38 | UDF_G1 | -100 | JEDENG | Engi |
| MLTX-02-004-EN-15460 |  | Approval of Method Statement for Irrigation System | 1d | 2026-06-11 A | 2026-06-11 A | MLTX-02-004-EN-12410 | 100% |  |  |  |  | Consultant Staff [26.1 h] | MOD-02-EN-4570 | A1010 | -100 | -38 | UDF_G1 | -100 | JEDENG | Engi |
| MLTX-02-004-EN-15470 |  | Approval of Method Statement for HVAC System | 1d | 2026-06-11 A | 2026-06-11 A | MLTX-02-004-EN-12420 | 100% |  |  |  |  | Consultant Staff [26.1 h] | MOD-02-EN-4580 | A1020 | -100 | -38 | UDF_G1 | -100 | JEDENG | Engi |

| ID | WBS | Activity | Duration | Start | Finish | Predecessors | Complete | Planned start | Planned finish | Resources | New Activity ID | % Variance | Delay | Flag | On Schedule | Engineering | WBS-Project | Old Activity ID - MK |
| --- | --- | --- | --- | --- | --- | --- | --- | --- | --- | --- | --- | --- | --- | --- | --- | --- | --- | --- |
|  | 5 | **ELECTRICAL WORKS** |  | 2026-07-11 | 2026-07-22 |  |  |  |  |  |  |  |  |  |  |  |  |  |
| MLTX-02-004-EN-15290 |  | Approval of Method Statement for Electrical Conduits/Pulling Works | 6d | 2026-07-11 A | 2026-07-11 A | MLTX-02-004-EN-12230 | 100% | 2026-07-11 | 2026-07-16 | Consultant Staff [26.1 h] | MOD-02-EN-4600 | -100 | -38 | UDF_G1 | -100 | JEDENG | Engi |  |
| MLTX-02-004-EN-15300 |  | Approval of Method Statement for Lighting Poles Installation | 10d | 2026-07-11 A | 2026-07-11 A | MLTX-02-004-EN-12240 | 100% | 2026-07-11 | 2026-07-21 | Consultant Staff [26.1 h] | MOD-02-EN-4620 | -100 | -38 | UDF_G1 | -100 | JEDENG | Engi |  |
| MLTX-02-004-EN-15500 |  | Approval of Method Statement for Lighting Works | 10d | 2026-07-11 A | 2026-07-11 A | MLTX-02-004-EN-12450 | 100% | 2026-07-11 | 2026-07-21 | Consultant Staff [26.1 h] | MOD-02-EN-4650 | -100 | -38 | UDF_G1 | -100 | JEDENG | Engi |  |
| MLTX-02-004-EN-15510 |  | Approval of Method Statement for Earthing/Lightning Works | 5d | 2026-07-11 A | 2026-07-11 A | MLTX-02-004-EN-12460 | 100% | 2026-07-11 | 2026-07-15 | Consultant Staff [36.1 h] | MOD-02-EN-4660 | -100 | -38 | UDF_G1 | -100 | JEDENG | Engi |  |
| MLTX-02-004-EN-15480 |  | Approval of Method Statement for Telecommunication & Data System | 10d | 2026-07-15 A | 2026-07-15 A | MLTX-02-004-MS-1010 | 100% | 2026-07-15 | 2026-07-26 | Consultant Staff [26.1 h] | MOD-02-EN-4630 | -100 | -38 | UDF_G1 | -100 | JEDENG | Engi |  |
| MLTX-02-004-EN-15520 |  | Approval of Method Statement for Panel Boards Works | 5d | 2026-07-18 A | 2026-07-18 A | MLTX-02-004-EN-12470, MLTX-02-004-EN-13840, MLTX-02-004-EN-14200, MLTX-02-004-EN-14220 | 100% | 2026-07-29 | 2026-08-03 | Consultant Staff [31.1 h] | MOD-02-EN-4670 | -100 | -38 | UDF_G1 | -100 | JEDENG | Engi |  |
| MLTX-02-004-EN-15490 |  | Approval of Method Statement for CCTV System | 10d | 2026-07-22 A | 2026-07-22 A | MLTX-02-004-EN-15510 | 100% | 2026-07-22 | 2026-08-02 | Consultant Staff [26.1 h] | MOD-02-EN-4640 | -100 | -38 | UDF_G1 | -100 | JEDENG | Engi |  |
|  | PREQ | **PRE-QUALIFICATION & MATERIAL** |  | 2026-03-31 | 2026-08-19 |  |  |  |  |  |  |  |  |  |  |  |  |  |
|  | PRE | **PRE-QUALIFICATION** |  | 2026-03-31 | 2026-05-21 |  |  |  |  |  |  |  |  |  |  |  |  |  |
|  | TOI | **TOILET/SERVICE WORKS** |  | 2026-03-31 | 2026-04-15 |  |  |  |  |  |  |  |  |  |  |  |  |  |
|  | 1 | **STEEL REINFORCEMENT** |  | 2026-03-31 | 2026-04-13 |  |  |  |  |  |  |  |  |  |  |  |  |  |
| MLTX-02-004-EN-14260 |  | Pre-Qualification Submittal for Steel Reinforcement | 11d | 2026-03-31 A | 2026-04-12 A | MLTX-02-004-MB-2010 | 100% |  |  | QA/QC Engineer [16.1 h] | MOD-02-EN-4720 | 0 | -5 |  | 0 | JEDENG | Engi | MAK-01-PR-1000 |
| MLTX-02-004-EN-14380 |  | Pre-Qualification Approval for Steel Reinforcement | 2d | 2026-04-12 A | 2026-04-13 A | MLTX-02-004-EN-14260 | 100% |  |  | Consultant Staff [16.1 h] | MOD-02-EN-4730 | 0 | 1 |  | 0 | JEDENG | Engi | MAK-01-PR-1010 |
|  | 2 | **READY MIX CONCRETE** |  | 2026-03-31 | 2026-04-12 |  |  |  |  |  |  |  |  |  |  |  |  |  |
| MLTX-02-004-EN-14270 |  | Pre-Qualification Submittal for Ready Mixed Concrete | 10d | 2026-03-31 A | 2026-04-11 A | MLTX-02-004-EN-14260 SS, MLTX-02-004-MB-2010 | 100% |  |  | QA/QC Engineer [16.1 h] | MOD-02-EN-4750 | 0 | -4 |  | 0 | JEDENG | Engi | MAK-01-PR-1040 |
| MLTX-02-004-EN-14280 |  | Pre-Qualification Approval of Ready Mixed Concrete | 2d | 2026-04-11 A | 2026-04-12 A | MLTX-02-004-EN-14270 | 100% |  |  | Consultant Staff [16.1 h] | MOD-02-EN-4760 | 0 | 2 |  | 0 | JEDENG | Engi | MAK-01-PR-1050 |
|  | 3 | **CONCRETE BLOCKS** |  | 2026-03-31 | 2026-04-12 |  |  |  |  |  |  |  |  |  |  |  |  |  |
| MLTX-02-004-EN-14480 |  | Pre-Qualification Submittal for Concrete Blocks | 10d | 2026-03-31 A | 2026-04-11 A | MLTX-02-004-EN-14270 SS, MLTX-02-004-MB-2010 | 100% |  |  | QA/QC Engineer [16.1 h] | MOD-02-EN-4780 | 0 | -4 |  | 0 | JEDENG | Engi | MAK-01-PR-1000 |
| MLTX-02-004-EN-14490 |  | Pre-Qualification Approval for Concrete Blocks | 2d | 2026-04-11 A | 2026-04-12 A | MLTX-02-004-EN-14480 | 100% |  |  | Consultant Staff [16.1 h] | MOD-02-EN-4790 | 0 | 2 |  | 0 | JEDENG | Engi | MAK-01-PR-1010 |
|  | 4 | **WATER PROOFING** |  | 2026-03-31 | 2026-04-13 |  |  |  |  |  |  |  |  |  |  |  |  |  |
| MLTX-02-004-EN-14290 |  | Pre-Qualification Submittal for Water Proofing | 10d | 2026-03-31 A | 2026-04-11 A | MLTX-02-004-EN-14480 SS, MLTX-02-004-MB-2010 | 100% |  |  | QA/QC Engineer [16.1 h] | MOD-02-EN-4810 | 0 | -4 |  | 0 | JEDENG | Engi | MAK-01-PR-1060 |
| MLTX-02-004-EN-14390 |  | Pre-Qualification Approval for Water Proofing | 3d | 2026-04-11 A | 2026-04-13 A | MLTX-02-004-EN-14290 | 100% |  |  | Consultant Staff [16.1 h] | MOD-02-EN-4820 | 0 | 3 |  | 0 | JEDENG | Engi | MAK-01-PR-1070 |
|  | 6 | **FLOOR/WALL TILES** |  | 2026-03-31 | 2026-04-12 |  |  |  |  |  |  |  |  |  |  |  |  |  |
| MLTX-02-004-EN-14500 |  | Pre-Qualification Submittal for Tilling Materials | 10d | 2026-03-31 A | 2026-04-11 A | MLTX-02-004-EN-14290 SS, MLTX-02-004-MB-2010 | 100% |  |  | QA/QC Engineer [16.1 h] | MOD-02-EN-4840 | 0 | -4 |  | 0 | JEDENG | Engi | MAK-01-PR-1000 |
| MLTX-02-004-EN-14510 |  | Pre-Qualification Approval for Tailling Material | 5d | 2026-04-07 A | 2026-04-12 A | MLTX-02-004-EN-14500 | 100% |  |  | Consultant Staff [16.1 h] | MOD-02-EN-4850 | 0 | 2 |  | 0 | JEDENG | Engi | MAK-01-PR-1010 |

| ID | WBS | Activity | Duration | Start | Finish | Predecessors | Complete | Resources | New Activity ID | Old Activity ID - MK | % Variance | Delay | On Schedule | Engineering | WBS-Project |
| --- | --- | --- | --- | --- | --- | --- | --- | --- | --- | --- | --- | --- | --- | --- | --- |
|  | 7 | **SUSPENDED CEILING** |  | 2026-03-31 | 2026-04-13 |  |  |  |  |  |  |  |  |  |  |
| MLTX-02-004-EN-14520 |  | Pre-Qualification Submittal for Suspend Ceiling | 11d | 2026-03-31 A | 2026-04-12 A | MLTX-02-004-EN-14500 SS, MLTX-02-004-MB-2010 | 100% | QA/QC Engineer [16.1 h] | MOD-02-EN-4870 | MAK-01-PR-1000 | 0 | -5 | 0 | JEDENG | Engi |
| MLTX-02-004-EN-14530 |  | Pre-Qualification Approval for Suspend Ceiling | 2d | 2026-04-12 A | 2026-04-13 A | MLTX-02-004-EN-14520 | 100% | Consultant Staff [16.1 h] | MOD-02-EN-4880 | MAK-01-PR-1010 | 0 | 1 | 0 | JEDENG | Engi |
|  | 8 | **DOORS/WINDOWS** |  | 2026-03-31 | 2026-04-12 |  |  |  |  |  |  |  |  |  |  |
| MLTX-02-004-EN-14540 |  | Pre-Qualification Submittal for Doors/Windows | 10d | 2026-03-31 A | 2026-04-11 A | MLTX-02-004-EN-14520 SS, MLTX-02-004-MB-2010 | 100% | QA/QC Engineer [16.1 h] | MOD-02-EN-4900 | MAK-01-PR-1000 | 0 | -4 | 0 | JEDENG | Engi |
| MLTX-02-004-EN-14550 |  | Pre-Qualification Approval for Doors/Windows | 2d | 2026-04-11 A | 2026-04-12 A | MLTX-02-004-EN-14540 | 100% | Consultant Staff [16.1 h] | MOD-02-EN-4910 | MAK-01-PR-1010 | 0 | 2 | 0 | JEDENG | Engi |
|  | 9 | **FURNITURES** |  | 2026-03-31 | 2026-04-12 |  |  |  |  |  |  |  |  |  |  |
| MLTX-02-004-EN-14660 |  | Pre-Qualification Submittal for Furnitures | 10d | 2026-03-31 A | 2026-04-11 A | MLTX-02-004-EN-14540 SS, MLTX-02-004-MB-2010 | 100% | QA/QC Engineer [16.1 h] | MOD-02-EN-4930 | MAK-01-PR-1000 | 0 | -4 | 0 | JEDENG | Engi |
| MLTX-02-004-EN-14670 |  | Pre-Qualification Approval for Furnitures | 2d | 2026-04-11 A | 2026-04-12 A | MLTX-02-004-EN-14660 | 100% | Consultant Staff [16.1 h] | MOD-02-EN-4940 | MAK-01-PR-1010 | 0 | 2 | 0 | JEDENG | Engi |
|  | 10 | **SANITARY FIXTURES** |  | 2026-03-31 | 2026-04-12 |  |  |  |  |  |  |  |  |  |  |
| MLTX-02-004-EN-14560 |  | Pre-Qualification Submittal for Sanitary Fixtures | 10d | 2026-03-31 A | 2026-04-11 A | MLTX-02-004-EN-14660 SS, MLTX-02-004-MB-2010 | 100% | QA/QC Engineer [16.1 h] | MOD-02-EN-4960 | MAK-01-PR-1000 | 0 | -4 | 0 | JEDENG | Engi |
| MLTX-02-004-EN-14570 |  | Pre-Qualification Approval for Sanitary Fixtures | 2d | 2026-04-11 A | 2026-04-12 A | MLTX-02-004-EN-14560 | 100% | Consultant Staff [16.1 h] | MOD-02-EN-4970 | MAK-01-PR-1010 | 0 | 2 | 0 | JEDENG | Engi |
|  | 11 | **WATER SUPPLY PIPES** |  | 2026-03-31 | 2026-04-12 |  |  |  |  |  |  |  |  |  |  |
| MLTX-02-004-EN-14580 |  | Pre-Qualification Submittal for Water Supply Pipes | 10d | 2026-03-31 A | 2026-04-11 A | MLTX-02-004-EN-14560 SS, MLTX-02-004-MB-2010 | 100% | QA/QC Engineer [16.1 h] | MOD-02-EN-4990 | MAK-01-PR-1000 | 0 | -4 | 0 | JEDENG | Engi |
| MLTX-02-004-EN-14590 |  | Pre-Qualification Approval for Water Supply Pipes | 2d | 2026-04-11 A | 2026-04-12 A | MLTX-02-004-EN-14580 | 100% | Consultant Staff [16.1 h] | MOD-02-EN-5000 | MAK-01-PR-1010 | 0 | 2 | 0 | JEDENG | Engi |
|  | 12 | **SEWAGE/DRAINAGE PIPES** |  | 2026-03-31 | 2026-04-12 |  |  |  |  |  |  |  |  |  |  |
| MLTX-02-004-EN-14600 |  | Pre-Qualification Submittal for Sewage/Drainage Pipes | 10d | 2026-03-31 A | 2026-04-11 A | MLTX-02-004-EN-14580 SS | 100% | QA/QC Engineer [16.1 h] | MOD-02-EN-5020 | MAK-01-PR-1000 | 0 | -4 | 0 | JEDENG | Engi |
| MLTX-02-004-EN-14610 |  | Pre-Qualification Approval for Sewage/Drainage Pipes | 2d | 2026-04-11 A | 2026-04-12 A | MLTX-02-004-EN-14600 | 100% | Consultant Staff [16.1 h] | MOD-02-EN-5030 | MAK-01-PR-1010 | 0 | 2 | 0 | JEDENG | Engi |
|  | 16 | **PACKAGE AC UNITS** |  | 2026-04-07 | 2026-04-15 |  |  |  |  |  |  |  |  |  |  |
| MLTX-02-004-EN-14690 |  | Pre-Qualification Submittal for Package AC Units | 6d | 2026-04-07 A | 2026-04-13 A | MLTX-02-004-EN-14260 | 100% | QA/QC Engineer [16.1 h] | MOD-02-EN-5050 | MAK-01-PR-1000 | 0 | -3 | 0 | JEDENG | Engi |
| MLTX-02-004-EN-14700 |  | Pre-Qualification Approval for Package AC Units | 5d | 2026-04-11 A | 2026-04-15 A | MLTX-02-004-EN-14690 | 100% | Consultant Staff [16.1 h] | MOD-02-EN-5060 | MAK-01-PR-1010 | 0 | 0 | 0 | JEDENG | Engi |
|  | 17 | **AIR DIFUSSERS/GRILLS** |  | 2026-04-07 | 2026-04-15 |  |  |  |  |  |  |  |  |  |  |
| MLTX-02-004-EN-14710 |  | Pre-Qualification Submittal for Air Diffusers/Grills | 6d | 2026-04-07 A | 2026-04-13 A | MLTX-02-004-EN-14270 | 100% | QA/QC Engineer [16.1 h] | MOD-02-EN-5080 | MAK-01-PR-1000 | 0 | -3 | 0 | JEDENG | Engi |
| MLTX-02-004-EN-14720 |  | Pre-Qualification Approval for Air Diffusers/Grills | 5d | 2026-04-11 A | 2026-04-15 A | MLTX-02-004-EN-14710 | 100% | Consultant Staff [16.1 h] | MOD-02-EN-5090 | MAK-01-PR-1010 | 0 | 0 | 0 | JEDENG | Engi |

| ID | WBS | Activity | Duration | Start | Finish | Predecessors | Complete | Resources | New Activity ID | Old Activity ID - MK | % Variance | Delay | On Schedule | Engineering | WBS-Project |
| --- | --- | --- | --- | --- | --- | --- | --- | --- | --- | --- | --- | --- | --- | --- | --- |
|  | 18 | **GALVANIZED DUCTS** |  | 2026-04-07 | 2026-04-15 |  |  |  |  |  |  |  |  |  |  |
| MLTX-02-004-EN-14730 |  | Pre-Qualification Submittal for Galvanized Ducts | 6d | 2026-04-07 A | 2026-04-13 A | MLTX-02-004-EN-14480 | 100% | QA/QC Engineer [16.1 h] | MOD-02-EN-5110 | MAK-01-PR-1000 | 0 | -3 | 0 | JEDENG | Engi |
| MLTX-02-004-EN-14740 |  | Pre-Qualification Approval for Galvanized Ducts | 5d | 2026-04-11 A | 2026-04-15 A | MLTX-02-004-EN-14730 | 100% | Consultant Staff [16.1 h] | MOD-02-EN-5120 | MAK-01-PR-1010 | 0 | 0 | 0 | JEDENG | Engi |
|  | 19 | **EXHAUST FANS** |  | 2026-04-07 | 2026-04-15 |  |  |  |  |  |  |  |  |  |  |
| MLTX-02-004-EN-14750 |  | Pre-Qualification Submittal for Exhaust Fans | 5d | 2026-04-07 A | 2026-04-12 A | MLTX-02-004-EN-14290 | 100% | QA/QC Engineer [16.1 h] | MOD-02-EN-5140 | MAK-01-PR-1000 | 0 | -2 | 0 | JEDENG | Engi |
| MLTX-02-004-EN-14760 |  | Pre-Qualification Approval for Exhaust Fans | 5d | 2026-04-11 A | 2026-04-15 A | MLTX-02-004-EN-14750 | 100% | Consultant Staff [16.1 h] | MOD-02-EN-5150 | MAK-01-PR-1010 | 0 | 0 | 0 | JEDENG | Engi |
|  | 13 | **LIGHTING FIXTURES** |  | 2026-04-07 | 2026-04-15 |  |  |  |  |  |  |  |  |  |  |
| MLTX-02-004-EN-14620 |  | Pre-Qualification Submittal for Lighting Fixtures | 3d | 2026-04-07 A | 2026-04-09 A | MLTX-02-004-EN-14500 | 100% | QA/QC Engineer [16.1 h] | MOD-02-EN-5170 | MAK-01-PR-1000 | 0 | 0 | 0 | JEDENG | Engi |
| MLTX-02-004-EN-14630 |  | Pre-Qualification Approval for Lighting Fixtures | 5d | 2026-04-11 A | 2026-04-15 A | MLTX-02-004-EN-14620 | 100% | Consultant Staff [16.1 h] | MOD-02-EN-5180 | MAK-01-PR-1010 | 0 | 0 | 0 | JEDENG | Engi |
|  | 14 | **SWITCHES/SOCKETS** |  | 2026-04-07 | 2026-04-15 |  |  |  |  |  |  |  |  |  |  |
| MLTX-02-004-EN-14640 |  | Pre-Qualification Submittal for Switches/Sockets | 3d | 2026-04-07 A | 2026-04-09 A | MLTX-02-004-EN-14520 | 100% | QA/QC Engineer [16.1 h] | MOD-02-EN-5200 | MAK-01-PR-1000 | 0 | 0 | 0 | JEDENG | Engi |
| MLTX-02-004-EN-14650 |  | Pre-Qualification Approval for Switches/Sockets | 5d | 2026-04-11 A | 2026-04-15 A | MLTX-02-004-EN-14640 | 100% | Consultant Staff [16.1 h] | MOD-02-EN-5210 | MAK-01-PR-1010 | 0 | 0 | 0 | JEDENG | Engi |
|  | 15 | **EARTHING SYSTEM** |  | 2026-04-07 | 2026-04-15 |  |  |  |  |  |  |  |  |  |  |
| MLTX-02-004-EN-14440 |  | Pre-Qualification Submittal for Earthing System | 3d | 2026-04-07 A | 2026-04-09 A | MLTX-02-004-EN-14540 | 100% | QA/QC Engineer [16.1 h] | MOD-02-EN-5230 | MAK-01-PR-1290 | 0 | 0 | 0 | JEDENG | Engi |
| MLTX-02-004-EN-14450 |  | Pre-Qualification Approval for Earthing System | 5d | 2026-04-11 A | 2026-04-15 A | MLTX-02-004-EN-14440 | 100% | Consultant Staff [16.1 h] | MOD-02-EN-5240 | MAK-01-PR-1300 | 0 | 0 | 0 | JEDENG | Engi |
|  | 5 | **DISTRIBUTION PANNELS** |  | 2026-04-07 | 2026-04-15 |  |  |  |  |  |  |  |  |  |  |
| MLTX-02-004-EN-14460 |  | Pre-Qualification Submittal for Distribution Panels | 3d | 2026-04-07 A | 2026-04-09 A | MLTX-02-004-EN-14660 | 100% | QA/QC Engineer [16.1 h] | MOD-02-EN-5260 | MAK-01-PR-LLI-1060 | 0 | 0 | 0 | JEDENG | Engi |
| MLTX-02-004-EN-14470 |  | Pre-Qualification Approval for Distribution Panels | 5d | 2026-04-11 A | 2026-04-15 A | MLTX-02-004-EN-14460 | 100% | Consultant Staff [16.1 h] | MOD-02-EN-5270 | MAK-01-PR-LLI-1070 | 0 | 0 | 0 | JEDENG | Engi |
|  | PLG | **PLAYGROUND WORKS** |  | 2026-03-31 | 2026-04-15 |  |  |  |  |  |  |  |  |  |  |
|  | 5 | **PVC MEMBRANE** |  | 2026-03-31 | 2026-04-15 |  |  |  |  |  |  |  |  |  |  |
| MLTX-02-004-EN-14850 |  | Pre-Qualification Submittal for PVC Membrane | 12d | 2026-03-31 A | 2026-04-13 A | MLTX-02-004-EN-14600 SS | 100% | QA/QC Engineer [16.1 h] | MOD-02-EN-5300 | MAK-01-PR-1120 | 0 | -6 | 0 | JEDENG | Engi |
| MLTX-02-004-EN-14860 |  | Pre-Qualification Approval for PVC Membrane | 3d | 2026-04-13 A | 2026-04-15 A | MLTX-02-004-EN-14850 | 100% | Consultant Staff [16.1 h] | MOD-02-EN-5310 | MAK-01-PR-1130 | 0 | -1 | 0 | JEDENG | Engi |
|  | 6 | **STEEL TENSION CABLES** |  | 2026-03-31 | 2026-04-15 |  |  |  |  |  |  |  |  |  |  |
| MLTX-02-004-EN-14870 |  | Pre-Qualification Submittal for Steel Tension Cables | 12d | 2026-03-31 A | 2026-04-13 A | MLTX-02-004-EN-14850 SS | 100% | QA/QC Engineer [16.1 h] | MOD-02-EN-5330 | MAK-01-PR-1120 | 0 | -6 | 0 | JEDENG | Engi |
| MLTX-02-004-EN-15170 |  | Pre-Qualification Approval for Steel Tension Cables | 3d | 2026-04-13 A | 2026-04-15 A | MLTX-02-004-EN-14870 | 100% | Consultant Staff [16.1 h] | MOD-02-EN-5340 | MAK-01-PR-1120 | 0 | -1 | 0 | JEDENG | Engi |

| ID | WBS | Activity | Duration | Start | Finish | Predecessors | Complete | Resources | New Activity ID | Old Activity ID - MK | % Variance | Delay | On Schedule | Engineering | WBS-Project |
| --- | --- | --- | --- | --- | --- | --- | --- | --- | --- | --- | --- | --- | --- | --- | --- |
|  | 7 | **EMERGENCY DOORS** |  | 2026-03-31 | 2026-04-15 |  |  |  |  |  |  |  |  |  |  |
| MLTX-02-004-EN-14880 |  | Pre-Qualification Submittal for Emergency Doors | 12d | 2026-03-31 A | 2026-04-13 A | MLTX-02-004-MB-2010 | 100% | QA/QC Engineer [16.1 h] | MOD-02-EN-5360 | MAK-01-PR-1120 | 0 | -9 | 0 | JEDENG | Engi |
| MLTX-02-004-EN-15180 |  | Pre-Qualification Approval for Emergency Doors | 3d | 2026-04-13 A | 2026-04-15 A | MLTX-02-004-EN-14880 | 100% | Consultant Staff [16.1 h] | MOD-02-EN-5370 | MAK-01-PR-1120 | 0 | -4 | 0 | JEDENG | Engi |
|  | 8 | **PRESSURE UNITS** |  | 2026-03-31 | 2026-04-15 |  |  |  |  |  |  |  |  |  |  |
| MLTX-02-004-EN-14890 |  | Pre-Qualification Submittal for Pressure Units | 12d | 2026-03-31 A | 2026-04-13 A | MLTX-02-004-MB-2010 | 100% | QA/QC Engineer [16.1 h] | MOD-02-EN-5390 | MAK-01-PR-1120 | 0 | -9 | 0 | JEDENG | Engi |
| MLTX-02-004-EN-15190 |  | Pre-Qualification Approval for Pressure Units | 3d | 2026-04-13 A | 2026-04-15 A | MLTX-02-004-EN-14890 | 100% | Consultant Staff [16.1 h] | MOD-02-EN-5400 | MAK-01-PR-1120 | 0 | -4 | 0 | JEDENG | Engi |
|  | 9 | **AIR LOCK DOORS** |  | 2026-03-31 | 2026-04-15 |  |  |  |  |  |  |  |  |  |  |
| MLTX-02-004-EN-14900 |  | Pre-Qualification Submittal for Lock Doors | 12d | 2026-03-31 A | 2026-04-13 A | MLTX-02-004-MB-2010 | 100% | QA/QC Engineer [16.1 h] | MOD-02-EN-5420 | MAK-01-PR-1120 | 0 | -9 | 0 | JEDENG | Engi |
| MLTX-02-004-EN-15200 |  | Pre-Qualification Approval for Lock Doors | 3d | 2026-04-13 A | 2026-04-15 A | MLTX-02-004-EN-14900 | 100% | Consultant Staff [16.1 h] | MOD-02-EN-5430 | MAK-01-PR-1120 | 0 | -4 | 0 | JEDENG | Engi |
|  | 15 | **ARTIFICIAL TURF** |  | 2026-03-31 | 2026-04-12 |  |  |  |  |  |  |  |  |  |  |
| MLTX-02-004-EN-15050 |  | Pre-Qualification Submittal for Artificial TURF | 10d | 2026-03-31 A | 2026-04-11 A | MLTX-02-004-MB-2010 | 100% | QA/QC Engineer [16.1 h] | MOD-02-EN-5450 | MAK-01-PR-1120 | 0 | -7 | 0 | JEDENG | Engi |
| MLTX-02-004-EN-15210 |  | Pre-Qualification Approval for Artificial TURF | 2d | 2026-04-11 A | 2026-04-12 A | MLTX-02-004-EN-15050 | 100% | Consultant Staff [16.1 h] | MOD-02-EN-5460 | MAK-01-PR-1120 | 0 | -1 | 0 | JEDENG | Engi |
|  | 20 | **RUBBER GRANULES** |  | 2026-03-31 | 2026-04-15 |  |  |  |  |  |  |  |  |  |  |
| MLTX-02-004-EN-15060 |  | Pre-Qualification Submittal for Rubber Granules | 12d | 2026-03-31 A | 2026-04-13 A | MLTX-02-004-MB-2010 | 100% | QA/QC Engineer [16.1 h] | MOD-02-EN-5480 | MAK-01-PR-1120 | 0 | -9 | 0 | JEDENG | Engi |
| MLTX-02-004-EN-15220 |  | Pre-Qualification Approval for Rubber Granules | 3d | 2026-04-13 A | 2026-04-15 A | MLTX-02-004-EN-15060 | 100% | Consultant Staff [16.1 h] | MOD-02-EN-5490 | MAK-01-PR-1120 | 0 | -4 | 0 | JEDENG | Engi |
|  | 21 | **PADEL GLASS** |  | 2026-03-31 | 2026-04-15 |  |  |  |  |  |  |  |  |  |  |
| MLTX-02-004-EN-15070 |  | Pre-Qualification Submittal for Padel Glass | 12d | 2026-03-31 A | 2026-04-13 A | MLTX-02-004-MB-2010 | 100% | QA/QC Engineer [16.1 h] | MOD-02-EN-5510 | MAK-01-PR-1120 | 0 | -9 | 0 | JEDENG | Engi |
| MLTX-02-004-EN-15230 |  | Pre-Qualification Approval for Padel Glass | 3d | 2026-04-13 A | 2026-04-15 A | MLTX-02-004-EN-15070 | 100% | Consultant Staff [16.1 h] | MOD-02-EN-5520 | MAK-01-PR-1120 | 0 | -4 | 0 | JEDENG | Engi |
|  | 22 | **PADEL WIRE MESH/STEEL SETS** |  | 2026-03-31 | 2026-04-15 |  |  |  |  |  |  |  |  |  |  |
| MLTX-02-004-EN-15080 |  | Pre-Qualification Submittal for Wire Mesh/Steel Sets | 12d | 2026-03-31 A | 2026-04-13 A | MLTX-02-004-MB-2010 | 100% | QA/QC Engineer [16.1 h] | MOD-02-EN-5540 | MAK-01-PR-1120 | 0 | -9 | 0 | JEDENG | Engi |
| MLTX-02-004-EN-15240 |  | Pre-Qualification Approval for Wire Mesh/Steel Sets | 3d | 2026-04-13 A | 2026-04-15 A | MLTX-02-004-EN-15080 | 100% | Consultant Staff [16.1 h] | MOD-02-EN-5550 | MAK-01-PR-1120 | 0 | -4 | 0 | JEDENG | Engi |
|  | 1 | **AGGREGATE BASE COURSE** |  | 2026-03-31 | 2026-04-15 |  |  |  |  |  |  |  |  |  |  |
| MLTX-02-004-EN-14300 |  | Pre-Qualification Submittal for Aggregate Base Course | 12d | 2026-03-31 A | 2026-04-13 A | MLTX-02-004-MB-2010 | 100% | QA/QC Engineer [16.1 h] | MOD-02-EN-5570 | MAK-01-PR-1090 | 0 | -9 | 0 | JEDENG | Engi |
| MLTX-02-004-EN-14310 |  | Pre-Qualification Approval for Aggregate Base Course | 3d | 2026-04-13 A | 2026-04-15 A | MLTX-02-004-EN-14300 | 100% | Consultant Staff [16.1 h] | MOD-02-EN-5580 | MAK-01-PR-1100 | 0 | -4 | 0 | JEDENG | Engi |

| ID | WBS | Activity | Duration | Start | Finish | Predecessors | Complete | Resources | New Activity ID | Old Activity ID - MK | % Variance | Delay | On Schedule | Engineering | WBS-Project |
| --- | --- | --- | --- | --- | --- | --- | --- | --- | --- | --- | --- | --- | --- | --- | --- |
|  | 16 | **PACKAGE AC UNITS** |  | 2026-04-04 | 2026-04-15 |  |  |  |  |  |  |  |  |  |  |
| MLTX-02-004-EN-14770 |  | Pre-Qualification Submittal for Package AC Units | 9d | 2026-04-04 A | 2026-04-13 A | MLTX-02-004-EN-14890 | 100% | QA/QC Engineer [16.1 h] | MOD-02-EN-5690 | MAK-01-PR-1000 | 0 | -6 | 0 | JEDENG | Engi |
| MLTX-02-004-EN-14780 |  | Pre-Qualification Approval for Package AC Units | 3d | 2026-04-13 A | 2026-04-15 A | MLTX-02-004-EN-14770 | 100% | Consultant Staff [16.1 h] | MOD-02-EN-5700 | MAK-01-PR-1010 | 0 | -3 | 0 | JEDENG | Engi |
|  | 17 | **AIR DIFUSSERS/GRILLS** |  | 2026-04-04 | 2026-04-15 |  |  |  |  |  |  |  |  |  |  |
| MLTX-02-004-EN-14790 |  | Pre-Qualification Submittal for Air Difussers/Grills | 9d | 2026-04-04 A | 2026-04-13 A | MLTX-02-004-EN-14900 | 100% | QA/QC Engineer [16.1 h] | MOD-02-EN-5720 | MAK-01-PR-1000 | 0 | -6 | 0 | JEDENG | Engi |
| MLTX-02-004-EN-14800 |  | Pre-Qualification Approval for Air Difussers/Grills | 3d | 2026-04-13 A | 2026-04-15 A | MLTX-02-004-EN-14790 | 100% | Consultant Staff [16.1 h] | MOD-02-EN-5730 | MAK-01-PR-1010 | 0 | -3 | 0 | JEDENG | Engi |
|  | 2 | **BITUMINOUS BASE & WEARING COURSE** |  | 2026-04-07 | 2026-04-14 |  |  |  |  |  |  |  |  |  |  |
| MLTX-02-004-EN-14320 |  | Pre-Qualification Submittal for Bituminous Base & Wearing Cource | 5d | 2026-04-07 A | 2026-04-12 A | MLTX-02-004-EN-14850 | 100% | QA/QC Engineer [16.1 h] | MOD-02-EN-5600 | MAK-01-PR-1120 | 0 | -2 | 0 | JEDENG | Engi |
| MLTX-02-004-EN-14330 |  | Pre-Qualification Approval for the Site | 3d | 2026-04-12 A | 2026-04-14 A | MLTX-02-004-EN-14320 | 100% | Consultant Staff [16.1 h] | MOD-02-EN-5610 | MAK-01-PR-1130 | 0 | 1 | 0 | JEDENG | Engi |
|  | 3 | **INTERLOCKING PAVING** |  | 2026-04-11 | 2026-04-12 |  |  |  |  |  |  |  |  |  |  |
| MLTX-02-004-EN-14340 |  | Pre-Qualification Submittal for Interlocking Block Pavers | 1d | 2026-04-11 A | 2026-04-11 A | MLTX-02-004-EN-14870 | 100% | QA/QC Engineer [16.1 h] | MOD-02-EN-5630 | MAK-01-PR-1170 | 0 | -1 | 0 | JEDENG | Engi |
| MLTX-02-004-EN-14400 |  | Pre-Qualification Approval for Interlocking Block Pavers | 2d | 2026-04-11 A | 2026-04-12 A | MLTX-02-004-EN-14340 | 100% | Consultant Staff [16.1 h] | MOD-02-EN-5640 | MAK-01-PR-1180 | 0 | 3 | 0 | JEDENG | Engi |
|  | 4 | **MARKING PAINT** |  | 2026-04-04 | 2026-04-12 |  |  |  |  |  |  |  |  |  |  |
| MLTX-02-004-EN-14680 |  | Pre-Qualification Submittal for Marking Paint | 8d | 2026-04-04 A | 2026-04-12 A | MLTX-02-004-EN-14880 | 100% | QA/QC Engineer [16.1 h] | MOD-02-EN-5660 | MAK-01-PR-1120 | 0 | -5 | 0 | JEDENG | Engi |
| MLTX-02-004-EN-15250 |  | Pre-Qualification Approval for Marking Paint | 1d | 2026-04-12 A | 2026-04-12 A | MLTX-02-004-EN-14680 | 100% | Consultant Staff [16.1 h] | MOD-02-EN-5670 | MAK-01-PR-1120 | 0 | 0 | 0 | JEDENG | Engi |
|  | 18 | **GALVANIZED DUCTS** |  | 2026-04-04 | 2026-04-15 |  |  |  |  |  |  |  |  |  |  |
| MLTX-02-004-EN-14810 |  | Pre-Qualification Submittal for Galvanized Duct | 9d | 2026-04-04 A | 2026-04-13 A | MLTX-02-004-EN-14790 SS | 100% | QA/QC Engineer [16.1 h] | MOD-02-EN-5750 | MAK-01-PR-1000 | 0 | -6 | 0 | JEDENG | Engi |
| MLTX-02-004-EN-14820 |  | Pre-Qualification Approval for Galvanized Duct | 3d | 2026-04-13 A | 2026-04-15 A | MLTX-02-004-EN-14810 | 100% | Consultant Staff [16.1 h] | MOD-02-EN-5760 | MAK-01-PR-1010 | 0 | -3 | 0 | JEDENG | Engi |
|  | 19 | **EXHAUST FANS** |  | 2026-04-04 | 2026-04-15 |  |  |  |  |  |  |  |  |  |  |
| MLTX-02-004-EN-14830 |  | Pre-Qualification Submittal for Exhaust Fans | 9d | 2026-04-04 A | 2026-04-13 A | MLTX-02-004-EN-15050 | 100% | QA/QC Engineer [16.1 h] | MOD-02-EN-5780 | MAK-01-PR-1000 | 0 | -6 | 0 | JEDENG | Engi |
| MLTX-02-004-EN-14840 |  | Pre-Qualification Approval for Exhaust Fans | 3d | 2026-04-13 A | 2026-04-15 A | MLTX-02-004-EN-14830 | 100% | Consultant Staff [16.1 h] | MOD-02-EN-5790 | MAK-01-PR-1010 | 0 | -3 | 0 | JEDENG | Engi |
|  | 10 | **DISTRIBUTION BOARDS** |  | 2026-04-04 | 2026-04-15 |  |  |  |  |  |  |  |  |  |  |
| MLTX-02-004-EN-14910 |  | Pre-Qualification Submittal for Distribution Boards | 9d | 2026-04-04 A | 2026-04-13 A | MLTX-02-004-EN-14900 | 100% | QA/QC Engineer [16.1 h] | MOD-02-EN-5810 | MAK-01-PR-1000 | 0 | -6 | 0 | JEDENG | Engi |
| MLTX-02-004-EN-14920 |  | Pre-Qualification Approval for Distribution Boards | 3d | 2026-04-13 A | 2026-04-15 A | MLTX-02-004-EN-14910 | 100% | Consultant Staff [16.1 h] | MOD-02-EN-5820 | MAK-01-PR-1010 | 0 | -3 | 0 | JEDENG | Engi |

| ID | WBS | Activity | Duration | Start | Finish | Predecessors | Complete | Resources | New Activity ID | Old Activity ID - MK | % Variance | Delay | On Schedule | Engineering | WBS-Project | Flag |
| --- | --- | --- | --- | --- | --- | --- | --- | --- | --- | --- | --- | --- | --- | --- | --- | --- |
|  | 11 | **POWER CABLES** |  | 2026-04-04 | 2026-04-15 |  |  |  |  |  |  |  |  |  |  |  |
| MLTX-02-004-EN-14930 |  | Pre-Qualification Submittal for Power Cables | 9d | 2026-04-04 A | 2026-04-13 A | MLTX-02-004-EN-15080 | 100% | QA/QC Engineer [16.1 h] | MOD-02-EN-5840 | MAK-01-PR-1000 | 0 | -6 | 0 | JEDENG | Engi |  |
| MLTX-02-004-EN-14940 |  | Pre-Qualification Approval for Power Cables | 3d | 2026-04-13 A | 2026-04-15 A | MLTX-02-004-EN-14930 | 100% | Consultant Staff [16.1 h] | MOD-02-EN-5850 | MAK-01-PR-1010 | 0 | -3 | 0 | JEDENG | Engi |  |
|  | 12 | **LIGHT FIXTURES** |  | 2026-04-04 | 2026-04-15 |  |  |  |  |  |  |  |  |  |  |  |
| MLTX-02-004-EN-14950 |  | Pre-Qualification Submittal for Light Fixtures | 9d | 2026-04-04 A | 2026-04-13 A | MLTX-02-004-EN-15060 | 100% | QA/QC Engineer [16.1 h] | MOD-02-EN-5870 | MAK-01-PR-1000 | 0 | -6 | 0 | JEDENG | Engi |  |
| MLTX-02-004-EN-14960 |  | Pre-Qualification Approval for Light Fixtures | 3d | 2026-04-13 A | 2026-04-15 A | MLTX-02-004-EN-14950 | 100% | Consultant Staff [16.1 h] | MOD-02-EN-5880 | MAK-01-PR-1010 | 0 | -3 | 0 | JEDENG | Engi |  |
|  | 13 | **CCTV MATERIALS** |  | 2026-04-04 | 2026-04-15 |  |  |  |  |  |  |  |  |  |  |  |
| MLTX-02-004-EN-14970 |  | Pre-Qualification Submittal for CCTV | 9d | 2026-04-04 A | 2026-04-13 A | MLTX-02-004-EN-15070 | 100% | QA/QC Engineer [16.1 h] | MOD-02-EN-5900 | MAK-01-PR-1000 | 0 | -6 | 0 | JEDENG | Engi |  |
| MLTX-02-004-EN-14980 |  | Pre-Qualification Approval for CCTV | 3d | 2026-04-13 A | 2026-04-15 A | MLTX-02-004-EN-14970 | 100% | Consultant Staff [16.1 h] | MOD-02-EN-5910 | MAK-01-PR-1010 | 0 | -3 | 0 | JEDENG | Engi |  |
|  | 14 | **POWER OUTLETS/SWITCHES** |  | 2026-04-04 | 2026-04-15 |  |  |  |  |  |  |  |  |  |  |  |
| MLTX-02-004-EN-14990 |  | Pre-Qualification Submittal for Power Outlets/Switches | 9d | 2026-04-04 A | 2026-04-13 A | MLTX-02-004-EN-14300 | 100% | QA/QC Engineer [16.1 h] | MOD-02-EN-5930 | MAK-01-PR-1000 | 0 | -6 | 0 | JEDENG | Engi |  |
| MLTX-02-004-EN-15000 |  | Pre-Qualification Approval for Power Outlets/Switches | 3d | 2026-04-13 A | 2026-04-15 A | MLTX-02-004-EN-14990 | 100% | Consultant Staff [16.1 h] | MOD-02-EN-5940 | MAK-01-PR-1010 | 0 | -3 | 0 | JEDENG | Engi |  |
|  | LSC | **LANDSCAPE WORKS** |  | 2026-04-04 | 2026-05-21 |  |  |  |  |  |  |  |  |  |  |  |
|  | 7 | **INTERLOCKING PAVING** |  | 2026-04-04 | 2026-04-12 |  |  |  |  |  |  |  |  |  |  |  |
| MLTX-02-004-EN-15030 |  | Pre-Qualification Submittal for Interlocking Block Pavers | 7d | 2026-04-04 A | 2026-04-11 A | MLTX-02-004-EN-14300 | 100% | QA/QC Engineer [16.1 h] | MOD-02-EN-5970 | MAK-01-PR-1170 | 0 | -4 | 0 | JEDENG | Engi |  |
| MLTX-02-004-EN-15040 |  | Pre-Qualification Approval for Interlocking Block Pavers | 2d | 2026-04-11 A | 2026-04-12 A | MLTX-02-004-EN-15030 | 100% | Consultant Staff [16.1 h] | MOD-02-EN-5980 | MAK-01-PR-1180 | 0 | 0 | 0 | JEDENG | Engi |  |
|  | 9 | **CURBSTONE** |  | 2026-04-04 | 2026-04-12 |  |  |  |  |  |  |  |  |  |  |  |
| MLTX-02-004-EN-15130 |  | Pre-Qualification Submittal for Curbstone | 7d | 2026-04-04 A | 2026-04-11 A | MLTX-02-004-EN-14300 | 100% | QA/QC Engineer [16.1 h] | MOD-02-EN-6000 | MAK-01-PR-1260 | 0 | -4 | 0 | JEDENG | Engi |  |
| MLTX-02-004-EN-15140 |  | Pre-Qualification Approval for Curbstone | 2d | 2026-04-11 A | 2026-04-12 A | MLTX-02-004-EN-15130 | 100% | Consultant Staff [16.1 h] | MOD-02-EN-6010 | MAK-01-PR-1270 | 0 | 0 | 0 | JEDENG | Engi |  |
|  | 1 | **PAVEMENT MARKING** |  | 2026-04-04 | 2026-04-12 |  |  |  |  |  |  |  |  |  |  |  |
| MLTX-02-004-EN-14350 |  | Pre-Qualification Submittal for Pavement Markings | 3d | 2026-04-04 A | 2026-04-06 A | MLTX-02-004-EN-14300 | 100% | QA/QC Engineer [16.1 h] | MOD-02-EN-6030 | MAK-01-PR-1200 | 0 | 0 | 0 | JEDENG | Engi |  |
| MLTX-02-004-EN-14410 |  | Pre-Qualification Approval for Pavement Markings | 5d | 2026-04-07 A | 2026-04-12 A | MLTX-02-004-EN-14350 | 100% | Consultant Staff [16.1 h] | MOD-02-EN-6040 | MAK-01-PR-1210 | 0 | 0 | 0 | JEDENG | Engi |  |
|  | 2 | **TRAFFIC SIGNS** |  | 2026-05-06 | 2026-05-21 |  |  |  |  |  |  |  |  |  |  |  |
| MLTX-02-004-EN-14360 |  | Pre-Qualification Submittal for Traffic Signs | 1d | 2026-05-06 A | 2026-05-06 A | MLTX-02-004-EN-14300 | 100% | QA/QC Engineer [16.1 h] | MOD-02-EN-6060 | MAK-01-PR-1230 | 0 | -26 | 0 | JEDENG | Engi |  |
| MLTX-02-004-EN-14370 |  | Pre-Qualification Approval for Traffic Signs | 1d | 2026-05-21 A | 2026-05-21 A | MLTX-02-004-EN-14360 | 100% | Consultant Staff [16.1 h] | MOD-02-EN-6070 | MAK-01-PR-1240 | -100 | -32 | -100 | JEDENG | Engi | UDF_G1 |

| ID | WBS | Activity | Duration | Start | Finish | Predecessors | Complete | Resources | New Activity ID | Old Activity ID - MK | % Variance | Delay | On Schedule | Engineering | WBS-Project | Flag |
| --- | --- | --- | --- | --- | --- | --- | --- | --- | --- | --- | --- | --- | --- | --- | --- | --- |
|  | 3 | **IRRIGATION PIPES/SPRINKLERS** |  | 2026-04-04 | 2026-05-21 |  |  |  |  |  |  |  |  |  |  |  |
| MLTX-02-004-EN-14420 |  | Pre-Qualification Submittal for Irrigation Pipes/Sprinkles | 20d | 2026-04-04 A | 2026-04-26 A | MLTX-02-004-EN-14300 | 100% | QA/QC Engineer [16.1 h] | MOD-02-EN-6090 | MAK-01-PR-1260 | 0 | -17 | 0 | JEDENG | Engi |  |
| MLTX-02-004-EN-14430 |  | Pre-Qualification Approval for Irrigation Pipes/Sprinkles | 1d | 2026-05-21 A | 2026-05-21 A | MLTX-02-004-EN-14420 | 100% | Consultant Staff [16.1 h] | MOD-02-EN-6100 | MAK-01-PR-1270 | -100 | -32 | -100 | JEDENG | Engi | UDF_G1 |
|  | 5 | **AGRICULTURE SOIL** |  | 2026-04-04 | 2026-05-21 |  |  |  |  |  |  |  |  |  |  |  |
| MLTX-02-004-EN-15090 |  | Pre-Qualification Submittal for Agriculture Soil | 20d | 2026-04-04 A | 2026-04-26 A | MLTX-02-004-EN-14300 | 100% | QA/QC Engineer [16.1 h] | MOD-02-EN-6120 | MAK-01-PR-1260 | 0 | -17 | 0 | JEDENG | Engi |  |
| MLTX-02-004-EN-15100 |  | Pre-Qualification Approval for Agriculture Soil | 1d | 2026-05-21 A | 2026-05-21 A | MLTX-02-004-EN-15090 | 100% | Consultant Staff [16.1 h] | MOD-02-EN-6130 | MAK-01-PR-1270 | -100 | -32 | -100 | JEDENG | Engi | UDF_G1 |
|  | 8 | **TRACK SURFACE** |  | 2026-04-04 | 2026-04-12 |  |  |  |  |  |  |  |  |  |  |  |
| MLTX-02-004-EN-15110 |  | Pre-Qualification Submittal for Track Surface | 3d | 2026-04-04 A | 2026-04-06 A | MLTX-02-004-EN-14300 | 100% | QA/QC Engineer [30 h] | MOD-02-EN-6150 | MAK-01-PR-1260 | 0 | 0 | 0 | JEDENG | Engi |  |
| MLTX-02-004-EN-15120 |  | Pre-Qualification Approval for Track Surface | 5d | 2026-04-07 A | 2026-04-12 A | MLTX-02-004-EN-15110 | 100% | Consultant Staff [30 h] | MOD-02-EN-6160 | MAK-01-PR-1270 | 0 | 0 | 0 | JEDENG | Engi |  |
|  | 10 | **GRASS/TREES** |  | 2026-04-04 | 2026-04-19 |  |  |  |  |  |  |  |  |  |  |  |
| MLTX-02-004-EN-15150 |  | Pre-Qualification Submittal for Grass/Trees | 10d | 2026-04-04 A | 2026-04-14 A | MLTX-02-004-EN-14300 | 100% | QA/QC Engineer [30 h] | MOD-02-EN-6180 | MAK-01-PR-1260 | 0 | -7 | 0 | JEDENG | Engi |  |
| MLTX-02-004-EN-15160 |  | Pre-Qualification Approval for Grass/Trees | 5d | 2026-04-14 A | 2026-04-19 A | MLTX-02-004-EN-15150 | 100% | Consultant Staff [30 h] | MOD-02-EN-6190 | MAK-01-PR-1270 | 0 | -6 | 0 | JEDENG | Engi |  |
|  | 6 | **CABLES** |  | 2026-05-06 | 2026-05-07 |  |  |  |  |  |  |  |  |  |  |  |
| MLTX-02-004-EN-15010 |  | Pre-Qualification Submittal for Cables | 1d | 2026-05-06 A | 2026-05-06 A | MLTX-02-004-EN-14300 | 100% | QA/QC Engineer [30 h] | MOD-02-EN-6210 | MAK-01-PR-1200 | 0 | -26 | 0 | JEDENG | Engi |  |
| MLTX-02-004-EN-15020 |  | Pre-Qualification Approval for Cables | 1d | 2026-05-07 A | 2026-05-07 A | MLTX-02-004-EN-15010 | 100% | Consultant Staff [30 h] | MOD-02-EN-6220 | MAK-01-PR-1210 | 0 | -22 | 0 | JEDENG | Engi |  |
|  | 4 | **LIGHT POLES** |  | 2026-05-06 | 2026-05-07 |  |  |  |  |  |  |  |  |  |  |  |
| MLTX-02-004-EN-14240 |  | Pre-Qualification Submittal for Lighting poles | 1d | 2026-05-06 A | 2026-05-06 A | MLTX-02-004-EN-14300 | 100% | QA/QC Engineer [30 h] | MOD-02-EN-6240 | MAK-01-PR-LLI-1120 | 0 | -26 | 0 | JEDENG | Engi |  |
| MLTX-02-004-EN-14250 |  | Pre-Qualification Approval for Lighting poles | 1d | 2026-05-07 A | 2026-05-07 A | MLTX-02-004-EN-14240 | 100% | Consultant Staff [26.8 h] | MOD-02-EN-6250 | MAK-01-PR-LLI-1130 | 0 | -22 | 0 | JEDENG | Engi |  |
|  | MAT | **MATERIAL SUBMITTAL** |  | 2026-04-11 | 2026-08-19 |  |  |  |  |  |  |  |  |  |  |  |
|  | TOI | **TOILET/SERVICE WORKS** |  | 2026-04-11 | 2026-07-22 |  |  |  |  |  |  |  |  |  |  |  |
|  | 1 | **STEEL REINFORCEMENT** |  | 2026-04-11 | 2026-04-12 |  |  |  |  |  |  |  |  |  |  |  |
| MLTX-02-004-EN-13260 |  | Material Submittal for Steel Reinforcement | 1d | 2026-04-11 A | 2026-04-11 A | MLTX-02-004-EN-14380 | 100% | QA/QC Engineer [16.1 h] | MOD-02-EN-6290 | MAK-01-PR-1000 | 0 | 6 | 0 | JEDENG | Engi |  |
| MLTX-02-004-EN-13370 |  | Material Approval for Steel Reinforcement | 2d | 2026-04-11 A | 2026-04-12 A | MLTX-02-004-EN-13260 | 100% | Consultant Staff [16.1 h] | MOD-02-EN-6300 | MAK-01-PR-1010 | 0 | 12 | 0 | JEDENG | Engi |  |
|  | 2 | **READY MIX CONCRETE** |  | 2026-04-14 | 2026-04-15 |  |  |  |  |  |  |  |  |  |  |  |
| MLTX-02-004-EN-13270 |  | Material Submittal for Ready Mixed Concrete | 1d | 2026-04-14 A | 2026-04-14 A | MLTX-02-004-EN-14280 | 100% | QA/QC Engineer [16.1 h] | MOD-02-EN-6320 | MAK-01-PR-1040 | 0 | 3 | 0 | JEDENG | Engi |  |
| MLTX-02-004-EN-13280 |  | Material Approval of Ready Mixed Concrete | 2d | 2026-04-14 A | 2026-04-15 A | MLTX-02-004-EN-13270 | 100% | Consultant Staff [16.1 h] | MOD-02-EN-6330 | MAK-01-PR-1050 | 0 | 9 | 0 | JEDENG | Engi |  |

| ID | WBS | Activity | Duration | Start | Finish | Predecessors | Complete | Planned start | Planned finish | Resources | New Activity ID | Old Activity ID - MK | % Variance | Delay | On Schedule | Engineering | WBS-Project | Flag |
| --- | --- | --- | --- | --- | --- | --- | --- | --- | --- | --- | --- | --- | --- | --- | --- | --- | --- | --- |
|  | 3 | **CONCRETE BLOCKS** |  | 2026-04-13 | 2026-04-15 |  |  |  |  |  |  |  |  |  |  |  |  |  |
| MLTX-02-004-EN-13460 |  | Material Submittal for Concrete Blocks | 2d | 2026-04-13 A | 2026-04-14 A | MLTX-02-004-EN-14490 | 100% |  |  | QA/QC Engineer [16.1 h] | MOD-02-EN-6350 | MAK-01-PR-1000 | 0 | 3 | 0 | JEDENG | Engi |  |
| MLTX-02-004-EN-13470 |  | Material Approval for Concrete Blocks | 3d | 2026-04-13 A | 2026-04-15 A | MLTX-02-004-EN-13460 | 100% |  |  | Consultant Staff [16.1 h] | MOD-02-EN-6360 | MAK-01-PR-1010 | 0 | 9 | 0 | JEDENG | Engi |  |
|  | 6 | **FLOOR/WALL TILES** |  | 2026-04-15 | 2026-07-22 |  |  |  |  |  |  |  |  |  |  |  |  |  |
| MLTX-02-004-EN-13480 |  | Material Submittal for Tilling Materials | 3d | 2026-04-15 A | 2026-04-18 A | MLTX-02-004-EN-14510 | 100% |  |  | QA/QC Engineer [16.1 h] | MOD-02-EN-6410 | MAK-01-PR-1000 | 0 | 0 | 0 | JEDENG | Engi |  |
| MLTX-02-004-EN-13490 |  | Material Approval for Tilling Material | 6d | 2026-07-22 A | 2026-07-22 A | MLTX-02-004-EN-13480 | 100% | 2026-07-22 | 2026-07-28 | Consultant Staff [16.1 h] | MOD-02-EN-6420 | MAK-01-PR-1010 | -100 | -22 | -100 | JEDENG | Engi | UDF_G1 |
|  | 7 | **SUSPENDED CEILING** |  | 2026-04-15 | 2026-04-20 |  |  |  |  |  |  |  |  |  |  |  |  |  |
| MLTX-02-004-EN-13500 |  | Material Submittal for Suspend Ceiling | 3d | 2026-04-15 A | 2026-04-18 A | MLTX-02-004-EN-14530 | 100% |  |  | QA/QC Engineer [16.1 h] | MOD-02-EN-6440 | MAK-01-PR-1000 | 0 | 0 | 0 | JEDENG | Engi |  |
| MLTX-02-004-EN-13510 |  | Material Approval for Suspend Ceiling | 2d | 2026-04-19 A | 2026-04-20 A | MLTX-02-004-EN-13500 | 100% |  |  | Consultant Staff [16.1 h] | MOD-02-EN-6450 | MAK-01-PR-1010 | 0 | 5 | 0 | JEDENG | Engi |  |
|  | 8 | **DOORS/WINDOWS** |  | 2026-05-06 | 2026-05-21 |  |  |  |  |  |  |  |  |  |  |  |  |  |
| MLTX-02-004-EN-13520 |  | Material Submittal for Doors/Windows | 1d | 2026-05-06 A | 2026-05-06 A | MLTX-02-004-EN-14550 | 100% |  |  | QA/QC Engineer [16.1 h] | MOD-02-EN-6470 | MAK-01-PR-1000 | 0 | -16 | 0 | JEDENG | Engi |  |
| MLTX-02-004-EN-13530 |  | Material Approval for Doors/Windows | 1d | 2026-05-21 A | 2026-05-21 A | MLTX-02-004-EN-13520 | 100% |  |  | Consultant Staff [16.1 h] | MOD-02-EN-6480 | MAK-01-PR-1010 | -100 | -22 | -100 | JEDENG | Engi | UDF_G1 |
|  | 9 | **FURNITURES** |  | 2026-05-06 | 2026-05-07 |  |  |  |  |  |  |  |  |  |  |  |  |  |
| MLTX-02-004-EN-13640 |  | Material Submittal for Furnitures | 1d | 2026-05-06 A | 2026-05-06 A | MLTX-02-004-EN-14670 | 100% |  |  | QA/QC Engineer [16.1 h] | MOD-02-EN-6500 | MAK-01-PR-1000 | 0 | -16 | 0 | JEDENG | Engi |  |
| MLTX-02-004-EN-13650 |  | Material Approval for Furnitures | 1d | 2026-05-07 A | 2026-05-07 A | MLTX-02-004-EN-13640 | 100% |  |  | Consultant Staff [16.1 h] | MOD-02-EN-6510 | MAK-01-PR-1010 | 0 | -10 | 0 | JEDENG | Engi |  |
|  | 10 | **SANITARY FIXTURES** |  | 2026-04-15 | 2026-04-30 |  |  |  |  |  |  |  |  |  |  |  |  |  |
| MLTX-02-004-EN-13540 |  | Material Submittal for Sanitary Fixtures | 6d | 2026-04-15 A | 2026-04-21 A | MLTX-02-004-EN-14570 | 100% |  |  | QA/QC Engineer [16.1 h] | MOD-02-EN-6530 | MAK-01-PR-1000 | 0 | -3 | 0 | JEDENG | Engi |  |
| MLTX-02-004-EN-13550 |  | Material Approval for Sanitary Fixtures | 11d | 2026-04-19 A | 2026-04-30 A | MLTX-02-004-EN-13540 | 100% |  |  | Consultant Staff [16.1 h] | MOD-02-EN-6540 | MAK-01-PR-1010 | 0 | -4 | 0 | JEDENG | Engi |  |
|  | 11 | **WATER SUPPLY PIPES** |  | 2026-04-15 | 2026-04-16 |  |  |  |  |  |  |  |  |  |  |  |  |  |
| MLTX-02-004-EN-13560 |  | Material Submittal for Water Supply Pipes | 1d | 2026-04-15 A | 2026-04-15 A | MLTX-02-004-EN-14590 | 100% |  |  | QA/QC Engineer [16.1 h] | MOD-02-EN-6560 | MAK-01-PR-1000 | 0 | 2 | 0 | JEDENG | Engi |  |
| MLTX-02-004-EN-13570 |  | Material Approval for Water Supply Pipes | 2d | 2026-04-15 A | 2026-04-16 A | MLTX-02-004-EN-13560 | 100% |  |  | Consultant Staff [16.1 h] | MOD-02-EN-6570 | MAK-01-PR-1010 | 0 | 8 | 0 | JEDENG | Engi |  |
|  | 12 | **SEWAGE/DRAINAGE PIPES** |  | 2026-04-15 | 2026-04-16 |  |  |  |  |  |  |  |  |  |  |  |  |  |
| MLTX-02-004-EN-13580 |  | Material Submittal for Sewage/Drainage Pipes | 1d | 2026-04-15 A | 2026-04-15 A | MLTX-02-004-EN-14610 | 100% |  |  | QA/QC Engineer [16.1 h] | MOD-02-EN-6590 | MAK-01-PR-1000 | 0 | 2 | 0 | JEDENG | Engi |  |
| MLTX-02-004-EN-13590 |  | Material Approval for Sewage/Drainage Pipes | 2d | 2026-04-15 A | 2026-04-16 A | MLTX-02-004-EN-13580 | 100% |  |  | Consultant Staff [16.1 h] | MOD-02-EN-6600 | MAK-01-PR-1010 | 0 | 8 | 0 | JEDENG | Engi |  |

| ID | WBS | Activity | Duration | Start | Finish | Predecessors | Complete | Resources | New Activity ID | Old Activity ID - MK | % Variance | Delay | On Schedule | Engineering | WBS-Project | Flag |
| --- | --- | --- | --- | --- | --- | --- | --- | --- | --- | --- | --- | --- | --- | --- | --- | --- |
|  | 16 | **PACKAGE AC UNITS** |  | 2026-05-06 | 2026-05-07 |  |  |  |  |  |  |  |  |  |  |  |
| MLTX-02-004-EN-13670 |  | Material Submittal for Package AC Units | 1d | 2026-05-06 A | 2026-05-06 A | MLTX-02-004-EN-14700 | 100% | QA/QC Engineer [16.1 h] | MOD-02-EN-6620 | MAK-01-PR-1000 | 0 | -15 | 0 | JEDENG | Engi |  |
| MLTX-02-004-EN-13680 |  | Material Approval for Package AC Units | 1d | 2026-05-07 A | 2026-05-07 A | MLTX-02-004-EN-13670 | 100% | Consultant Staff [16.1 h] | MOD-02-EN-6630 | MAK-01-PR-1010 | 0 | -10 | 0 | JEDENG | Engi |  |
|  | 17 | **AIR DIFUSSERS/GRILLS** |  | 2026-04-16 | 2026-05-07 |  |  |  |  |  |  |  |  |  |  |  |
| MLTX-02-004-EN-13690 |  | Material Submittal for Air Diffusers/Grills | 6d | 2026-04-16 A | 2026-04-22 A | MLTX-02-004-EN-14720 | 100% | QA/QC Engineer [16.1 h] | MOD-02-EN-6650 | MAK-01-PR-1000 | 0 | -3 | 0 | JEDENG | Engi |  |
| MLTX-02-004-EN-13700 |  | Material Approval for Air Diffusers/Grills | 1d | 2026-05-07 A | 2026-05-07 A | MLTX-02-004-EN-13690 | 100% | Consultant Staff [16.1 h] | MOD-02-EN-6660 | MAK-01-PR-1010 | 0 | -10 | 0 | JEDENG | Engi |  |
|  | 18 | **GALVANIZED DUCTS** |  | 2026-06-13 | 2026-06-18 |  |  |  |  |  |  |  |  |  |  |  |
| MLTX-02-004-EN-13710 |  | Material Submittal for Galvanized Ducts | 1d | 2026-06-13 A | 2026-06-13 A | MLTX-02-004-EN-14740 | 100% | QA/QC Engineer [16.1 h] | MOD-02-EN-6680 | MAK-01-PR-1000 | -100 | -24 | -100 | JEDENG | Engi | UDF_G1 |
| MLTX-02-004-EN-13720 |  | Material Approval for Galvanized Ducts | 1d | 2026-06-18 A | 2026-06-18 A | MLTX-02-004-EN-13710 | 100% | Consultant Staff [16.1 h] | MOD-02-EN-6690 | MAK-01-PR-1010 | -100 | -24 | -100 | JEDENG | Engi | UDF_G1 |
|  | 19 | **EXHAUST FANS** |  | 2026-04-16 | 2026-05-06 |  |  |  |  |  |  |  |  |  |  |  |
| MLTX-02-004-EN-13730 |  | Material Submittal for Exhaust Fans | 2d | 2026-04-16 A | 2026-04-18 A | MLTX-02-004-EN-14760 | 100% | QA/QC Engineer [16.1 h] | MOD-02-EN-6710 | MAK-01-PR-1000 | 0 | 1 | 0 | JEDENG | Engi |  |
| MLTX-02-004-EN-13740 |  | Material Approval for Exhaust Fans | 1d | 2026-05-06 A | 2026-05-06 A | MLTX-02-004-EN-13730 | 100% | Consultant Staff [16.1 h] | MOD-02-EN-6720 | MAK-01-PR-1010 | 0 | -9 | 0 | JEDENG | Engi |  |
|  | 13 | **LIGHTING FIXTURES** |  | 2026-04-16 | 2026-04-25 |  |  |  |  |  |  |  |  |  |  |  |
| MLTX-02-004-EN-13600 |  | Material Submittal for Lighting Fixtures | 3d | 2026-04-16 A | 2026-04-19 A | MLTX-02-004-EN-14630 | 100% | QA/QC Engineer [16.1 h] | MOD-02-EN-6740 | MAK-01-PR-1000 | 0 | 0 | 0 | JEDENG | Engi |  |
| MLTX-02-004-EN-13610 |  | Material Approval for Lighting Fixtures | 5d | 2026-04-20 A | 2026-04-25 A | MLTX-02-004-EN-13600 | 100% | Consultant Staff [16.1 h] | MOD-02-EN-6750 | MAK-01-PR-1010 | 0 | 1 | 0 | JEDENG | Engi |  |
|  | 14 | **SWITCHES/SOCKETS** |  | 2026-04-16 | 2026-04-25 |  |  |  |  |  |  |  |  |  |  |  |
| MLTX-02-004-EN-13620 |  | Material Submittal for Switches/Sockets | 3d | 2026-04-16 A | 2026-04-19 A | MLTX-02-004-EN-14650 | 100% | QA/QC Engineer [16.1 h] | MOD-02-EN-6770 | MAK-01-PR-1000 | 0 | 0 | 0 | JEDENG | Engi |  |
| MLTX-02-004-EN-13630 |  | Material Approval for Switches/Sockets | 5d | 2026-04-20 A | 2026-04-25 A | MLTX-02-004-EN-13620 | 100% | Consultant Staff [16.1 h] | MOD-02-EN-6780 | MAK-01-PR-1010 | 0 | 1 | 0 | JEDENG | Engi |  |
|  | 15 | **EARTHING SYSTEM** |  | 2026-05-06 | 2026-05-07 |  |  |  |  |  |  |  |  |  |  |  |
| MLTX-02-004-EN-13420 |  | Material Submittal for Earthing System | 1d | 2026-05-06 A | 2026-05-06 A | MLTX-02-004-EN-14450 | 100% | QA/QC Engineer [16.1 h] | MOD-02-EN-6800 | MAK-01-PR-1290 | 0 | -15 | 0 | JEDENG | Engi |  |
| MLTX-02-004-EN-13430 |  | Material Approval for Earthing System | 1d | 2026-05-07 A | 2026-05-07 A | MLTX-02-004-EN-13420 | 100% | Consultant Staff [16.1 h] | MOD-02-EN-6810 | MAK-01-PR-1300 | 0 | -10 | 0 | JEDENG | Engi |  |
|  | 5 | **DISTRIBUTION PANNELS** |  | 2026-04-16 | 2026-04-25 |  |  |  |  |  |  |  |  |  |  |  |
| MLTX-02-004-EN-13440 |  | Material Submittal for Distribution Panels | 3d | 2026-04-16 A | 2026-04-19 A | MLTX-02-004-EN-14470 | 100% | QA/QC Engineer [16.1 h] | MOD-02-EN-6830 | MAK-01-PR-LLI-1060 | 0 | 0 | 0 | JEDENG | Engi |  |
| MLTX-02-004-EN-13450 |  | Material Approval for Distribution Panels | 5d | 2026-04-20 A | 2026-04-25 A | MLTX-02-004-EN-13440 | 100% | Consultant Staff [16.1 h] | MOD-02-EN-6840 | MAK-01-PR-LLI-1070 | 0 | 1 | 0 | JEDENG | Engi |  |

| ID | WBS | Activity | Duration | Start | Finish | Predecessors | Complete | Planned start | Planned finish | Resources | New Activity ID | Old Activity ID - MK | % Variance | Delay | On Schedule | Engineering | WBS-Project | Flag |
| --- | --- | --- | --- | --- | --- | --- | --- | --- | --- | --- | --- | --- | --- | --- | --- | --- | --- | --- |
|  | PLG | **PLAYGROUND WORKS** |  | 2026-04-12 | 2026-08-19 |  |  |  |  |  |  |  |  |  |  |  |  |  |
|  | 5 | **PVC MEMBRANE** |  | 2026-05-06 | 2026-07-27 |  |  |  |  |  |  |  |  |  |  |  |  |  |
| MLTX-02-004-EN-13830 |  | Material Submittal for PVC Membrane | 1d | 2026-05-06 A | 2026-05-06 A | MLTX-02-004-EN-14860 | 100% |  |  | QA/QC Engineer [16.1 h] | MOD-02-EN-6870 | MAK-01-PR-1120 | 0 | -16 | 0 | JEDENG | Engi |  |
| MLTX-02-004-EN-13840 |  | Material Approval for PVC Membrane | 10d | 2026-07-27 A | 2026-07-27 A | MLTX-02-004-EN-13830 | 100% | 2026-07-27 | 2026-08-06 | Consultant Staff [16.1 h] | MOD-02-EN-6880 | MAK-01-PR-1130 | -100 | -22 | -100 | JEDENG | Engi | UDF_G1 |
|  | 6 | **STEEL TENSION CABLES** |  | 2026-05-06 | 2026-08-02 |  |  |  |  |  |  |  |  |  |  |  |  |  |
| MLTX-02-004-EN-13850 |  | Material Submittal for Steel Tension Cables | 1d | 2026-05-06 A | 2026-05-06 A | MLTX-02-004-EN-15170 | 100% |  |  | QA/QC Engineer [16.1 h] | MOD-02-EN-6900 | MAK-01-PR-1120 | 0 | -16 | 0 | JEDENG | Engi |  |
| MLTX-02-004-EN-14150 |  | Material Approval for Steel Tension Cables | 10d | 2026-08-01 A | 2026-08-02 A | MLTX-02-004-EN-13850 | 100% | 2026-11-21 | 2026-12-01 | Consultant Staff [16.1 h] | MOD-02-EN-6910 | MAK-01-PR-1120 | -100 | -22 | -100 | JEDENG | Engi | UDF_G1 |
|  | 7 | **EMERGENCY DOORS** |  | 2026-05-06 | 2026-08-19 |  |  |  |  |  |  |  |  |  |  |  |  |  |
| MLTX-02-004-EN-13860 |  | Material Submittal for Emergency Doors | 1d | 2026-05-06 A | 2026-05-06 A | MLTX-02-004-EN-15180 | 100% |  |  | QA/QC Engineer [16.1 h] | MOD-02-EN-6930 | MAK-01-PR-1120 | 0 | -19 | 0 | JEDENG | Engi |  |
| MLTX-02-004-EN-14160 |  | Material Approval for Emergency Doors | 10d | 2026-08-19 A | 2026-08-19 A | MLTX-02-004-EN-13860 | 100% | 2026-10-18 | 2026-10-28 | Consultant Staff [16.1 h] | MOD-02-EN-6940 | MAK-01-PR-1120 | -100 | -25 | -100 | JEDENG | Engi | UDF_G1 |
|  | 8 | **PRESSURE UNITS** |  | 2026-05-06 | 2026-05-09 |  |  |  |  |  |  |  |  |  |  |  |  |  |
| MLTX-02-004-EN-13870 |  | Material Submittal for Pressure Units | 1d | 2026-05-06 A | 2026-05-06 A | MLTX-02-004-EN-15190 | 100% |  |  | QA/QC Engineer [16.1 h] | MOD-02-EN-6960 | MAK-01-PR-1120 | 0 | -19 | 0 | JEDENG | Engi |  |
| MLTX-02-004-EN-14170 |  | Material Approval for Pressure Units | 10d | 2026-05-07 A | 2026-05-09 A | MLTX-02-004-EN-13870 | 100% | 2026-11-23 | 2026-12-03 | Consultant Staff [16.1 h] | MOD-02-EN-6970 | MAK-01-PR-1120 | -100 | -25 | -100 | JEDENG | Engi | UDF_G1 |
|  | 9 | **AIR LOCK DOORS** |  | 2026-05-06 | 2026-05-21 |  |  |  |  |  |  |  |  |  |  |  |  |  |
| MLTX-02-004-EN-13880 |  | Material Submittal for Lock Doors | 5d | 2026-05-06 A | 2026-05-11 A | MLTX-02-004-EN-15200 | 100% |  |  | QA/QC Engineer [16.1 h] | MOD-02-EN-6990 | MAK-01-PR-1120 | 0 | -23 | 0 | JEDENG | Engi |  |
| MLTX-02-004-EN-14180 |  | Material Approval for Lock Doors | 1d | 2026-05-21 A | 2026-05-21 A | MLTX-02-004-EN-13880 | 100% |  |  | Consultant Staff [16.1 h] | MOD-02-EN-7000 | MAK-01-PR-1120 | -100 | -25 | -100 | JEDENG | Engi | UDF_G1 |
|  | 15 | **ARTIFICIAL TURF** |  | 2026-04-12 | 2026-04-30 |  |  |  |  |  |  |  |  |  |  |  |  |  |
| MLTX-02-004-EN-14030 |  | Material Submittal for Artificial TURF | 15d | 2026-04-12 A | 2026-04-28 A | MLTX-02-004-EN-15210 | 100% |  |  | QA/QC Engineer [16.1 h] | MOD-02-EN-7020 | MAK-01-PR-1120 | 0 | -12 | 0 | JEDENG | Engi |  |
| MLTX-02-004-EN-14190 |  | Material Approval for Artificial TURF | 3d | 2026-04-28 A | 2026-04-30 A | MLTX-02-004-EN-14030 | 100% |  |  | Consultant Staff [16.1 h] | MOD-02-EN-7030 | MAK-01-PR-1120 | 0 | -7 | 0 | JEDENG | Engi |  |
|  | 20 | **RUBBER GRANULES** |  | 2026-05-06 | 2026-07-22 |  |  |  |  |  |  |  |  |  |  |  |  |  |
| MLTX-02-004-EN-14040 |  | Material Submittal for Rubber Granules | 1d | 2026-05-06 A | 2026-05-06 A | MLTX-02-004-EN-15220 | 100% |  |  | QA/QC Engineer [16.1 h] | MOD-02-EN-7050 | MAK-01-PR-1120 | 0 | -19 | 0 | JEDENG | Engi |  |
| MLTX-02-004-EN-14200 |  | Material Approval for Rubber Granules | 10d | 2026-07-22 A | 2026-07-22 A | MLTX-02-004-EN-14040 | 100% | 2026-07-22 | 2026-08-02 | Consultant Staff [16.1 h] | MOD-02-EN-7060 | MAK-01-PR-1120 | -100 | -25 | -100 | JEDENG | Engi | UDF_G1 |
|  | 21 | **PADEL GLASS** |  | 2026-05-06 | 2026-05-21 |  |  |  |  |  |  |  |  |  |  |  |  |  |
| MLTX-02-004-EN-14050 |  | Material Submittal for Padel Glass | 1d | 2026-05-06 A | 2026-05-06 A | MLTX-02-004-EN-15230 | 100% |  |  | QA/QC Engineer [16.1 h] | MOD-02-EN-7080 | MAK-01-PR-1120 | 0 | -19 | 0 | JEDENG | Engi |  |
| MLTX-02-004-EN-14210 |  | Material Approval for Padel Glass | 1d | 2026-05-21 A | 2026-05-21 A | MLTX-02-004-EN-14050 | 100% |  |  | Consultant Staff [16.1 h] | MOD-02-EN-7090 | MAK-01-PR-1120 | -100 | -25 | -100 | JEDENG | Engi | UDF_G1 |

| ID | WBS | Activity | Duration | Start | Finish | Predecessors | Complete | Planned start | Planned finish | Resources | New Activity ID | Old Activity ID - MK | % Variance | Delay | Flag | On Schedule | Engineering | WBS-Project |
| --- | --- | --- | --- | --- | --- | --- | --- | --- | --- | --- | --- | --- | --- | --- | --- | --- | --- | --- |
|  | 22 | **PADEL WIRE MESH/STEEL SETS** |  | 2026-05-25 | 2026-07-22 |  |  |  |  |  |  |  |  |  |  |  |  |  |
| MLTX-02-004-EN-14060 |  | Material Submittal for Wire Mesh/Steel Sets | 1d | 2026-05-25 A | 2026-05-25 A | MLTX-02-004-EN-15240 | 100% |  |  | QA/QC Engineer [16.1 h] | MOD-02-EN-7110 | MAK-01-PR-1120 | -100 | -28 | UDF_G1 | -100 | JEDENG | Engi |
| MLTX-02-004-EN-14220 |  | Material Approval for Wire Mesh/Steel Sets | 10d | 2026-07-22 A | 2026-07-22 A | MLTX-02-004-EN-14060 | 100% | 2026-07-22 | 2026-08-02 | Consultant Staff [16.1 h] | MOD-02-EN-7120 | MAK-01-PR-1120 | -100 | -28 | UDF_G1 | -100 | JEDENG | Engi |
|  | 1 | **AGGREGATE BASE COURSE** |  | 2026-05-21 | 2026-06-06 |  |  |  |  |  |  |  |  |  |  |  |  |  |
| MLTX-02-004-EN-13290 |  | Material Submittal for Aggregate Base Course | 1d | 2026-05-21 A | 2026-05-21 A | MLTX-02-004-EN-14310 | 100% |  |  | QA/QC Engineer [16.1 h] | MOD-02-EN-7140 | MAK-01-PR-1090 | -100 | -28 | UDF_G1 | -100 | JEDENG | Engi |
| MLTX-02-004-EN-13300 |  | Material Approval for Aggregate Base Course | 1d | 2026-06-06 A | 2026-06-06 A | MLTX-02-004-EN-13290 | 100% |  |  | Consultant Staff [16.1 h] | MOD-02-EN-7150 | MAK-01-PR-1100 | -100 | -28 | UDF_G1 | -100 | JEDENG | Engi |
|  | 16 | **PACKAGE AC UNITS** |  | 2026-05-21 | 2026-05-21 |  |  |  |  |  |  |  |  |  |  |  |  |  |
| MLTX-02-004-EN-13750 |  | Material Submittal for Package AC Units | 1d | 2026-05-21 A | 2026-05-21 A | MLTX-02-004-EN-14780 | 100% |  |  | QA/QC Engineer [16.1 h] | MOD-02-EN-7260 | MAK-01-PR-1000 | -100 | -27 | UDF_G1 | -100 | JEDENG | Engi |
| MLTX-02-004-EN-13760 |  | Material Approval for Package AC Units | 1d | 2026-05-21 A | 2026-05-21 A | MLTX-02-004-EN-13750 | 100% |  |  | Consultant Staff [16.1 h] | MOD-02-EN-7270 | MAK-01-PR-1010 | -100 | -27 | UDF_G1 | -100 | JEDENG | Engi |
|  | 17 | **AIR DIFUSSERS/GRILLS** |  | 2026-04-13 | 2026-05-06 |  |  |  |  |  |  |  |  |  |  |  |  |  |
| MLTX-02-004-EN-13770 |  | Material Submittal for Air Difussers/Grills | 9d | 2026-04-13 A | 2026-04-22 A | MLTX-02-004-EN-14800 | 100% |  |  | QA/QC Engineer [16.1 h] | MOD-02-EN-7290 | MAK-01-PR-1000 | 0 | -6 |  | 0 | JEDENG | Engi |
| MLTX-02-004-EN-13780 |  | Material Approval for Air Difussers/Grills | 1d | 2026-05-06 A | 2026-05-06 A | MLTX-02-004-EN-13770 | 100% |  |  | Consultant Staff [16.1 h] | MOD-02-EN-7300 | MAK-01-PR-1010 | 0 | -12 |  | 0 | JEDENG | Engi |
|  | 2 | **BITUMINOUS BASE & WEARING COURSE** |  | 2026-04-16 | 2026-04-18 |  |  |  |  |  |  |  |  |  |  |  |  |  |
| MLTX-02-004-EN-13310 |  | Material Submittal for Bituminous Base & Wearing Cource | 2d | 2026-04-16 A | 2026-04-18 A | MLTX-02-004-EN-14330 | 100% |  |  | QA/QC Engineer [16.1 h] | MOD-02-EN-7170 | MAK-01-PR-1120 | 0 | 1 |  | 0 | JEDENG | Engi |
| MLTX-02-004-EN-13320 |  | Material Approval for the Site | 1d | 2026-04-18 A | 2026-04-18 A | MLTX-02-004-EN-13310 | 100% |  |  | Consultant Staff [16.1 h] | MOD-02-EN-7180 | MAK-01-PR-1130 | 0 | 7 |  | 0 | JEDENG | Engi |
|  | 3 | **INTERLOCKING PAVING** |  | 2026-05-21 | 2026-05-21 |  |  |  |  |  |  |  |  |  |  |  |  |  |
| MLTX-02-004-EN-13330 |  | Material Submittal for Interlocking Block Pavers | 1d | 2026-05-21 A | 2026-05-21 A | MLTX-02-004-EN-14400 | 100% |  |  | QA/QC Engineer [16.1 h] | MOD-02-EN-7200 | MAK-01-PR-1170 | -100 | -24 | UDF_G1 | -100 | JEDENG | Engi |
| MLTX-02-004-EN-13380 |  | Material Approval for Interlocking Block Pavers | 1d | 2026-05-21 A | 2026-05-21 A | MLTX-02-004-EN-13330 | 100% |  |  | Consultant Staff [16.1 h] | MOD-02-EN-7210 | MAK-01-PR-1180 | -100 | -24 | UDF_G1 | -100 | JEDENG | Engi |
|  | 4 | **MARKING PAINT** |  | 2026-04-13 | 2026-04-19 |  |  |  |  |  |  |  |  |  |  |  |  |  |
| MLTX-02-004-EN-13660 |  | Material Submittal for Marking Paint | 5d | 2026-04-13 A | 2026-04-18 A | MLTX-02-004-EN-15250 | 100% |  |  | QA/QC Engineer [16.1 h] | MOD-02-EN-7230 | MAK-01-PR-1120 | 0 | -2 |  | 0 | JEDENG | Engi |
| MLTX-02-004-EN-14230 |  | Material Approval for Marking Paint | 2d | 2026-04-18 A | 2026-04-19 A | MLTX-02-004-EN-13660 | 100% |  |  | Consultant Staff [16.1 h] | MOD-02-EN-7240 | MAK-01-PR-1120 | 0 | 3 |  | 0 | JEDENG | Engi |
|  | 18 | **GALVANIZED DUCTS** |  | 2026-06-13 | 2026-06-18 |  |  |  |  |  |  |  |  |  |  |  |  |  |
| MLTX-02-004-EN-13790 |  | Material Submittal for Galvanized Duct | 1d | 2026-06-13 A | 2026-06-13 A | MLTX-02-004-EN-14820 | 100% |  |  | QA/QC Engineer [16.1 h] | MOD-02-EN-7320 | MAK-01-PR-1000 | -100 | -27 | UDF_G1 | -100 | JEDENG | Engi |
| MLTX-02-004-EN-13800 |  | Material Approval for Galvanized Duct | 1d | 2026-06-18 A | 2026-06-18 A | MLTX-02-004-EN-13790 | 100% |  |  | Consultant Staff [16.1 h] | MOD-02-EN-7330 | MAK-01-PR-1010 | -100 | -27 | UDF_G1 | -100 | JEDENG | Engi |

| ID | WBS | Activity | Duration | Start | Finish | Predecessors | Complete | Resources | New Activity ID | Old Activity ID - MK | % Variance | Delay | On Schedule | Engineering | WBS-Project |
| --- | --- | --- | --- | --- | --- | --- | --- | --- | --- | --- | --- | --- | --- | --- | --- |
|  | 19 | **EXHAUST FANS** |  | 2026-04-13 | 2026-05-06 |  |  |  |  |  |  |  |  |  |  |
| MLTX-02-004-EN-13810 |  | Material Submittal for Exhaust Fans | 5d | 2026-04-13 A | 2026-04-18 A | MLTX-02-004-EN-14840 | 100% | QA/QC Engineer [16.1 h] | MOD-02-EN-7350 | MAK-01-PR-1000 | 0 | -2 | 0 | JEDENG | Engi |
| MLTX-02-004-EN-13820 |  | Material Approval for Exhaust Fans | 1d | 2026-05-06 A | 2026-05-06 A | MLTX-02-004-EN-13810 | 100% | Consultant Staff [16.1 h] | MOD-02-EN-7360 | MAK-01-PR-1010 | 0 | -12 | 0 | JEDENG | Engi |
|  | 10 | **DISTRIBUTION BOARDS** |  | 2026-04-13 | 2026-04-22 |  |  |  |  |  |  |  |  |  |  |
| MLTX-02-004-EN-13890 |  | Material Submittal for Distribution Boards | 3d | 2026-04-13 A | 2026-04-15 A | MLTX-02-004-EN-14920 | 100% | QA/QC Engineer [16.1 h] | MOD-02-EN-7380 | MAK-01-PR-1000 | 0 | 0 | 0 | JEDENG | Engi |
| MLTX-02-004-EN-13900 |  | Material Approval for Distribution Boards | 6d | 2026-04-16 A | 2026-04-22 A | MLTX-02-004-EN-13890 | 100% | Consultant Staff [16.1 h] | MOD-02-EN-7390 | MAK-01-PR-1010 | 0 | 0 | 0 | JEDENG | Engi |
|  | 11 | **POWER CABLES** |  | 2026-04-13 | 2026-04-22 |  |  |  |  |  |  |  |  |  |  |
| MLTX-02-004-EN-13910 |  | Material Submittal for Power Cables | 3d | 2026-04-13 A | 2026-04-15 A | MLTX-02-004-EN-14940 | 100% | QA/QC Engineer [16.1 h] | MOD-02-EN-7410 | MAK-01-PR-1000 | 0 | 0 | 0 | JEDENG | Engi |
| MLTX-02-004-EN-13920 |  | Material Approval for Power Cables | 6d | 2026-04-16 A | 2026-04-22 A | MLTX-02-004-EN-13910 | 100% | Consultant Staff [16.1 h] | MOD-02-EN-7420 | MAK-01-PR-1010 | 0 | 0 | 0 | JEDENG | Engi |
|  | 12 | **LIGHT FIXTURES** |  | 2026-04-13 | 2026-04-22 |  |  |  |  |  |  |  |  |  |  |
| MLTX-02-004-EN-13930 |  | Material Submittal for Light Fixtures | 3d | 2026-04-13 A | 2026-04-15 A | MLTX-02-004-EN-14960 | 100% | QA/QC Engineer [16.1 h] | MOD-02-EN-7440 | MAK-01-PR-1000 | 0 | 0 | 0 | JEDENG | Engi |
| MLTX-02-004-EN-13940 |  | Material Approval for Light Fixtures | 6d | 2026-04-16 A | 2026-04-22 A | MLTX-02-004-EN-13930 | 100% | Consultant Staff [16.1 h] | MOD-02-EN-7450 | MAK-01-PR-1010 | 0 | 0 | 0 | JEDENG | Engi |
|  | 13 | **CCTV MATERIALS** |  | 2026-04-13 | 2026-04-22 |  |  |  |  |  |  |  |  |  |  |
| MLTX-02-004-EN-13950 |  | Material Submittal for CCTV | 3d | 2026-04-13 A | 2026-04-15 A | MLTX-02-004-EN-14980 | 100% | QA/QC Engineer [16.1 h] | MOD-02-EN-7470 | MAK-01-PR-1000 | 0 | 0 | 0 | JEDENG | Engi |
| MLTX-02-004-EN-13960 |  | Material Approval for CCTV | 6d | 2026-04-16 A | 2026-04-22 A | MLTX-02-004-EN-13950 | 100% | Consultant Staff [16.1 h] | MOD-02-EN-7480 | MAK-01-PR-1010 | 0 | 0 | 0 | JEDENG | Engi |
|  | 14 | **POWER OUTLETS/SWITCHES** |  | 2026-05-06 | 2026-05-07 |  |  |  |  |  |  |  |  |  |  |
| MLTX-02-004-EN-13970 |  | Material Submittal for Power Outlets/Switches | 1d | 2026-05-06 A | 2026-05-06 A | MLTX-02-004-EN-15000 | 100% | QA/QC Engineer [16.1 h] | MOD-02-EN-7500 | MAK-01-PR-1000 | 0 | -18 | 0 | JEDENG | Engi |
| MLTX-02-004-EN-13980 |  | Material Approval for Power Outlets/Switches | 1d | 2026-05-07 A | 2026-05-07 A | MLTX-02-004-EN-13970 | 100% | Consultant Staff [16.1 h] | MOD-02-EN-7510 | MAK-01-PR-1010 | 0 | -13 | 0 | JEDENG | Engi |
|  | LSC | **LANDSCAPE WORKS** |  | 2026-04-13 | 2026-06-06 |  |  |  |  |  |  |  |  |  |  |
|  | 7 | **INTERLOCKING PAVING** |  | 2026-04-13 | 2026-04-22 |  |  |  |  |  |  |  |  |  |  |
| MLTX-02-004-EN-14010 |  | Material Submittal for Interlocking Block Pavers | 3d | 2026-04-13 A | 2026-04-15 A | MLTX-02-004-EN-15040 | 100% | QA/QC Engineer [16.1 h] | MOD-02-EN-7540 | MAK-01-PR-1170 | 0 | 0 | 0 | JEDENG | Engi |
| MLTX-02-004-EN-14020 |  | Material Approval for Interlocking Block Pavers | 6d | 2026-04-16 A | 2026-04-22 A | MLTX-02-004-EN-14010 | 100% | Consultant Staff [16.1 h] | MOD-02-EN-7550 | MAK-01-PR-1180 | 0 | 0 | 0 | JEDENG | Engi |
|  | 9 | **CURBSTONE** |  | 2026-04-13 | 2026-04-22 |  |  |  |  |  |  |  |  |  |  |
| MLTX-02-004-EN-14110 |  | Material Submittal for Curbstone | 3d | 2026-04-13 A | 2026-04-15 A | MLTX-02-004-EN-15140 | 100% | QA/QC Engineer [16.1 h] | MOD-02-EN-7570 | MAK-01-PR-1260 | 0 | 0 | 0 | JEDENG | Engi |
| MLTX-02-004-EN-14120 |  | Material Approval for Curbstone | 6d | 2026-04-16 A | 2026-04-22 A | MLTX-02-004-EN-14110 | 100% | Consultant Staff [16.1 h] | MOD-02-EN-7580 | MAK-01-PR-1270 | 0 | 0 | 0 | JEDENG | Engi |

| ID | WBS | Activity | Duration | Start | Finish | Predecessors | Complete | Resources | New Activity ID | Old Activity ID - MK | % Variance | Delay | On Schedule | Engineering | WBS-Project | Flag |
| --- | --- | --- | --- | --- | --- | --- | --- | --- | --- | --- | --- | --- | --- | --- | --- | --- |
|  | 1 | **PAVEMENT MARKING** |  | 2026-04-13 | 2026-04-19 |  |  |  |  |  |  |  |  |  |  |  |
| MLTX-02-004-EN-13340 |  | Material Submittal for Pavement Markings | 5d | 2026-04-13 A | 2026-04-18 A | MLTX-02-004-EN-14410 | 100% | QA/QC Engineer [16.1 h] | MOD-02-EN-7600 | MAK-01-PR-1200 | 0 | -2 | 0 | JEDENG | Engi |  |
| MLTX-02-004-EN-13390 |  | Material Approval for Pavement Markings | 2d | 2026-04-18 A | 2026-04-19 A | MLTX-02-004-EN-13340 | 100% | Consultant Staff [16.1 h] | MOD-02-EN-7610 | MAK-01-PR-1210 | 0 | 3 | 0 | JEDENG | Engi |  |
|  | 2 | **TRAFFIC SIGNS** |  | 2026-05-06 | 2026-06-06 |  |  |  |  |  |  |  |  |  |  |  |
| MLTX-02-004-EN-13350 |  | Material Submittal for Traffic Signs | 1d | 2026-05-06 A | 2026-05-06 A | MLTX-02-004-EN-14370 | 100% | QA/QC Engineer [16.1 h] | MOD-02-EN-7630 | MAK-01-PR-1230 | 0 | -18 | 0 | JEDENG | Engi |  |
| MLTX-02-004-EN-13360 |  | Material Approval for Traffic Signs | 1d | 2026-06-06 A | 2026-06-06 A | MLTX-02-004-EN-13350 | 100% | Consultant Staff [16.1 h] | MOD-02-EN-7640 | MAK-01-PR-1240 | -100 | -24 | -100 | JEDENG | Engi | UDF_G1 |
|  | 3 | **IRRIGATION PIPES/SPRINKLERS** |  | 2026-04-13 | 2026-05-21 |  |  |  |  |  |  |  |  |  |  |  |
| MLTX-02-004-EN-13400 |  | Material Submittal for Irrigation Pipes/Sprinkles | 5d | 2026-04-13 A | 2026-04-18 A | MLTX-02-004-EN-14430 | 100% | QA/QC Engineer [16.1 h] | MOD-02-EN-7660 | MAK-01-PR-1260 | 0 | -2 | 0 | JEDENG | Engi |  |
| MLTX-02-004-EN-13410 |  | Material Approval for Irrigation Pipes/Sprinkles | 1d | 2026-05-21 A | 2026-05-21 A | MLTX-02-004-EN-13400 | 100% | Consultant Staff [16.1 h] | MOD-02-EN-7670 | MAK-01-PR-1270 | -100 | -24 | -100 | JEDENG | Engi | UDF_G1 |
|  | 5 | **AGRICULTURE SOIL** |  | 2026-05-06 | 2026-05-21 |  |  |  |  |  |  |  |  |  |  |  |
| MLTX-02-004-EN-14070 |  | Material Submittal for Agriculture Soil | 1d | 2026-05-06 A | 2026-05-06 A | MLTX-02-004-EN-15100 | 100% | QA/QC Engineer [16.1 h] | MOD-02-EN-7690 | MAK-01-PR-1260 | 0 | -18 | 0 | JEDENG | Engi |  |
| MLTX-02-004-EN-14080 |  | Material Approval for Agriculture Soil | 1d | 2026-05-21 A | 2026-05-21 A | MLTX-02-004-EN-14070 | 100% | Consultant Staff [16.1 h] | MOD-02-EN-7700 | MAK-01-PR-1270 | -100 | -24 | -100 | JEDENG | Engi | UDF_G1 |
|  | 8 | **TRACK SURFACE** |  | 2026-05-06 | 2026-05-21 |  |  |  |  |  |  |  |  |  |  |  |
| MLTX-02-004-EN-14090 |  | Material Submittal for Track Surface | 1d | 2026-05-06 A | 2026-05-06 A | MLTX-02-004-EN-15120 | 100% | QA/QC Engineer [16.1 h] | MOD-02-EN-7720 | MAK-01-PR-1260 | 0 | -18 | 0 | JEDENG | Engi |  |
| MLTX-02-004-EN-14100 |  | Material Approval for Track Surface | 1d | 2026-05-21 A | 2026-05-21 A | MLTX-02-004-EN-14090 | 100% | Consultant Staff [16.1 h] | MOD-02-EN-7730 | MAK-01-PR-1270 | -100 | -24 | -100 | JEDENG | Engi | UDF_G1 |
|  | 10 | **GRASS/TREES** |  | 2026-05-06 | 2026-05-21 |  |  |  |  |  |  |  |  |  |  |  |
| MLTX-02-004-EN-14130 |  | Material Submittal for Grass/Trees | 1d | 2026-05-06 A | 2026-05-06 A | MLTX-02-004-EN-15160 | 100% | QA/QC Engineer [16.1 h] | MOD-02-EN-7750 | MAK-01-PR-1260 | 0 | -18 | 0 | JEDENG | Engi |  |
| MLTX-02-004-EN-14140 |  | Material Approval for Grass/Trees | 1d | 2026-05-21 A | 2026-05-21 A | MLTX-02-004-EN-14130 | 100% | Consultant Staff [16.1 h] | MOD-02-EN-7760 | MAK-01-PR-1270 | -100 | -24 | -100 | JEDENG | Engi | UDF_G1 |
|  | 6 | **CABLES** |  | 2026-05-06 | 2026-05-07 |  |  |  |  |  |  |  |  |  |  |  |
| MLTX-02-004-EN-13990 |  | Material Submittal for Cables | 2d | 2026-05-06 A | 2026-05-07 A | MLTX-02-004-EN-15020 | 100% | QA/QC Engineer [16.1 h] | MOD-02-EN-7780 | MAK-01-PR-1200 | 0 | -19 | 0 | JEDENG | Engi |  |
| MLTX-02-004-EN-14000 |  | Material Approval for Cables | 1d | 2026-05-07 A | 2026-05-07 A | MLTX-02-004-EN-13990 | 100% | Consultant Staff [16.1 h] | MOD-02-EN-7790 | MAK-01-PR-1210 | 0 | -13 | 0 | JEDENG | Engi |  |
|  | 4 | **LIGHT POLES** |  | 2026-04-13 | 2026-05-07 |  |  |  |  |  |  |  |  |  |  |  |
| MLTX-02-004-EN-13240 |  | Material Submittal for Lighting poles | 3d | 2026-04-13 A | 2026-04-15 A | MLTX-02-004-EN-14250 | 100% | QA/QC Engineer [16.1 h] | MOD-02-EN-7810 | MAK-01-PR-LLI-1120 | 0 | 0 | 0 | JEDENG | Engi |  |
| MLTX-02-004-EN-13250 |  | Material Approval for Lighting poles | 1d | 2026-05-07 A | 2026-05-07 A | MLTX-02-004-EN-13240 | 100% | Consultant Staff [16.1 h] | MOD-02-EN-7820 | MAK-01-PR-LLI-1130 | 0 | -13 | 0 | JEDENG | Engi |  |

| ID | WBS | Activity | Duration | Start | Finish | Predecessors | Complete | Planned start | Planned finish | Total float | Free float | Resources | Cost | Actual cost | New Activity ID | % Variance | Delay | On Schedule | W-Construction | WBS-Project | WBS-Construction Type | Flag |
| --- | --- | --- | --- | --- | --- | --- | --- | --- | --- | --- | --- | --- | --- | --- | --- | --- | --- | --- | --- | --- | --- | --- |
|  | CONST | **CONSTRUCTION PHASE** |  | 2026-04-25 | 2027-04-12 |  |  |  |  |  |  |  |  |  |  |  |  |  |  |  |  |  |
|  | SW | **SITE WORKS** |  | 2026-04-25 | 2027-04-12 |  |  |  |  |  |  |  |  |  |  |  |  |  |  |  |  |  |
|  | 1 | **EARTH WORKS** |  | 2026-04-25 | 2026-08-08 |  |  |  |  |  |  |  |  |  |  |  |  |  |  |  |  |  |
| MLTX-02-004-CN-13310 |  | Excavation (in all types of soil) including Compaction (Playground Area) | 14.5d | 2026-04-25 A | 2026-05-11 A | MLTX-02-004-EN-16170, MLTX-02-004-EN-16190, MLTX-02-004-CN-13320 | 100% |  |  |  |  | Labor [300 h]; Driver [380 h]; Excavator [140 h]; Loader [50 h]; Water Tanker [80 h]; Dump Truck [200 h]; Milling machine [40 h]; Excavation in any type of soil from existing level [3344] | 211,926 | 211,926 | MOD-02-CN-9930 | 0 | -4.5 | 0 | ER | Const | Earth |  |
| MLTX-02-004-CN-13330 |  | Excavation (in all types of soil) including Compaction (Landscape Area) | 13.2d | 2026-04-25 A | 2026-05-10 A | MLTX-02-004-EN-16010, MLTX-02-004-EN-16020, MLTX-02-004-EN-16040, MLTX-02-004-EN-16030, MLTX-02-004-CN-13310 | 100% |  |  |  |  | Labor [400 h]; Driver [200 h]; Excavator [140 h]; Loader [130 h]; Water Tanker [100 h]; Dump Truck [200 h]; Milling machine [40 h]; Excavation in any type of soil from existing level [2059.83] | 130,541.73 | 130,541.73 | MOD-02-CN-9950 | 0 | 3.8 | 0 | ER | Const | Earth |  |
| MLTX-02-004-CN-13320 |  | Excavation (in all types of soil) including Compaction (Service/Toilet Building) | 15.14d | 2026-04-27 A | 2026-05-14 A | MLTX-02-004-EN-15260 | 100% |  |  |  |  | Labor [290 h]; Driver [80 h]; Excavator [60 h]; Loader [60 h]; Water Tanker [60 h]; Dump Truck [80 h]; Milling machine [20 h]; Excavation in any type of soil from existing level [170] | 10,773.75 | 10,773.75 | MOD-02-CN-9940 | 0 | -13.14 | 0 | ER | Const | Earth | UDF_G1 |
| MLTX-02-004-CN-13360 |  | Backfilling on Layers (Rockfill) including Compaction (Landscape Area) | 43.8d | 2026-05-10 A | 2026-07-02 A | MLTX-02-004-CN-13330 | 100% |  |  |  |  | Labor [600 h]; Driver [300 h]; Loader [60 h]; Water Tanker [100 h]; Compactor [100 h]; Backfilling with selected fill material [7000] | 238,875 | 238,875 | MOD-02-CN-9980 | -10 | 2 | 0 | ER | Const | Earth |  |
| MLTX-02-004-CN-13340 |  | Backfilling on Layers (Rockfill) including Compaction (Playground Area) | 43.5d | 2026-05-10 A | 2026-07-02 A | MLTX-02-004-MS-1050, MLTX-02-004-MS-1060, MLTX-02-004-CN-13310 | 100% |  |  |  |  | Labor [550 h]; Driver [300 h]; Loader [130 h]; Water Tanker [100 h]; Compactor [100 h]; Backfilling with selected fill material [8525.77] | 290,941.9 | 290,941.9 | MOD-02-CN-9960 | -60 | -5 | -70 | ER | Const | Earth | UDF_G1 |
| MLTX-02-004-CN-13350 |  | Backfilling on Layers (Rockfill) including Compaction (Service/Toilet Building) | 39d | 2026-05-16 A | 2026-07-02 A | MLTX-02-004-CN-13320 | 100% |  |  |  |  | Labor [300 h]; Driver [140 h]; Loader [90 h]; Water Tanker [80 h]; Compactor [60 h]; Backfilling with selected fill material [1500] | 51,187.5 | 51,187.5 | MOD-02-CN-9970 | -60 | -13.14 | -80 | ER | Const | Earth | UDF_G1 |
| MLTX-02-004-CN-13860 |  | Backfilling on Layers (Selected Soil) including Compaction (Service/Toilet Building) | 8d | 2026-07-05 A | 2026-07-19 A | MLTX-02-004-CN-13350 | 100% | 2026-07-05 | 2026-07-13 |  |  | Backfilling with selected fill material [800] | 27,300 | 27,300 |  |  |  |  | ER | Const | Earth |  |
| MLTX-02-004-CN-14740 |  | Backfilling on Layers (Selected Soil) including Compaction (Landscape Area) | 15d | 2026-07-09 A | 2026-08-05 A | MLTX-02-004-CN-13360, MLTX-02-004-CN-13860 | 100% | 2026-07-13 | 2026-07-30 |  |  | Backfilling with selected fill material [3863] | 131,824.88 | 131,824.88 |  |  |  |  | ER | Const | Earth |  |
| MLTX-02-004-CN-14750 |  | Backfilling on Layers (Selected Soil) including Compaction (Playground Area) | 10d | 2026-07-18 A | 2026-08-08 A | MLTX-02-004-CN-13340, MLTX-02-004-CN-13860 | 100% | 2026-07-19 | 2026-07-30 |  |  | Backfilling with selected fill material [2999.82] | 102,368.86 | 102,368.86 |  |  |  |  | ER | Const | Earth |  |
|  | 4 | **LANDSCAPE WORKS** |  | 2026-07-11 | 2027-04-12 |  |  |  |  |  |  |  |  |  |  |  |  |  |  |  |  |  |
|  | 4 | **PLAYGROUND AREA** |  | 2026-08-22 | 2027-03-28 |  |  |  |  |  |  |  |  |  |  |  |  |  |  |  |  |  |
|  | 6 | **FOOTBALL PLAYGROUND** |  | 2026-08-22 | 2027-03-14 |  |  |  |  |  |  |  |  |  |  |  |  |  |  |  |  |  |
| MLTX-02-004-CN-13510 |  | Preparation and Proofing for Subgrade (Football Playground) | 18d | 2026-08-22 A | 2026-08-24 A | MLTX-02-004-CN-13340 SS, MLTX-02-004-CN-13350 SS | 100% | 2026-08-22 | 2026-09-10 |  |  | Labor [500 h]; Skilled Labor [200 h]; Driver [300 h]; Forklift [270 h]; Football playground [200] | 57,525 | 57,525 | MOD-02-CN-10020 | -18.1818181818182 | -20 | 0 | PL | Const | Play |  |
| MLTX-02-004-CN-13520 |  | Backfilling and Compaction of Base Layers (Football Playground) | 11d | 2026-08-29 A | 2026-09-15 A | MLTX-02-004-PR-11090, MLTX-02-004-PR-11070, MLTX-02-004-CN-13510, MLTX-02-004-CN-14750, MLTX-02-004-CN-14750 FF | 100% | 2026-08-30 | 2026-09-10 |  |  | Labor [700 h]; Skilled Labor [250 h]; Driver [350 h]; Loader [80 h]; Dump Truck [200 h]; Compactor [100 h]; Football playground [200] | 57,525 | 57,525 | MOD-02-CN-10030 | 0 | -20 | 0 | PL | Const | Play |  |
| MLTX-02-004-CN-13530 |  | Finishing and Surface Finish Works (Football Playground) | 15d | 2026-10-12 A | 2026-11-08 A | MLTX-02-004-PR-12090 | 100% | 2026-11-23 | 2026-12-09 |  |  | Labor [800 h]; Skilled Labor [150 h]; Driver [100 h]; Forklift [90 h]; Football playground [500] | 143,812.5 | 143,812.5 | MOD-02-CN-10040 | 0 | -20 | 0 | PL | Const | Play |  |
| MLTX-02-004-CN-13550 |  | Surface Marking and Painting (Football Playground) | 10d | 2027-01-06 | 2027-01-17 | MLTX-02-004-PR-11440, MLTX-02-004-PR-11420, MLTX-02-004-CN-13630 |  |  |  | -36d | 17d | Skilled Labor [250 h]; Painter [240 h]; Football playground [50] | 14,381.25 |  | MOD-02-CN-10060 | 0 | -20 | 0 | PL | Const | Play |  |
| MLTX-02-004-CN-13540 |  | Install Sport Equipments - Goal / Nets - (Football Playground) | 10d | 2027-02-28 | 2027-03-14 | MLTX-02-004-CN-13530, MLTX-02-004-CN-13800, MLTX-02-004-CN-13550 SS, MLTX-02-004-EN-13840, MLTX-02-004-EN-14150, MLTX-02-004-EN-14160, MLTX-02-004-EN-14170, MLTX-02-004-EN-14200, MLTX-02-004-EN-14220 |  |  |  | -80d | 0d | Labor [390 h]; Skilled Labor [150 h]; Driver [100 h]; Crane [140 h]; Football playground [250] | 71,906.25 |  | MOD-02-CN-10050 | 0 | -20 | 0 | PL | Const | Play |  |
|  | 7 | **PADEL PLAYGROUND** |  | 2026-08-22 | 2027-03-14 |  |  |  |  |  |  |  |  |  |  |  |  |  |  |  |  |  |
| MLTX-02-004-CN-13560 |  | Preparation and Proofing for Subgrade (Padel Playground) | 11d | 2026-08-22 A | 2026-08-24 A | MLTX-02-004-CN-14750, MLTX-02-004-CN-13510 | 100% | 2026-09-12 | 2026-09-24 |  |  | Labor [300 h]; Skilled Labor [150 h]; Driver [200 h]; Forklift [90 h]; Padel playgound [70] | 75,075 | 75,075 | MOD-02-CN-10080 | 0 | -20 | 0 | PL | Const | Play |  |
| MLTX-02-004-CN-13570 |  | Backfilling and Compaction of Base Layers (Padel Playground) | 10d | 2026-08-29 A | 2026-09-15 A | MLTX-02-004-CN-13520, MLTX-02-004-CN-13560, MLTX-02-004-CN-14740 | 100% | 2026-09-12 | 2026-09-22 |  |  | Labor [550 h]; Skilled Labor [200 h]; Driver [280 h]; Loader [80 h]; Dump Truck [200 h]; Compactor [100 h]; Padel playgound [40] | 42,900 | 42,900 | MOD-02-CN-10090 | 0 | -20 | 0 | PL | Const | Play |  |
| MLTX-02-004-CN-13580 |  | Finishing and Surface Finish Works (Padel Playground) | 15d | 2026-10-20 A | 2026-11-08 A | MLTX-02-004-CN-13530 SS, MLTX-02-004-CN-13730 SS, MLTX-02-004-CN-13730 FF | 100% | 2026-12-01 | 2026-12-17 |  |  | Labor [720 h]; Skilled Labor [200 h]; Driver [90 h]; Forklift [270 h]; Padel playgound [50] | 53,625 | 53,625 | MOD-02-CN-10100 | 0 | -20 | 0 | PL | Const | Play |  |
| MLTX-02-004-CN-13590 |  | Install Sport Equipments - Goal / Nets - (Padel Playground) | 10d | 2027-02-28 | 2027-03-14 | MLTX-02-004-EN-16360, MLTX-02-004-CN-13580, MLTX-02-004-CN-13540 SS |  |  |  | -80d | 0d | Labor [950 h]; Skilled Labor [440 h]; Driver [260 h]; Crane [160 h]; Padel playgound [30] | 32,175 |  | MOD-02-CN-10110 | 0 | -20 | 0 | PL | Const | Play |  |
| MLTX-02-004-CN-13600 |  | Surface Marking and Painting (Padel Playground) | 10d | 2027-02-28 | 2027-03-14 | MLTX-02-004-CN-13550 SS, MLTX-02-004-CN-13590 SS, MLTX-02-004-CN-13530 |  |  |  | -80d | 0d | Skilled Labor [500 h]; Painter [240 h]; Padel playgound [10] | 10,725 |  | MOD-02-CN-10120 | 0 | -20 | 0 | PL | Const | Play |  |

| ID | WBS | Activity | Duration | Start | Finish | Predecessors | Complete | Planned start | Planned finish | Total float | Free float | Resources | Cost | Actual cost | New Activity ID | % Variance | Delay | On Schedule | W-Construction | WBS-Project | WBS-Construction Type |
| --- | --- | --- | --- | --- | --- | --- | --- | --- | --- | --- | --- | --- | --- | --- | --- | --- | --- | --- | --- | --- | --- |
|  | 8 | **BASKETBALL PLAYGROUND** |  | 2026-08-22 | 2027-03-28 |  |  |  |  |  |  |  |  |  |  |  |  |  |  |  |  |
| MLTX-02-004-CN-13610 |  | Preparation and Proofing for Subgrade (Basketball Playground) | 10d | 2026-08-22 A | 2026-08-24 A | MLTX-02-004-CN-13560 | 100% | 2026-09-26 | 2026-10-06 |  |  | Labor [550 h]; Skilled Labor [200 h]; Driver [280 h]; Forklift [90 h]; Basketball playground [53.33] | 31,200 | 31,200 | MOD-02-CN-10180 | 0 | -20 | 0 | PL | Const | Play |
| MLTX-02-004-CN-13620 |  | Backfilling and Compaction of Base Layers (Basketball Playground) | 10d | 2026-08-29 A | 2026-09-15 A | MLTX-02-004-PR-11260, MLTX-02-004-CN-13570, MLTX-02-004-CN-13610 | 100% | 2026-10-14 | 2026-10-25 |  |  | Labor [400 h]; Skilled Labor [200 h]; Driver [300 h]; Loader [80 h]; Dump Truck [200 h]; Compactor [100 h]; Basketball playground [53.33] | 31,200 | 31,200 | MOD-02-CN-10190 | 0 | -20 | 0 | PL | Const | Play |
| MLTX-02-004-CN-13630 |  | Finishing and Surface Finish Works (Basketball Playground) | 15d | 2026-10-20 A | 2026-11-05 A | MLTX-02-004-CN-13580 SS, MLTX-02-004-CN-13580 FF, MLTX-02-004-CN-13530 SS, MLTX-02-004-CN-13530 FF | 100% | 2026-12-19 | 2027-01-04 |  |  | Labor [740 h]; Skilled Labor [150 h]; Driver [100 h]; Forklift [90 h]; Basketball playground [266.67] | 156,000 | 156,000 | MOD-02-CN-10200 | 0 | -20 | 0 | PL | Const | Play |
| MLTX-02-004-CN-13640 |  | Install Sport Equipments - Goal / Nets - (Basketball Playground) | 10d | 2027-03-15 | 2027-03-25 | MLTX-02-004-EN-16350, MLTX-02-004-CN-13630, MLTX-02-004-CN-13590, MLTX-02-004-CN-13540 |  |  |  | -80d | 0d | Labor [200 h]; Skilled Labor [90 h]; Driver [100 h]; Crane [140 h]; Basketball playground [133.33] | 78,000 |  | MOD-02-CN-10210 | 0 | -20 | 0 | PL | Const | Play |
| MLTX-02-004-CN-13650 |  | Surface Marking and Painting (Basketball Playground) | 12d | 2027-03-15 | 2027-03-28 | MLTX-02-004-CN-13640 SS, MLTX-02-004-CN-13600, MLTX-02-004-CN-13550, MLTX-02-004-CN-13640 FF |  |  |  | -80d | 0d | Skilled Labor [250 h]; Painter [240 h]; Basketball playground [26.67] | 15,600 |  | MOD-02-CN-10220 | 0 | -20 | 0 | PL | Const | Play |
|  | 9 | **PADEL FENCE** |  | 2026-09-15 | 2026-12-17 |  |  |  |  |  |  |  |  |  |  |  |  |  |  |  |  |
| MLTX-02-004-CN-13660 |  | Excavation for Fence | 5d | 2026-09-15 A | 2026-09-15 A | MLTX-02-004-CN-13620 | 100% | 2027-01-28 | 2027-02-02 |  |  | Labor [250 h]; Driver [160 h]; Excavator [80 h]; Dump Truck [160 h]; Supply and install of padel playground fence [0.1] | 8,287.5 | 8,287.5 | MOD-02-CN-10240 | 0 | -20 | 0 | PL | Const | Play |
| MLTX-02-004-CN-13670 |  | Concrete Foundation for Fence including Posts Fixation | 4d | 2026-09-29 A | 2026-09-29 A | MLTX-02-004-CN-13660 SS | 100% | 2026-09-30 | 2026-10-04 |  |  | Skilled Labor [150 h]; Driver [100 h]; Steel Fixer [140 h]; Supply and install of padel playground fence [0.2] | 16,575 | 16,575 | MOD-02-CN-10250 | 0 | -20 | 0 | PL | Const | Play |
| MLTX-02-004-CN-13671 |  | Backfilling and Reinstatement for Concrete Foundation | 2d | 2026-10-04 A | 2026-10-06 A | MLTX-02-004-CN-13670, MLTX-02-004-CN-13670 FF | 100% | 2026-10-07 | 2026-10-08 |  |  | Skilled Labor [257.14 h]; Driver [342.86 h]; Loader [180 h]; Dump Truck [240 h]; Compactor [120 h]; Supply and install of padel playground fence [0.05] | 4,143.75 | 4,143.75 | MOD-02-CN-10290 | 0 | -20 | 0 | PL | Const | Play |
| MLTX-02-004-CN-13680 |  | Tempered Glass Fenc Installation and Fixation | 10d | 2026-11-24 | 2026-12-05 | MLTX-02-004-CN-13670 SS, MLTX-02-004-CN-13671, MLTX-02-004-CN-13660 |  |  |  | 33d | 0d | Skilled Labor [250 h]; Driver [180 h]; Crane [240 h]; Supply and install of padel playground fence [0.4] | 33,150 |  | MOD-02-CN-10260 | 0 | -20 | 0 | PL | Const | Play |
| MLTX-02-004-CN-13690 |  | Chain Link Fence Installation and Fixation | 10d | 2026-11-24 | 2026-12-05 | MLTX-02-004-PR-11920, MLTX-02-004-CN-13680 SS |  |  |  | 43d | 10d | Labor [200 h]; Skilled Labor [150 h]; Driver [150 h]; Crane [200 h]; Supply and install of padel playground fence [0.2] | 16,575 |  | MOD-02-CN-10270 | 0 | -20 | 0 | PL | Const | Play |
| MLTX-02-004-CN-13700 |  | Install of Fence Gates | 11d | 2026-12-06 | 2026-12-17 | MLTX-02-004-CN-13690 SS, MLTX-02-004-CN-13680, MLTX-02-004-CN-13690 FF |  |  |  | 33d | 111d | Labor [380 h]; Skilled Labor [90 h]; Driver [100 h]; Crane [120 h]; Supply and install of padel playground fence [0.05] | 4,143.75 |  | MOD-02-CN-10280 | 0 | -20 | 0 | PL | Const | Play |
|  | 1 | **CURBSTOEN/INTERLOCK** |  | 2026-09-20 | 2026-12-10 |  |  |  |  |  |  |  |  |  |  |  |  |  |  |  |  |
| MLTX-02-004-CN-13450 |  | Concrete Works Under Curbstone | 8d | 2026-09-20 A | 2026-09-22 A | MLTX-02-004-CN-13720, MLTX-02-004-EN-16200, MLTX-02-004-EN-15360 | 100% | 2026-11-18 | 2026-11-26 |  |  | Skilled Labor [200 h]; Kerb type K1A [700]; Kerb type K1B [50]; Kerb type K4 [4728.4] | 258,158.55 | 258,158.55 | MOD-02-CN-10150 | 0 | -38 | 0 | PL | Const | Play |
| MLTX-02-004-CN-13460 |  | Curbstone Installation | 10d | 2026-09-20 A | 2026-09-29 A | MLTX-02-004-CN-13450, MLTX-02-004-PR-11820 | 100% | 2026-11-28 | 2026-12-08 |  |  | Labor [940 h]; Skilled Labor [440 h]; Driver [340 h]; Forklift [240 h]; Kerb type K1A [1800]; Kerb type K1B [43.27]; Kerb type K4 [7500] | 442,800.15 | 442,800.15 | MOD-02-CN-10160 | 0 | -38 | 0 | PL | Const | Play |
| MLTX-02-004-CN-13390 |  | Interlock Installation (Grey Scale) for LandScape (Including Finishing Works) | 15d | 2026-11-24 | 2026-12-10 | MLTX-02-004-CN-13460 |  |  |  | 39d | 117d | Labor [1000 h]; Skilled Labor [440 h]; Driver [540 h]; Forklift [330 h]; Interlock tiles grey scale with black marble chips 600*300*60mm zero joint [1466.67] | 185,900 |  | MOD-02-CN-10140 | 0 | -38 | 0 | PL | Const | Play |
|  | 10 | **AIR DOME** |  | 2026-07-11 | 2027-04-12 |  |  |  |  |  |  |  |  |  |  |  |  |  |  |  |  |
|  | 1 | **CIVIL WORKS** |  | 2026-07-11 | 2026-12-07 |  |  |  |  |  |  |  |  |  |  |  |  |  |  |  |  |
| MLTX-02-004-CN-13710 |  | Excavation for Foundation & Playground Area (Air Dome) | 5d | 2026-07-11 A | 2026-08-12 A | MLTX-02-004-EN-15400, MLTX-02-004-CN-13620, MLTX-02-004-EN-16250, MLTX-02-004-EN-16220, MLTX-02-004-EN-16230, MLTX-02-004-EN-16240, MLTX-02-004-EN-16260, MLTX-02-004-EN-16270, MLTX-02-004-EN-16280, MLTX-02-004-EN-16290, MLTX-02-004-EN-16300, MLTX-02-004-EN-16310 | 100% | 2026-09-06 | 2026-09-10 |  |  | Labor [200 h]; Driver [80 h]; Excavator [80 h]; Water Tanker [70 h]; Compactor [80 h]; Design, supply, install, testing and commissioning of air dome [0.11] | 280,312.5 | 280,313 | MOD-02-CN-10320 | 0 | -20 | 0 | PL | Const | Play |
| MLTX-02-004-CN-13720 |  | Concrete Works for Foundations including Anchor Bolts (Air Dome) | 5d | 2026-07-29 A | 2026-09-22 A | MLTX-02-004-CN-13710, MLTX-02-004-CN-13710 SS | 100% | 2026-08-15 | 2026-08-19 |  |  | Skilled Labor [200 h]; Steel Fixer [180 h]; Design, supply, install, testing and commissioning of air dome [0.03] | 392,437.5 | 392,437.5 | MOD-02-CN-10330 | 0 | -20 | 0 | PL | Const | Play |
| MLTX-02-004-CN-13730 |  | Cable System Installation (Air Dome) | 8d | 2026-09-24 A | 2026-11-21 A | MLTX-02-004-PR-12050 FF, MLTX-02-004-CN-13720 | 100% | 2026-11-04 | 2026-11-12 |  |  | Labor [700 h]; Skilled Labor [250 h]; Driver [250 h]; Crane [300 h]; Design, supply, install, testing and commissioning of air dome [0.27] | 560,625 | 560,625 | MOD-02-CN-10340 | 0 | -38 | 0 | PL | Const | Play |
| MLTX-02-004-CN-13740 |  | Install of Membrane Covering System (Air Dome) | 12d | 2026-11-24 | 2026-12-07 | MLTX-02-004-CN-13730 |  |  |  | -47d | 0d | Labor [500 h]; Skilled Labor [90 h]; Driver [100 h]; Crane [160 h]; Design, supply, install, testing and commissioning of air dome [0.06] | 560,625 |  | MOD-02-CN-10360 | 0 | -38 | 0 | PL | Const | Play |
| MLTX-02-004-CN-13750 |  | Thermal Insulation Works (Air Dome) | 6d | 2026-12-01 | 2026-12-07 | MLTX-02-004-PR-11280, MLTX-02-004-PR-11800, MLTX-02-004-CN-13740 SS, MLTX-02-004-CN-13740 FF |  |  |  | -47d | 33d | Labor [500 h]; Skilled Labor [240 h]; Driver [100 h]; Crane [160 h]; Design, supply, install, testing and commissioning of air dome [0.06] | 560,625 |  | MOD-02-CN-10370 | 0 | -38 | 0 | PL | Const | Play |

| ID | WBS | Activity | Duration | Start | Finish | Predecessors | Complete | Remaining | Planned start | Planned finish | Total float | Free float | Resources | Cost | Actual cost | New Activity ID | % Variance | Delay | On Schedule | W-Construction | WBS-Project | WBS-Construction Type | New Activity Code |
| --- | --- | --- | --- | --- | --- | --- | --- | --- | --- | --- | --- | --- | --- | --- | --- | --- | --- | --- | --- | --- | --- | --- | --- |
|  | 3 | **MECHANICAL WORKS** |  | 2027-01-16 | 2027-02-27 |  |  |  |  |  |  |  |  |  |  |  |  |  |  |  |  |  |  |
| MLTX-02-004-CN-13780 |  | Air Ducts and Grills Installation (Air Dome) | 13d | 2027-01-16 | 2027-01-30 | MLTX-02-004-EN-16150, MLTX-02-004-EN-16160, MLTX-02-004-PR-11580, MLTX-02-004-PR-11560, MLTX-02-004-PR-12070, MLTX-02-004-CN-13750 |  |  |  |  | -80d | 0d | Labor [876.9 h]; Skilled Labor [353.8 h]; Mechanical [269.2 h]; Crane [120 h]; Design, supply, install, testing and commissioning of air dome [0.11] | 280,312.5 |  | MOD-02-CN-10410 | 0 | -38 | 0 | PL | Const | Play |  |
| MLTX-02-004-CN-13790 |  | Air Units Installation (Air Dome) | 13d | 2027-01-31 | 2027-02-14 | MLTX-02-004-PR-11540, MLTX-02-004-CN-13780 |  |  |  |  | -80d | 0d | Labor [800 h]; Skilled Labor [440 h]; Driver [420 h]; Mechanical [160 h]; Forklift [240 h]; Design, supply, install, testing and commissioning of air dome [0.06] | 448,500 |  | MOD-02-CN-10420 | 0 | -38 | 0 | PL | Const | Play |  |
| MLTX-02-004-CN-13800 |  | Exhaust Fans and Ducts Installation (Air Dome) | 10d | 2027-02-15 | 2027-02-27 | MLTX-02-004-PR-11600, MLTX-02-004-CN-13790 |  |  |  |  | -80d | 0d | Labor [700 h]; Skilled Labor [300 h]; Driver [370 h]; Mechanical [140 h]; Forklift [210 h]; Design, supply, install, testing and commissioning of air dome [0.02] | 392,437.5 |  | MOD-02-CN-10430 | 0 | -38 | 0 | PL | Const | Play |  |
|  | 4 | **ELECTRICAL WORKS** |  | 2026-10-15 | 2027-01-13 |  |  |  |  |  |  |  |  |  |  |  |  |  |  |  |  |  |  |
| MLTX-02-004-CN-13810 |  | Light Fixture Works (Air Dome) | 15d | 2026-10-15 A | 2026-10-27 A | MLTX-02-004-PR-11740, MLTX-02-004-PR-12080 FF, MLTX-02-004-CN-13780 FF, MLTX-02-004-PR-11760 FF | 100% |  | 2026-12-26 | 2027-01-11 |  |  | Skilled Labor [440 h]; Electrician [300 h]; Design, supply, install, testing and commissioning of air dome [0.04] | 280,312.5 | 280,312.5 | MOD-02-CN-10450 | 0 | -38 | 0 | PL | Const | Play |  |
| MLTX-02-004-CN-13820 |  | Distribution Board and Electrical Works (Air Dome) | 15d | 2026-11-14 A | 2026-12-02 | MLTX-02-004-EN-16070, MLTX-02-004-EN-16080, MLTX-02-004-EN-16090, MLTX-02-004-EN-16100, MLTX-02-004-EN-16110, MLTX-02-004-PR-11720, MLTX-02-004-CN-13810, MLTX-02-004-CN-13390 | 50% | 8d | 2026-12-02 | 2026-12-19 | -8d | 0d | Skilled Labor [300 h]; Electrician [120 h]; Design, supply, install, testing and commissioning of air dome [0.03] | 280,312.5 | 140,156.25 | MOD-02-CN-10460 | 0 | -38 | 0 | PL | Const | Play |  |
| MLTX-02-004-CN-13830 |  | External Electrical Connection Works (Air Dome) | 15d | 2026-12-03 | 2026-12-20 | MLTX-02-004-CN-13820 |  |  |  |  | -8d | 0d | Skilled Labor [350 h]; Electrician [200 h]; Design, supply, install, testing and commissioning of air dome [0.05] | 280,312.5 |  | MOD-02-CN-10470 | 0 | -38 | 0 | PL | Const | Play |  |
| MLTX-02-004-CN-13840 |  | Emergency Generator Installation (Air Dome) | 11d | 2026-12-21 | 2027-01-02 | MLTX-02-004-EN-12970, MLTX-02-004-EN-12990, MLTX-02-004-EN-13000, MLTX-02-004-CN-13830 |  |  |  |  | -8d | 0d | Skilled Labor [300 h]; Electrician [220 h]; Design, supply, install, testing and commissioning of air dome [0.11] | 560,625 |  | MOD-02-CN-10480 | 0 | -38 | 0 | PL | Const | Play |  |
| MLTX-02-004-CN-13850 |  | Control System Installation (Air Dome) | 10d | 2027-01-03 | 2027-01-13 | MLTX-02-004-EN-16120, MLTX-02-004-EN-16130, MLTX-02-004-EN-16140, MLTX-02-004-CN-13840 |  |  |  |  | -8d | 72d | Skilled Labor [900 h]; Electrician [500 h]; Design, supply, install, testing and commissioning of air dome [0.09] | 280,312.5 |  | MOD-02-CN-10490 | 0 | -38 | 0 | PL | Const | Play |  |
|  | 2 | **FINISHES WORKS** |  | 2026-12-03 | 2027-04-12 |  |  |  |  |  |  |  |  |  |  |  |  |  |  |  |  |  |  |
| MLTX-02-004-CN-13760 |  | Doors Installation Including Emergency, Entrance doors (Air Dome) | 15d | 2026-12-03 | 2026-12-20 | MLTX-02-004-EN-16210, MLTX-02-004-CN-13820 |  |  |  |  | 0d | 80d | Labor [400 h]; Skilled Labor [200 h]; Forklift [150 h]; Design, supply, install, testing and commissioning of air dome [0.02] | 224,250 |  | MOD-02-CN-10380 | 0 | -38 | 0 | PL | Const | Play |  |
| MLTX-02-004-CN-13770 |  | Logo and Signs Installation (Air Dome) | 13d | 2027-03-29 | 2027-04-12 | MLTX-02-004-CN-13650, MLTX-02-004-CN-13760, MLTX-02-004-CN-13800 |  |  |  |  | -80d | 0d | Labor [1300 h]; Skilled Labor [900 h]; Driver [340 h]; Crane [120 h]; Design, supply, install, testing and commissioning of air dome [0.02] | 224,250 |  | MOD-02-CN-10390 | 0 | -38 | 0 | PL | Const | Play |  |
|  | 1 | **IRRIGATION NETWORK** |  | 2026-08-22 | 2026-12-14 |  |  |  |  |  |  |  |  |  |  |  |  |  |  |  |  |  |  |
| MLTX-02-004-CN-14620 |  | Installing of HDPE Pipes for Irrigation Network (Main Line) | 12d | 2026-08-22 A | 2026-08-31 A | MLTX-02-004-CN-13460, MLTX-02-004-EN-16050, MLTX-02-004-EN-16060, MLTX-02-004-EN-15460 | 100% |  | 2026-11-08 | 2026-11-21 |  |  | Labor [1000 h]; Driver [540 h]; Mechanical [320 h]; Plumber [300 h]; Crane [220 h]; HDPE Pipes pipe line O.D 90 mm PN 10, in depth 0 to 1.5 m [376.67] | 80,795 | 80,795 | MOD-02-CN-11430 | 0 | -38 | 0 | LS | Const | Play | CN.MB.D15.1950 |
| MLTX-02-004-CN-14630 |  | Installing of HDPE Pipes for Irrigation Network (Branch Lines) | 5d | 2026-08-31 A | 2026-08-31 A | MLTX-02-004-CN-14620 | 100% |  | 2026-12-01 | 2026-12-06 |  |  | Labor [800 h]; Driver [240 h]; Mechanical [240 h]; Plumber [240 h]; Crane [140 h]; HDPE Pipes pipe line O.D 50 mm PN 10, in depth 0 to 1.5 m [150]; HDPE Pipes pipe line O.D 32 mm PN 10, in depth 0 to 1.5 m [523.33]; HDPE Pipes pipe line O.D 25 mm PN 10, in depth 0 to 1.5 m [1333.33] | 94,250 | 94,250 | MOD-02-CN-11440 | 0 | -38 | 0 | LS | Const | Play | CN.MB.D15.1960 |
| MLTX-02-004-CN-14640 |  | Installing of Valves and fittings for Irrigation Network | 3d | 2026-09-15 A | 2026-11-09 A | MLTX-02-004-CN-14390, MLTX-02-004-CN-14300, MLTX-02-004-CN-14160 FF, MLTX-02-004-CN-14380 FF, MLTX-02-004-CN-14400 FF, MLTX-02-004-CN-14240 FF, MLTX-02-004-CN-14320 FF, MLTX-02-004-CN-14340 FF, MLTX-02-004-CN-14630 | 100% |  | 2026-12-08 | 2026-12-10 |  |  | Labor [950 h]; Mechanical [160 h]; Plumber [260 h]; Electrical Solenoid Valve ( 1") inside PVC box [5.33]; Gate valve 100 mm PN16 [1]; Gate valve 50 mm PN16 [5.33]; Gate valve 32 mm PN16 [8]; Flushing Bronze gate valve dia 1.5" inside PVC box [2.67]; Air release valve 1.5" inside PVC box [3.33] | 46,475 | 46,475 | MOD-02-CN-11450 | 0 | -38 | 0 | LS | Const | Play | CN.MB.D15.1970 |
| MLTX-02-004-CN-14650 |  | Installing of Bubblers and Spreyers | 3d | 2026-12-12 | 2026-12-14 | MLTX-02-004-PR-12000, MLTX-02-004-CN-13420 |  |  |  |  | 11d | 0d | Labor [1300 h]; Mechanical [240 h]; Plumber [240 h]; Pressureâ€“compensating bubblers 110 Lit/Hr [6.67]; Pressureâ€“ bubblers 60 Lit/Hr [293.33]; Pop up sprayer 90?- 210?, Radius 3.0 mtr [400]; Pop up sprayer 360?,Radius 3.0 mtr. [550] | 46,150 |  | MOD-02-CN-11460 | 0 | -38 | 0 | LS | Const | Play | CN.MB.D15.1980 |
|  | 5 | **NATURAL GROUND** |  | 2026-11-24 | 2026-11-29 |  |  |  |  |  |  |  |  |  |  |  |  |  |  |  |  |  |  |
| MLTX-02-004-CN-13420 |  | Compacted Natural Ground Soil Installation Works for Landscape | 5d | 2026-11-24 | 2026-11-29 | MLTX-02-004-CN-14640, MLTX-02-004-CN-14350 |  |  |  |  | 21d | 10d | Labor [1800 h]; Skilled Labor [1900 h]; Driver [370 h]; Water Tanker [270 h]; Dump Truck [360 h]; Compactor [180 h]; Compacted Natural ground soil [8000] | 117,000 |  | MOD-02-CN-10550 | 0 | -38 | 0 | LS | Const | Play |  |
|  | 2 | **PLANTING** |  | 2026-10-12 | 2026-12-02 |  |  |  |  |  |  |  |  |  |  |  |  |  |  |  |  |  |  |
| MLTX-02-004-CN-13490 |  | Placement of Lawn Ground Cover (Rolling and Compaction) | 7d | 2026-10-12 A | 2026-10-28 A | MLTX-02-004-CN-14630 | 100% |  | 2026-12-14 | 2026-12-21 |  |  | Labor [2500 h]; Skilled Labor [1550 h]; Driver [540 h]; Water Tanker [250 h]; Lawn [3266.67] | 175,175 | 175,175 | MOD-02-CN-10580 | 0 | -38 | 0 | LS | Const | Play |  |
| MLTX-02-004-CN-13480 |  | Placement of Sweet/Agricultural Soil (Including Levelling and Grading) | 5d | 2026-10-29 A | 2026-11-25 | MLTX-02-004-EN-15380, MLTX-02-004-CN-14650 | 80% | 1.5d | 2026-12-17 | 2026-12-22 | 35.5d | 0d | Labor [1850 h]; Driver [380 h]; Dump Truck [500 h]; Bobcat [280 h]; Cassia Glauca [88]; Plumeria Alba [44]; Neem [4]; Lawn [2800] | 321,945 | 244,678.2 | MOD-02-CN-10570 | 0 | -38 | 0 | LS | Const | Play |  |
| MLTX-02-004-CN-13500 |  | Placement and Fixation of Trees | 6d | 2026-11-25 | 2026-12-02 | MLTX-02-004-CN-13480 |  |  |  |  | 35.5d | 19.5d | Labor [2250 h]; Skilled Labor [1500 h]; Driver [500 h]; Water Tanker [250 h]; Cassia Glauca [206]; Plumeria Alba [103]; Neem [4] | 387,513.75 |  | MOD-02-CN-10590 | 0 | -38 | 0 | LS | Const | Play |  |

| ID | WBS | Activity | Duration | Start | Finish | Predecessors | Complete | Remaining | Planned start | Planned finish | Total float | Free float | Resources | Cost | Actual cost | New Activity ID | % Variance | Delay | On Schedule | W-Construction | WBS-Project | WBS-Construction Type | New Activity Code |
| --- | --- | --- | --- | --- | --- | --- | --- | --- | --- | --- | --- | --- | --- | --- | --- | --- | --- | --- | --- | --- | --- | --- | --- |
|  | 3 | **WALKING/BIKE PATHS** |  | 2026-08-16 | 2026-12-02 |  |  |  |  |  |  |  |  |  |  |  |  |  |  |  |  |  |  |
| MLTX-02-004-CN-13430 |  | Bike Path Preparation and Installation Works | 8d | 2026-08-16 A | 2026-12-02 | MLTX-02-004-CN-13671, MLTX-02-004-PR-11960 FF, MLTX-02-004-CN-13490 FF | 60% | 8d | 2027-01-04 | 2027-01-12 | 16d | 0d | Skilled Labor [850 h]; Driver [460 h]; Bobcat [180 h]; Bike path [1665] | 284,090.63 |  | MOD-02-CN-10510 | 0 | -38 | 0 | LS | Const | Play |  |
| MLTX-02-004-CN-13440 |  | Walking Path Preparation and Installation Works | 8d | 2026-08-16 A | 2026-10-29 A | MLTX-02-004-CN-13430 SS | 100% |  | 2027-01-04 | 2027-01-12 |  |  | Skilled Labor [850 h]; Driver [460 h]; Bobcat [180 h]; Walking path [1575] | 268,734.38 | 268,734.38 | MOD-02-CN-10520 | 0 | -38 | 0 | LS | Const | Play |  |
|  | 6 | **GENERAL/FURNITURE** |  | 2026-09-19 | 2027-02-06 |  |  |  |  |  |  |  |  |  |  |  |  |  |  |  |  |  |  |
| MLTX-02-004-CN-14350 |  | Preleminary Works for Site Light Poles Including Cable and Bases Works | 12d | 2026-09-19 A | 2026-10-01 A | MLTX-02-004-CN-13460, MLTX-02-004-EN-16180, MLTX-02-004-EN-15590, MLTX-02-004-EN-15600, MLTX-02-004-EN-15610, MLTX-02-004-EN-15620, MLTX-02-004-EN-15300 | 100% |  | 2026-12-07 | 2026-12-20 |  |  | Labor [950 h]; Driver [340 h]; Electrician [460 h]; Forklift [240 h]; Supply, install, testing, and commissioning of ground mounted decorated landscape LED lighting with 6.0m height pole [32.2] | 202,497.75 | 202,497.75 | MOD-02-CN-11710 | 0 | -38 | 0 | LS | Const | Play | CN.MB.D16.2130 |
| MLTX-02-004-CN-14360 |  | Installing of Site Light Poles | 12d | 2026-10-04 A | 2027-01-31 | MLTX-02-004-CN-13490 FF, MLTX-02-004-CN-13400 FF, MLTX-02-004-PR-12090 | 92% | 12d | 2027-03-16 | 2027-03-29 | -16d | 0d | Skilled Labor [700 h]; Electrician [500 h]; Crane [140 h]; Supply, install, testing, and commissioning of ground mounted decorated landscape LED lighting with 6.0m height pole [75.14] | 472,536.45 | 27,365.03 | MOD-02-CN-11800 | 0 | -38 | 0 | LS | Const | Play | CN.MB.D16.2140 |
| MLTX-02-004-CN-13870 |  | Fixation and Installation of Steel Frame for Benches | 10d | 2026-12-03 | 2026-12-14 | MLTX-02-004-EN-15340, MLTX-02-004-CN-13430 |  |  |  |  | 16d | 0d | Skilled Labor [850 h]; Driver [420 h]; Crane [160 h]; Supply and install playground benches consists of 6 seats [1] | 17,276.03 |  | MOD-02-CN-10630 | 0 | -38 | 0 | LS | Const | Play |  |
| MLTX-02-004-CN-13880 |  | Fixation and Installation of Benches | 9d | 2026-12-15 | 2026-12-24 | MLTX-02-004-CN-13870 |  |  |  |  | 16d | 0d | Skilled Labor [700 h]; Driver [420 h]; Crane [160 h]; Supply and install playground benches consists of 6 seats [2.33] | 40,310.72 |  | MOD-02-CN-10640 | 0 | -38 | 0 | LS | Const | Play |  |
| MLTX-02-004-CN-13890 |  | Fixation and Installation of Precast Concrete Seats (Rectangular) | 9d | 2026-12-15 | 2026-12-24 | MLTX-02-004-CN-13880 SS, MLTX-02-004-CN-13880 FF |  |  |  |  | 16d | 0d | Skilled Labor [700 h]; Driver [420 h]; Crane [160 h]; Supply and install recycled precast concrete rectangular seats [37.33] | 43,680 |  | MOD-02-CN-10650 | 0 | -38 | 0 | LS | Const | Play |  |
| MLTX-02-004-CN-13900 |  | Fixation and Installation of Precast Concrete Seats (Circular) | 9d | 2026-12-15 | 2026-12-24 | MLTX-02-004-CN-13890 SS, MLTX-02-004-CN-13890 FF |  |  |  |  | 16d | 0d | Skilled Labor [700 h]; Driver [420 h]; Crane [160 h]; Supply and install recycled precast concrete circular seats [32] | 17,160 |  | MOD-02-CN-10660 | 0 | -38 | 0 | LS | Const | Play |  |
| MLTX-02-004-CN-13910 |  | Fixation and Installation of Precast Concrete Trash Bins | 11d | 2026-12-26 | 2027-01-06 | MLTX-02-004-CN-13500, MLTX-02-004-CN-13900, MLTX-02-004-CN-13370 |  |  |  |  | 16d | 26d | Skilled Labor [400 h]; Driver [320 h]; Crane [160 h]; Supply and install recycled precast concrete trash bins [10] | 14,625 |  | MOD-02-CN-10670 | 0 | -38 | 0 | LS | Const | Play |  |
| MLTX-02-004-CN-13400 |  | Stamped Concrete Works for LandScape (Including Finishing Works) | 7d | 2027-01-24 | 2027-01-31 | MLTX-02-004-MS-1150, MLTX-02-004-CN-13440 |  |  |  |  | -16d | 0d | Skilled Labor [850 h]; Steel Fixer [320 h]; Stamped concrete floor [120] | 28,080 |  | MOD-02-CN-10610 | 0 | -38 | 0 | LS | Const | Play |  |
| MLTX-02-004-CN-13470 |  | Traffic Signs Posts and Poles Installation | 5d | 2027-02-01 | 2027-02-06 | MLTX-02-004-CN-13900, MLTX-02-004-CN-14360, MLTX-02-004-CN-13370 |  |  |  |  | -16d | 0d | Skilled Labor [240 h]; Driver [160 h]; Excavator [240 h]; Traffic signs aluminum sheet, (breakaway) Single post I.P.E. [2] | 9,750 |  | MOD-02-CN-10620 | 0 | -38 | 0 | LS | Const | Play |  |
|  | 2 | **PARKING** |  | 2026-08-11 | 2026-12-02 |  |  |  |  |  |  |  |  |  |  |  |  |  |  |  |  |  |  |
| MLTX-02-004-CN-13380 |  | Site Preparation & Compaction Under Interlock for Parking Area | 4d | 2026-08-11 A | 2026-10-18 A | MLTX-02-004-EN-15370 | 100% |  | 2027-01-18 | 2027-01-21 |  |  | Labor [1000 h]; Driver [120 h]; Water Tanker [90 h]; Compactor [60 h]; Supply and install interlock tiles for parking 8cm [200] | 29,250 | 29,250 | MOD-02-CN-10700 | 0 | -38 | 0 | LS | Const | Parking |  |
| MLTX-02-004-CN-13370 |  | Interlock Installation (8 Cm) for Parking Area (Including Finishing Works) | 8d | 2026-11-24 | 2026-12-02 | MLTX-02-004-CN-13450, MLTX-02-004-CN-13380 |  |  |  |  | 35d | 19d | Labor [2000 h]; Skilled Labor [700 h]; Driver [400 h]; Forklift [300 h]; Supply and install interlock tiles for parking 8cm [466.66] | 68,249.02 |  | MOD-02-CN-10690 | 0 | -38 | 0 | LS | Const | Parking |  |
|  | TO | **TOILET/SERVICE BUILDING** |  | 2026-07-19 | 2026-12-05 |  |  |  |  |  |  |  |  |  |  |  |  |  |  |  |  |  |  |
|  | 13 | **STRUCTURE WORKS** |  | 2026-07-19 | 2026-08-11 |  |  |  |  |  |  |  |  |  |  |  |  |  |  |  |  |  |  |
|  | 2 | **CONCRETE WORKS** |  | 2026-07-19 | 2026-08-03 |  |  |  |  |  |  |  |  |  |  |  |  |  |  |  |  |  |  |
|  | 1 | **SUB-STRUCTURE** |  | 2026-07-19 | 2026-07-25 |  |  |  |  |  |  |  |  |  |  |  |  |  |  |  |  |  |  |
| MLTX-02-004-CN-13920 |  | Plain Concrete Under Footing | 3d | 2026-07-19 A | 2026-07-19 A | MLTX-02-004-EN-15700, MLTX-02-004-EN-15710, MLTX-02-004-EN-15720, MLTX-02-004-EN-15270, MLTX-02-004-EN-13280, MLTX-02-004-CN-14000, MLTX-02-004-CN-13980 | 100% |  | 2026-07-21 | 2026-07-23 |  |  | Labor [100 h]; Skilled Labor [60 h]; lean concrete under foundation [1.5] | 1,170 | 1,170 | MOD-02-CN-10750 | -50 | -17 | 0 | TO | Const | Toilet | CN.MB.D01.1500 |
| MLTX-02-004-CN-13950 |  | Reinforced Concrete Works for Slab on Grade Including Steel Fixing | 5d | 2026-07-20 A | 2026-07-25 A | MLTX-02-004-PR-11150, MLTX-02-004-CN-13920 | 100% |  |  |  |  |  | Labor [300 h]; Skilled Labor [100 h]; Steel Fixer [120 h]; Provide and cast 35 Mpa concrete floor slab on grade [15] | 32,175 | 32,175 | MOD-02-CN-10800 | 0 | -17 | 0 | TO | Const | Toilet | CN.MB.D01.1590 |
|  | 2 | **SUPER-STRUCTURE** |  | 2026-07-30 | 2026-08-03 |  |  |  |  |  |  |  |  |  |  |  |  |  |  |  |  |  |  |
| MLTX-02-004-CN-13930 |  | AAC Panels Works for Walls | 18d | 2026-07-30 A | 2026-08-01 A | MLTX-02-004-EN-15630, MLTX-02-004-EN-15640, MLTX-02-004-EN-15650, MLTX-02-004-EN-15660, MLTX-02-004-EN-15670, MLTX-02-004-EN-15680, MLTX-02-004-EN-15690, MLTX-02-004-CN-14030, MLTX-02-004-CN-14030 SS | 100% |  | 2026-08-04 | 2026-08-24 |  |  | Labor [500 h]; Skilled Labor [200 h]; Driver [280 h]; Crane [100 h]; The autoclaved aerated panel for slabs, external and internal walls and parapet [150] | 48,262.5 | 48,262.5 | MOD-02-CN-10820 | 0 | -17 | 0 | TO | Const | Toilet | CN.MB.D01.1550 |
| MLTX-02-004-CN-13940 |  | Parpet Works and Lintels | 8d | 2026-08-01 A | 2026-08-02 A | MLTX-02-004-CN-13960, MLTX-02-004-CN-14520 | 100% |  | 2026-08-23 | 2026-08-31 |  |  | Labor [200 h]; Skilled Labor [60 h]; Driver [100 h]; Crane [50 h]; The autoclaved aerated panel for slabs, external and internal walls and parapet [50] | 16,087.5 | 16,087.5 | MOD-02-CN-10840 | 0 | -17 | 0 | TO | Const | Toilet | CN.MB.D01.1570 |
| MLTX-02-004-CN-13960 |  | AAC Panels Works for Slabs | 15d | 2026-08-02 A | 2026-08-03 A | MLTX-02-004-CN-13930 | 100% |  | 2026-08-05 | 2026-08-22 |  |  | Labor [250 h]; Skilled Labor [100 h]; Driver [200 h]; Crane [100 h]; The autoclaved aerated panel for slabs, external and internal walls and parapet [50] | 16,087.5 | 16,087.5 | MOD-02-CN-10830 | 0 | -17 | 0 | TO | Const | Toilet | CN.MB.D01.1600 |

| ID | WBS | Activity | Duration | Start | Finish | Predecessors | Complete | Planned start | Planned finish | Resources | Cost | Actual cost | New Activity Code | New Activity ID | % Variance | Delay | Flag | On Schedule | W-Construction | WBS-Project | WBS-Construction Type |
| --- | --- | --- | --- | --- | --- | --- | --- | --- | --- | --- | --- | --- | --- | --- | --- | --- | --- | --- | --- | --- | --- |
|  | 1 | **UNDER GROUND SEPTIC TANK** |  | 2026-07-23 | 2026-07-27 |  |  |  |  |  |  |  |  |  |  |  |  |  |  |  |  |
| MLTX-02-004-CN-14510 |  | Plain Concrete Under Footing | 3d | 2026-07-23 A | 2026-07-23 A | MLTX-02-004-CN-13970, MLTX-02-004-CN-13990 | 100% | 2026-07-23 | 2026-07-26 | Labor [100 h]; Skilled Labor [40 h]; lean concrete under foundation [1.5] | 1,170 | 1,170 | CN.MB.D01.1500 | MOD-02-CN-10860 | -100 | -17 | UDF_G1 | -100 | TO | Const | Toilet |
| MLTX-02-004-CN-14530 |  | Reinforced Concrete Works for Tank Foundation Including Shuttering and Steel Fixing | 8d | 2026-07-23 A | 2026-07-23 A | MLTX-02-004-CN-14510 | 100% | 2026-07-25 | 2026-08-02 | Labor [350 h]; Skilled Labor [100 h]; Steel Fixer [120 h]; Tank foundation [3] | 7,605 | 7,605 | CN.MB.D01.1530 | MOD-02-CN-10870 | -100 | -17 | UDF_G1 | -100 | TO | Const | Toilet |
| MLTX-02-004-CN-14520 |  | Reinforced Concrete Works for Tank Slab Including Shuttering and Steel Fixing | 8d | 2026-07-27 A | 2026-07-27 A | MLTX-02-004-CN-14540 | 100% | 2026-07-27 | 2026-08-04 | Labor [700 h]; Skilled Labor [360 h]; Steel Fixer [240 h]; Tank Slab [3] | 8,775 | 8,775 | CN.MB.D01.1520 | MOD-02-CN-10890 | 0 | -17 |  | 0 | TO | Const | Toilet |
| MLTX-02-004-CN-14540 |  | Reinforced Concrete Works for Tank Walls Including Steel Fixing | 6d | 2026-07-27 A | 2026-07-27 A | MLTX-02-004-CN-14530 | 100% | 2026-07-27 | 2026-08-02 | Labor [600 h]; Skilled Labor [200 h]; Steel Fixer [200 h]; Tank Walls [6] | 16,380 | 16,380 | CN.MB.D01.1590 | MOD-02-CN-10880 | -30 | -17 |  | 0 | TO | Const | Toilet |
|  | 3 | **THERMAL & MOISTER PROTECTION** |  | 2026-07-20 | 2026-08-11 |  |  |  |  |  |  |  |  |  |  |  |  |  |  |  |  |
|  | 1 | **ANTI TERMIT CONTROL** |  | 2026-07-20 | 2026-07-30 |  |  |  |  |  |  |  |  |  |  |  |  |  |  |  |  |
| MLTX-02-004-CN-13990 |  | Anti Termite Works Under Foundation | 1d | 2026-07-20 A | 2026-07-20 A | MLTX-02-004-CN-13860 | 100% |  |  | Labor [40 h]; Skilled Labor [20 h]; Supply and apply anti termite under all concrete in contact with soil. [36] | 1,755 | 1,755 | CN.MB.D01.1640 | MOD-02-CN-10920 | -100 | -13.14 | UDF_G1 | -100 | TO | Const | Toilet |
| MLTX-02-004-CN-14000 |  | Anti Termite Works Under Slab on Grade and Grade Beams | 1d | 2026-07-30 A | 2026-07-30 A | MLTX-02-004-CN-13860 | 100% |  |  | Labor [50 h]; Skilled Labor [30 h]; Supply and apply anti termite under all concrete in contact with soil. [54] | 2,632.5 | 2,632.5 | CN.MB.D01.1650 | MOD-02-CN-10930 | -100 | -17 |  | 0 | TO | Const | Toilet |
|  | 2 | **POLYETHYLENE SHEET** |  | 2026-07-20 | 2026-07-30 |  |  |  |  |  |  |  |  |  |  |  |  |  |  |  |  |
| MLTX-02-004-CN-13970 |  | Water Proofing Under Blinding Concrete (Polythelen Sheet) | 1d | 2026-07-20 A | 2026-07-20 A | MLTX-02-004-EN-15280, MLTX-02-004-EN-14390, MLTX-02-004-CN-13990 SS | 100% |  |  | Labor [40 h]; Skilled Labor [20 h]; Supply and lay 250 micron thk polyethylene sheet under grade slab [36] | 877.5 | 877.5 | CN.MB.D01.1620 | MOD-02-CN-10950 | -100 | -17 | UDF_G1 | -100 | TO | Const | Toilet |
| MLTX-02-004-CN-13980 |  | Water Proofing Under Slab on Grade (Polythelen Sheet) | 1d | 2026-07-30 A | 2026-07-30 A | MLTX-02-004-EN-14390, MLTX-02-004-CN-14000 SS | 100% |  |  | Labor [50 h]; Skilled Labor [30 h]; Supply and lay 250 micron thk polyethylene sheet under grade slab [54] | 1,316.25 | 1,316.25 | CN.MB.D01.1630 | MOD-02-CN-10960 | -100 | -17 |  | 0 | TO | Const | Toilet |
|  | 4 | **EPOXY** |  | 2026-08-09 | 2026-08-11 |  |  |  |  |  |  |  |  |  |  |  |  |  |  |  |  |
| MLTX-02-004-CN-14010 |  | Surface Preparation for Epoxy Coating | 5d | 2026-08-09 A | 2026-08-09 A | MLTX-02-004-CN-14520 | 100% | 2026-08-10 | 2026-08-15 | Labor [200 h]; Skilled Labor [90 h]; Provide and lay epoxy 2 coating for inner surfaces for RC walls, RC footings and bottom of the roof [7.5] | 1,096.88 | 1,096.88 | CN.MB.D01.1660 | MOD-02-CN-11000 | 0 | -17 |  | 0 | TO | Const | Toilet |
| MLTX-02-004-CN-14020 |  | Epoxy Coating for Walls and Slab of Tank | 8d | 2026-08-11 A | 2026-08-11 A | MLTX-02-004-CN-14010 | 100% | 2026-08-12 | 2026-08-20 | Labor [300 h]; Skilled Labor [150 h]; Provide and lay epoxy 2 coating for inner surfaces for RC walls, RC footings and bottom of the roof [17.5] | 2,559.38 | 2,559.38 | CN.MB.D01.1670 | MOD-02-CN-11010 | 0 | -17 |  | 0 | TO | Const | Toilet |
|  | 5 | **MASONARY WORK** |  | 2026-08-10 | 2026-08-12 |  |  |  |  |  |  |  |  |  |  |  |  |  |  |  |  |
| MLTX-02-004-CN-14030 |  | CMU Masonary Works Including all Accessories | 4d | 2026-08-10 A | 2026-08-12 A | MLTX-02-004-EN-15320, MLTX-02-004-PR-11240, MLTX-02-004-CN-13950 | 100% | 2026-08-11 | 2026-08-15 | Labor [300 h]; Mason [150 h]; Concrete masonry unit, 100 mm thick wall [45] | 12,285 | 12,285 | CN.MB.D04.1690 | MOD-02-CN-11030 | 0 | -17 |  | 0 | TO | Const | Toilet |
|  | 3 | **THERMAL & MOISTER PROTECTION** |  | 2026-09-15 | 2026-10-11 |  |  |  |  |  |  |  |  |  |  |  |  |  |  |  |  |
| MLTX-02-004-CN-14050 |  | Preparing Surface and Preliminary Works for Toilets Waterproofing | 4d | 2026-09-15 A | 2026-09-15 A | MLTX-02-004-CN-13940, MLTX-02-004-CN-14020 | 100% | 2026-09-16 | 2026-09-20 | Labor [120 h]; Skilled Labor [60 h]; Plumber [20 h]; Supply and install liquid applied waterproofing membrane for toilets according to drawings and specifications. [14.4] | 2,106 | 2,106 | CN.MB.D07.1770 | MOD-02-CN-11050 | 0 | -17 |  | 0 | TO | Const | Toilet |
| MLTX-02-004-CN-14060 |  | Finalize Water Proofing Works for Toilets | 5d | 2026-09-15 A | 2026-09-28 A | MLTX-02-004-CN-14050 | 100% | 2026-09-21 | 2026-09-27 | Labor [280 h]; Skilled Labor [150 h]; Supply and install liquid applied waterproofing membrane for toilets according to drawings and specifications. [33.6] | 4,914 | 4,914 | CN.MB.D07.1780 | MOD-02-CN-11070 | 0 | -17 |  | 0 | TO | Const | Toilet |
| MLTX-02-004-CN-14070 |  | Preparing Surface and Preliminary Works for Roofing and Wet Areas Insulation | 5d | 2026-09-27 A | 2026-09-27 A | MLTX-02-004-CN-14060 | 100% | 2026-10-05 | 2026-10-10 | Labor [250 h]; Skilled Labor [150 h]; Plumber [60 h]; Supply and cast in place foam concrete screed 50mm thk minimum laid to fall and cross fall [28]; Supply and install 4mm thick APP modified bituminous membrane for roof insulation [28]; Supply and install 300 micron polyethylene sheet [28]; Supply and install 50mm thk rigid insulation (extruded polystyrene) with density of 35 kg./m3 [28]; Supply and install 50mm thk loose gravel toppings [28]; Supplying and fixing 3mm thk extruded aluminum flashing [13.6]; Provide and lay 2 layers of waterproofing membrane 4mm [8] | 11,072.1 | 11,072.1 | CN.MB.D07.1790 | MOD-02-CN-11060 | 0 | -17 |  | 0 | TO | Const | Toilet |
| MLTX-02-004-CN-14080 |  | Finalize Water Proofing Works for Roofing and Wet Areas | 6d | 2026-09-28 A | 2026-10-11 A | MLTX-02-004-CN-14070 | 100% | 2026-10-11 | 2026-10-17 | Labor [300 h]; Skilled Labor [200 h]; Supply and cast in place foam concrete screed 50mm thk minimum laid to fall and cross fall [42]; Supply and install 4mm thick APP modified bituminous membrane for roof insulation [42]; Supply and install 300 micron polyethylene sheet [42]; Supply and install 50mm thk rigid insulation (extruded polystyrene) with density of 35 kg./m3 [42]; Supply and install 50mm thk loose gravel toppings [42]; Supplying and fixing 3mm thk extruded aluminum flashing [20.4]; Provide and lay 2 layers of waterproofing membrane 4mm [12] | 16,608.15 | 16,608.15 | CN.MB.D07.1800 | MOD-02-CN-11080 | 0 | -17 |  | 0 | TO | Const | Toilet |
|  | 11 | **MECHANICAL WORK** |  | 2026-08-15 | 2026-12-05 |  |  |  |  |  |  |  |  |  |  |  |  |  |  |  |  |
|  | 4 | **HVAC SYSTEM** |  | 2026-09-27 | 2026-11-08 |  |  |  |  |  |  |  |  |  |  |  |  |  |  |  |  |
| MLTX-02-004-CN-14150 |  | Preliminary HVAC and Ventilation Works | 3d | 2026-09-27 A | 2026-09-27 A | MLTX-02-004-CN-14450, MLTX-02-004-EN-16320, MLTX-02-004-EN-16330, MLTX-02-004-EN-15730, MLTX-02-004-EN-15750, MLTX-02-004-EN-15740, MLTX-02-004-EN-15470 | 100% | 2026-11-22 | 2026-11-24 | Labor [240 h]; Skilled Labor [90 h]; Mechanical [60 h]; Square Exhaust Diffuser 6"X6 " [6]; Supply, install, test and commission indoor ductwork [100]; Door Grilles 18"X6 " [1] | 9,360 | 9,360 | CN.MB.D15.1920 | MOD-02-CN-11480 | 0 | -17 |  | 0 | TO | Const | Toilet |
| MLTX-02-004-CN-14170 |  | Exhaust, Air Ducts Installation with all Accessories | 7d | 2026-09-27 A | 2026-09-27 A | MLTX-02-004-CN-14080, MLTX-02-004-CN-14150 | 100% | 2026-11-25 | 2026-12-02 | Labor [200 h]; Skilled Labor [180 h]; Driver [60 h]; Mechanical [120 h]; Crane [120 h]; Supply, install, test and commission inline exhaust fans duct [1] | 3,900 | 3,900 | CN.MB.D15.1940 | MOD-02-CN-11490 | 0 | -17 |  | 0 | TO | Const | Toilet |
| MLTX-02-004-CN-14160 |  | Install and Finish HVAC and Ventilation Works Including Split Air Units | 6d | 2026-11-01 A | 2026-11-08 A | MLTX-02-004-PR-11460, MLTX-02-004-CN-14570, MLTX-02-004-CN-14170 FF | 100% | 2026-12-10 | 2026-12-16 | Labor [150 h]; Skilled Labor [90 h]; Driver [60 h]; Mechanical [60 h]; Crane [60 h]; Supply and install split air conditioning unit (DX-MINI SPLIT UNIT) [1] | 14,625 | 14,625 | CN.MB.D15.1930 | MOD-02-CN-11500 | 0 | -17 |  | 0 | TO | Const | Toilet |

| ID | WBS | Activity | Duration | Start | Finish | Predecessors | Complete | Planned start | Planned finish | Total float | Free float | Resources | Cost | Actual cost | New Activity Code | New Activity ID | % Variance | Delay | On Schedule | W-Construction | WBS-Project | WBS-Construction Type |
| --- | --- | --- | --- | --- | --- | --- | --- | --- | --- | --- | --- | --- | --- | --- | --- | --- | --- | --- | --- | --- | --- | --- |
|  | 2 | **WATER SUPPLY SYSTEM** |  | 2026-08-15 | 2026-12-05 |  |  |  |  |  |  |  |  |  |  |  |  |  |  |  |  |  |
| MLTX-02-004-CN-14180 |  | Installing of PPR Pipes and Fittings for Water Network | 3d | 2026-08-15 A | 2026-08-15 A | MLTX-02-004-EN-15770, MLTX-02-004-EN-15780, MLTX-02-004-EN-15440, MLTX-02-004-PR-11340, MLTX-02-004-CN-14220 | 100% | 2026-08-18 | 2026-08-20 |  |  | Labor [100 h]; Plumber [60 h]; PPR Pipe with 65 mm ? Cold water [6]; PPR Pipe with 50 mm ? Cold water [4]; PPR Pipe with 40 mm ? Cold water [1]; PPR Pipe with 32 mm ? Cold water [2]; PPR Pipe with 25 mm ? Cold water [4]; PPR Pipe with 20 mm ? Cold water [7]; PPR Pipe with 20 mm ? Hot water [22] | 6,922.5 | 6,922.5 | CN.MB.D15.1950 | MOD-02-CN-11540 | 0 | -17 | 0 | TO | Const | Toilet |
| MLTX-02-004-CN-14190 |  | Installing of HDPE Pipes and Valves for Water Supply Network | 5d | 2026-10-05 A | 2026-10-10 A | MLTX-02-004-CN-14180 | 100% | 2026-10-17 | 2026-10-21 |  |  | Labor [250 h]; Plumber [100 h]; SERVICE CONNECTIONS 50 mm [80] | 39,000 | 39,000 | CN.MB.D15.1960 | MOD-02-CN-11530 | 0 | -17 | 0 | TO | Const | Toilet |
| MLTX-02-004-CN-14690 |  | Installing of Water Heater | 4d | 2026-10-08 A | 2026-10-11 A | MLTX-02-004-CN-14190 | 100% | 2026-10-25 | 2026-10-28 |  |  | Labor [100 h]; Plumber [20 h]; 50 Liter Capacity [1] | 1,755 | 1,755 | CN.MB.D15.1980 | MOD-02-CN-11560 | 0 | -17 | 0 | TO | Const | Toilet |
| MLTX-02-004-CN-14600 |  | Installing of Valves and Fittings | 4d | 2026-11-01 A | 2026-11-05 A | MLTX-02-004-CN-14180 | 100% | 2026-11-15 | 2026-11-18 |  |  | Labor [100 h]; Plumber [40 h]; SERVICE CONNECTIONS 50 mm [20] | 9,750 | 9,750 | CN.MB.D15.1950 | MOD-02-CN-11520 | 0 | -17 | 0 | TO | Const | Toilet |
| MLTX-02-004-CN-14210 |  | Installing of GRP Tanks | 5d | 2026-11-24 | 2026-11-29 | MLTX-02-004-CN-14190 |  |  |  | 44d | 0d | Skilled Labor [120 h]; Driver [100 h]; Plumber [140 h]; Crane [160 h]; Hot Press GRP Sectional Panel Water Tanks (4x3x3m) [0.67] | 104,000 |  | CN.MB.D15.1980 | MOD-02-CN-11560 | 0 | -17 | 0 | TO | Const | Toilet |
| MLTX-02-004-CN-14200 |  | Installing of Booster Pump Units Including fittings and accessories | 5d | 2026-11-30 | 2026-12-05 | MLTX-02-004-CN-14210, MLTX-02-004-CN-14210 FF |  |  |  | 44d | 130d | Labor [200 h]; Plumber [80 h]; (2W+1S Pumps) - flow of each pump 5 L/S @ 30 Meters [0.67] | 91,000 |  | CN.MB.D15.1970 | MOD-02-CN-11550 | 0 | -17 | 0 | TO | Const | Toilet |
|  | 1 | **SEWER/DRAINAGE SYSTEM** |  | 2026-08-15 | 2026-11-14 |  |  |  |  |  |  |  |  |  |  |  |  |  |  |  |  |  |
| MLTX-02-004-CN-14220 |  | Installing UPVC Pipes for Sewage Network | 2d | 2026-08-15 A | 2026-08-15 A | MLTX-02-004-EN-15790, MLTX-02-004-EN-15800, MLTX-02-004-EN-15430, MLTX-02-004-PR-11360, MLTX-02-004-CN-13940 | 100% | 2026-08-16 | 2026-08-17 |  |  | Skilled Labor [150 h]; Plumber [60 h]; uPVC Sewer pipes Pipe with ? 4" (110mm) [21]; uPVC Sewer pipes Pipe Pipe with ? 3" (75mm) [13]; uPVC Sewer pipes Pipe Pipe with ? 2" (50mm) [20]; uPVC Sewer pipes Pipe Pipe with ? 1" (25mm) [5] | 11,768.25 | 11,768.25 | CN.MB.D15.1990 | MOD-02-CN-11590 | 0 | -17 | 0 | TO | Const | Toilet |
| MLTX-02-004-CN-14610 |  | Installing UPVC Pipes for External Connection for Sewage Network | 4d | 2026-10-05 A | 2026-10-11 A | MLTX-02-004-CN-14220 | 100% | 2026-10-18 | 2026-10-21 |  |  | Skilled Labor [90 h]; Plumber [30 h]; Supply and install 150 mm uPVC pipes to external wastewater network [100] | 85,312.5 | 85,312.5 | CN.MB.D15.1990 | MOD-02-CN-11580 | 0 | -17 | 0 | TO | Const | Toilet |
| MLTX-02-004-CN-14700 |  | Installing of Toilet Fixtures and Accessories Such as Closets and Basins | 3d | 2026-11-01 A | 2026-11-05 A | MLTX-02-004-CN-14680, MLTX-02-004-CN-14200, MLTX-02-004-CN-14460 | 100% | 2026-12-05 | 2026-12-07 |  |  | Skilled Labor [120 h]; Plumber [80 h]; Supply and installation of western water closet [3]; Supply and installation of western water closet [1]; Supply and installation of Bib tap with Perenial Hose (BPH) [4]; Supply, installation, testing and commissioning of Lavatory / wash basin [1]; Supply, installation, testing and commissioning of wall hung Lavatory / wash basin [1]; Supply and install Complete stainless steel 316 Handicap Rails Grab Bars [1]; Supply and install roof drain (RD) dome typ [1]; Supply and install shower mixer [4] | 31,395 | 31,395 | CN.MB.D15.2000 | MOD-02-CN-11600 | 0 | -17 | 0 | TO | Const | Toilet |
| MLTX-02-004-CN-14230 |  | Installing of Plumping Fixtures and Accessories | 4d | 2026-11-09 A | 2026-11-13 A | MLTX-02-004-CN-14600, MLTX-02-004-CN-14610 | 100% | 2026-11-16 | 2026-11-19 |  |  | Skilled Labor [120 h]; Plumber [80 h]; galvanized iron vent stack Vent Cap with 3" ? [1]; Supply and installation of Floor drain [9]; FCO 4" ? (110mm) [1]; FCO 3" ? (75mm) [1]; Supply, installation,testing and commissioning of Gully Traps [1] | 10,359.38 | 10,359.38 | CN.MB.D15.2000 | MOD-02-CN-11600 | 0 | -17 | 0 | TO | Const | Toilet |
| MLTX-02-004-CN-14680 |  | Installing Inspection Chamber for Sewage Network | 5d | 2026-11-09 A | 2026-11-14 A | MLTX-02-004-CN-14220 | 100% | 2026-11-16 | 2026-11-21 |  |  | Driver [80 h]; Plumber [80 h]; Crane [80 h]; Supply, installation, testing and commissioning of Inspection chamber [1] | 12,187.5 | 12,187.5 | CN.MB.D15.1990 | MOD-02-CN-11590 | 0 | -17 | 0 | TO | Const | Toilet |
|  | 3 | **FIRE PROTECTION** |  | 2026-11-24 | 2026-11-28 |  |  |  |  |  |  |  |  |  |  |  |  |  |  |  |  |  |
| MLTX-02-004-CN-14240 |  | Installing of Fire Fighting Extinguisher and accessories (PFE-1, PFE-2) | 4d | 2026-11-24 | 2026-11-28 | MLTX-02-004-EN-15760, MLTX-02-004-CN-14700, MLTX-02-004-EN-15450, MLTX-02-004-CN-14670, MLTX-02-004-CN-14710 |  |  |  | 50d | 136d | Labor [100 h]; Mechanical [40 h]; Supply and install, PFE-1, Portable dry powder fire extinguisher 4.5 Kg capacity [1]; Supply and install, PFE-2, Portable Carbon Dioxide fire extinguisher. [1] | 1,950 |  | CN.MB.D15.2010 | MOD-02-CN-11620 | 0 | -17 | 0 | TO | Const | Toilet |
|  | 12 | **ELECTRICAL WORKS** |  | 2026-08-16 | 2026-12-01 |  |  |  |  |  |  |  |  |  |  |  |  |  |  |  |  |  |
|  | 1 | **ROUGH-IN WORKS** |  | 2026-08-16 | 2026-08-29 |  |  |  |  |  |  |  |  |  |  |  |  |  |  |  |  |  |
| MLTX-02-004-CN-14280 |  | Preleminary Works for Cable Works | 9d | 2026-08-16 A | 2026-08-29 A | MLTX-02-004-EN-15810, MLTX-02-004-EN-15850, MLTX-02-004-EN-15290, MLTX-02-004-EN-15500, MLTX-02-004-EN-15880, MLTX-02-004-CN-13940 | 100% | 2026-08-16 | 2026-08-25 |  |  | Labor [210 h]; Electrician [60 h]; Recessed mounted LED downlight luminaire 40 watt with reflector; IP44 ,230V , 4000k, 4200 LUMEN ,CRI > 80; Low glare [12]; LED flood light outdoor type 96 watt, 4000k, 12720 LUMEN [0.4]; Wall mounted emergency LED luminaire, 230V, 60 Hz., 3 hour back up time 1800 lumen,CRI>80, 2*18 watt, IP 65 [1.6]; LED Exit light fixture 4.5 watt with battery for 3 hours, and a visibility of 30 meters [0.4]; Wall mounted outdoor LED luminaire, 17 watt, 2000 lumens, with light emission from two sides [0.4]; Wall mounted outdoor LED luminaire, 13 watt, 1000 LUMEN, CR>80, for roof lighting [2.4] | 10,700.04 | 10,700.04 | CN.MB.D16.2050 | MOD-02-CN-11670 | 0 | -17 | 0 | TO | Const | Toilet |
| MLTX-02-004-CN-14290 |  | Preleminary Works for Sockets and Power Points | 9d | 2026-08-16 A | 2026-08-29 A | MLTX-02-004-CN-13940 | 100% | 2026-08-16 | 2026-08-25 |  |  | Labor [140 h]; Electrician [40 h]; 1 way, One Gang Switch [0.8]; 1 way, Two Gang Switch [1.6]; 1 way, One Gang Switch, weatherproof [0.4]; Exaust fan DP switch weatherproof [0.4]; Indoor AC DP switch weatherproof [0.4]; High level Single Receptacle outlet [1.6]; Duplex Receptacle outlet [2.8]; Hand Dryer switch weatherproof [0.4]; Water heater switch [0.4]; Outdoor Disconnect Switch for air conditioiner [0.4]; Outdoor Disconnect Switch for exhaust fans [0.4] | 9,230.91 | 9,230.91 | CN.MB.D16.2070 | MOD-02-CN-11680 | 0 | -17 | 0 | TO | Const | Toilet |
| MLTX-02-004-CN-14310 |  | Preleminary Works for Lightning Works | 9d | 2026-08-16 A | 2026-08-29 A | MLTX-02-004-EN-15900, MLTX-02-004-EN-15940, MLTX-02-004-EN-15510, MLTX-02-004-CN-13940 | 100% | 2026-08-16 | 2026-08-25 |  |  | Labor [140 h]; Electrician [40 h]; For Building [0.4] | 9,750 | 9,750 | CN.MB.D16.2090 | MOD-02-CN-11690 | 0 | -17 | 0 | TO | Const | Toilet |
| MLTX-02-004-CN-14330 |  | Preleminary Works for Data & Telecommunication System | 9d | 2026-08-16 A | 2026-08-29 A | MLTX-02-004-EN-15990, MLTX-02-004-EN-16000, MLTX-02-004-EN-15480, MLTX-02-004-CN-13940 | 100% | 2026-08-16 | 2026-08-25 |  |  | Labor [140 h]; Electrician [40 h]; Wall telephone outlet [1.2]; Wall mounted data outlet [1.2]; Telecom/IT rack complete with switch, router and patch Panel [0.4]; AV floor box outlet (1 HDMI) [0.4]; AV wall outlet (1 HDMI) [0.4] | 12,285 | 12,285 | CN.MB.D16.2110 | MOD-02-CN-11700 | 0 | -17 | 0 | TO | Const | Toilet |
| MLTX-02-004-CN-14370 |  | Preleminary Works for Security and Access Control System | 9d | 2026-08-16 A | 2026-08-29 A | MLTX-02-004-EN-15920, MLTX-02-004-EN-15970, MLTX-02-004-EN-15980, MLTX-02-004-EN-15490, MLTX-02-004-CN-13940 | 100% | 2026-09-02 | 2026-09-12 |  |  | Labor [210 h]; Electrician [60 h]; 1 CCTV cabinet (Rack) [0.4]; NVR [0.4]; 21" LED monitor [0.4]; Indoor dome type Camera IP-20 ,IK-10, POE type with infra red feature, minimum coverage 20 meters, ONVIF supported [2.4]; Outdoor fixed camera weahter proof IP-65, POE type [1.6]; Pull box for fiber optic cable pulling from provider [0.4] | 15,266.55 | 15,266.55 | CN.MB.D16.2150 | MOD-02-CN-11720 | 0 | -17 | 0 | TO | Const | Toilet |
| MLTX-02-004-CN-14660 |  | Preleminary Works for Earthing Works | 9d | 2026-08-16 A | 2026-08-29 A | MLTX-02-004-EN-15890, MLTX-02-004-EN-15930, MLTX-02-004-EN-15510, MLTX-02-004-PR-11200, MLTX-02-004-CN-13940 | 100% | 2026-08-16 | 2026-08-25 |  |  | Labor [210 h]; Electrician [60 h]; Distribution boards, panelboards, lighting installations and wiring accessories [0.4]; Telecom equipment [0.4]; KWHM [0.8] | 15,600 | 15,600 | CN.MB.D16.2090 | MOD-02-CN-11650 | 0 | -17 | 0 | TO | Const | Toilet |
|  | 2 | **FIXTURE WORKS** |  | 2026-10-05 | 2026-12-01 |  |  |  |  |  |  |  |  |  |  |  |  |  |  |  |  |  |
| MLTX-02-004-CN-14300 |  | Installing and Finalize Works of Sockets and Power Points | 4d | 2026-10-05 A | 2026-10-10 A | MLTX-02-004-CN-14660 | 100% | 2026-11-15 | 2026-11-18 |  |  | Labor [60 h]; Electrician [60 h]; 1 way, One Gang Switch [1.2]; 1 way, Two Gang Switch [2.4]; 1 way, One Gang Switch, weatherproof [0.6]; Exaust fan DP switch weatherproof [0.6]; Indoor AC DP switch weatherproof [0.6]; High level Single Receptacle outlet [2.4]; Duplex Receptacle outlet [4.2]; Hand Dryer switch weatherproof [0.6]; Water heater switch [0.6]; Outdoor Disconnect Switch for air conditioiner [0.6]; Outdoor Disconnect Switch for exhaust fans [0.6] | 13,846.49 | 13,846.49 | CN.MB.D16.2080 | MOD-02-CN-11760 | 0 | -17 | 0 | TO | Const | Toilet |
| MLTX-02-004-CN-14390 |  | Installing and Finalize Works of Earthing Works | 6d | 2026-10-05 A | 2026-10-11 A | MLTX-02-004-CN-14300 | 100% | 2026-11-12 | 2026-11-18 |  |  | Labor [60 h]; Electrician [60 h]; Distribution boards, panelboards, lighting installations and wiring accessories [0.6]; Telecom equipment [0.6]; KWHM [1.2] | 23,400 | 23,400 | CN.MB.D16.2190 | MOD-02-CN-11770 | 0 | -17 | 0 | TO | Const | Toilet |
| MLTX-02-004-CN-14320 |  | Installing and Finalize Works of Lighting Works including Light Fixtures | 4d | 2026-11-01 A | 2026-11-05 A | MLTX-02-004-PR-11220, MLTX-02-004-PR-11380, MLTX-02-004-CN-14670 | 100% | 2026-12-08 | 2026-12-12 |  |  | Labor [80 h]; Electrician [80 h]; Recessed mounted LED downlight luminaire 40 watt with reflector; IP44 ,230V , 4000k, 4200 LUMEN ,CRI > 80; Low glare [18]; LED flood light outdoor type 96 watt, 4000k, 12720 LUMEN [0.6]; Wall mounted emergency LED luminaire, 230V, 60 Hz., 3 hour back up time 1800 lumen,CRI>80, 2*18 watt, IP 65 [2.4]; LED Exit light fixture 4.5 watt with battery for 3 hours, and a visibility of 30 meters [0.6]; Wall mounted outdoor LED luminaire, 17 watt, 2000 lumens, with light emission from two sides [0.6]; Wall mounted outdoor LED luminaire, 13 watt, 1000 LUMEN, CR>80, for roof lighting [3.6] | 16,050.06 | 16,050.06 | CN.MB.D16.2100 | MOD-02-CN-11790 | 0 | -17 | 0 | TO | Const | Toilet |
| MLTX-02-004-CN-14400 |  | Installing and Finalize Works of Lightning Protection System | 6d | 2026-11-01 A | 2026-11-05 A | MLTX-02-004-CN-14570 | 100% | 2026-12-10 | 2026-12-16 |  |  | Labor [100 h]; Electrician [100 h]; For Building [0.6] | 14,625 | 14,625 | CN.MB.D16.2200 | MOD-02-CN-11820 | 0 | -17 | 0 | TO | Const | Toilet |
| MLTX-02-004-CN-14250 |  | Installing of Fire automation and Fire Alarm System | 7d | 2026-11-24 | 2026-12-01 | MLTX-02-004-EN-15910, MLTX-02-004-EN-15950, MLTX-02-004-EN-15960, MLTX-02-004-CN-14160 |  |  |  | 47d | 20d | Labor [200 h]; Electrician [80 h]; Analog addressable fire alarm control panel [1]; Intelligent Photoelectric smoke and heat detector with base [12]; Addressable Manual Pull Station, wall mounted [2]; Addressable Fire Alarm Strobe with Sounder, wall mounted [1]; Addressable Fire Alarm Strobe with Sounder, wall mounted water proof IP66 [1] | 34,320 |  | CN.MB.D15.2020 | MOD-02-CN-11780 | 0 | -17 | 0 | TO | Const | Toilet |
| MLTX-02-004-CN-14340 |  | Installing Data and Telecommunication System with all Accessories | 4d | 2026-11-24 | 2026-11-28 | MLTX-02-004-CN-14670, MLTX-02-004-CN-14690 |  |  |  | 50d | 136d | Labor [80 h]; Electrician [80 h]; Wall telephone outlet [1.8]; Wall mounted data outlet [1.8]; Telecom/IT rack complete with switch, router and patch Panel [0.6]; AV floor box outlet (1 HDMI) [0.6]; AV wall outlet (1 HDMI) [0.6] | 18,427.5 |  | CN.MB.D16.2120 | MOD-02-CN-11750 | 0 | -17 | 0 | TO | Const | Toilet |
| MLTX-02-004-CN-14380 |  | Installing and Finalize Works of Security and Access Control System | 6d | 2026-11-24 | 2026-11-30 | MLTX-02-004-CN-14570 |  |  |  | 48d | 134d | Labor [80 h]; Electrician [80 h]; 1 CCTV cabinet (Rack) [0.6]; NVR [0.6]; 21" LED monitor [0.6]; Indoor dome type Camera IP-20 ,IK-10, POE type with infra red feature, minimum coverage 20 meters, ONVIF supported [3.6]; Outdoor fixed camera weahter proof IP-65, POE type [2.4]; Pull box for fiber optic cable pulling from provider [0.6] | 22,899.83 |  | CN.MB.D16.2170 | MOD-02-CN-11830 | 0 | -17 | 0 | TO | Const | Toilet |

| ID | WBS | Activity | Duration | Start | Finish | Predecessors | Complete | Planned start | Planned finish | Total float | Free float | Resources | Cost | Actual cost | New Activity Code | New Activity ID | % Variance | Delay | On Schedule | W-Construction | WBS-Project | WBS-Construction Type |
| --- | --- | --- | --- | --- | --- | --- | --- | --- | --- | --- | --- | --- | --- | --- | --- | --- | --- | --- | --- | --- | --- | --- |
|  | 7 | **DOORS/WINDOWS** |  | 2026-10-07 | 2026-11-28 |  |  |  |  |  |  |  |  |  |  |  |  |  |  |  |  |  |
| MLTX-02-004-CN-14100 |  | Finalize Metal Doors for Toilets Building | 12d | 2026-10-07 A | 2026-10-12 A | MLTX-02-004-CN-14420, MLTX-02-004-CN-14420 FF | 100% | 2026-12-01 | 2026-12-14 |  |  | Labor [240 h]; Skilled Labor [90 h]; Metal Door D2 : [0.6] | 5,850 | 5,850 | CN.MB.D08.1820 | MOD-02-CN-11120 | 0 | -17 | 0 | TO | Const | Toilet |
| MLTX-02-004-CN-14090 |  | Preliminary Works For Doors | 3d | 2026-10-08 A | 2026-10-10 A | MLTX-02-004-EN-15350, MLTX-02-004-PR-11300, MLTX-02-004-CN-13940 | 100% | 2026-10-31 | 2026-11-02 |  |  | Labor [180 h]; Skilled Labor [60 h]; Metal Door D2 : [0.4] | 3,900 | 3,900 | CN.MB.D08.1810 | MOD-02-CN-11110 | 0 | -17 | 0 | TO | Const | Toilet |
| MLTX-02-004-CN-14550 |  | Preliminary Works For Windows/Curtain Wall | 2d | 2026-11-09 A | 2026-11-10 A | MLTX-02-004-PR-11300, MLTX-02-004-CN-13940 | 100% | 2026-11-16 | 2026-11-17 |  |  | Labor [120 h]; Skilled Labor [40 h]; Supply and install curtain wall with structural glass [0.4] | 23,400 | 23,400 | CN.MB.D08.1810 | MOD-02-CN-11100 | 0 | -17 | 0 | TO | Const | Toilet |
| MLTX-02-004-CN-14470 |  | Finalize Glazzed Curtain Wall Works | 4d | 2026-11-24 | 2026-11-28 | MLTX-02-004-CN-14040, MLTX-02-004-CN-14570 |  |  |  | 50d | 23d | Labor [320 h]; Skilled Labor [120 h]; Supply and install curtain wall with structural glass [0.6] | 35,100 |  | CN.MB.D08.1840 | MOD-02-CN-11130 | 0 | -17 | 0 | TO | Const | Toilet |
|  | 4 | **METAL WORKS** |  | 2026-09-16 | 2026-09-27 |  |  |  |  |  |  |  |  |  |  |  |  |  |  |  |  |  |
| MLTX-02-004-CN-14420 |  | Installation of Galvanized Steel Roof Scupper | 8d | 2026-09-16 A | 2026-09-16 A | MLTX-02-004-CN-11290, MLTX-02-004-CN-14040, MLTX-02-004-CN-14040 FF | 100% | 2026-10-19 | 2026-10-27 |  |  | Labor [200 h]; Skilled Labor [120 h]; Plumber [80 h]; Supply and install and testing of overflow galvanized steel roof scupper [1] | 3,900 | 3,900 | CN.MB.D05.1810 | MOD-02-CN-11170 | 0 | -17 | 0 | TO | Const | Toilet |
| MLTX-02-004-CN-14040 |  | Installation of Galvanized Steel Ladder | 8d | 2026-09-27 A | 2026-09-27 A | MLTX-02-004-CN-14660 | 100% | 2026-10-20 | 2026-10-28 |  |  | Skilled Labor [120 h]; Driver [80 h]; Crane [80 h]; Supply and install Galvanized steel ladder [1] | 5,850 | 5,850 | CN.MB.D05.1760 | MOD-02-CN-11150 | 0 | -17 | 0 | TO | Const | Toilet |
|  | 6 | **FINISHING WORKS** |  | 2026-08-29 | 2026-11-28 |  |  |  |  |  |  |  |  |  |  |  |  |  |  |  |  |  |
|  | 1 | **FLOOR FINISHES** |  | 2026-10-01 | 2026-11-28 |  |  |  |  |  |  |  |  |  |  |  |  |  |  |  |  |  |
| MLTX-02-004-CN-14110 |  | Creamic Tiles Floor Finish Works | 4d | 2026-10-01 A | 2026-10-04 A | MLTX-02-004-EN-15330, MLTX-02-004-PR-11260, MLTX-02-004-CN-14120, MLTX-02-004-CN-14180, MLTX-02-004-EN-12350 | 100% | 2026-10-24 | 2026-10-27 |  |  | Labor [200 h]; Tile Fixer [80 h]; Floor Finishes Anti-slip glazed grey ceramic tiles, 600*600 mm [13]; Floor Finishes Light grey Ceramic tiles, 300*300 mm [48] | 11,895 | 11,895 | CN.MB.D09.1840 | MOD-02-CN-11200 | 0 | -17 | 0 | TO | Const | Toilet |
| MLTX-02-004-CN-14500 |  | Ceramic Skirting Tiles Finish Works | 2d | 2026-10-05 A | 2026-10-07 A | MLTX-02-004-CN-14110 | 100% | 2026-10-14 | 2026-10-15 |  |  | Labor [300 h]; Tile Fixer [40 h]; Floor Finishes Anti-slip glazed ceramic skirting tiles 600*100*10 mm [12] | 1,170 | 1,170 | CN.MB.D09.1980 | MOD-02-CN-11230 | 0 | -17 | 0 | TO | Const | Toilet |
| MLTX-02-004-CN-14490 |  | Epoxy Coat on Concrete Floor | 10d | 2026-10-07 A | 2026-10-10 A | MLTX-02-004-CN-14040 | 100% | 2026-11-19 | 2026-11-30 |  |  | Labor [160 h]; Skilled Labor [60 h]; Floor Finishes Epoxy paint on concrete slab on grade [6] | 1,170 | 1,170 | CN.MB.D09.1970 | MOD-02-CN-11220 | 0 | -17 | 0 | TO | Const | Toilet |
| MLTX-02-004-CN-14480 |  | Granite Tiles Floor Finish Works | 4d | 2026-11-24 | 2026-11-28 | MLTX-02-004-CN-14110 |  |  |  | 50d | 136d | Labor [200 h]; Tile Fixer [80 h]; Floor Finishes Anti-slip granite tiles for entrance [6] | 2,925 |  | CN.MB.D09.1960 | MOD-02-CN-11210 | 0 | -17 | 0 | TO | Const | Toilet |
|  | 2 | **WALL FINISHES** |  | 2026-08-29 | 2026-11-10 |  |  |  |  |  |  |  |  |  |  |  |  |  |  |  |  |  |
| MLTX-02-004-CN-14120 |  | Preliminary Works for Wall Finish Works including Plastering (Internal) | 3d | 2026-08-29 A | 2026-09-09 A | MLTX-02-004-CN-14060, MLTX-02-004-EN-15310, MLTX-02-004-CN-14280, MLTX-02-004-CN-14290, MLTX-02-004-CN-14310, MLTX-02-004-CN-14330, MLTX-02-004-CN-14370, MLTX-02-004-CN-14660, MLTX-02-004-EN-15820, MLTX-02-004-EN-15830, MLTX-02-004-EN-15840, MLTX-02-004-EN-15860, MLTX-02-004-EN-15870, MLTX-02-004-EN-15520 | 100% | 2026-09-22 | 2026-09-26 |  |  | Labor [100 h]; Skilled Labor [60 h]; Wall Finishes Supply and install plastering to walls [157] | 18,369 | 18,369 | CN.MB.D09.1870 | MOD-02-CN-11280 | 0 | -17 | 0 | TO | Const | Toilet |
| MLTX-02-004-CN-14430 |  | Preliminary Works for Wall Finish Works (External) | 8d | 2026-09-09 A | 2026-09-10 A | MLTX-02-004-CN-14120 | 100% | 2026-09-22 | 2026-10-01 |  |  | Labor [200 h]; Skilled Labor [80 h]; Wall Finishes Supply and install acrylic paint for external elevations [37.33] | 6,552 | 6,552 | CN.MB.D09.1900 | MOD-02-CN-11290 | 0 | -17 | 0 | TO | Const | Toilet |
| MLTX-02-004-CN-14450 |  | Ceramic Finish Works for Walls | 6d | 2026-09-28 A | 2026-09-29 A | MLTX-02-004-CN-14110 | 100% | 2026-11-15 | 2026-11-21 |  |  | Labor [200 h]; Driver [100 h]; Tile Fixer [120 h]; Forklift [180 h]; Wall Finishes Supply and install 300*300 mm ceramic [115] | 15,697.5 | 15,697.5 | CN.MB.D09.1920 | MOD-02-CN-11310 | 0 | -17 | 0 | TO | Const | Toilet |
| MLTX-02-004-CN-14440 |  | Painting Finish Works for External Walls | 3d | 2026-10-11 A | 2026-10-13 A | MLTX-02-004-CN-14190, MLTX-02-004-CN-14430 | 100% | 2026-10-18 | 2026-10-20 |  |  | Labor [200 h]; Skilled Labor [60 h]; Wall Finishes Supply and install acrylic paint for external elevations [56]; Wall Finishes Supply and spray decorative paint ( profile ) for external elevations [0.33] | 10,478 | 10,478 | CN.MB.D09.1910 | MOD-02-CN-11300 | 0 | -17 | 0 | TO | Const | Toilet |
| MLTX-02-004-CN-14670 |  | Painting Finish Works for Internal Walls | 2d | 2026-10-18 A | 2026-10-26 A | MLTX-02-004-CN-14440 | 100% | 2026-11-24 | 2026-11-25 |  |  | Labor [160 h]; Skilled Labor [40 h]; Wall Finishes Supply and install 2 coats of acrylic paint at internal walls and columns [120] | 2,340 | 2,340 | CN.MB.D09.1910 | MOD-02-CN-11300 | 0 | -17 | 0 | TO | Const | Toilet |
| MLTX-02-004-CN-14460 |  | Phenolic Partitions for Toilets | 5d | 2026-11-01 A | 2026-11-05 A | MLTX-02-004-CN-14090, MLTX-02-004-CN-14480, MLTX-02-004-CN-14550, MLTX-02-004-CN-14500, MLTX-02-004-CN-14130, MLTX-02-004-CN-14720, MLTX-02-004-CN-14580, MLTX-02-004-CN-14440 | 100% | 2026-11-29 | 2026-12-03 |  |  | Labor [700 h]; Driver [340 h]; Tile Fixer [220 h]; Forklift [330 h]; Wall Finishes Supply and install solid phenolic toilets partition board [40] | 31,200 | 31,200 | CN.MB.D09.1930 | MOD-02-CN-11320 | 0 | -17 | 0 | TO | Const | Toilet |
| MLTX-02-004-CN-14570 |  | Glass Partitions including all accessories and doors | 5d | 2026-11-01 A | 2026-11-05 A | MLTX-02-004-EN-15410, MLTX-02-004-CN-14460 | 100% | 2026-12-05 | 2026-12-09 |  |  | Labor [350 h]; Skilled Labor [120 h]; Wall Finishes Supply and install 12 mm glass partition [7] | 12,285 | 12,285 | CN.MB.D09.1930 | MOD-02-CN-11260 | 0 | -17 | 0 | TO | Const | Toilet |
| MLTX-02-004-CN-14580 |  | Granite Capping for Parpet | 2d | 2026-11-02 A | 2026-11-10 A | MLTX-02-004-CN-14080 | 100% | 2026-11-21 | 2026-11-22 |  |  | Labor [160 h]; Driver [40 h]; Tile Fixer [40 h]; Forklift [60 h]; Wall Finishes Supply and install granite capping for parapet [38] | 8,151 | 8,151 | CN.MB.D09.1930 | MOD-02-CN-11270 | 0 | -17 | 0 | TO | Const | Toilet |
|  | 3 | **CELLING FINISHES** |  | 2026-10-07 | 2026-11-05 |  |  |  |  |  |  |  |  |  |  |  |  |  |  |  |  |  |
| MLTX-02-004-CN-14720 |  | Gypsum Board Suspended Ceiling Finish Works For Ceiling | 5d | 2026-10-07 A | 2026-10-12 A | MLTX-02-004-CN-14150 | 100% | 2026-10-15 | 2026-10-20 |  |  | Labor [400 h]; Skilled Labor [120 h]; CEILING FINISHES Supply and install 12.5mm thk, moisture resistant gypsum board suspended ceiling [25.2]; CEILING FINISHES Supply and install 12.5mm thk, gypsum board suspended ceiling [7.8] | 6,926.4 | 6,926.4 | CN.MB.D09.1950 | MOD-02-CN-11360 | 0 | -17 | 0 | TO | Const | Toilet |
| MLTX-02-004-CN-14710 |  | Painting Finish Works for Ceiling | 3d | 2026-11-01 A | 2026-11-05 A | MLTX-02-004-CN-14720, MLTX-02-004-CN-14730 | 100% | 2026-11-26 | 2026-11-29 |  |  | Labor [200 h]; Skilled Labor [60 h]; CEILING FINISHES Supply and install 2 coats of acrylic paint at under side slab [14] | 1,638 | 1,638 | CN.MB.D09.1940 | MOD-02-CN-11350 | 0 | -17 | 0 | TO | Const | Toilet |
| MLTX-02-004-CN-14730 |  | Preliminary Works for Ceiling Painting Works | 10d | 2026-11-01 A | 2026-11-05 A | MLTX-02-004-EN-15420, MLTX-02-004-PR-11280, MLTX-02-004-CN-14120 | 100% | 2026-11-15 | 2026-11-25 |  |  | Labor [200 h]; Skilled Labor [90 h]; CEILING FINISHES Supply and install 12.5mm thk, moisture resistant gypsum board suspended ceiling [16.8]; CEILING FINISHES Supply and install 12.5mm thk, gypsum board suspended ceiling [5.2] | 4,617.6 | 4,617.6 | CN.MB.D09.1890 | MOD-02-CN-11340 | 0 | -7 | 0 | TO | Const | Toilet |

| ID | WBS | Activity | Duration | Start | Finish | Predecessors | Complete | Planned start | Planned finish | Total float | Free float | Resources | Cost | Actual cost | New Activity Code | New Activity ID | % Variance | Delay | On Schedule | W-Construction | WBS-Project | WBS-Construction Type | Old Activity ID - MK | Flag | Procurement |
| --- | --- | --- | --- | --- | --- | --- | --- | --- | --- | --- | --- | --- | --- | --- | --- | --- | --- | --- | --- | --- | --- | --- | --- | --- | --- |
|  | 8 | **SPECIALTIES WORK** |  | 2026-11-05 | 2026-12-05 |  |  |  |  |  |  |  |  |  |  |  |  |  |  |  |  |  |  |  |  |
| MLTX-02-004-CN-14130 |  | Sanitary Fixtures and Accessories Works | 4d | 2026-11-05 A | 2026-11-09 A | MLTX-02-004-PR-11320, MLTX-02-004-CN-14230 | 100% | 2026-11-24 | 2026-11-28 |  |  | Plumber [100 h]; Supply and install toilet Accessories [1] | 14,625 | 14,625 | CN.MB.D10.1890 | MOD-02-CN-11390 | 0 | -17 | 0 | TO | Const | Toilet |  |  |  |
| MLTX-02-004-CN-14590 |  | Installation of Phenolic Locker | 2d | 2026-11-05 A | 2026-11-09 A | MLTX-02-004-CN-14460 | 100% | 2026-12-05 | 2026-12-06 |  |  | Labor [100 h]; Skilled Labor [60 h]; phenolic locker Size 2400*550*2200 mm [1]; phenolic locker Size 3500*550*2200 mm [1] | 24,375 | 24,375 | CN.MB.D10.1900 | MOD-02-CN-11380 | 0 | -17 | 0 | TO | Const | Toilet |  |  |  |
| MLTX-02-004-CN-14140 |  | Installation of MODON Logo on the entrance | 10d | 2026-11-24 | 2026-12-05 | MLTX-02-004-CN-14670 |  |  |  | 19d | 8d | Labor [250 h]; Driver [100 h]; Electrician [100 h]; Crane [100 h]; Supply and install MODON logo [1] | 19,506.46 |  | CN.MB.D10.1900 | MOD-02-CN-11400 | 0 | -17 | 0 | TO | Const | Toilet |  |  |  |
|  | PRO | **PROCUREMENT** |  | 2026-04-20 | 2027-01-14 |  |  |  |  |  |  |  |  |  |  |  |  |  |  |  |  |  |  |  |  |
|  | SLI | **SHORT LEAD ITEM** |  | 2026-04-20 | 2027-01-05 |  |  |  |  |  |  |  |  |  |  |  |  |  |  |  |  |  |  |  |  |
|  | TOI | **TOILET/SERVICE WORKS** |  | 2026-05-07 | 2026-12-16 |  |  |  |  |  |  |  |  |  |  |  |  |  |  |  |  |  |  |  |  |
|  | 1 | **STEEL REINFORCEMENT** |  | 2026-05-13 | 2026-07-18 |  |  |  |  |  |  |  |  |  |  |  |  |  |  |  |  |  |  |  |  |
| MLTX-02-004-PR-11050 |  | PO for Steel Reinforcement | 2d | 2026-05-13 A | 2026-05-14 A | MLTX-02-004-EN-13370 | 100% |  |  |  |  | Purchaser [150 h] |  |  |  | MOD-02-PR-7880 | 0 | -15 | 0 |  | Procu |  | MAK-01-PR-1000 | UDF_G1 | TO |
| MLTX-02-004-PR-11150 |  | Material Delivery of Steel Reinforcement | 5d | 2026-07-18 A | 2026-07-18 A | MLTX-02-004-PR-11050 | 100% | 2026-07-18 | 2026-07-22 |  |  | Purchaser [156.8 h] |  |  |  | MOD-02-PR-7900 | -100 | -15 | -100 |  | Procu |  | MAK-01-PR-1020 | UDF_G1 | TO |
|  | 3 | **CONCRETE BLOCKS** |  | 2026-05-07 | 2026-07-27 |  |  |  |  |  |  |  |  |  |  |  |  |  |  |  |  |  |  |  |  |
| MLTX-02-004-PR-11230 |  | PO for Concrete Blocks | 1d | 2026-05-07 A | 2026-05-07 A | MLTX-02-004-EN-13470, MLTX-02-004-EN-13280, MLTX-02-004-PR-11050 | 100% |  |  |  |  | Purchaser [150 h] |  |  |  | MOD-02-PR-7950 | 0 | 0 | 0 |  | Procu |  | MAK-01-PR-1000 |  | TO |
| MLTX-02-004-PR-11240 |  | Material Delivery of Concrete Blocks | 8d | 2026-07-27 A | 2026-07-27 A | MLTX-02-004-PR-11230 | 100% | 2026-07-27 | 2026-08-04 |  |  | Purchaser [150 h] |  |  |  | MOD-02-PR-7970 | -100 | -5 | -87.5 |  | Procu |  | MAK-01-PR-1020 | UDF_G1 | TO |
|  | 6 | **FLOOR/WALL TILES** |  | 2026-07-22 | 2026-09-27 |  |  |  |  |  |  |  |  |  |  |  |  |  |  |  |  |  |  |  |  |
| MLTX-02-004-PR-11250 |  | PO for Tilling Materials | 5d | 2026-07-22 A | 2026-07-22 A | MLTX-02-004-PR-11230 | 100% | 2026-07-22 | 2026-07-27 |  |  | Purchaser [150 h] |  |  |  | MOD-02-PR-8030 | -100 | -12 | -100 |  | Procu |  | MAK-01-PR-1000 | UDF_G1 | TO |
| MLTX-02-004-PR-11260 |  | Material Delivery of Tailling Material | 13d | 2026-09-27 A | 2026-09-27 A | MLTX-02-004-PR-11400, MLTX-02-004-PR-11250, MLTX-02-004-EN-13490, MLTX-02-004-PR-11280, MLTX-02-004-PR-11480, MLTX-02-004-PR-11500, MLTX-02-004-PR-11520 | 100% | 2026-10-22 | 2026-11-05 |  |  | Purchaser [150 h] |  |  |  | MOD-02-PR-8050 | -38.4615384615385 | -12 | -15.3846153846154 |  | Procu |  | MAK-01-PR-1020 |  | TO |
|  | 7 | **SUSPENDED CEILING** |  | 2026-06-24 | 2026-07-22 |  |  |  |  |  |  |  |  |  |  |  |  |  |  |  |  |  |  |  |  |
| MLTX-02-004-PR-11270 |  | PO for Suspend Ceiling | 1d | 2026-06-24 A | 2026-06-24 A | MLTX-02-004-PR-11100 | 100% |  |  |  |  | Purchaser [150 h] |  |  |  | MOD-02-PR-8070 | 0 | 23 | 0 |  | Procu |  | MAK-01-PR-1000 |  | TO |
| MLTX-02-004-PR-11280 |  | Material Delivery of Suspend Ceiling | 13d | 2026-07-22 A | 2026-07-22 A | MLTX-02-004-PR-11270 | 100% | 2026-07-22 | 2026-08-05 |  |  | Purchaser [150 h] |  |  |  | MOD-02-PR-8090 | 0 | 23 | 0 |  | Procu |  | MAK-01-PR-1020 |  | TO |
|  | 8 | **DOORS/WINDOWS** |  | 2026-06-24 | 2026-10-05 |  |  |  |  |  |  |  |  |  |  |  |  |  |  |  |  |  |  |  |  |
| MLTX-02-004-PR-11290 |  | PO for Doors/Windows | 1d | 2026-06-24 A | 2026-06-24 A | MLTX-02-004-EN-13530, MLTX-02-004-EN-13510, MLTX-02-004-EN-13650, MLTX-02-004-EN-13570, MLTX-02-004-EN-13700, MLTX-02-004-EN-13720, MLTX-02-004-EN-13610, MLTX-02-004-EN-13630, MLTX-02-004-EN-14180, MLTX-02-004-EN-13380, MLTX-02-004-EN-13760, MLTX-02-004-EN-13780, MLTX-02-004-EN-13800, MLTX-02-004-EN-13820, MLTX-02-004-EN-13900, MLTX-02-004-EN-13920, MLTX-02-004-EN-13940, MLTX-02-004-EN-13960, MLTX-02-004-EN-13980, MLTX-02-004-EN-14020, MLTX-02-004-EN-14120, MLTX-02-004-EN-13390, MLTX-02-004-EN-13360, MLTX-02-004-EN-13410, MLTX-02-004-EN-14080, MLTX-02-004-EN-14100, MLTX-02-004-EN-14140, MLTX-02-004-EN-14000, MLTX-02-004-EN-13250 | 100% |  |  |  |  | Purchaser [150 h] |  |  |  | MOD-02-PR-8110 | -100 | -12 | -40 |  | Procu |  | MAK-01-PR-1000 |  | TO |
| MLTX-02-004-PR-11300 |  | Material Delivery for Doors/Windows | 15d | 2026-10-01 A | 2026-10-05 A | MLTX-02-004-PR-11290 | 100% | 2026-10-01 | 2026-10-18 |  |  | Purchaser [150 h] |  |  |  | MOD-02-PR-8130 | 0 | -12 | 0 |  | Procu |  | MAK-01-PR-1020 |  | TO |
|  | 11 | **WATER SUPPLY PIPES** |  | 2026-06-13 | 2026-06-13 |  |  |  |  |  |  |  |  |  |  |  |  |  |  |  |  |  |  |  |  |
| MLTX-02-004-PR-11330 |  | PO for Water Supply Pipes | 1d | 2026-06-13 A | 2026-06-13 A | MLTX-02-004-PR-11290 | 100% |  |  |  |  | Purchaser [150 h] |  |  |  | MOD-02-PR-8230 | 0 | -12 | 0 |  | Procu |  | MAK-01-PR-1000 |  | TO |
| MLTX-02-004-PR-11340 |  | Material Delivery for Water Supply Pipes | 1d | 2026-06-13 A | 2026-06-13 A | MLTX-02-004-PR-11330 | 100% |  |  |  |  | Purchaser [150 h] |  |  |  | MOD-02-PR-8250 | 0 | -12 | 0 |  | Procu |  | MAK-01-PR-1020 |  | TO |

| ID | WBS | Activity | Duration | Start | Finish | Predecessors | Complete | Planned start | Planned finish | Resources | New Activity ID | Old Activity ID - MK | % Variance | Delay | On Schedule | Procurement | WBS-Project |
| --- | --- | --- | --- | --- | --- | --- | --- | --- | --- | --- | --- | --- | --- | --- | --- | --- | --- |
|  | 12 | **SEWAGE/DRAINAGE PIPES** |  | 2026-06-13 | 2026-06-13 |  |  |  |  |  |  |  |  |  |  |  |  |
| MLTX-02-004-PR-11350 |  | PO for Sewage/Drainage Pipes | 1d | 2026-06-13 A | 2026-06-13 A | MLTX-02-004-EN-13590, MLTX-02-004-PR-11290 | 100% |  |  | Purchaser [150 h] | MOD-02-PR-8270 | MAK-01-PR-1000 | 0 | -12 | 0 | TO | Procu |
| MLTX-02-004-PR-11360 |  | Material Delivery for Sewage/Drainage Pipes | 1d | 2026-06-13 A | 2026-06-13 A | MLTX-02-004-PR-11350 | 100% |  |  | Purchaser [150 h] | MOD-02-PR-8290 | MAK-01-PR-1020 | 0 | -12 | 0 | TO | Procu |
|  | 10 | **SANITARY FIXTURES** |  | 2026-06-16 | 2026-08-05 |  |  |  |  |  |  |  |  |  |  |  |  |
| MLTX-02-004-PR-11310 |  | PO for Sanitary Fixtures | 1d | 2026-06-16 A | 2026-06-16 A | MLTX-02-004-EN-13550, MLTX-02-004-PR-11350 | 100% |  |  | Purchaser [150 h] | MOD-02-PR-8190 | MAK-01-PR-1000 | 0 | -12 | 0 | TO | Procu |
| MLTX-02-004-PR-11320 |  | Material Delivery for Sanitary Fixtures | 13d | 2026-08-03 A | 2026-08-05 A | MLTX-02-004-PR-11310 | 100% | 2026-10-17 | 2026-10-31 | Purchaser [150 h] | MOD-02-PR-8210 | MAK-01-PR-1020 | 0 | -12 | 0 | TO | Procu |
|  | 16 | **PACKAGE AC UNITS** |  | 2026-06-16 | 2026-07-15 |  |  |  |  |  |  |  |  |  |  |  |  |
| MLTX-02-004-PR-11450 |  | PO for Package AC Units | 1d | 2026-06-16 A | 2026-06-16 A | MLTX-02-004-EN-13680, MLTX-02-004-PR-11310 | 100% |  |  | Purchaser [150 h] | MOD-02-PR-8310 | MAK-01-PR-1000 | 0 | -12 | 0 | TO | Procu |
| MLTX-02-004-PR-11460 |  | Material Delivery for Package AC Units | 15d | 2026-07-14 A | 2026-07-15 A | MLTX-02-004-PR-11450 | 100% | 2026-11-21 | 2026-12-07 | Purchaser [150 h] | MOD-02-PR-8330 | MAK-01-PR-1020 | 0 | -12 | 0 | TO | Procu |
|  | 17 | **AIR DIFUSSERS/GRILLS** |  | 2026-09-27 | 2026-09-27 |  |  |  |  |  |  |  |  |  |  |  |  |
| MLTX-02-004-PR-11470 |  | PO for Air Diffusers/Grills | 8d | 2026-09-27 A | 2026-09-27 A | MLTX-02-004-PR-11310 | 100% | 2026-09-29 | 2026-10-07 | Purchaser [150 h] | MOD-02-PR-8350 | MAK-01-PR-1000 | 0 | -12 | 0 | TO | Procu |
| MLTX-02-004-PR-11480 |  | Material Delivery for Air Diffusers/Grills | 15d | 2026-09-27 A | 2026-09-27 A | MLTX-02-004-PR-11470 | 100% | 2026-10-08 | 2026-10-25 | Purchaser [150 h] | MOD-02-PR-8370 | MAK-01-PR-1020 | 0 | -12 | 0 | TO | Procu |
|  | 18 | **GALVANIZED DUCTS** |  | 2026-09-27 | 2026-09-27 |  |  |  |  |  |  |  |  |  |  |  |  |
| MLTX-02-004-PR-11490 |  | PO for Galvanized Ducts | 8d | 2026-09-27 A | 2026-09-27 A | MLTX-02-004-PR-11310 | 100% | 2026-09-29 | 2026-10-07 | Purchaser [150 h] | MOD-02-PR-8390 | MAK-01-PR-1000 | 0 | -12 | 0 | TO | Procu |
| MLTX-02-004-PR-11500 |  | Material Delivery for Galvanized Ducts | 15d | 2026-09-27 A | 2026-09-27 A | MLTX-02-004-PR-11490 | 100% | 2026-10-08 | 2026-10-25 | Purchaser [150 h] | MOD-02-PR-8410 | MAK-01-PR-1020 | 0 | -12 | 0 | TO | Procu |
|  | 19 | **EXHAUST FANS** |  | 2026-06-18 | 2026-09-27 |  |  |  |  |  |  |  |  |  |  |  |  |
| MLTX-02-004-PR-11510 |  | PO for Exhaust Fans | 1d | 2026-06-18 A | 2026-06-18 A | MLTX-02-004-EN-13740, MLTX-02-004-PR-11310 | 100% |  |  | Purchaser [150 h] | MOD-02-PR-8430 | MAK-01-PR-1000 | 0 | -12 | 0 | TO | Procu |
| MLTX-02-004-PR-11520 |  | Material Delivery for Exhaust Fans | 10d | 2026-09-27 A | 2026-09-27 A | MLTX-02-004-PR-11510 | 100% | 2026-09-29 | 2026-10-10 | Purchaser [150 h] | MOD-02-PR-8450 | MAK-01-PR-1020 | 0 | -12 | 0 | TO | Procu |
|  | 13 | **LIGHTING FIXTURES** |  | 2026-07-01 | 2026-11-03 |  |  |  |  |  |  |  |  |  |  |  |  |
| MLTX-02-004-PR-11370 |  | PO for Lighting Fixtures | 2d | 2026-07-01 A | 2026-07-02 A | MLTX-02-004-PR-11510 | 100% |  |  | Purchaser [150 h] | MOD-02-PR-8470 | MAK-01-PR-1000 | 0 | -12 | 0 | TO | Procu |
| MLTX-02-004-PR-11380 |  | Material Delivery for Lighting Fixtures | 10d | 2026-11-02 A | 2026-11-03 A | MLTX-02-004-PR-11370 | 100% | 2026-11-21 | 2026-12-01 | Purchaser [150 h] | MOD-02-PR-8490 | MAK-01-PR-1020 | 0 | -12 | 0 | TO | Procu |
|  | 14 | **SWITCHES/SOCKETS** |  | 2026-06-24 | 2026-10-10 |  |  |  |  |  |  |  |  |  |  |  |  |
| MLTX-02-004-PR-11390 |  | PO for Switches/Sockets | 1d | 2026-06-24 A | 2026-06-24 A | MLTX-02-004-PR-11370 | 100% |  |  | Purchaser [150 h] | MOD-02-PR-8510 | MAK-01-PR-1000 | 0 | -12 | 0 | TO | Procu |
| MLTX-02-004-PR-11400 |  | Material Delivery for Switches/Sockets | 7d | 2026-10-05 A | 2026-10-10 A | MLTX-02-004-PR-11390 | 100% | 2026-10-12 | 2026-10-19 | Purchaser [150 h] | MOD-02-PR-8530 | MAK-01-PR-1020 | 0 | -12 | 0 | TO | Procu |

| ID | WBS | Activity | Duration | Start | Finish | Predecessors | Complete | Planned start | Planned finish | Total float | Free float | Resources | New Activity ID | Old Activity ID - MK | % Variance | Delay | Flag | On Schedule | Procurement | WBS-Project |
| --- | --- | --- | --- | --- | --- | --- | --- | --- | --- | --- | --- | --- | --- | --- | --- | --- | --- | --- | --- | --- |
|  | 15 | **EARTHING SYSTEM** |  | 2026-05-21 | 2026-05-21 |  |  |  |  |  |  |  |  |  |  |  |  |  |  |  |
| MLTX-02-004-PR-11190 |  | PO for Earthing System | 1d | 2026-05-21 A | 2026-05-21 A | MLTX-02-004-EN-13430 | 100% |  |  |  |  | Purchaser [150 h] | MOD-02-PR-8550 | MAK-01-PR-1290 | -100 | -15 | UDF_G1 | -100 | TO | Procu |
| MLTX-02-004-PR-11200 |  | Material Delivery for Earthing System | 1d | 2026-05-21 A | 2026-05-21 A | MLTX-02-004-PR-11090, MLTX-02-004-PR-11190 | 100% |  |  |  |  | Purchaser [150 h] | MOD-02-PR-8570 | MAK-01-PR-1310 | -53.3333333333333 | -15 | UDF_G1 | -33.3333333333333 | TO | Procu |
|  | 5 | **DISTRIBUTION PANNELS** |  | 2026-11-01 | 2026-11-10 |  |  |  |  |  |  |  |  |  |  |  |  |  |  |  |
| MLTX-02-004-PR-11210 |  | PO for Distribution Panels | 5d | 2026-11-01 A | 2026-11-02 A | MLTX-02-004-EN-13450 | 100% | 2026-11-21 | 2026-11-25 |  |  | Purchaser [150 h] | MOD-02-PR-8590 | MAK-01-PR-LLI-1060 | -100 | -15 | UDF_G1 | -100 | TO | Procu |
| MLTX-02-004-PR-11220 |  | Material Delivery for Distribution Panels | 15d | 2026-11-09 A | 2026-11-10 A | MLTX-02-004-PR-11210 | 100% | 2026-11-23 | 2026-12-09 |  |  | Purchaser [150 h] | MOD-02-PR-8610 | MAK-01-PR-LLI-1100 | -100 | -15 | UDF_G1 | -80 | TO | Procu |
|  | 9 | **FURNITURES** |  | 2026-06-16 | 2026-12-16 |  |  |  |  |  |  |  |  |  |  |  |  |  |  |  |
| MLTX-02-004-PR-11410 |  | PO for Furnitures | 1d | 2026-06-16 A | 2026-06-16 A | MLTX-02-004-PR-11510 | 100% |  |  |  |  | Purchaser [150 h] | MOD-02-PR-8150 | MAK-01-PR-1000 | 0 | -12 |  | 0 | TO | Procu |
| MLTX-02-004-PR-11420 |  | Material Delivery for Furnitures | 20d | 2026-11-24 | 2026-12-16 | MLTX-02-004-PR-11410 |  |  |  | -19d | 17d | Purchaser [150 h] | MOD-02-PR-8170 | MAK-01-PR-1020 | 0 | -12 |  | 0 | TO | Procu |
|  | PLG | **PLAYGROUND WORKS** |  | 2026-04-20 | 2027-01-05 |  |  |  |  |  |  |  |  |  |  |  |  |  |  |  |
|  | 5 | **PVC MEMBRANE** |  | 2026-06-16 | 2026-12-16 |  |  |  |  |  |  |  |  |  |  |  |  |  |  |  |
| MLTX-02-004-PR-11610 |  | PO for PVC Membrane | 1d | 2026-06-16 A | 2026-06-16 A | MLTX-02-004-MS-1010 SS | 100% |  |  |  |  | Purchaser [150 h] | MOD-02-PR-8640 | MAK-01-PR-1120 | -100 | -22 | UDF_G1 | -100 | PL | Procu |
| MLTX-02-004-PR-11620 |  | Material Delivery for PVC Membrane | 20d | 2026-11-24 | 2026-12-16 | MLTX-02-004-PR-11610 |  |  |  | -36d | 0d | Purchaser [150 h] | MOD-02-PR-8650 | MAK-01-PR-1130 | -100 | -22 | UDF_G1 | -100 | PL | Procu |
|  | 15 | **ARTIFICIAL TURF** |  | 2026-06-16 | 2026-12-07 |  |  |  |  |  |  |  |  |  |  |  |  |  |  |  |
| MLTX-02-004-PR-11850 |  | PO for Artificial TURF | 1d | 2026-06-16 A | 2026-06-16 A | MLTX-02-004-EN-14190 | 100% |  |  |  |  | Purchaser [150 h] | MOD-02-PR-8830 | MAK-01-PR-1120 | -100 | -18 | UDF_G1 | -100 | PL | Procu |
| MLTX-02-004-PR-11860 |  | Material Delivery for Artificial TURF | 12d | 2026-11-24 | 2026-12-07 | MLTX-02-004-PR-11850 |  |  |  | -28d | 8d | Purchaser [150 h] | MOD-02-PR-8850 | MAK-01-PR-1130 | -100 | -18 | UDF_G1 | -100 | PL | Procu |
|  | 20 | **RUBBER GRANULES** |  | 2026-06-16 | 2026-12-07 |  |  |  |  |  |  |  |  |  |  |  |  |  |  |  |
| MLTX-02-004-PR-11870 |  | PO for Rubber Granules | 1d | 2026-06-16 A | 2026-06-16 A | MLTX-02-004-MS-1010 SS | 100% |  |  |  |  | Purchaser [150 h] | MOD-02-PR-8870 | MAK-01-PR-1120 | -100 | -25 | UDF_G1 | -100 | PL | Procu |
| MLTX-02-004-PR-11880 |  | Material Delivery for Rubber Granules | 12d | 2026-11-24 | 2026-12-07 | MLTX-02-004-PR-11870 |  |  |  | -28d | 8d | Purchaser [150 h] | MOD-02-PR-8890 | MAK-01-PR-1130 | -100 | -25 | UDF_G1 | -100 | PL | Procu |
|  | 21 | **PADEL GLASS** |  | 2026-06-16 | 2026-12-14 |  |  |  |  |  |  |  |  |  |  |  |  |  |  |  |
| MLTX-02-004-PR-11890 |  | PO for Padel Glass | 1d | 2026-06-16 A | 2026-06-16 A | MLTX-02-004-EN-14210 | 100% |  |  |  |  | Purchaser [150 h] | MOD-02-PR-8910 | MAK-01-PR-1120 | -100 | -25 | UDF_G1 | -100 | PL | Procu |
| MLTX-02-004-PR-11900 |  | Material Delivery for Padel Glass | 18d | 2026-11-24 | 2026-12-14 | MLTX-02-004-PR-11890 |  |  |  | -34d | 2d | Purchaser [150 h] | MOD-02-PR-8930 | MAK-01-PR-1130 | -100 | -25 | UDF_G1 | -83.3333333333333 | PL | Procu |
|  | 22 | **PADEL WIRE MESH/STEEL SETS** |  | 2026-06-16 | 2026-06-20 |  |  |  |  |  |  |  |  |  |  |  |  |  |  |  |
| MLTX-02-004-PR-11910 |  | PO for Wire Mesh/Steel Sets | 1d | 2026-06-16 A | 2026-06-16 A | MLTX-02-004-PR-11890 | 100% |  |  |  |  | Purchaser [150 h] | MOD-02-PR-8950 | MAK-01-PR-1120 | -100 | -25 | UDF_G1 | -100 | PL | Procu |
| MLTX-02-004-PR-11920 |  | Material Delivery for Wire Mesh/Steel Sets | 15d | 2026-06-18 A | 2026-06-20 A | MLTX-02-004-PR-11910 | 100% | 2026-11-23 | 2026-12-09 |  |  | Purchaser [150 h] | MOD-02-PR-8970 | MAK-01-PR-1130 | -86.6666666666667 | -25 | UDF_G1 | -66.6666666666667 | PL | Procu |

| ID | WBS | Activity | Duration | Start | Finish | Predecessors | Complete | Planned start | Planned finish | Total float | Free float | Resources | New Activity ID | Old Activity ID - MK | % Variance | Delay | Flag | On Schedule | Procurement | WBS-Project |
| --- | --- | --- | --- | --- | --- | --- | --- | --- | --- | --- | --- | --- | --- | --- | --- | --- | --- | --- | --- | --- |
|  | 1 | **AGGREGATE BASE COURSE** |  | 2026-05-21 | 2026-05-21 |  |  |  |  |  |  |  |  |  |  |  |  |  |  |  |
| MLTX-02-004-PR-11060 |  | PO for Aggregate Base Course | 1d | 2026-05-21 A | 2026-05-21 A | MLTX-02-004-EN-13300 | 100% |  |  |  |  | Purchaser [150 h] | MOD-02-PR-8990 | MAK-01-PR-1090 | -100 | -28 | UDF_G1 | -100 | PL | Procu |
| MLTX-02-004-PR-11070 |  | Material Delivery for Aggregate Base Course | 1d | 2026-05-21 A | 2026-05-21 A | MLTX-02-004-PR-11060 | 100% |  |  |  |  | Purchaser [150 h] | MOD-02-PR-9000 | MAK-01-PR-1100 | -100 | -28 | UDF_G1 | -100 | PL | Procu |
|  | 16 | **PACKAGE AC UNITS** |  | 2026-06-16 | 2026-07-14 |  |  |  |  |  |  |  |  |  |  |  |  |  |  |  |
| MLTX-02-004-PR-11530 |  | PO for Package AC Units | 1d | 2026-06-16 A | 2026-06-16 A | MLTX-02-004-PR-11450 | 100% |  |  |  |  | Purchaser [200 h] | MOD-02-PR-9130 | MAK-01-PR-1000 | 0 | -12 |  | 0 | PL | Procu |
| MLTX-02-004-PR-11540 |  | Material Delivery for Package AC Units | 15d | 2026-07-13 A | 2026-07-14 A | MLTX-02-004-PR-11530 | 100% | 2026-11-23 | 2026-12-09 |  |  | Purchaser [200 h] | MOD-02-PR-9150 | MAK-01-PR-1020 | 0 | -12 |  | 0 | PL | Procu |
|  | 17 | **AIR DIFUSSERS/GRILLS** |  | 2026-06-16 | 2026-08-10 |  |  |  |  |  |  |  |  |  |  |  |  |  |  |  |
| MLTX-02-004-PR-11550 |  | PO for Air Difussers/Grills | 1d | 2026-06-16 A | 2026-06-16 A | MLTX-02-004-PR-11450 | 100% |  |  |  |  | Purchaser [200 h] | MOD-02-PR-9170 | MAK-01-PR-1000 | 0 | -12 |  | 0 | PL | Procu |
| MLTX-02-004-PR-11560 |  | Material Delivery for Air Difussers/Grills | 15d | 2026-08-08 A | 2026-08-10 A | MLTX-02-004-PR-11550 | 100% | 2026-10-17 | 2026-11-02 |  |  | Purchaser [200 h] | MOD-02-PR-9190 | MAK-01-PR-1020 | 0 | -12 |  | 0 | PL | Procu |
|  | 2 | **BITUMINOUS BASE & WEARING COURSE** |  | 2026-06-16 | 2026-07-02 |  |  |  |  |  |  |  |  |  |  |  |  |  |  |  |
| MLTX-02-004-PR-11080 |  | PO for Bituminous Base & Wearing Course | 1d | 2026-06-16 A | 2026-06-16 A | MLTX-02-004-EN-13320 | 100% |  |  |  |  | Purchaser [150 h] | MOD-02-PR-9020 | MAK-01-PR-1120 | -100 | -15 | UDF_G1 | -100 | PL | Procu |
| MLTX-02-004-PR-11090 |  | Material Delivery for the Site | 1d | 2026-07-02 A | 2026-07-02 A | MLTX-02-004-PR-11080 | 100% |  |  |  |  | Purchaser [150 h] | MOD-02-PR-9030 | MAK-01-PR-1130 | -100 | -15 | UDF_G1 | -100 | PL | Procu |
|  | 3 | **INTERLOCKING PAVING** |  | 2026-04-20 | 2026-05-07 |  |  |  |  |  |  |  |  |  |  |  |  |  |  |  |
| MLTX-02-004-PR-11110 |  | Material Delivery for Interlocking Block Pavers | 8d | 2026-04-20 A | 2026-04-20 A | MLTX-02-004-PR-11090, MLTX-02-004-PR-11100 | 100% | 2026-10-17 | 2026-10-25 |  |  | Purchaser [200 h] | MOD-02-PR-9070 | MAK-01-PR-1190 | 0 | 23 |  | 0 | PL | Procu |
| MLTX-02-004-PR-11100 |  | PO for Interlocking Block Pavers | 1d | 2026-05-07 A | 2026-05-07 A | MLTX-02-004-PR-11390 | 100% |  |  |  |  | Purchaser [200 h] | MOD-02-PR-9050 | MAK-01-PR-1170 | 100 | 40 |  | 100 | PL | Procu |
|  | 4 | **MARKING PAINT** |  | 2026-07-22 | 2027-01-05 |  |  |  |  |  |  |  |  |  |  |  |  |  |  |  |
| MLTX-02-004-PR-11430 |  | PO for Marking Paint | 15d | 2026-07-22 A | 2026-07-22 A | MLTX-02-004-EN-14230, MLTX-02-004-PR-11080 | 100% | 2026-07-22 | 2026-08-08 |  |  | Purchaser [150 h] | MOD-02-PR-9090 | MAK-01-PR-1120 | -100 | -15 | UDF_G1 | -100 | PL | Procu |
| MLTX-02-004-PR-11440 |  | Material Delivery for Marking Paint | 17d | 2026-12-17 | 2027-01-05 | MLTX-02-004-PR-11430, MLTX-02-004-PR-11620, MLTX-02-004-PR-11860, MLTX-02-004-PR-11880, MLTX-02-004-PR-11900, MLTX-02-004-PR-11920, MLTX-02-004-PR-11110, MLTX-02-004-PR-11540, MLTX-02-004-PR-11560, MLTX-02-004-PR-11580, MLTX-02-004-PR-11600, MLTX-02-004-PR-11740, MLTX-02-004-PR-11760, MLTX-02-004-PR-11780, MLTX-02-004-PR-11800 |  |  |  | -36d | 0d | Purchaser [150 h] | MOD-02-PR-9110 | MAK-01-PR-1130 | -100 | -15 | UDF_G1 | -71.4285714285714 | PL | Procu |
|  | 18 | **GALVANIZED DUCTS** |  | 2026-06-16 | 2026-08-12 |  |  |  |  |  |  |  |  |  |  |  |  |  |  |  |
| MLTX-02-004-PR-11570 |  | PO for Galvanized Duct | 1d | 2026-06-16 A | 2026-06-16 A | MLTX-02-004-PR-11450 | 100% |  |  |  |  | Purchaser [150 h] | MOD-02-PR-9210 | MAK-01-PR-1000 | 0 | -12 |  | 0 | PL | Procu |
| MLTX-02-004-PR-11580 |  | Material Delivery for Galvanized Duct | 15d | 2026-08-08 A | 2026-08-12 A | MLTX-02-004-PR-11570 | 100% | 2026-10-17 | 2026-11-02 |  |  | Purchaser [150 h] | MOD-02-PR-9230 | MAK-01-PR-1020 | 0 | -12 |  | 0 | PL | Procu |
|  | 19 | **EXHAUST FANS** |  | 2026-06-16 | 2026-08-18 |  |  |  |  |  |  |  |  |  |  |  |  |  |  |  |
| MLTX-02-004-PR-11590 |  | PO for Exhaust Fans | 1d | 2026-06-16 A | 2026-06-16 A | MLTX-02-004-PR-11450 | 100% |  |  |  |  | Purchaser [150 h] | MOD-02-PR-9250 | MAK-01-PR-1000 | 0 | -12 |  | 0 | PL | Procu |
| MLTX-02-004-PR-11600 |  | Material Delivery for Exhaust Fans | 15d | 2026-08-17 A | 2026-08-18 A | MLTX-02-004-PR-11590 | 100% | 2026-10-17 | 2026-11-02 |  |  | Purchaser [150 h] | MOD-02-PR-9270 | MAK-01-PR-1020 | 0 | -12 |  | 0 | PL | Procu |

| ID | WBS | Activity | Duration | Start | Finish | Predecessors | Complete | Planned start | Planned finish | Total float | Free float | Resources | New Activity ID | Old Activity ID - MK | % Variance | Delay | On Schedule | Procurement | WBS-Project |
| --- | --- | --- | --- | --- | --- | --- | --- | --- | --- | --- | --- | --- | --- | --- | --- | --- | --- | --- | --- |
|  | 10 | **DISTRIBUTION BOARDS** |  | 2026-07-22 | 2026-11-10 |  |  |  |  |  |  |  |  |  |  |  |  |  |  |
| MLTX-02-004-PR-11710 |  | PO for Distribution Boards | 5d | 2026-07-22 A | 2026-07-22 A | MLTX-02-004-PR-11980, MLTX-02-004-PR-11450 | 100% | 2026-08-09 | 2026-08-13 |  |  | Purchaser [150 h] | MOD-02-PR-9290 | MAK-01-PR-1000 | 0 | -12 | 0 | PL | Procu |
| MLTX-02-004-PR-11720 |  | Material Delivery for Distribution Boards | 15d | 2026-11-09 A | 2026-11-10 A | MLTX-02-004-PR-11710 | 100% | 2026-11-23 | 2026-12-09 |  |  | Purchaser [150 h] | MOD-02-PR-9310 | MAK-01-PR-1020 | 0 | -12 | 0 | PL | Procu |
|  | 11 | **POWER CABLES** |  | 2026-06-16 | 2026-09-16 |  |  |  |  |  |  |  |  |  |  |  |  |  |  |
| MLTX-02-004-PR-11730 |  | PO for Power Cables | 1d | 2026-06-16 A | 2026-06-16 A | MLTX-02-004-EN-13920 | 100% |  |  |  |  | Purchaser [150 h] | MOD-02-PR-9330 | MAK-01-PR-1000 | 0 | -12 | 0 | PL | Procu |
| MLTX-02-004-PR-11740 |  | Material Delivery for Power Cables | 10d | 2026-09-16 A | 2026-09-16 A | MLTX-02-004-PR-11730 | 100% | 2026-10-18 | 2026-10-28 |  |  | Purchaser [150 h] | MOD-02-PR-9350 | MAK-01-PR-1020 | 0 | -12 | 0 | PL | Procu |
|  | 12 | **LIGHT FIXTURES** |  | 2026-06-16 | 2026-11-12 |  |  |  |  |  |  |  |  |  |  |  |  |  |  |
| MLTX-02-004-PR-11750 |  | PO for Light Fixtures | 1d | 2026-06-16 A | 2026-06-16 A | MLTX-02-004-EN-13940, MLTX-02-004-PR-11730 | 100% |  |  |  |  | Purchaser [150 h] | MOD-02-PR-9370 | MAK-01-PR-1000 | 0 | -12 | 0 | PL | Procu |
| MLTX-02-004-PR-11760 |  | Material Delivery for Light Fixtures | 16d | 2026-11-11 A | 2026-11-12 A | MLTX-02-004-PR-11750 | 100% | 2026-11-23 | 2026-12-10 |  |  | Purchaser [150 h] | MOD-02-PR-9390 | MAK-01-PR-1020 | 0 | -12 | 0 | PL | Procu |
|  | 13 | **CCTV MATERIALS** |  | 2026-11-14 | 2026-12-10 |  |  |  |  |  |  |  |  |  |  |  |  |  |  |
| MLTX-02-004-PR-11770 |  | PO for CCTV | 6d | 2026-11-14 A | 2026-11-15 A | MLTX-02-004-EN-13960, MLTX-02-004-PR-11750 | 100% | 2026-11-23 | 2026-11-29 |  |  | Purchaser [150 h] | MOD-02-PR-9410 | MAK-01-PR-1000 | 0 | -12 | 0 | PL | Procu |
| MLTX-02-004-PR-11780 |  | Material Delivery for CCTV | 15d | 2026-11-24 | 2026-12-10 | MLTX-02-004-PR-11770 |  |  |  | -31d | 5d | Purchaser [150 h] | MOD-02-PR-9430 | MAK-01-PR-1020 | 0 | -12 | 0 | PL | Procu |
|  | 14 | **POWER OUTLETS/SWITCHES** |  | 2026-10-25 | 2026-11-09 |  |  |  |  |  |  |  |  |  |  |  |  |  |  |
| MLTX-02-004-PR-11790 |  | PO for Power Outlets/Switches | 6d | 2026-10-25 A | 2026-10-26 A | MLTX-02-004-EN-13980 | 100% | 2026-11-23 | 2026-11-29 |  |  | Purchaser [150 h] | MOD-02-PR-9450 | MAK-01-PR-1000 | 0 | -12 | 0 | PL | Procu |
| MLTX-02-004-PR-11800 |  | Material Delivery for Power Outlets/Switches | 6d | 2026-11-08 A | 2026-11-09 A | MLTX-02-004-PR-11790, MLTX-02-004-PR-11130, MLTX-02-004-PR-11840, MLTX-02-004-PR-11980, MLTX-02-004-PR-11160, MLTX-02-004-PR-11180 | 100% | 2026-12-05 | 2026-12-10 |  |  | Purchaser [150 h] | MOD-02-PR-9470 | MAK-01-PR-1020 | 0 | -12 | 0 | PL | Procu |
|  | LSC | **LANDSCAPE WORKS** |  | 2026-04-20 | 2026-12-10 |  |  |  |  |  |  |  |  |  |  |  |  |  |  |
|  | 7 | **INTERLOCKING PAVING** |  | 2026-04-20 | 2026-10-28 |  |  |  |  |  |  |  |  |  |  |  |  |  |  |
| MLTX-02-004-PR-11840 |  | Material Delivery for Interlocking Block Pavers | 12d | 2026-04-20 A | 2026-10-28 A | MLTX-02-004-PR-11830 | 100% | 2026-10-17 | 2026-10-29 |  |  | Purchaser [150 h] | MOD-02-PR-9520 | MAK-01-PR-1190 | 0 | -1 | 0 | LS | Procu |
| MLTX-02-004-PR-11830 |  | PO for Interlocking Block Pavers | 1d | 2026-05-07 A | 2026-05-07 A | MLTX-02-004-EN-14020 | 100% |  |  |  |  | Purchaser [150 h] | MOD-02-PR-9500 | MAK-01-PR-1170 | 100 | 56 | 100 | LS | Procu |
|  | 9 | **CURBSTONE** |  | 2026-05-07 | 2026-09-14 |  |  |  |  |  |  |  |  |  |  |  |  |  |  |
| MLTX-02-004-PR-11970 |  | PO for Curbstone | 1d | 2026-05-07 A | 2026-05-07 A | MLTX-02-004-EN-14120 | 100% |  |  |  |  | Purchaser [150 h] | MOD-02-PR-9540 | MAK-01-PR-1260 | 100 | 56 | 100 | LS | Procu |
| MLTX-02-004-PR-11980 |  | Material Delivery for Curbstone | 12d | 2026-09-14 A | 2026-09-14 A | MLTX-02-004-PR-11970 | 100% | 2026-09-22 | 2026-10-06 |  |  | Purchaser [150 h] | MOD-02-PR-9560 | MAK-01-PR-1280 | 0 | -12 | 0 | LS | Procu |
|  | 1 | **PAVEMENT MARKING** |  | 2026-07-18 | 2026-12-05 |  |  |  |  |  |  |  |  |  |  |  |  |  |  |
| MLTX-02-004-PR-11120 |  | PO for Pavement Markings | 5d | 2026-07-18 A | 2026-07-18 A | MLTX-02-004-EN-13390 | 100% | 2026-07-18 | 2026-07-22 |  |  | Purchaser [150 h] | MOD-02-PR-9580 | MAK-01-PR-1200 | 0 | -12 | 0 | LS | Procu |
| MLTX-02-004-PR-11130 |  | Material Delivery for Pavement Markings | 10d | 2026-11-24 | 2026-12-05 | MLTX-02-004-PR-11120 |  |  |  | 44d | 130d | Purchaser [150 h] | MOD-02-PR-9600 | MAK-01-PR-1220 | 0 | -12 | 0 | LS | Procu |

| ID | WBS | Activity | Duration | Start | Finish | Predecessors | Complete | Planned start | Planned finish | Total float | Free float | Resources | New Activity ID | Old Activity ID - MK | % Variance | Delay | On Schedule | Procurement | WBS-Project | Flag |
| --- | --- | --- | --- | --- | --- | --- | --- | --- | --- | --- | --- | --- | --- | --- | --- | --- | --- | --- | --- | --- |
|  | 2 | **TRAFFIC SIGNS** |  | 2026-07-22 | 2026-12-05 |  |  |  |  |  |  |  |  |  |  |  |  |  |  |  |
| MLTX-02-004-PR-11140 |  | PO for Traffic Signs | 5d | 2026-07-22 A | 2026-07-27 A | MLTX-02-004-EN-13360 | 100% |  |  |  |  | Purchaser [150 h] | MOD-02-PR-9620 | MAK-01-PR-1230 | 0 | -38 | 0 | LS | Procu |  |
| MLTX-02-004-PR-11160 |  | Material Delivery for Traffic Signs | 10d | 2026-11-24 | 2026-12-05 | MLTX-02-004-PR-11140 |  |  |  | 44d | 130d | Purchaser [150 h] | MOD-02-PR-9640 | MAK-01-PR-1250 | 0 | -38 | 0 | LS | Procu |  |
|  | 3 | **IRRIGATION PIPES/SPRINKLERS** |  | 2026-07-18 | 2026-08-15 |  |  |  |  |  |  |  |  |  |  |  |  |  |  |  |
| MLTX-02-004-PR-11170 |  | PO for Irrigation Pipes/Sprinkles | 5d | 2026-07-18 A | 2026-07-18 A | MLTX-02-004-EN-13410 | 100% | 2026-07-18 | 2026-07-22 |  |  | Purchaser [150 h] | MOD-02-PR-9660 | MAK-01-PR-1260 | 0 | -12 | 0 | LS | Procu |  |
| MLTX-02-004-PR-11180 |  | Material Delivery for Irrigation Pipes/Sprinkles | 8d | 2026-08-13 A | 2026-08-15 A | MLTX-02-004-PR-11170 | 100% | 2026-10-17 | 2026-10-25 |  |  | Purchaser [150 h] | MOD-02-PR-9680 | MAK-01-PR-1280 | 0 | -12 | 0 | LS | Procu |  |
|  | 5 | **AGRICULTURE SOIL** |  | 2026-07-18 | 2026-11-02 |  |  |  |  |  |  |  |  |  |  |  |  |  |  |  |
| MLTX-02-004-PR-11930 |  | PO for Agriculture Soil | 5d | 2026-07-18 A | 2026-07-18 A | MLTX-02-004-EN-14080, MLTX-02-004-PR-11950 | 100% | 2026-07-18 | 2026-07-22 |  |  | Purchaser [150 h] | MOD-02-PR-9700 | MAK-01-PR-1260 | 0 | -38 | 0 | LS | Procu |  |
| MLTX-02-004-PR-11940 |  | Material Delivery for Agriculture Soil | 12d | 2026-11-01 A | 2026-11-02 A | MLTX-02-004-PR-11930 | 100% | 2026-11-23 | 2026-12-06 |  |  | Purchaser [150 h] | MOD-02-PR-9720 | MAK-01-PR-1280 | 0 | -38 | 0 | LS | Procu |  |
|  | 8 | **TRACK SURFACE** |  | 2026-06-24 | 2026-06-27 |  |  |  |  |  |  |  |  |  |  |  |  |  |  |  |
| MLTX-02-004-PR-11950 |  | PO for Track Surface | 1d | 2026-06-24 A | 2026-06-24 A | MLTX-02-004-EN-14100 | 100% |  |  |  |  | Purchaser [150 h] | MOD-02-PR-9740 | MAK-01-PR-1260 | 0 | -38 | 0 | LS | Procu |  |
| MLTX-02-004-PR-11960 |  | Material Delivery for Track Surface | 10d | 2026-06-25 A | 2026-06-27 A | MLTX-02-004-PR-11950 | 100% | 2026-11-23 | 2026-12-03 |  |  | Purchaser [150 h] | MOD-02-PR-9760 | MAK-01-PR-1280 | 0 | -38 | 0 | LS | Procu |  |
|  | 10 | **GRASS/TREES** |  | 2026-07-18 | 2026-12-10 |  |  |  |  |  |  |  |  |  |  |  |  |  |  |  |
| MLTX-02-004-PR-11990 |  | PO for Grass/Trees | 5d | 2026-07-18 A | 2026-07-18 A | MLTX-02-004-EN-14140, MLTX-02-004-PR-11930 | 100% | 2026-07-18 | 2026-07-22 |  |  | Purchaser [150 h] | MOD-02-PR-9780 | MAK-01-PR-1260 | 0 | -38 | 0 | LS | Procu |  |
| MLTX-02-004-PR-12000 |  | Material Delivery for Grass/Trees | 15d | 2026-11-24 | 2026-12-10 | MLTX-02-004-PR-11990, MLTX-02-004-PR-11960, MLTX-02-004-PR-11940 |  |  |  | 11d | 0d | Purchaser [150 h] | MOD-02-PR-9800 | MAK-01-PR-1280 | 0 | -38 | 0 | LS | Procu |  |
|  | 6 | **CABLES** |  | 2026-07-18 | 2026-09-17 |  |  |  |  |  |  |  |  |  |  |  |  |  |  |  |
| MLTX-02-004-PR-11810 |  | PO for Cables | 5d | 2026-07-18 A | 2026-07-18 A | MLTX-02-004-EN-14000, MLTX-02-004-PR-11120 | 100% | 2026-07-18 | 2026-07-22 |  |  | Purchaser [150 h] | MOD-02-PR-9820 | MAK-01-PR-1200 | 0 | -12 | 0 | LS | Procu |  |
| MLTX-02-004-PR-11820 |  | Material Delivery for Cables | 15d | 2026-09-17 A | 2026-09-17 A | MLTX-02-004-PR-11810 | 100% | 2026-09-20 | 2026-10-07 |  |  | Purchaser [150 h] | MOD-02-PR-9840 | MAK-01-PR-1220 | 0 | -12 | 0 | LS | Procu |  |
|  | LLI | **LONG LEAD ITEM** |  | 2026-06-16 | 2027-01-14 |  |  |  |  |  |  |  |  |  |  |  |  |  |  |  |
|  | PLG | **PLAYGROUND WORKS** |  | 2026-06-16 | 2027-01-14 |  |  |  |  |  |  |  |  |  |  |  |  |  |  |  |
|  | 6 | **STEEL TENSION CABLES** |  | 2026-06-16 | 2026-06-23 |  |  |  |  |  |  |  |  |  |  |  |  |  |  |  |
| MLTX-02-004-PR-11630 |  | PO for Steel Tension Cables | 1d | 2026-06-16 A | 2026-06-16 A | MLTX-02-004-EN-15460 | 100% |  |  |  |  | Purchaser [300 h] | MOD-02-PR-8670 | MAK-01-PR-1120 | -100 | -38 | -100 | PL | Procu | UDF_G1 |
| MLTX-02-004-PR-12010 |  | Material Fabrication for Steel Tension Cables | 10d | 2026-06-17 A | 2026-06-18 A | MLTX-02-004-PR-11630 | 100% | 2026-11-23 | 2026-12-03 |  |  | Purchaser [300 h] | MOD-02-PR-8680 | MAK-01-PR-1120 | -60 | -38 | -45 | PL | Procu | UDF_G1 |
| MLTX-02-004-PR-12050 |  | Staging time | 7d | 2026-06-20 A | 2026-06-21 A | MLTX-02-004-PR-11640, MLTX-02-004-PR-11820, MLTX-02-004-PR-12000 | 100% | 2026-12-24 | 2026-12-31 |  |  | Purchaser [290 h] | MOD-02-PR-8690 | MAK-01-PR-1130 | 0 | -38 | 0 | PL | Procu |  |
| MLTX-02-004-PR-11640 |  | Material Delivery for Steel Tension Cables | 15d | 2026-06-22 A | 2026-06-23 A | MLTX-02-004-PR-12010 | 100% | 2026-12-05 | 2026-12-21 |  |  | Purchaser [294.3 h] | MOD-02-PR-8690 | MAK-01-PR-1130 | 0 | -38 | 0 | PL | Procu |  |

| ID | WBS | Activity | Duration | Start | Finish | Predecessors | Complete | Planned start | Planned finish | Total float | Free float | Resources | New Activity ID | Old Activity ID - MK | % Variance | Delay | On Schedule | Procurement | WBS-Project | Testing & Commissioning |
| --- | --- | --- | --- | --- | --- | --- | --- | --- | --- | --- | --- | --- | --- | --- | --- | --- | --- | --- | --- | --- |
|  | 7 | **EMERGENCY DOORS** |  | 2026-06-16 | 2027-01-09 |  |  |  |  |  |  |  |  |  |  |  |  |  |  |  |
| MLTX-02-004-PR-11650 |  | PO for Emergency Doors | 1d | 2026-06-16 A | 2026-06-16 A | MLTX-02-004-MS-1010 SS | 100% |  |  |  |  | Purchaser [150 h] | MOD-02-PR-8710 | MAK-01-PR-1120 | 0 | -38 | 0 | PL | Procu |  |
| MLTX-02-004-PR-12020 |  | Material Fabrication for Emergency Doors | 15d | 2026-11-24 | 2026-12-10 | MLTX-02-004-PR-11650 |  |  |  | -80d | 0d | Purchaser [150 h] | MOD-02-PR-8720 | MAK-01-PR-1120 | 0 | -38 | 0 | PL | Procu |  |
| MLTX-02-004-PR-11660 |  | Material Delivery for Emergency Doors | 20d | 2026-12-12 | 2027-01-03 | MLTX-02-004-PR-12020 |  |  |  | -80d | 0d | Purchaser [150 h] | MOD-02-PR-8730 | MAK-01-PR-1130 | 0 | -38 | 0 | PL | Procu |  |
| MLTX-02-004-PR-12060 |  | Staging time | 5d | 2027-01-04 | 2027-01-09 | MLTX-02-004-PR-11660 |  |  |  | -80d | 0d | Purchaser [150 h] | MOD-02-PR-8730 | MAK-01-PR-1130 | 0 | -38 | 0 | PL | Procu |  |
|  | 8 | **PRESSURE UNITS** |  | 2026-06-16 | 2027-01-14 |  |  |  |  |  |  |  |  |  |  |  |  |  |  |  |
| MLTX-02-004-PR-11670 |  | PO for Pressure Units | 1d | 2026-06-16 A | 2026-06-16 A | MLTX-02-004-MS-1010 SS | 100% |  |  |  |  | Purchaser [150 h] | MOD-02-PR-8750 | MAK-01-PR-1120 | 0 | -38 | 0 | PL | Procu |  |
| MLTX-02-004-PR-12030 |  | Material Fabrication for Pressure Units | 15d | 2026-11-24 | 2026-12-10 | MLTX-02-004-PR-11670 |  |  |  | -75d | 0d | Purchaser [150 h] | MOD-02-PR-8760 | MAK-01-PR-1120 | 0 | -38 | 0 | PL | Procu |  |
| MLTX-02-004-PR-11680 |  | Material Delivery for Pressure Units | 20d | 2026-12-12 | 2027-01-03 | MLTX-02-004-PR-12030 |  |  |  | -75d | 5d | Purchaser [150 h] | MOD-02-PR-8770 | MAK-01-PR-1130 | 0 | -38 | 0 | PL | Procu |  |
| MLTX-02-004-PR-12070 |  | Staging time | 5d | 2027-01-10 | 2027-01-14 | MLTX-02-004-PR-11680, MLTX-02-004-PR-12060 |  |  |  | -80d | 0d | Purchaser [150 h] | MOD-02-PR-8770 | MAK-01-PR-1130 | 0 | -38 | 0 | PL | Procu |  |
|  | 9 | **AIR LOCK DOORS** |  | 2026-06-16 | 2027-01-09 |  |  |  |  |  |  |  |  |  |  |  |  |  |  |  |
| MLTX-02-004-PR-11690 |  | PO for Lock Doors | 1d | 2026-06-16 A | 2026-06-16 A | MLTX-02-004-EN-14180 | 100% |  |  |  |  | Purchaser [150 h] | MOD-02-PR-8790 | MAK-01-PR-1120 | 0 | -38 | 0 | PL | Procu |  |
| MLTX-02-004-PR-12040 |  | Material Fabrication for Lock Doors | 15d | 2026-11-24 | 2026-12-10 | MLTX-02-004-PR-11690 |  |  |  | 14d | 0d | Purchaser [150 h] | MOD-02-PR-8800 | MAK-01-PR-1120 | 0 | -38 | 0 | PL | Procu |  |
| MLTX-02-004-PR-11700 |  | Material Delivery for Lock Doors | 20d | 2026-12-12 | 2027-01-03 | MLTX-02-004-PR-12040 |  |  |  | 14d | 0d | Purchaser [150 h] | MOD-02-PR-8810 | MAK-01-PR-1130 | 0 | -38 | 0 | PL | Procu |  |
| MLTX-02-004-PR-12080 |  | Staging time | 5d | 2027-01-04 | 2027-01-09 | MLTX-02-004-PR-11700 |  |  |  | 14d | 100d | Purchaser [150 h] | MOD-02-PR-8810 | MAK-01-PR-1130 | 0 | -38 | 0 | PL | Procu |  |
|  | LSC | **LANDSCAPE WORKS** |  | 2026-06-18 | 2026-09-28 |  |  |  |  |  |  |  |  |  |  |  |  |  |  |  |
|  | 4 | **LIGHT POLES** |  | 2026-06-18 | 2026-09-28 |  |  |  |  |  |  |  |  |  |  |  |  |  |  |  |
| MLTX-02-004-PR-11020 |  | PO for Lighting poles | 1d | 2026-06-18 A | 2026-06-18 A | MLTX-02-004-EN-13250 | 100% |  |  |  |  | Purchaser [150 h] | MOD-02-PR-9860 | MAK-01-PR-LLI-1120 | 0 | -12 | 0 | LS | Procu |  |
| MLTX-02-004-PR-11030 |  | Material Fabrication for Lighting poles | 25d | 2026-08-27 A | 2026-08-27 A | MLTX-02-004-PR-11020 | 100% | 2026-10-13 | 2026-11-10 |  |  | Purchaser [150 h] | MOD-02-PR-9870 | MAK-01-PR-LLI-1130 | 0 | -12 | 0 | LS | Procu |  |
| MLTX-02-004-PR-11040 |  | Material Delivery for Lighting poles | 20d | 2026-09-28 A | 2026-09-28 A | MLTX-02-004-PR-11030 | 100% | 2026-11-11 | 2026-12-03 |  |  | Purchaser [150 h] | MOD-02-PR-9880 | MAK-01-PR-LLI-1160 | 0 | -12 | 0 | LS | Procu |  |
| MLTX-02-004-PR-12090 |  | Staging time | 5d | 2026-09-28 A | 2026-09-28 A | MLTX-02-004-PR-11040 | 100% | 2026-12-05 | 2026-12-09 |  |  | Purchaser [150 h] | MOD-02-PR-9880 | MAK-01-PR-LLI-1160 | 0 | -12 | 0 | LS | Procu |  |
|  | T & C | **TESTING & COMMISSIONING** |  | 2026-12-15 | 2027-04-21 |  |  |  |  |  |  |  |  |  |  |  |  |  |  |  |
| MLTX-02-004-TC-11930 |  | Testing and Commissioning for MEP Works for Toilet/Service Building | 15d | 2026-12-15 | 2026-12-31 | MLTX-02-004-CN-14590, MLTX-02-004-CN-14650, MLTX-02-004-CN-14490, MLTX-02-004-CN-14140, MLTX-02-004-CN-14100, MLTX-02-004-CN-14140 FF |  |  |  | 11d | 27d | QA/QC Engineer [1420 h] | MOD-02-TC-11870 | T&C-1030 | 0 | -38 | 0 |  | Test | JAD |
| MLTX-02-004-TC-11940 |  | Testing and Commissioning for MEP Works for Landscape Works | 4d | 2027-02-02 | 2027-02-06 | MLTX-02-004-CN-13370, MLTX-02-004-CN-13470 FF |  |  |  | -16d | 0d | QA/QC Engineer [1432.8 h] | MOD-02-TC-11880 | T&C-1050 | 0 | -38 | 0 |  | Test | JAD |
| MLTX-02-004-TC-11920 |  | Testing and Commissioning for MEP Works for Playground Area | 8d | 2027-04-13 | 2027-04-21 | MLTX-02-004-CN-13770, MLTX-02-004-CN-14650, MLTX-02-004-CN-13850 |  |  |  | -80d | 0d | QA/QC Engineer [1420 h] | MOD-02-TC-11860 | T&C-1020 | 0 | -38 | 0 |  | Test | JAD |

| ID | WBS | Activity | Duration | Start | Finish | Predecessors | Complete | Resources | New Activity ID | Old Activity ID - MK | % Variance | Delay | On Schedule | Moblization | WBS-Project | Flag |
| --- | --- | --- | --- | --- | --- | --- | --- | --- | --- | --- | --- | --- | --- | --- | --- | --- |
|  | 1 | **ASIR** |  | 2026-03-26 | 2027-02-23 |  |  |  |  |  |  |  |  |  |  |  |
|  | MOB | **MOBILIZATION** |  | 2026-03-26 | 2026-06-10 |  |  |  |  |  |  |  |  |  |  |  |
|  | SURV | **TOPOGRAPHIC SURVEY** |  | 2026-03-26 | 2026-03-30 |  |  |  |  |  |  |  |  |  |  |  |
| MLTX-02-004-MB-1320 |  | Site Survey Works | 4d | 2026-03-26 A | 2026-03-30 A | MLTX-02-004-MS-1010 SS | 100% | QA/QC Engineer [140 h] | MOD-02-MB-1320 | MAK-01-TPS-1000 | 0 | 0 | 0 | AS | Mob |  |
|  | OFFICE | **SITE FACILITIES & OFFICES** |  | 2026-03-26 | 2026-05-23 |  |  |  |  |  |  |  |  |  |  |  |
| MLTX-02-004-MB-1340 |  | Site Layout Plan | 4d | 2026-03-26 A | 2026-03-30 A | MLTX-02-004-MS-1010 SS | 100% | Labor [230 h] | MOD-02-MB-1340 | MAK-01-MOB-1000 | 0 | 0 | 0 | AS | Mob |  |
| MLTX-02-004-MB-1350 |  | Clear & Grub for Offices & Access Road | 3d | 2026-03-31 A | 2026-04-02 A | MLTX-02-004-MB-1340 | 100% | Labor [200 h] | MOD-02-MB-1350 | MAK-01-MOB-1010 | 0 | 0 | 0 | AS | Mob |  |
| MLTX-02-004-MB-1360 |  | Construct Site Access Roads | 4d | 2026-03-31 A | 2026-04-04 A | MLTX-02-004-MB-1340 | 100% | Labor [200 h] | MOD-02-MB-1360 | MAK-01-MOB-1020 | 0 | 0 | 0 | AS | Mob |  |
| MLTX-02-004-MB-1400 |  | Install Site Facilities | 23.55d | 2026-04-12 A | 2026-05-09 A | MLTX-02-004-MB-1370 | 100% | Labor [300 h] | MOD-02-MB-1400 | MAK-01-MOB-1060 | 0 | -19.55 | 0 | AS | Mob |  |
| MLTX-02-004-MB-1410 |  | Electrical Works & Connections | 26.95d | 2026-04-12 A | 2026-05-12 A | MLTX-02-004-MB-1370 | 100% | Labor [300 h] | MOD-02-MB-1410 | MAK-01-MOB-1070 | 0 | -20.95 | 0 | AS | Mob |  |
| MLTX-02-004-MB-1420 |  | Construct Parking Sheds | 26.75d | 2026-04-12 A | 2026-05-12 A | MLTX-02-004-MB-1370 | 100% | Labor [300 h] | MOD-02-MB-1420 | MAK-01-MOB-1080 | 0 | -20.75 | 0 | AS | Mob |  |
| MLTX-02-004-MB-1430 |  | Equipment Mobalization | 24.4d | 2026-04-14 A | 2026-05-12 A | MLTX-02-004-MB-1390 | 100% | Labor [282.8 h] | MOD-02-MB-1430 | MAK-01-MOB-1100 | 0 | -16.4 | 0 | AS | Mob |  |
| MLTX-02-004-MB-1370 |  | Construct Temporary Fence | 31.75d | 2026-04-15 A | 2026-05-21 A | MLTX-02-004-MB-1350 | 100% | Labor [200 h] | MOD-02-MB-1370 | MAK-01-MOB-1030 | -25 | -29.75 | -25 | AS | Mob | UDF_G1 |
| MLTX-02-004-MB-1440 |  | Manpower Mobalization | 31.7d | 2026-04-16 A | 2026-05-23 A | MLTX-02-004-MB-1400 | 100% | Labor [250 h] | MOD-02-MB-1440 | MAK-01-MOB-1090 | -10 | -17.7 | -10 | AS | Mob | UDF_G1 |
| MLTX-02-004-MB-1380 |  | Construct Site Offices & Storage | 18.8d | 2026-04-20 A | 2026-05-11 A | MLTX-02-004-MB-1360 | 100% | Labor [200 h] | MOD-02-MB-1380 | MAK-01-MOB-1040 | 0 | -17.8 | 0 | AS | Mob |  |
| MLTX-02-004-MB-1390 |  | Install Project Signs | 3d | 2026-04-21 A | 2026-04-23 A | MLTX-02-004-MB-1360 | 100% | Labor [200 h] | MOD-02-MB-1390 | MAK-01-MOB-1050 | 0 | -9 | 0 | AS | Mob |  |
|  | PRELI | **PRELIMINARY SUBMITTALS** |  | 2026-03-31 | 2026-06-10 |  |  |  |  |  |  |  |  |  |  |  |
|  | P&S | **PREPARATIONS & SUBMITTAL BY CONTRACTORS** |  | 2026-03-31 | 2026-04-30 |  |  |  |  |  |  |  |  |  |  |  |
| MLTX-02-004-MB-1540 |  | Preparation and Submittal of Detailed Work Order Programme (Baseline) | 25d | 2026-03-31 A | 2026-04-28 A | MLTX-02-004-MB-1340 | 100% | QA/QC Engineer [150 h] | MOD-02-MB-1540 | MAK-01-PS-1070 | 0 | -13 | 0 | AS | Mob |  |
| MLTX-02-004-MB-1550 |  | Preparation and Submittal of Project Execution Plan | 27d | 2026-03-31 A | 2026-04-30 A | MLTX-02-004-MB-1340 | 100% | QA/QC Engineer [120 h] | MOD-02-MB-1550 | MAK-01-PS-1080 | 0 | -19 | 0 | AS | Mob |  |
| MLTX-02-004-MB-1560 |  | Submission of Contractor Project Quality Plan | 10d | 2026-03-31 A | 2026-04-11 A | MLTX-02-004-MB-1340 | 100% | QA/QC Engineer [120 h] | MOD-02-MB-1560 | MAK-01-PS-1090 | 0 | -2 | 0 | AS | Mob |  |
| MLTX-02-004-MB-1570 |  | Submission of Construction Safety & Environmental Management Plan | 10d | 2026-03-31 A | 2026-04-11 A | MLTX-02-004-MB-1340 | 100% | QA/QC Engineer [120 h] | MOD-02-MB-1570 | MAK-01-PS-1100 | 0 | -2 | 0 | AS | Mob |  |
| MLTX-02-004-MB-1580 |  | Preparation and Submittal of Organization Chart | 8d | 2026-03-31 A | 2026-04-08 A | MLTX-02-004-MB-1340 | 100% | QA/QC Engineer [120 h] | MOD-02-MB-1580 | MAK-01-PS-1110 | 0 | 0 | 0 | AS | Mob |  |
| MLTX-02-004-MB-1590 |  | Preparation and Submittal of Communication Plan | 8d | 2026-03-31 A | 2026-04-08 A | MLTX-02-004-MB-1340 | 100% | QA/QC Engineer [120 h] | MOD-02-MB-1590 | MAK-01-PS-1120 | 0 | 0 | 0 | AS | Mob |  |

| ID | WBS | Activity | Duration | Start | Finish | Predecessors | Complete | Resources | New Activity ID | Old Activity ID - MK | % Variance | Delay | On Schedule | Moblization | WBS-Project | Flag | Shop Drawings | Engineering | New Activity Code |
| --- | --- | --- | --- | --- | --- | --- | --- | --- | --- | --- | --- | --- | --- | --- | --- | --- | --- | --- | --- |
|  | APP | **APPROVALS BY EMPLOYERS** |  | 2026-04-09 | 2026-06-10 |  |  |  |  |  |  |  |  |  |  |  |  |  |  |
| MLTX-02-004-MB-1700 |  | Approval of Contractor Project Quality Plan | 19d | 2026-04-09 A | 2026-04-30 A | MLTX-02-004-MB-1560 | 100% | Consultant Staff [120 h] | MOD-02-MB-1700 | MAK-01-PS-1220 | 0 | -9 | 0 | AS | Mob |  |  |  |  |
| MLTX-02-004-MB-1720 |  | Approval of Organization Chart | 18d | 2026-04-09 A | 2026-04-29 A | MLTX-02-004-MB-1580 | 100% | Consultant Staff [120 h] | MOD-02-MB-1720 | MAK-01-PS-1240 | 0 | -8 | 0 | AS | Mob |  |  |  |  |
| MLTX-02-004-MB-1730 |  | Approval of Communication Plan | 10d | 2026-04-09 A | 2026-04-20 A | MLTX-02-004-MB-1590 | 100% | Consultant Staff [120 h] | MOD-02-MB-1730 | MAK-01-PS-1250 | 0 | 0 | 0 | AS | Mob |  |  |  |  |
| MLTX-02-004-MB-1680 |  | Approval of Detailed Work Order Programme (Baseline) | 1d | 2026-04-29 A | 2026-04-29 A | MLTX-02-004-MB-1540 | 100% | Consultant Staff [120 h] | MOD-02-MB-1680 | MAK-01-PS-1200 | 0 | -4 | 0 | AS | Mob |  |  |  |  |
| MLTX-02-004-MB-1690 |  | Approval of Project Execution Plan | 1d | 2026-05-13 A | 2026-05-13 A | MLTX-02-004-MB-1550 | 100% | Consultant Staff [120 h] | MOD-02-MB-1690 | MAK-01-PS-1210 | 0 | -20 | 0 | AS | Mob |  |  |  |  |
| MLTX-02-004-MB-1710 |  | Approval of Construction Safety & Environmental Management Plan | 1d | 2026-06-10 A | 2026-06-10 A | MLTX-02-004-MB-1570 | 100% | Consultant Staff [120 h] | MOD-02-MB-1710 | MAK-01-PS-1230 | -100 | -30 | -100 | AS | Mob | UDF_G1 |  |  |  |
|  | ENGG | **ENGINEERING** |  | 2026-03-31 | 2026-12-05 |  |  |  |  |  |  |  |  |  |  |  |  |  |  |
|  | SD | **SHOP DRAWINGS** |  | 2026-03-31 | 2026-08-26 |  |  |  |  |  |  |  |  |  |  |  |  |  |  |
|  | SUB | **SHOP DRAWINGS SUBMISSION** |  | 2026-03-31 | 2026-08-25 |  |  |  |  |  |  |  |  |  |  |  |  |  |  |
|  | 2 | **SHOP DRAWING SUBMITTALS FOR EARTHING WORKS** |  | 2026-03-31 | 2026-06-09 |  |  |  |  |  |  |  |  |  |  |  |  |  |  |
| MLTX-02-004-EN-1790 |  | Shop DWG Submittal for Layout Plan | 16d | 2026-03-31 A | 2026-04-18 A | MLTX-02-004-MB-1320 | 100% | Draftsman [18 h] | MOD-02-EN-1790 | MAK-01-EN-1010 | 0 | -10 | 0 |  | Engi |  | ER | Eng-AS |  |
| MLTX-02-004-EN-1800 |  | Shop DWG Submittal for Setting Out | 44.2d | 2026-03-31 A | 2026-05-21 A | MLTX-02-004-MB-1320 | 100% | Draftsman [17.8 h] | MOD-02-EN-1800 | MAK-01-EN-1030 | -20 | -33.2 | -20 |  | Engi | UDF_G1 | ER | Eng-AS |  |
| MLTX-02-004-EN-1810 |  | Shop DWG Submittal for Grading Layout Plan | 25d | 2026-03-31 A | 2026-04-28 A | MLTX-02-004-EN-2910 | 100% | Draftsman [16.1 h] | MOD-02-EN-1810 | MAK-01-EN-1050 | 0 | -19 | 0 |  | Engi |  | ER | Eng-AS |  |
| MLTX-02-004-EN-1820 |  | Shop DWG Submittal for Curb Setting Out Points | 1d | 2026-05-21 A | 2026-05-21 A | MLTX-02-004-MB-1320 | 100% | Draftsman [16.1 h] | MOD-02-EN-1820 | MAK-01-EN-1060 | -100 | -38 | -100 |  | Engi | UDF_G1 | ER | Eng-AS |  |
| MLTX-02-004-EN-1840 |  | Shop DWG Submittal for Standards Details | 1d | 2026-05-21 A | 2026-05-21 A | MLTX-02-004-MB-1320 | 100% | Draftsman [16.1 h] | MOD-02-EN-1840 | MAK-01-EN-1080 | -100 | -38 | -100 |  | Engi | UDF_G1 | ER | Eng-AS |  |
| MLTX-02-004-EN-1830 |  | Shop DWG Submittal for Signing & Marking Layout Plan | 1d | 2026-06-09 A | 2026-06-09 A | MLTX-02-004-MB-1320 | 100% | Draftsman [16.1 h] | MOD-02-EN-1830 | MAK-01-EN-1070 | -100 | -38 | -100 |  | Engi | UDF_G1 | ER | Eng-AS |  |
|  | ROAD | **SHOP DRAWING SUBMITTALS FOR SERVICE/TOILET WORKS** |  | 2026-03-31 | 2026-08-25 |  |  |  |  |  |  |  |  |  |  |  |  |  |  |
|  | 2 | **ARCHITECTURE WORKS** |  | 2026-03-31 | 2026-04-13 |  |  |  |  |  |  |  |  |  |  |  |  |  |  |
| MLTX-02-004-EN-1870 |  | Shop DWG Submittal for Floor Plan | 12d | 2026-03-31 A | 2026-04-13 A | MLTX-02-004-EN-1790 SS, MLTX-02-004-EN-1800 SS | 100% | Draftsman [16.1 h] | MOD-02-EN-1870 |  | 0 | -5 | 0 |  | Engi |  | TO | Eng-AS | EN.MB.SD.AR.PR.1110 |
| MLTX-02-004-EN-1880 |  | Shop DWG Submittal for Elevations | 12d | 2026-03-31 A | 2026-04-13 A | MLTX-02-004-EN-1870 SS | 100% | Draftsman [16.1 h] | MOD-02-EN-1880 |  | 0 | -5 | 0 |  | Engi |  | TO | Eng-AS | EN.MB.SD.AR.PR.1140 |
| MLTX-02-004-EN-1890 |  | Shop DWG Submittal for Sections | 12d | 2026-03-31 A | 2026-04-13 A | MLTX-02-004-EN-1880 SS, MLTX-02-004-EN-1810 SS | 100% | Draftsman [16.1 h] | MOD-02-EN-1890 |  | 0 | -5 | 0 |  | Engi |  | TO | Eng-AS | EN.MB.SD.AR.PR.1150 |
| MLTX-02-004-EN-1900 |  | Shop DWG Submittal for Ceiling Plan | 12d | 2026-03-31 A | 2026-04-13 A | MLTX-02-004-EN-1890 SS | 100% | Draftsman [16.1 h] | MOD-02-EN-1900 |  | 0 | -5 | 0 |  | Engi |  | TO | Eng-AS | EN.MB.SD.AR.PR.1160 |
| MLTX-02-004-EN-1910 |  | Shop DWG Submittal for Finishes Plan | 12d | 2026-03-31 A | 2026-04-13 A | MLTX-02-004-EN-1900 SS | 100% | Draftsman [16.1 h] | MOD-02-EN-1910 |  | 0 | -5 | 0 |  | Engi |  | TO | Eng-AS | EN.MB.SD.AR.PR.1190 |
| MLTX-02-004-EN-1920 |  | Shop DWG Submittal for Toilet Details | 12d | 2026-03-31 A | 2026-04-13 A | MLTX-02-004-EN-1910 SS | 100% | Draftsman [16.1 h] | MOD-02-EN-1920 |  | 0 | -5 | 0 |  | Engi |  | TO | Eng-AS | EN.MB.SD.AR.PR.1210 |
| MLTX-02-004-EN-1930 |  | Shop DWG Submittal for Doors/Windows Schedule | 12d | 2026-03-31 A | 2026-04-13 A | MLTX-02-004-EN-1920 SS | 100% | Draftsman [16.1 h] | MOD-02-EN-1930 |  | 0 | -5 | 0 |  | Engi |  | TO | Eng-AS | EN.MB.SD.AR.PR.1220 |

| ID | WBS | Activity | Duration | Start | Finish | Predecessors | Complete | Planned start | Planned finish | Resources | New Activity Code | New Activity ID | % Variance | Delay | On Schedule | Shop Drawings | Engineering | WBS-Project | Flag |
| --- | --- | --- | --- | --- | --- | --- | --- | --- | --- | --- | --- | --- | --- | --- | --- | --- | --- | --- | --- |
|  | 1 | **STRUCTURE WORKS** |  | 2026-04-08 | 2026-04-30 |  |  |  |  |  |  |  |  |  |  |  |  |  |  |
| MLTX-02-004-EN-1950 |  | Shop DWG Submittal for Foundation Plan | 20d | 2026-04-08 A | 2026-04-30 A | MLTX-02-004-EN-1930 | 100% |  |  | Draftsman [16.1 h] | EN.MB.SD.CV.PR.1460 | MOD-02-EN-1950 | 0 | -14 | 0 | TO | Eng-AS | Engi |  |
| MLTX-02-004-EN-1960 |  | Shop DWG Submittal for Ground Floor Framing Plan | 20d | 2026-04-08 A | 2026-04-30 A | MLTX-02-004-EN-1950 SS | 100% |  |  | Draftsman [16.1 h] | EN.MB.SD.CV.PR.1480 | MOD-02-EN-1960 | 0 | -14 | 0 | TO | Eng-AS | Engi |  |
| MLTX-02-004-EN-1970 |  | Shop DWG Submittal for Sections/Details | 20d | 2026-04-08 A | 2026-04-30 A | MLTX-02-004-EN-1930 | 100% |  |  | Draftsman [16.1 h] | EN.MB.SD.CV.PR.1530 | MOD-02-EN-1970 | 0 | -14 | 0 | TO | Eng-AS | Engi |  |
|  | 3 | **MECHANCAL WORKS** |  | 2026-04-08 | 2026-05-21 |  |  |  |  |  |  |  |  |  |  |  |  |  |  |
| MLTX-02-004-EN-1990 |  | Shop DWG Submittal for HVAC Plan | 7d | 2026-04-08 A | 2026-04-15 A | MLTX-02-004-EN-1930 | 100% |  |  | Draftsman [16.1 h] | EN.MB.SD.MC.PR.1740 | MOD-02-EN-1990 | 0 | -1 | 0 | TO | Eng-AS | Engi |  |
| MLTX-02-004-EN-2000 |  | Shop DWG Submittal for Exhaust Air Plan | 20d | 2026-04-08 A | 2026-04-30 A | MLTX-02-004-EN-1930 | 100% |  |  | Draftsman [16.1 h] | EN.MB.SD.MC.PR.1750 | MOD-02-EN-2000 | 0 | -14 | 0 | TO | Eng-AS | Engi |  |
| MLTX-02-004-EN-2010 |  | Shop DWG Submittal for HVAC Equipment Schedule | 7d | 2026-04-08 A | 2026-04-15 A | MLTX-02-004-EN-1930 | 100% |  |  | Draftsman [16.1 h] | EN.MB.SD.MC.PR.1770 | MOD-02-EN-2010 | 0 | -1 | 0 | TO | Eng-AS | Engi |  |
| MLTX-02-004-EN-2020 |  | Shop DWG Submittal for Drainage Layout | 38d | 2026-04-08 A | 2026-05-21 A | MLTX-02-004-EN-1930 | 100% |  |  | Draftsman [16.1 h] | EN.MB.SD.MC.PR.1710 | MOD-02-EN-2020 | -100 | -31 | -100 | TO | Eng-AS | Engi | UDF_G1 |
| MLTX-02-004-EN-2030 |  | Shop DWG Submittal for Drainage Details | 20d | 2026-04-08 A | 2026-04-30 A | MLTX-02-004-EN-1930 | 100% |  |  | Draftsman [16.1 h] | EN.MB.SD.MC.PR.1720 | MOD-02-EN-2030 | 0 | -14 | 0 | TO | Eng-AS | Engi |  |
| MLTX-02-004-EN-2050 |  | Shop DWG Submittal for Diffusers Layout | 6d | 2026-04-08 A | 2026-04-14 A | MLTX-02-004-EN-1930 | 100% |  |  | Draftsman [16.1 h] | EN.MB.SD.MC.PR.1770 | MOD-02-EN-2050 | 0 | 0 | 0 | TO | Eng-AS | Engi |  |
| MLTX-02-004-EN-2060 |  | Shop DWG Submittal for Fire Fighting Layout | 6d | 2026-04-08 A | 2026-04-14 A | MLTX-02-004-EN-1930 | 100% |  |  | Draftsman [16.1 h] | EN.MB.SD.MC.PR.1780 | MOD-02-EN-2060 | 0 | 0 | 0 | TO | Eng-AS | Engi |  |
| MLTX-02-004-EN-2080 |  | Shop DWG Submittal for Water Supply Details | 6d | 2026-04-08 A | 2026-04-14 A | MLTX-02-004-EN-1930 | 100% |  |  | Draftsman [16.1 h] | EN.MB.SD.MC.PR.1800 | MOD-02-EN-2080 | 0 | 0 | 0 | TO | Eng-AS | Engi |  |
| MLTX-02-004-EN-2070 |  | Shop DWG Submittal for Water Supply Layout | 1d | 2026-05-06 A | 2026-05-06 A | MLTX-02-004-EN-1930 | 100% |  |  | Draftsman [16.1 h] | EN.MB.SD.MC.PR.1790 | MOD-02-EN-2070 | 0 | -19 | 0 | TO | Eng-AS | Engi |  |
| MLTX-02-004-EN-2040 |  | Shop DWG Submittal for Dut Routing Layout | 1d | 2026-05-21 A | 2026-05-21 A | MLTX-02-004-EN-1930 | 100% |  |  | Draftsman [16.1 h] | EN.MB.SD.MC.PR.1770 | MOD-02-EN-2040 | -100 | -31 | -100 | TO | Eng-AS | Engi | UDF_G1 |
|  | 4 | **ELECTRICAL WORKS** |  | 2026-04-08 | 2026-08-25 |  |  |  |  |  |  |  |  |  |  |  |  |  |  |
| MLTX-02-004-EN-2100 |  | Shop DWG Submittal for Lighting Layout | 10d | 2026-04-08 A | 2026-04-19 A | MLTX-02-004-EN-2920, MLTX-02-004-EN-1930 | 100% |  |  | Draftsman [16.1 h] | EN.MB.SD.EL.PR.1980 | MOD-02-EN-2100 | 0 | -4 | 0 | TO | Eng-AS | Engi |  |
| MLTX-02-004-EN-2140 |  | Shop DWG Submittal for Lighting Installation Details | 11d | 2026-04-08 A | 2026-04-20 A | MLTX-02-004-EN-2150 SS | 100% |  |  | Draftsman [16.1 h] | EN.MB.SD.EL.PR.2040 | MOD-02-EN-2140 | 0 | -5 | 0 | TO | Eng-AS | Engi |  |
| MLTX-02-004-EN-2190 |  | Shop DWG Submittal for Fire Alarm Installation Details | 11d | 2026-04-08 A | 2026-04-20 A | MLTX-02-004-EN-2210 SS | 100% |  |  | Draftsman [16.1 h] | EN.MB.SD.EL.PR.2090 | MOD-02-EN-2190 | 0 | -5 | 0 | TO | Eng-AS | Engi |  |
| MLTX-02-004-EN-2200 |  | Shop DWG Submittal for Fire Alarm Layout | 11d | 2026-04-08 A | 2026-04-20 A | MLTX-02-004-EN-2220 SS | 100% |  |  | Draftsman [16.1 h] | EN.MB.SD.EL.PR.2100 | MOD-02-EN-2200 | 0 | -5 | 0 | TO | Eng-AS | Engi |  |
| MLTX-02-004-EN-2210 |  | Shop DWG Submittal for Lightning Protection Details | 10d | 2026-04-08 A | 2026-04-19 A | MLTX-02-004-EN-2180 SS | 100% |  |  | Draftsman [16.1 h] | EN.MB.SD.EL.PR.2110 | MOD-02-EN-2210 | 0 | -4 | 0 | TO | Eng-AS | Engi |  |
| MLTX-02-004-EN-2220 |  | Shop DWG Submittal for Lightning Protection System Layout | 10d | 2026-04-08 A | 2026-04-19 A | MLTX-02-004-EN-2270 SS | 100% |  |  | Draftsman [16.1 h] | EN.MB.SD.EL.PR.2120 | MOD-02-EN-2220 | 0 | -4 | 0 | TO | Eng-AS | Engi |  |
| MLTX-02-004-EN-2230 |  | Shop DWG Submittal for Fire Alarm Riser Diagram | 11d | 2026-04-08 A | 2026-04-20 A | MLTX-02-004-EN-2200 SS | 100% |  |  | Draftsman [16.1 h] | EN.MB.SD.EL.PR.2130 | MOD-02-EN-2230 | 0 | -5 | 0 | TO | Eng-AS | Engi |  |
| MLTX-02-004-EN-2260 |  | Shop DWG Submittal for Telephone & Data Layout | 11d | 2026-04-08 A | 2026-04-20 A | MLTX-02-004-MS-1010 SS | 100% |  |  | Draftsman [16.1 h] | EN.MB.SD.EL.PR.2160 | MOD-02-EN-2260 | 0 | -5 | 0 | TO | Eng-AS | Engi |  |
| MLTX-02-004-EN-2290 |  | Shop DWG Submittal for Telephone & Data Riser Diagram | 11d | 2026-04-08 A | 2026-04-20 A | MLTX-02-004-EN-2260 SS, MLTX-02-004-EN-1930 | 100% |  |  | Draftsman [16.1 h] | EN.MB.SD.EL.PR.2190 | MOD-02-EN-2290 | 0 | -5 | 0 | TO | Eng-AS | Engi |  |
| MLTX-02-004-EN-2110 |  | Shop DWG Submittal for Power Layout | 1d | 2026-05-06 A | 2026-05-06 A | MLTX-02-004-EN-1930 | 100% |  |  | Draftsman [16.1 h] | EN.MB.SD.EL.PR.2000 | MOD-02-EN-2110 | 0 | -19 | 0 | TO | Eng-AS | Engi |  |
| MLTX-02-004-EN-2120 |  | Shop DWG Submittal for Power Single Line Diagram | 1d | 2026-05-06 A | 2026-05-06 A | MLTX-02-004-EN-1930 | 100% |  |  | Draftsman [16.1 h] | EN.MB.SD.EL.PR.2020 | MOD-02-EN-2120 | 0 | -19 | 0 | TO | Eng-AS | Engi |  |
| MLTX-02-004-EN-2130 |  | Shop DWG Submittal for Panel Board Schedules | 1d | 2026-05-06 A | 2026-05-06 A | MLTX-02-004-EN-1930 | 100% |  |  | Draftsman [16.1 h] | EN.MB.SD.EL.PR.2030 | MOD-02-EN-2130 | 0 | -19 | 0 | TO | Eng-AS | Engi |  |
| MLTX-02-004-EN-2150 |  | Shop DWG Submittal for Power Installation Details | 1d | 2026-05-06 A | 2026-05-06 A | MLTX-02-004-EN-2130 SS | 100% |  |  | Draftsman [16.1 h] | EN.MB.SD.EL.PR.2050 | MOD-02-EN-2150 | 0 | -19 | 0 | TO | Eng-AS | Engi |  |
| MLTX-02-004-EN-2160 |  | Shop DWG Submittal for Cable Tray Installation Details | 1d | 2026-05-06 A | 2026-05-06 A | MLTX-02-004-EN-2150 SS | 100% |  |  | Draftsman [16.1 h] | EN.MB.SD.EL.PR.2060 | MOD-02-EN-2160 | 0 | -19 | 0 | TO | Eng-AS | Engi |  |
| MLTX-02-004-EN-2170 |  | Shop DWG Submittal for Manhole & Ductbank Details | 1d | 2026-05-06 A | 2026-05-06 A | MLTX-02-004-EN-2160 SS | 100% |  |  | Draftsman [16.1 h] | EN.MB.SD.EL.PR.2070 | MOD-02-EN-2170 | 0 | -19 | 0 | TO | Eng-AS | Engi |  |
| MLTX-02-004-EN-2180 |  | Shop DWG Submittal for Grounding Details | 1d | 2026-05-06 A | 2026-05-06 A | MLTX-02-004-EN-2170 SS | 100% |  |  | Draftsman [16.1 h] | EN.MB.SD.EL.PR.2080 | MOD-02-EN-2180 | 0 | -19 | 0 | TO | Eng-AS | Engi |  |
| MLTX-02-004-EN-2270 |  | Shop DWG Submittal for Grounding Layout | 1d | 2026-05-07 A | 2026-05-07 A | MLTX-02-004-MS-1010 SS | 100% |  |  | Draftsman [16.1 h] | EN.MB.SD.EL.PR.2170 | MOD-02-EN-2270 | 0 | -20 | 0 | TO | Eng-AS | Engi |  |
| MLTX-02-004-EN-2240 |  | Shop DWG Submittal for CCTV Details | 6d | 2026-08-25 A | 2026-08-25 A | MLTX-02-004-EN-2190 | 100% | 2026-09-01 | 2026-09-07 | Draftsman [16.1 h] | EN.MB.SD.EL.PR.2140 | MOD-02-EN-2240 | -100 | -31 | -100 | TO | Eng-AS | Engi | UDF_G1 |
| MLTX-02-004-EN-2250 |  | Shop DWG Submittal for CCTV Layout | 6d | 2026-08-25 A | 2026-08-25 A | MLTX-02-004-EN-2230 | 100% | 2026-09-01 | 2026-09-07 | Draftsman [16.1 h] | EN.MB.SD.EL.PR.2150 | MOD-02-EN-2250 | -100 | -31 | -100 | TO | Eng-AS | Engi | UDF_G1 |
| MLTX-02-004-EN-2280 |  | Shop DWG Submittal for CCTV Riser Diagram | 6d | 2026-08-25 A | 2026-08-25 A | MLTX-02-004-EN-2250 | 100% | 2026-09-08 | 2026-09-14 | Draftsman [16.1 h] | EN.MB.SD.EL.PR.2180 | MOD-02-EN-2280 | -100 | -31 | -100 | TO | Eng-AS | Engi | UDF_G1 |

| ID | WBS | Activity | Duration | Start | Finish | Predecessors | Complete | Resources | New Activity Code | New Activity ID | % Variance | Delay | On Schedule | Shop Drawings | Engineering | WBS-Project | Flag |
| --- | --- | --- | --- | --- | --- | --- | --- | --- | --- | --- | --- | --- | --- | --- | --- | --- | --- |
|  | ELE | **SHOP DRAWINGS SUBMITTALS FOR PLAYGROUND WORKS** |  | 2026-03-31 | 2026-08-25 |  |  |  |  |  |  |  |  |  |  |  |  |
|  | 3 | **ARCHITECTURE WORKS** |  | 2026-03-31 | 2026-05-14 |  |  |  |  |  |  |  |  |  |  |  |  |
| MLTX-02-004-EN-2320 |  | Shop DWG Submittal for Playground Plan/Layout | 16d | 2026-03-31 A | 2026-04-18 A | MLTX-02-004-MB-1320 | 100% | Draftsman [16.1 h] | EN.MB.SD.AR.PR.1110 | MOD-02-EN-2320 | 0 | -9 | 0 | PL | Eng-AS | Engi |  |
| MLTX-02-004-EN-2340 |  | Shop DWG Submittal for Sections | 16d | 2026-03-31 A | 2026-04-18 A | MLTX-02-004-EN-2330 SS | 100% | Draftsman [16.1 h] | EN.MB.SD.AR.PR.1150 | MOD-02-EN-2340 | 0 | -9 | 0 | PL | Eng-AS | Engi |  |
| MLTX-02-004-EN-2330 |  | Shop DWG Submittal for Furniture & Marking | 2d | 2026-05-13 A | 2026-05-14 A | MLTX-02-004-EN-2320 SS | 100% | Draftsman [16.1 h] | EN.MB.SD.AR.PR.1140 | MOD-02-EN-2330 | 0 | -38 | 0 | PL | Eng-AS | Engi | UDF_G1 |
| MLTX-02-004-EN-2350 |  | Shop DWG Submittal for Interlock Pattern Plan | 2d | 2026-05-13 A | 2026-05-14 A | MLTX-02-004-EN-2340 SS | 100% | Draftsman [16.1 h] | EN.MB.SD.AR.PR.1190 | MOD-02-EN-2350 | 0 | -38 | 0 | PL | Eng-AS | Engi | UDF_G1 |
| MLTX-02-004-EN-2360 |  | Shop DWG Submittal for Doors/Windows Schedule | 2d | 2026-05-13 A | 2026-05-14 A | MLTX-02-004-EN-2350 SS | 100% | Draftsman [16.1 h] | EN.MB.SD.AR.PR.1220 | MOD-02-EN-2360 | 0 | -38 | 0 | PL | Eng-AS | Engi | UDF_G1 |
| MLTX-02-004-EN-2370 |  | Shop DWG Submittal for Dome Internal Layout | 2d | 2026-05-13 A | 2026-05-14 A | MLTX-02-004-EN-2360 SS | 100% | Draftsman [16.1 h] | EN.MB.SD.AR.PR.1110 | MOD-02-EN-2370 | 0 | -38 | 0 | PL | Eng-AS | Engi | UDF_G1 |
|  | 4 | **STRUCTURE WORKS** |  | 2026-05-13 | 2026-05-14 |  |  |  |  |  |  |  |  |  |  |  |  |
| MLTX-02-004-EN-2390 |  | Shop DWG Submittal for Air Dome System | 2d | 2026-05-13 A | 2026-05-14 A | MLTX-02-004-EN-2900, MLTX-02-004-EN-2930, MLTX-02-004-EN-2370 | 100% | Draftsman [16.1 h] | EN.MB.SD.AR.PR.1110 | MOD-02-EN-2390 | 0 | -38 | 0 | PL | Eng-AS | Engi | UDF_G1 |
| MLTX-02-004-EN-2400 |  | Shop DWG Submittal for Foundation of Air Dome | 2d | 2026-05-13 A | 2026-05-14 A | MLTX-02-004-EN-2940, MLTX-02-004-EN-2390 SS | 100% | Draftsman [16.1 h] | EN.MB.SD.AR.PR.1140 | MOD-02-EN-2400 | 0 | -38 | 0 | PL | Eng-AS | Engi | UDF_G1 |
| MLTX-02-004-EN-2420 |  | Shop DWG Submittal for Anchor Bolt Layout of Air Dome | 2d | 2026-05-13 A | 2026-05-14 A | MLTX-02-004-EN-2400 SS | 100% | Draftsman [16.1 h] | EN.MB.SD.AR.PR.1140 | MOD-02-EN-2420 | 0 | -38 | 0 | PL | Eng-AS | Engi | UDF_G1 |
|  | 5 | **AIR DOME SYSTEM** |  | 2026-05-13 | 2026-05-14 |  |  |  |  |  |  |  |  |  |  |  |  |
| MLTX-02-004-EN-2440 |  | Shop DWG Submittal for Air Dome Structural Layout | 2d | 2026-05-13 A | 2026-05-14 A | MLTX-02-004-EN-2420 SS | 100% | Draftsman [16.1 h] | EN.MB.SD.AR.PR.1110 | MOD-02-EN-2440 | 0 | -38 | 0 | PL | Eng-AS | Engi | UDF_G1 |
| MLTX-02-004-EN-2450 |  | Shop DWG Submittal for Membrane Panel Layout | 2d | 2026-05-13 A | 2026-05-14 A | MLTX-02-004-EN-2440 SS | 100% | Draftsman [16.1 h] | EN.MB.SD.AR.PR.1140 | MOD-02-EN-2450 | 0 | -38 | 0 | PL | Eng-AS | Engi | UDF_G1 |
| MLTX-02-004-EN-2460 |  | Shop DWG Submittal for Cable Tension Layout | 2d | 2026-05-13 A | 2026-05-14 A | MLTX-02-004-EN-2450 SS | 100% | Draftsman [16.1 h] | EN.MB.SD.AR.PR.1150 | MOD-02-EN-2460 | 0 | -38 | 0 | PL | Eng-AS | Engi | UDF_G1 |
| MLTX-02-004-EN-2470 |  | Shop DWG Submittal for Airlock Door Details | 2d | 2026-05-13 A | 2026-05-14 A | MLTX-02-004-EN-2460 SS | 100% | Draftsman [16.1 h] | EN.MB.SD.AR.PR.1140 | MOD-02-EN-2470 | 0 | -38 | 0 | PL | Eng-AS | Engi | UDF_G1 |
| MLTX-02-004-EN-2480 |  | Shop DWG Submittal for Emergency Exit Details | 2d | 2026-05-13 A | 2026-05-14 A | MLTX-02-004-EN-2470 SS | 100% | Draftsman [16.1 h] | EN.MB.SD.AR.PR.1140 | MOD-02-EN-2480 | 0 | -38 | 0 | PL | Eng-AS | Engi | UDF_G1 |
|  | 6 | **SPORTS EQUIPMENT** |  | 2026-05-13 | 2026-05-14 |  |  |  |  |  |  |  |  |  |  |  |  |
| MLTX-02-004-EN-2500 |  | Shop DWG Submittal for Football Turf Installation | 2d | 2026-05-13 A | 2026-05-14 A | MLTX-02-004-EN-2480 SS | 100% | Draftsman [16.1 h] | EN.MB.SD.EL.PR.2170 | MOD-02-EN-2500 | 0 | -38 | 0 | PL | Eng-AS | Engi | UDF_G1 |
| MLTX-02-004-EN-2510 |  | Shop DWG Submittal for Basketball Court Marking | 2d | 2026-05-13 A | 2026-05-14 A | MLTX-02-004-EN-2500 SS | 100% | Draftsman [16.1 h] | EN.MB.SD.EL.PR.2180 | MOD-02-EN-2510 | 0 | -38 | 0 | PL | Eng-AS | Engi | UDF_G1 |
| MLTX-02-004-EN-2520 |  | Shop DWG Submittal for Padel Court Structure | 2d | 2026-05-13 A | 2026-05-14 A | MLTX-02-004-EN-2510 SS | 100% | Draftsman [16.1 h] | EN.MB.SD.EL.PR.2160 | MOD-02-EN-2520 | 0 | -38 | 0 | PL | Eng-AS | Engi | UDF_G1 |
|  | 1 | **MECHANCAL WORKS** |  | 2026-04-08 | 2026-04-30 |  |  |  |  |  |  |  |  |  |  |  |  |
| MLTX-02-004-EN-2540 |  | Shop DWG Submittal for HVAC Plan | 20d | 2026-04-08 A | 2026-04-30 A | MLTX-02-004-EN-2520 SS | 100% | Draftsman [16.1 h] | EN.MB.SD.MC.PR.1740 | MOD-02-EN-2540 | 0 | -14 | 0 | PL | Eng-AS | Engi |  |
| MLTX-02-004-EN-2550 |  | Shop DWG Submittal for Exhaust Air Plan | 20d | 2026-04-08 A | 2026-04-30 A | MLTX-02-004-EN-2540 SS | 100% | Draftsman [16.1 h] | EN.MB.SD.MC.PR.1750 | MOD-02-EN-2550 | 0 | -14 | 0 | PL | Eng-AS | Engi |  |

| ID | WBS | Activity | Duration | Start | Finish | Predecessors | Complete | Planned start | Planned finish | Resources | New Activity Code | New Activity ID | % Variance | Delay | Flag | On Schedule | Shop Drawings | Engineering | WBS-Project | Old Activity ID - MK |
| --- | --- | --- | --- | --- | --- | --- | --- | --- | --- | --- | --- | --- | --- | --- | --- | --- | --- | --- | --- | --- |
|  | 2 | **ELECTRICAL WORKS** |  | 2026-05-23 | 2026-08-25 |  |  |  |  |  |  |  |  |  |  |  |  |  |  |  |
| MLTX-02-004-EN-2600 |  | Shop DWG Submittal for Fire Alarm Installation Details | 1d | 2026-05-23 A | 2026-05-23 A | MLTX-02-004-EN-2590 SS | 100% |  |  | Draftsman [16.1 h] | EN.MB.SD.EL.PR.2090 | MOD-02-EN-2600 | -100 | -31 | UDF_G1 | -100 | PL | Eng-AS | Engi |  |
| MLTX-02-004-EN-2610 |  | Shop DWG Submittal for Fire Alarm Layout | 1d | 2026-05-23 A | 2026-05-23 A | MLTX-02-004-EN-2600, MLTX-02-004-EN-2600 SS | 100% |  |  | Draftsman [16.1 h] | EN.MB.SD.EL.PR.2100 | MOD-02-EN-2610 | -100 | -31 | UDF_G1 | -100 | PL | Eng-AS | Engi |  |
| MLTX-02-004-EN-2640 |  | Shop DWG Submittal for Fire Alarm Riser Diagram | 1d | 2026-05-23 A | 2026-05-23 A | MLTX-02-004-EN-2600, MLTX-02-004-EN-2600 SS | 100% |  |  | Draftsman [16.1 h] | EN.MB.SD.EL.PR.2130 | MOD-02-EN-2640 | -100 | -31 | UDF_G1 | -100 | PL | Eng-AS | Engi |  |
| MLTX-02-004-EN-2570 |  | Shop DWG Submittal for Lighting Layout | 1d | 2026-05-25 A | 2026-05-25 A | MLTX-02-004-EN-2550 SS | 100% |  |  | Draftsman [16.1 h] | EN.MB.SD.EL.PR.1980 | MOD-02-EN-2570 | -100 | -31 | UDF_G1 | -100 | PL | Eng-AS | Engi |  |
| MLTX-02-004-EN-2580 |  | Shop DWG Submittal for Power Layout | 1d | 2026-07-01 A | 2026-07-01 A | MLTX-02-004-MS-1010 SS | 100% |  |  | Draftsman [16.1 h] | EN.MB.SD.EL.PR.2000 | MOD-02-EN-2580 | -100 | -31 | UDF_G1 | -100 | PL | Eng-AS | Engi |  |
| MLTX-02-004-EN-2590 |  | Shop DWG Submittal for Power Installation Details | 1d | 2026-07-01 A | 2026-07-01 A | MLTX-02-004-EN-2630 SS | 100% |  |  | Draftsman [16.1 h] | EN.MB.SD.EL.PR.2050 | MOD-02-EN-2590 | -100 | -31 | UDF_G1 | -100 | PL | Eng-AS | Engi |  |
| MLTX-02-004-EN-2620 |  | Shop DWG Submittal for Power Single Line Diagram | 1d | 2026-07-01 A | 2026-07-01 A | MLTX-02-004-MS-1010 SS | 100% |  |  | Draftsman [16.1 h] | EN.MB.SD.EL.PR.2020 | MOD-02-EN-2620 | -100 | -31 | UDF_G1 | -100 | PL | Eng-AS | Engi |  |
| MLTX-02-004-EN-2630 |  | Shop DWG Submittal for Panel Board Schedules | 1d | 2026-07-01 A | 2026-07-01 A | MLTX-02-004-EN-2620 SS | 100% |  |  | Draftsman [16.1 h] | EN.MB.SD.EL.PR.2030 | MOD-02-EN-2630 | -100 | -31 | UDF_G1 | -100 | PL | Eng-AS | Engi |  |
| MLTX-02-004-EN-2650 |  | Shop DWG Submittal for CCTV Details | 6d | 2026-08-25 A | 2026-08-25 A | MLTX-02-004-EN-2570 | 100% | 2026-09-01 | 2026-09-07 | Draftsman [16.1 h] | EN.MB.SD.EL.PR.2140 | MOD-02-EN-2650 | -100 | -31 | UDF_G1 | -100 | PL | Eng-AS | Engi |  |
| MLTX-02-004-EN-2660 |  | Shop DWG Submittal for CCTV Layout | 6d | 2026-08-25 A | 2026-08-25 A | MLTX-02-004-EN-2640 | 100% | 2026-09-01 | 2026-09-07 | Draftsman [16.1 h] | EN.MB.SD.EL.PR.2150 | MOD-02-EN-2660 | -100 | -31 | UDF_G1 | -100 | PL | Eng-AS | Engi |  |
| MLTX-02-004-EN-2670 |  | Shop DWG Submittal for CCTV Riser Diagram | 6d | 2026-08-25 A | 2026-08-25 A | MLTX-02-004-EN-2660 | 100% | 2026-09-08 | 2026-09-14 | Draftsman [16.1 h] | EN.MB.SD.EL.PR.2180 | MOD-02-EN-2670 | -100 | -31 | UDF_G1 | -100 | PL | Eng-AS | Engi |  |
|  | EAR | **SHOP DRAWINGS SUBMITTALS FOR LANDSCAPE WORKS** |  | 2026-03-31 | 2026-06-17 |  |  |  |  |  |  |  |  |  |  |  |  |  |  |  |
|  | 3 | **ARCHITECTURE WORKS** |  | 2026-03-31 | 2026-05-14 |  |  |  |  |  |  |  |  |  |  |  |  |  |  |  |
| MLTX-02-004-EN-2700 |  | Shop DWG Submittal for Landscape Layout | 6d | 2026-03-31 A | 2026-04-06 A | MLTX-02-004-MB-1320 | 100% |  |  | Draftsman [16.1 h] |  | MOD-02-EN-2700 | 0 | 0 |  | 0 | LS | Eng-AS | Engi | MAK-01-EN-1120 |
| MLTX-02-004-EN-2710 |  | Shop DWG Submittal for Hardscape Plan | 2d | 2026-05-13 A | 2026-05-14 A | MLTX-02-004-MB-1320 | 100% |  |  | Draftsman [16.1 h] |  | MOD-02-EN-2710 | 0 | -38 | UDF_G1 | 0 | LS | Eng-AS | Engi | MAK-01-EN-1130 |
| MLTX-02-004-EN-2720 |  | Shop DWG Submittal for Planting Plan | 2d | 2026-05-13 A | 2026-05-14 A | MLTX-02-004-EN-2730 | 100% |  |  | Draftsman [16.1 h] |  | MOD-02-EN-2720 | 0 | -38 | UDF_G1 | 0 | LS | Eng-AS | Engi | MAK-01-EN-1140 |
| MLTX-02-004-EN-2730 |  | Shop DWG Submittal for Landscape Details | 2d | 2026-05-13 A | 2026-05-14 A | MLTX-02-004-MB-1320 | 100% |  |  | Draftsman [16.1 h] |  | MOD-02-EN-2730 | 0 | -38 | UDF_G1 | 0 | LS | Eng-AS | Engi | MAK-01-EN-1150 |
|  | 1 | **MECHANCAL WORKS** |  | 2026-06-17 | 2026-06-17 |  |  |  |  |  |  |  |  |  |  |  |  |  |  |  |
| MLTX-02-004-EN-2770 |  | Shop DWG Submittal for Irrigation Details | 1d | 2026-06-17 A | 2026-06-17 A | MLTX-02-004-MB-1320 | 100% |  |  | Draftsman [16.1 h] |  | MOD-02-EN-2770 | -100 | -38 | UDF_G1 | -100 | LS | Eng-AS | Engi | MAK-01-EN-1140 |
| MLTX-02-004-EN-2810 |  | Shop DWG Submittal for Irrigation Layout | 1d | 2026-06-17 A | 2026-06-17 A | MLTX-02-004-MB-1320 | 100% |  |  | Draftsman [16.1 h] |  | MOD-02-EN-2810 | -100 | -38 | UDF_G1 | -100 | LS | Eng-AS | Engi | MAK-01-EN-1140 |
|  | 2 | **ELECTRICAL WORKS** |  | 2026-05-23 | 2026-05-23 |  |  |  |  |  |  |  |  |  |  |  |  |  |  |  |
| MLTX-02-004-EN-2840 |  | Shop DWG Submittal for Lighting Details | 1d | 2026-05-23 A | 2026-05-23 A | MLTX-02-004-MB-1320 | 100% |  |  | Draftsman [16.1 h] |  | MOD-02-EN-2840 | -100 | -38 | UDF_G1 | -100 | LS | Eng-AS | Engi | MAK-01-EN-1140 |
| MLTX-02-004-EN-2850 |  | Shop DWG Submittal for Lighting Single Line Diagram | 1d | 2026-05-23 A | 2026-05-23 A | MLTX-02-004-MB-1320 | 100% |  |  | Draftsman [16.1 h] |  | MOD-02-EN-2850 | -100 | -38 | UDF_G1 | -100 | LS | Eng-AS | Engi | MAK-01-EN-1150 |
| MLTX-02-004-EN-2860 |  | Shop DWG Submittal for Lighting General Arrangement | 1d | 2026-05-23 A | 2026-05-23 A | MLTX-02-004-MB-1320 | 100% |  |  | Draftsman [16.1 h] |  | MOD-02-EN-2860 | -100 | -38 | UDF_G1 | -100 | LS | Eng-AS | Engi | MAK-01-EN-1120 |
| MLTX-02-004-EN-2870 |  | Shop DWG Submittal for Lighting Network Layout | 1d | 2026-05-23 A | 2026-05-23 A | MLTX-02-004-MB-1320 | 100% |  |  | Draftsman [16.1 h] |  | MOD-02-EN-2870 | -100 | -38 | UDF_G1 | -100 | LS | Eng-AS | Engi | MAK-01-EN-1130 |

| ID | WBS | Activity | Duration | Start | Finish | Predecessors | Complete | Planned start | Planned finish | Resources | New Activity ID | Old Activity ID - MK | % Variance | Delay | On Schedule | Shop Drawings | Engineering | WBS-Project | Flag | New Activity Code |
| --- | --- | --- | --- | --- | --- | --- | --- | --- | --- | --- | --- | --- | --- | --- | --- | --- | --- | --- | --- | --- |
|  | APP | **SHOP DRAWINGS APPROVALS** |  | 2026-04-07 | 2026-08-26 |  |  |  |  |  |  |  |  |  |  |  |  |  |  |  |
|  | 2 | **SHOP DRAWING APPROVAL FOR EARTHING WORKS** |  | 2026-04-07 | 2026-06-09 |  |  |  |  |  |  |  |  |  |  |  |  |  |  |  |
| MLTX-02-004-EN-2920 |  | Shop DWG Approval for Grading Layout Plan | 20d | 2026-04-07 A | 2026-04-29 A | MLTX-02-004-EN-1810 | 100% |  |  | Draftsman [12.71 h]; Consultant Staff [3.39 h] | MOD-02-EN-2920 | MAK-01-EN-1050 | 0 | -10 | 0 | ER | Eng-AS | Engi |  |  |
| MLTX-02-004-EN-2900 |  | Shop DWG Approval for Layout Plan | 6d | 2026-04-18 A | 2026-04-24 A | MLTX-02-004-EN-1790 | 100% | 2026-04-18 | 2026-04-23 | Draftsman [12.71 h]; Consultant Staff [3.39 h] | MOD-02-EN-2900 | MAK-01-EN-1010 | 0 | -5 | 0 | ER | Eng-AS | Engi |  |  |
| MLTX-02-004-EN-2930 |  | Shop DWG Approval for Curb Setting Out Points | 1d | 2026-05-21 A | 2026-05-21 A | MLTX-02-004-EN-1820 | 100% |  |  | Draftsman [12.71 h]; Consultant Staff [3.39 h] | MOD-02-EN-2930 | MAK-01-EN-1060 | -100 | -38 | -100 | ER | Eng-AS | Engi | UDF_G1 |  |
| MLTX-02-004-EN-2950 |  | Shop DWG Approval for Standards Details | 1d | 2026-05-21 A | 2026-05-21 A | MLTX-02-004-EN-1840 | 100% |  |  | Draftsman [12.71 h]; Consultant Staff [3.39 h] | MOD-02-EN-2950 | MAK-01-EN-1080 | -100 | -38 | -100 | ER | Eng-AS | Engi | UDF_G1 |  |
| MLTX-02-004-EN-2910 |  | Shop DWG Approval for Setting Out | 0d | 2026-05-21 A | 2026-05-21 A | MLTX-02-004-EN-1800 | 100% |  |  | Draftsman; Consultant Staff | MOD-02-EN-2910 | MAK-01-EN-1030 | -100 | -33.2 | -100 | ER | Eng-AS | Engi | UDF_G1 |  |
| MLTX-02-004-EN-2940 |  | Shop DWG Approval for Signing & Marking Layout Plan | 1d | 2026-06-09 A | 2026-06-09 A | MLTX-02-004-EN-1830 | 100% |  |  | Draftsman [12.71 h]; Consultant Staff [3.39 h] | MOD-02-EN-2940 | MAK-01-EN-1070 | -100 | -38 | -100 | ER | Eng-AS | Engi | UDF_G1 |  |
|  | ROAD | **SHOP DRAWING APPROVAL FOR SERVICE/TOILET WORKS** |  | 2026-04-14 | 2026-08-12 |  |  |  |  |  |  |  |  |  |  |  |  |  |  |  |
|  | 2 | **ARCHITECTURE WORKS** |  | 2026-04-14 | 2026-04-24 |  |  |  |  |  |  |  |  |  |  |  |  |  |  |  |
| MLTX-02-004-EN-2980 |  | Shop DWG Approval for Floor Plan | 9d | 2026-04-14 A | 2026-04-24 A | MLTX-02-004-EN-1870 | 100% | 2026-04-14 | 2026-04-23 | Draftsman [12.71 h]; Consultant Staff [3.39 h] | MOD-02-EN-2980 |  | 0 | -4 | 0 | TO | Eng-AS | Engi |  | EN.MB.SD.AR.PR.1110 |
| MLTX-02-004-EN-2990 |  | Shop DWG Approval for Elevations | 9d | 2026-04-14 A | 2026-04-24 A | MLTX-02-004-EN-1880 | 100% | 2026-04-14 | 2026-04-23 | Draftsman [12.71 h]; Consultant Staff [3.39 h] | MOD-02-EN-2990 |  | 0 | -4 | 0 | TO | Eng-AS | Engi |  | EN.MB.SD.AR.PR.1140 |
| MLTX-02-004-EN-3000 |  | Shop DWG Approval for Sections | 9d | 2026-04-14 A | 2026-04-24 A | MLTX-02-004-EN-1890 | 100% | 2026-04-14 | 2026-04-23 | Draftsman [12.71 h]; Consultant Staff [3.39 h] | MOD-02-EN-3000 |  | 0 | -4 | 0 | TO | Eng-AS | Engi |  | EN.MB.SD.AR.PR.1150 |
| MLTX-02-004-EN-3010 |  | Shop DWG Approval for Ceiling Plan | 9d | 2026-04-14 A | 2026-04-24 A | MLTX-02-004-EN-2610, MLTX-02-004-EN-1900 | 100% | 2026-04-14 | 2026-04-23 | Draftsman [12.71 h]; Consultant Staff [3.39 h] | MOD-02-EN-3010 |  | 0 | -4 | 0 | TO | Eng-AS | Engi |  | EN.MB.SD.AR.PR.1160 |
| MLTX-02-004-EN-3020 |  | Shop DWG Approval for Finishes Plan | 9d | 2026-04-14 A | 2026-04-24 A | MLTX-02-004-EN-1910 | 100% | 2026-04-14 | 2026-04-23 | Draftsman [12.71 h]; Consultant Staff [3.39 h] | MOD-02-EN-3020 |  | 0 | -4 | 0 | TO | Eng-AS | Engi |  | EN.MB.SD.AR.PR.1190 |
| MLTX-02-004-EN-3030 |  | Shop DWG Approval for Toilet Details | 9d | 2026-04-14 A | 2026-04-24 A | MLTX-02-004-EN-1920 | 100% | 2026-04-14 | 2026-04-23 | Draftsman [12.71 h]; Consultant Staff [3.39 h] | MOD-02-EN-3030 |  | 0 | -4 | 0 | TO | Eng-AS | Engi |  | EN.MB.SD.AR.PR.1210 |
| MLTX-02-004-EN-3040 |  | Shop DWG Approval for Doors/Windows Schedule | 9d | 2026-04-14 A | 2026-04-24 A | MLTX-02-004-EN-1930 | 100% | 2026-04-14 | 2026-04-23 | Draftsman [12.71 h]; Consultant Staff [3.39 h] | MOD-02-EN-3040 |  | 0 | -4 | 0 | TO | Eng-AS | Engi |  | EN.MB.SD.AR.PR.1220 |
|  | 1 | **STRUCTURE WORKS** |  | 2026-05-13 | 2026-05-14 |  |  |  |  |  |  |  |  |  |  |  |  |  |  |  |
| MLTX-02-004-EN-3060 |  | Shop DWG Approval for Foundation Plan | 2d | 2026-05-13 A | 2026-05-14 A | MLTX-02-004-EN-1950 | 100% |  |  | Draftsman [12.71 h]; Consultant Staff [3.39 h] | MOD-02-EN-3060 |  | 0 | -25 | 0 | TO | Eng-AS | Engi | UDF_G1 | EN.MB.SD.CV.PR.1460 |
| MLTX-02-004-EN-3070 |  | Shop DWG Approval for Ground Floor Framing Plan | 2d | 2026-05-13 A | 2026-05-14 A | MLTX-02-004-EN-1960 | 100% |  |  | Draftsman [12.71 h]; Consultant Staff [3.39 h] | MOD-02-EN-3070 |  | 0 | -25 | 0 | TO | Eng-AS | Engi | UDF_G1 | EN.MB.SD.CV.PR.1480 |
| MLTX-02-004-EN-3080 |  | Shop DWG Approval for Sections/Details | 2d | 2026-05-13 A | 2026-05-14 A | MLTX-02-004-EN-1970 | 100% |  |  | Draftsman [12.71 h]; Consultant Staff [3.39 h] | MOD-02-EN-3080 |  | 0 | -25 | 0 | TO | Eng-AS | Engi | UDF_G1 | EN.MB.SD.CV.PR.1530 |
|  | 3 | **MECHANCAL WORKS** |  | 2026-05-07 | 2026-05-21 |  |  |  |  |  |  |  |  |  |  |  |  |  |  |  |
| MLTX-02-004-EN-3100 |  | Shop DWG Approval for HVAC Plan | 1d | 2026-05-07 A | 2026-05-07 A | MLTX-02-004-EN-1990 | 100% |  |  | Draftsman [12.71 h]; Consultant Staff [3.39 h] | MOD-02-EN-3100 |  | 0 | -10 | 0 | TO | Eng-AS | Engi |  | EN.MB.SD.MC.PR.1740 |
| MLTX-02-004-EN-3110 |  | Shop DWG Approval for Exhaust Air Plan | 1d | 2026-05-07 A | 2026-05-07 A | MLTX-02-004-EN-2000 | 100% |  |  | Draftsman [12.71 h]; Consultant Staff [3.39 h] | MOD-02-EN-3110 |  | 0 | -10 | 0 | TO | Eng-AS | Engi |  | EN.MB.SD.MC.PR.1750 |
| MLTX-02-004-EN-3120 |  | Shop DWG Approval for HVAC Equipment Schedule | 4d | 2026-05-07 A | 2026-05-11 A | MLTX-02-004-EN-2010 | 100% |  |  | Draftsman [12.71 h]; Consultant Staff [3.39 h] | MOD-02-EN-3120 |  | 0 | -13 | 0 | TO | Eng-AS | Engi |  | EN.MB.SD.MC.PR.1770 |
| MLTX-02-004-EN-3130 |  | Shop DWG Approval for Drainage Layout | 1d | 2026-05-07 A | 2026-05-07 A | MLTX-02-004-EN-2020 | 100% |  |  | Draftsman [12.71 h]; Consultant Staff [3.39 h] | MOD-02-EN-3130 |  | 0 | -10 | 0 | TO | Eng-AS | Engi |  | EN.MB.SD.MC.PR.1710 |
| MLTX-02-004-EN-3150 |  | Shop DWG Approval for Duct Routing Layout | 1d | 2026-05-07 A | 2026-05-07 A | MLTX-02-004-EN-2040 | 100% |  |  | Draftsman [12.71 h]; Consultant Staff [3.39 h] | MOD-02-EN-3150 |  | 0 | -10 | 0 | TO | Eng-AS | Engi |  | EN.MB.SD.MC.PR.1770 |
| MLTX-02-004-EN-3170 |  | Shop DWG Approval for Fire Fighting Layout | 1d | 2026-05-07 A | 2026-05-07 A | MLTX-02-004-EN-2060 | 100% |  |  | Draftsman [12.71 h]; Consultant Staff [3.39 h] | MOD-02-EN-3170 |  | 0 | -10 | 0 | TO | Eng-AS | Engi |  | EN.MB.SD.MC.PR.1780 |
| MLTX-02-004-EN-3180 |  | Shop DWG Approval for Water Supply Layout | 1d | 2026-05-07 A | 2026-05-07 A | MLTX-02-004-EN-2070 | 100% |  |  | Draftsman [12.71 h]; Consultant Staff [3.39 h] | MOD-02-EN-3180 |  | 0 | -10 | 0 | TO | Eng-AS | Engi |  | EN.MB.SD.MC.PR.1790 |
| MLTX-02-004-EN-3190 |  | Shop DWG Approval for Water Supply Details | 1d | 2026-05-07 A | 2026-05-07 A | MLTX-02-004-EN-2080 | 100% |  |  | Draftsman [12.71 h]; Consultant Staff [3.39 h] | MOD-02-EN-3190 |  | 0 | -10 | 0 | TO | Eng-AS | Engi |  | EN.MB.SD.MC.PR.1800 |
| MLTX-02-004-EN-3140 |  | Shop DWG Approval for Drainage Details | 1d | 2026-05-21 A | 2026-05-21 A | MLTX-02-004-EN-2030 | 100% |  |  | Draftsman [12.71 h]; Consultant Staff [3.39 h] | MOD-02-EN-3140 |  | -100 | -25 | -100 | TO | Eng-AS | Engi | UDF_G1 | EN.MB.SD.MC.PR.1720 |
| MLTX-02-004-EN-3160 |  | Shop DWG Approval for Diffusers Layout | 1d | 2026-05-21 A | 2026-05-21 A | MLTX-02-004-EN-2050 | 100% |  |  | Draftsman [12.71 h]; Consultant Staff [3.39 h] | MOD-02-EN-3160 |  | -100 | -25 | -100 | TO | Eng-AS | Engi | UDF_G1 | EN.MB.SD.MC.PR.1770 |

| ID | WBS | Activity | Duration | Start | Finish | Predecessors | Complete | Planned start | Planned finish | Resources | New Activity Code | New Activity ID | % Variance | Delay | On Schedule | Shop Drawings | Engineering | WBS-Project | Flag |
| --- | --- | --- | --- | --- | --- | --- | --- | --- | --- | --- | --- | --- | --- | --- | --- | --- | --- | --- | --- |
|  | 4 | **ELECTRICAL WORKS** |  | 2026-04-15 | 2026-08-12 |  |  |  |  |  |  |  |  |  |  |  |  |  |  |
| MLTX-02-004-EN-3210 |  | Shop DWG Approval for Lighting Layout | 10d | 2026-04-15 A | 2026-04-26 A | MLTX-02-004-EN-2100 | 100% |  |  | Draftsman [12.71 h]; Consultant Staff [3.39 h] | EN.MB.SD.EL.PR.1980 | MOD-02-EN-3210 | 0 | 0 | 0 | TO | Eng-AS | Engi |  |
| MLTX-02-004-EN-3220 |  | Shop DWG Approval for Power Layout | 10d | 2026-04-15 A | 2026-04-26 A | MLTX-02-004-EN-2110 | 100% |  |  | Draftsman [12.71 h]; Consultant Staff [3.39 h] | EN.MB.SD.EL.PR.2000 | MOD-02-EN-3220 | 0 | 0 | 0 | TO | Eng-AS | Engi |  |
| MLTX-02-004-EN-3250 |  | Shop DWG Approval for Lighting Installation Details | 10d | 2026-04-15 A | 2026-04-26 A | MLTX-02-004-EN-2140 | 100% |  |  | Draftsman [12.71 h]; Consultant Staff [3.39 h] | EN.MB.SD.EL.PR.2040 | MOD-02-EN-3250 | 0 | 0 | 0 | TO | Eng-AS | Engi |  |
| MLTX-02-004-EN-3260 |  | Shop DWG Approval for Power Installation Details | 10d | 2026-04-15 A | 2026-04-26 A | MLTX-02-004-EN-2150 | 100% |  |  | Draftsman [12.71 h]; Consultant Staff [3.39 h] | EN.MB.SD.EL.PR.2050 | MOD-02-EN-3260 | 0 | 0 | 0 | TO | Eng-AS | Engi |  |
| MLTX-02-004-EN-3320 |  | Shop DWG Approval for Lightning Protection Details | 10d | 2026-04-15 A | 2026-04-26 A | MLTX-02-004-EN-2210 | 100% |  |  | Draftsman [12.71 h]; Consultant Staff [3.39 h] | EN.MB.SD.EL.PR.2110 | MOD-02-EN-3320 | 0 | 0 | 0 | TO | Eng-AS | Engi |  |
| MLTX-02-004-EN-3330 |  | Shop DWG Approval for Lightning Protection System Layout | 10d | 2026-04-15 A | 2026-04-26 A | MLTX-02-004-EN-2220 | 100% |  |  | Draftsman [12.71 h]; Consultant Staff [3.39 h] | EN.MB.SD.EL.PR.2120 | MOD-02-EN-3330 | 0 | 0 | 0 | TO | Eng-AS | Engi |  |
| MLTX-02-004-EN-3300 |  | Shop DWG Approval for Fire Alarm Installation Details | 6d | 2026-04-21 A | 2026-04-27 A | MLTX-02-004-EN-2190 | 100% |  |  | Draftsman [12.71 h]; Consultant Staff [3.39 h] | EN.MB.SD.EL.PR.2090 | MOD-02-EN-3300 | 0 | -1 | 0 | TO | Eng-AS | Engi |  |
| MLTX-02-004-EN-3310 |  | Shop DWG Approval for Fire Alarm Layout | 6d | 2026-04-21 A | 2026-04-27 A | MLTX-02-004-EN-2200 | 100% |  |  | Draftsman [12.71 h]; Consultant Staff [3.39 h] | EN.MB.SD.EL.PR.2100 | MOD-02-EN-3310 | 0 | -1 | 0 | TO | Eng-AS | Engi |  |
| MLTX-02-004-EN-3340 |  | Shop DWG Approval for Fire Alarm Riser Diagram | 6d | 2026-04-21 A | 2026-04-27 A | MLTX-02-004-EN-2230 | 100% |  |  | Draftsman [12.71 h]; Consultant Staff [3.39 h] | EN.MB.SD.EL.PR.2130 | MOD-02-EN-3340 | 0 | -1 | 0 | TO | Eng-AS | Engi |  |
| MLTX-02-004-EN-3370 |  | Shop DWG Approval for Telephone & Data Layout | 6d | 2026-04-21 A | 2026-04-27 A | MLTX-02-004-EN-2260 | 100% |  |  | Draftsman [12.71 h]; Consultant Staff [3.39 h] | EN.MB.SD.EL.PR.2160 | MOD-02-EN-3370 | 0 | -1 | 0 | TO | Eng-AS | Engi |  |
| MLTX-02-004-EN-3400 |  | Shop DWG Approval for Telephone & Data Riser Diagram | 6d | 2026-04-21 A | 2026-04-27 A | MLTX-02-004-EN-2290 | 100% |  |  | Draftsman [12.71 h]; Consultant Staff [3.39 h] | EN.MB.SD.EL.PR.2190 | MOD-02-EN-3400 | 0 | -1 | 0 | TO | Eng-AS | Engi |  |
| MLTX-02-004-EN-3230 |  | Shop DWG Approval for Power Single Line Diagram | 1d | 2026-05-23 A | 2026-05-23 A | MLTX-02-004-EN-2120 | 100% |  |  | Draftsman [12.71 h]; Consultant Staff [3.39 h] | EN.MB.SD.EL.PR.2020 | MOD-02-EN-3230 | -100 | -25 | -100 | TO | Eng-AS | Engi | UDF_G1 |
| MLTX-02-004-EN-3240 |  | Shop DWG Approval for Panel Board Schedules | 1d | 2026-05-23 A | 2026-05-23 A | MLTX-02-004-EN-2130 | 100% |  |  | Draftsman [12.71 h]; Consultant Staff [3.39 h] | EN.MB.SD.EL.PR.2030 | MOD-02-EN-3240 | -100 | -25 | -100 | TO | Eng-AS | Engi | UDF_G1 |
| MLTX-02-004-EN-3270 |  | Shop DWG Approval for Cable Tray Installation Details | 1d | 2026-05-23 A | 2026-05-23 A | MLTX-02-004-EN-2160 | 100% |  |  | Draftsman [12.71 h]; Consultant Staff [3.39 h] | EN.MB.SD.EL.PR.2060 | MOD-02-EN-3270 | -100 | -25 | -100 | TO | Eng-AS | Engi | UDF_G1 |
| MLTX-02-004-EN-3280 |  | Shop DWG Approval for Manhole & Ductbank Details | 1d | 2026-05-23 A | 2026-05-23 A | MLTX-02-004-EN-2170 | 100% |  |  | Draftsman [12.71 h]; Consultant Staff [3.39 h] | EN.MB.SD.EL.PR.2070 | MOD-02-EN-3280 | -100 | -25 | -100 | TO | Eng-AS | Engi | UDF_G1 |
| MLTX-02-004-EN-3290 |  | Shop DWG Approval for Grounding Details | 1d | 2026-05-23 A | 2026-05-23 A | MLTX-02-004-EN-2180 | 100% |  |  | Draftsman [12.71 h]; Consultant Staff [3.39 h] | EN.MB.SD.EL.PR.2080 | MOD-02-EN-3290 | -100 | -25 | -100 | TO | Eng-AS | Engi | UDF_G1 |
| MLTX-02-004-EN-3380 |  | Shop DWG Approval for Grounding Layout | 1d | 2026-05-23 A | 2026-05-23 A | MLTX-02-004-EN-2270 | 100% |  |  | Draftsman [12.71 h]; Consultant Staff [3.39 h] | EN.MB.SD.EL.PR.2170 | MOD-02-EN-3380 | -100 | -25 | -100 | TO | Eng-AS | Engi | UDF_G1 |
| MLTX-02-004-EN-3350 |  | Shop DWG Approval for CCTV Details | 6d | 2026-08-12 A | 2026-08-12 A | MLTX-02-004-EN-3380 | 100% | 2026-08-18 | 2026-08-24 | Draftsman [12.71 h]; Consultant Staff [3.39 h] | EN.MB.SD.EL.PR.2140 | MOD-02-EN-3350 | -100 | -31 | -100 | TO | Eng-AS | Engi | UDF_G1 |
| MLTX-02-004-EN-3360 |  | Shop DWG Approval for CCTV Layout | 6d | 2026-08-12 A | 2026-08-12 A | MLTX-02-004-EN-3380 | 100% | 2026-08-18 | 2026-08-24 | Draftsman [12.71 h]; Consultant Staff [3.39 h] | EN.MB.SD.EL.PR.2150 | MOD-02-EN-3360 | -100 | -31 | -100 | TO | Eng-AS | Engi | UDF_G1 |
| MLTX-02-004-EN-3390 |  | Shop DWG Approval for CCTV Riser Diagram | 6d | 2026-08-12 A | 2026-08-12 A | MLTX-02-004-EN-3380 | 100% | 2026-08-18 | 2026-08-24 | Draftsman [12.71 h]; Consultant Staff [3.39 h] | EN.MB.SD.EL.PR.2180 | MOD-02-EN-3390 | -100 | -31 | -100 | TO | Eng-AS | Engi | UDF_G1 |
|  | ELE | **SHOP DRAWINGS APPROVAL FOR PLAYGROUND WORKS** |  | 2026-04-15 | 2026-08-26 |  |  |  |  |  |  |  |  |  |  |  |  |  |  |
|  | 3 | **ARCHITECTURE WORKS** |  | 2026-04-19 | 2026-06-13 |  |  |  |  |  |  |  |  |  |  |  |  |  |  |
| MLTX-02-004-EN-3430 |  | Shop DWG Approval for Playground Plan/Layout | 5d | 2026-04-19 A | 2026-04-24 A | MLTX-02-004-EN-2320 | 100% | 2026-04-19 | 2026-04-23 | Draftsman [12.71 h]; Consultant Staff [3.39 h] | EN.MB.SD.AR.PR.1110 | MOD-02-EN-3430 | 0 | -4 | 0 | PL | Eng-AS | Engi |  |
| MLTX-02-004-EN-3450 |  | Shop DWG Approval for Sections | 5d | 2026-04-19 A | 2026-04-24 A | MLTX-02-004-EN-2340 | 100% | 2026-04-19 | 2026-04-23 | Draftsman [12.71 h]; Consultant Staff [3.39 h] | EN.MB.SD.AR.PR.1150 | MOD-02-EN-3450 | 0 | -4 | 0 | PL | Eng-AS | Engi |  |
| MLTX-02-004-EN-3440 |  | Shop DWG Approval for Furniture & Marking | 1d | 2026-06-13 A | 2026-06-13 A | MLTX-02-004-EN-2330 | 100% |  |  | Draftsman [12.71 h]; Consultant Staff [3.39 h] | EN.MB.SD.AR.PR.1140 | MOD-02-EN-3440 | -100 | -38 | -100 | PL | Eng-AS | Engi | UDF_G1 |
| MLTX-02-004-EN-3460 |  | Shop DWG Approval for Interlock Pattern Plan | 1d | 2026-06-13 A | 2026-06-13 A | MLTX-02-004-EN-2350 | 100% |  |  | Draftsman [12.71 h]; Consultant Staff [3.39 h] | EN.MB.SD.AR.PR.1190 | MOD-02-EN-3460 | -100 | -38 | -100 | PL | Eng-AS | Engi | UDF_G1 |
| MLTX-02-004-EN-3470 |  | Shop DWG Approval for Doors/Windows Schedule | 1d | 2026-06-13 A | 2026-06-13 A | MLTX-02-004-EN-2360 | 100% |  |  | Draftsman [12.71 h]; Consultant Staff [3.39 h] | EN.MB.SD.AR.PR.1220 | MOD-02-EN-3470 | -100 | -38 | -100 | PL | Eng-AS | Engi | UDF_G1 |
| MLTX-02-004-EN-3480 |  | Shop DWG Approval for Dome Internal Layout | 1d | 2026-06-13 A | 2026-06-13 A | MLTX-02-004-EN-3450, MLTX-02-004-EN-3440, MLTX-02-004-EN-2370 | 100% |  |  | Draftsman [12.71 h]; Consultant Staff [3.39 h] | EN.MB.SD.AR.PR.1110 | MOD-02-EN-3480 | -100 | -38 | -100 | PL | Eng-AS | Engi | UDF_G1 |

| ID | WBS | Activity | Duration | Start | Finish | Predecessors | Complete | Planned start | Planned finish | Resources | New Activity Code | New Activity ID | % Variance | Delay | Flag | On Schedule | Shop Drawings | Engineering | WBS-Project |
| --- | --- | --- | --- | --- | --- | --- | --- | --- | --- | --- | --- | --- | --- | --- | --- | --- | --- | --- | --- |
|  | 4 | **STRUCTURE WORKS** |  | 2026-06-24 | 2026-06-24 |  |  |  |  |  |  |  |  |  |  |  |  |  |  |
| MLTX-02-004-EN-3500 |  | Shop DWG Approval for Air Dome System | 1d | 2026-06-24 A | 2026-06-24 A | MLTX-02-004-EN-2390 | 100% |  |  | Draftsman [12.71 h]; Consultant Staff [3.39 h] | EN.MB.SD.AR.PR.1110 | MOD-02-EN-3500 | -100 | -38 | UDF_G1 | -100 | PL | Eng-AS | Engi |
| MLTX-02-004-EN-3510 |  | Shop DWG Approval for Foundation of Air Dome | 1d | 2026-06-24 A | 2026-06-24 A | MLTX-02-004-EN-2400 | 100% |  |  | Draftsman [12.71 h]; Consultant Staff [3.39 h] | EN.MB.SD.AR.PR.1140 | MOD-02-EN-3510 | -100 | -38 | UDF_G1 | -100 | PL | Eng-AS | Engi |
| MLTX-02-004-EN-3520 |  | Shop DWG Approval for Foundation of Air Dome | 1d | 2026-06-24 A | 2026-06-24 A | MLTX-02-004-EN-3510 SS | 100% |  |  | Draftsman [12.71 h]; Consultant Staff [3.39 h] | EN.MB.SD.AR.PR.1150 | MOD-02-EN-3520 | -100 | -38 | UDF_G1 | -100 | PL | Eng-AS | Engi |
| MLTX-02-004-EN-3530 |  | Shop DWG Approval for Anchor Bolt Layout of Air Dome | 1d | 2026-06-24 A | 2026-06-24 A | MLTX-02-004-EN-3470, MLTX-02-004-EN-2420 | 100% |  |  | Draftsman [12.71 h]; Consultant Staff [3.39 h] | EN.MB.SD.AR.PR.1140 | MOD-02-EN-3530 | -100 | -38 | UDF_G1 | -100 | PL | Eng-AS | Engi |
|  | 5 | **AIR DOME SYSTEM** |  | 2026-06-13 | 2026-06-13 |  |  |  |  |  |  |  |  |  |  |  |  |  |  |
| MLTX-02-004-EN-3550 |  | Shop DWG Approval for Air Dome Structural Layout | 1d | 2026-06-13 A | 2026-06-13 A | MLTX-02-004-EN-2440 | 100% |  |  | Draftsman [12.71 h]; Consultant Staff [3.39 h] | EN.MB.SD.AR.PR.1110 | MOD-02-EN-3550 | -100 | -38 | UDF_G1 | -100 | PL | Eng-AS | Engi |
| MLTX-02-004-EN-3560 |  | Shop DWG Approval for Membrane Panel Layout | 1d | 2026-06-13 A | 2026-06-13 A | MLTX-02-004-EN-2450 | 100% |  |  | Draftsman [12.71 h]; Consultant Staff [3.39 h] | EN.MB.SD.AR.PR.1140 | MOD-02-EN-3560 | -100 | -38 | UDF_G1 | -100 | PL | Eng-AS | Engi |
| MLTX-02-004-EN-3570 |  | Shop DWG Approval for Cable Tension Layout | 1d | 2026-06-13 A | 2026-06-13 A | MLTX-02-004-EN-3560 SS, MLTX-02-004-EN-2460 | 100% |  |  | Draftsman [12.71 h]; Consultant Staff [3.39 h] | EN.MB.SD.AR.PR.1150 | MOD-02-EN-3570 | -100 | -38 | UDF_G1 | -100 | PL | Eng-AS | Engi |
| MLTX-02-004-EN-3580 |  | Shop DWG Approval for Airlock Door Details | 1d | 2026-06-13 A | 2026-06-13 A | MLTX-02-004-EN-2470 | 100% |  |  | Draftsman [12.71 h]; Consultant Staff [3.39 h] | EN.MB.SD.AR.PR.1140 | MOD-02-EN-3580 | -100 | -38 | UDF_G1 | -100 | PL | Eng-AS | Engi |
| MLTX-02-004-EN-3590 |  | Shop DWG Approval for Emergency Exit Details | 1d | 2026-06-13 A | 2026-06-13 A | MLTX-02-004-EN-2480 | 100% |  |  | Draftsman [12.71 h]; Consultant Staff [3.39 h] | EN.MB.SD.AR.PR.1140 | MOD-02-EN-3590 | -100 | -38 | UDF_G1 | -100 | PL | Eng-AS | Engi |
|  | 6 | **SPORTS EQUIPMENT** |  | 2026-06-13 | 2026-06-13 |  |  |  |  |  |  |  |  |  |  |  |  |  |  |
| MLTX-02-004-EN-3610 |  | Shop DWG Approval for Football Turf Installation | 1d | 2026-06-13 A | 2026-06-13 A | MLTX-02-004-EN-2500 | 100% |  |  | Draftsman [12.71 h]; Consultant Staff [3.39 h] | EN.MB.SD.EL.PR.2170 | MOD-02-EN-3610 | -100 | -38 | UDF_G1 | -100 | PL | Eng-AS | Engi |
| MLTX-02-004-EN-3620 |  | Shop DWG Approval for Basketball Court Marking | 1d | 2026-06-13 A | 2026-06-13 A | MLTX-02-004-EN-2510 | 100% |  |  | Draftsman [12.71 h]; Consultant Staff [3.39 h] | EN.MB.SD.EL.PR.2180 | MOD-02-EN-3620 | -100 | -38 | UDF_G1 | -100 | PL | Eng-AS | Engi |
| MLTX-02-004-EN-3630 |  | Shop DWG Approval for Padel Court Structure | 1d | 2026-06-13 A | 2026-06-13 A | MLTX-02-004-EN-2520 | 100% |  |  | Draftsman [12.71 h]; Consultant Staff [3.39 h] | EN.MB.SD.EL.PR.2160 | MOD-02-EN-3630 | -100 | -38 | UDF_G1 | -100 | PL | Eng-AS | Engi |
|  | 1 | **MECHANCAL WORKS** |  | 2026-05-07 | 2026-05-07 |  |  |  |  |  |  |  |  |  |  |  |  |  |  |
| MLTX-02-004-EN-3650 |  | Shop DWG Approval for HVAC Plan | 1d | 2026-05-07 A | 2026-05-07 A | MLTX-02-004-EN-2540 | 100% |  |  | Draftsman [12.71 h]; Consultant Staff [3.39 h] | EN.MB.SD.MC.PR.1740 | MOD-02-EN-3650 | 0 | -10 |  | 0 | PL | Eng-AS | Engi |
| MLTX-02-004-EN-3660 |  | Shop DWG Approval for Exhaust Air Plan | 1d | 2026-05-07 A | 2026-05-07 A | MLTX-02-004-EN-3650, MLTX-02-004-EN-2550 | 100% |  |  | Draftsman [12.71 h]; Consultant Staff [3.39 h] | EN.MB.SD.MC.PR.1750 | MOD-02-EN-3660 | 0 | -10 |  | 0 | PL | Eng-AS | Engi |
|  | 2 | **ELECTRICAL WORKS** |  | 2026-04-15 | 2026-08-26 |  |  |  |  |  |  |  |  |  |  |  |  |  |  |
| MLTX-02-004-EN-3680 |  | Shop DWG Approval for Lighting Layout | 10d | 2026-04-15 A | 2026-04-26 A | MLTX-02-004-EN-2570 | 100% |  |  | Draftsman [12.71 h]; Consultant Staff [3.39 h] | EN.MB.SD.EL.PR.1980 | MOD-02-EN-3680 | 0 | 0 |  | 0 | PL | Eng-AS | Engi |
| MLTX-02-004-EN-3690 |  | Shop DWG Approval for Power Layout | 10d | 2026-04-15 A | 2026-04-26 A | MLTX-02-004-EN-3660, MLTX-02-004-EN-2580 | 100% |  |  | Draftsman [12.71 h]; Consultant Staff [3.39 h] | EN.MB.SD.EL.PR.2000 | MOD-02-EN-3690 | 0 | 0 |  | 0 | PL | Eng-AS | Engi |
| MLTX-02-004-EN-3700 |  | Shop DWG Approval for Power Installation Details | 10d | 2026-04-15 A | 2026-04-26 A | MLTX-02-004-EN-3690, MLTX-02-004-EN-2590 | 100% |  |  | Draftsman [12.71 h]; Consultant Staff [3.39 h] | EN.MB.SD.EL.PR.2050 | MOD-02-EN-3700 | 0 | 0 |  | 0 | PL | Eng-AS | Engi |
| MLTX-02-004-EN-3730 |  | Shop DWG Approval for Power Single Line Diagram | 6d | 2026-07-11 A | 2026-07-11 A | MLTX-02-004-EN-2620 | 100% | 2026-07-11 | 2026-07-16 | Draftsman [12.71 h]; Consultant Staff [3.39 h] | EN.MB.SD.EL.PR.2020 | MOD-02-EN-3730 | -100 | -31 | UDF_G1 | -100 | PL | Eng-AS | Engi |
| MLTX-02-004-EN-3740 |  | Shop DWG Approval for Panel Board Schedules | 6d | 2026-07-11 A | 2026-07-11 A | MLTX-02-004-EN-2630 | 100% | 2026-07-11 | 2026-07-16 | Draftsman [12.71 h]; Consultant Staff [3.39 h] | EN.MB.SD.EL.PR.2030 | MOD-02-EN-3740 | -100 | -31 | UDF_G1 | -100 | PL | Eng-AS | Engi |
| MLTX-02-004-EN-3760 |  | Shop DWG Approval for CCTV Details | 6d | 2026-08-26 A | 2026-08-26 A | MLTX-02-004-EN-3700 | 100% | 2026-09-01 | 2026-09-07 | Draftsman [12.71 h]; Consultant Staff [3.39 h] | EN.MB.SD.EL.PR.2140 | MOD-02-EN-3760 | -100 | -31 | UDF_G1 | -100 | PL | Eng-AS | Engi |
| MLTX-02-004-EN-3770 |  | Shop DWG Approval for CCTV Layout | 6d | 2026-08-26 A | 2026-08-26 A | MLTX-02-004-EN-3530 | 100% | 2026-09-01 | 2026-09-07 | Draftsman [12.71 h]; Consultant Staff [3.39 h] | EN.MB.SD.EL.PR.2150 | MOD-02-EN-3770 | -100 | -31 | UDF_G1 | -100 | PL | Eng-AS | Engi |
| MLTX-02-004-EN-3780 |  | Shop DWG Approval for CCTV Riser Diagram | 6d | 2026-08-26 A | 2026-08-26 A | MLTX-02-004-EN-3630 | 100% | 2026-09-01 | 2026-09-07 | Draftsman [12.71 h]; Consultant Staff [3.39 h] | EN.MB.SD.EL.PR.2180 | MOD-02-EN-3780 | -100 | -31 | UDF_G1 | -100 | PL | Eng-AS | Engi |

| ID | WBS | Activity | Duration | Start | Finish | Predecessors | Complete | Planned start | Planned finish | Resources | New Activity ID | Old Activity ID - MK | % Variance | Delay | On Schedule | Shop Drawings | Engineering | WBS-Project | Flag |
| --- | --- | --- | --- | --- | --- | --- | --- | --- | --- | --- | --- | --- | --- | --- | --- | --- | --- | --- | --- |
|  | EAR | **SHOP DRAWINGS APPROVAL FOR LANDSCAPE WORKS** |  | 2026-04-11 | 2026-06-24 |  |  |  |  |  |  |  |  |  |  |  |  |  |  |
|  | 3 | **ARCHITECTURE WORKS** |  | 2026-04-19 | 2026-05-14 |  |  |  |  |  |  |  |  |  |  |  |  |  |  |
| MLTX-02-004-EN-3810 |  | Shop DWG Approval for Landscape Layout | 5d | 2026-04-19 A | 2026-04-24 A | MLTX-02-004-EN-3430, MLTX-02-004-EN-2700 | 100% | 2026-04-19 | 2026-04-23 | Draftsman [12.71 h]; Consultant Staff [3.39 h] | MOD-02-EN-3810 | MAK-01-EN-1120 | 0 | -5 | 0 | LS | Eng-AS | Engi |  |
| MLTX-02-004-EN-3820 |  | Shop DWG Approval for Hardscape Plan | 2d | 2026-05-13 A | 2026-05-14 A | MLTX-02-004-EN-2710 | 100% |  |  | Draftsman [12.71 h]; Consultant Staff [3.39 h] | MOD-02-EN-3820 | MAK-01-EN-1130 | 0 | -38 | 0 | LS | Eng-AS | Engi | UDF_G1 |
| MLTX-02-004-EN-3830 |  | Shop DWG Approval for Planting Plan | 2d | 2026-05-13 A | 2026-05-14 A | MLTX-02-004-EN-2720 | 100% |  |  | Draftsman [12.71 h]; Consultant Staff [3.39 h] | MOD-02-EN-3830 | MAK-01-EN-1140 | 0 | -38 | 0 | LS | Eng-AS | Engi | UDF_G1 |
| MLTX-02-004-EN-3840 |  | Shop DWG Approval for Landscape Details | 2d | 2026-05-13 A | 2026-05-14 A | MLTX-02-004-EN-2730 | 100% |  |  | Draftsman [12.71 h]; Consultant Staff [3.39 h] | MOD-02-EN-3840 | MAK-01-EN-1150 | 0 | -38 | 0 | LS | Eng-AS | Engi | UDF_G1 |
|  | 1 | **MECHANCAL WORKS** |  | 2026-06-24 | 2026-06-24 |  |  |  |  |  |  |  |  |  |  |  |  |  |  |
| MLTX-02-004-EN-3880 |  | Shop DWG Approval for Irrigation Details | 1d | 2026-06-24 A | 2026-06-24 A | MLTX-02-004-EN-2770 | 100% |  |  | Draftsman [12.71 h]; Consultant Staff [3.39 h] | MOD-02-EN-3880 | MAK-01-EN-1140 | -100 | -38 | -100 | LS | Eng-AS | Engi | UDF_G1 |
| MLTX-02-004-EN-3920 |  | Shop DWG Approval for Irrigation Layout | 1d | 2026-06-24 A | 2026-06-24 A | MLTX-02-004-EN-2810 | 100% |  |  | Draftsman [12.71 h]; Consultant Staff [3.39 h] | MOD-02-EN-3920 | MAK-01-EN-1140 | -100 | -38 | -100 | LS | Eng-AS | Engi | UDF_G1 |
|  | 2 | **ELECTRICAL WORKS** |  | 2026-04-11 | 2026-05-23 |  |  |  |  |  |  |  |  |  |  |  |  |  |  |
| MLTX-02-004-EN-3950 |  | Shop DWG Approval for Lighting Details | 10d | 2026-04-11 A | 2026-04-21 A | MLTX-02-004-EN-2840 | 100% |  |  | Draftsman [12.71 h]; Consultant Staff [3.39 h] | MOD-02-EN-3950 | MAK-01-EN-1140 | 0 | 0 | 0 | LS | Eng-AS | Engi |  |
| MLTX-02-004-EN-3970 |  | Shop DWG Approval for Lighting General Arrangement | 10d | 2026-04-11 A | 2026-04-21 A | MLTX-02-004-EN-2860 | 100% |  |  | Draftsman [12.71 h]; Consultant Staff [3.39 h] | MOD-02-EN-3970 | MAK-01-EN-1120 | 0 | 0 | 0 | LS | Eng-AS | Engi |  |
| MLTX-02-004-EN-3980 |  | Shop DWG Approval for Lighting Network Layout | 10d | 2026-04-11 A | 2026-04-21 A | MLTX-02-004-EN-2870 | 100% |  |  | Draftsman [12.71 h]; Consultant Staff [3.39 h] | MOD-02-EN-3980 | MAK-01-EN-1130 | 0 | 0 | 0 | LS | Eng-AS | Engi |  |
| MLTX-02-004-EN-3960 |  | Shop DWG Approval for Lighting Single Line Diagram | 1d | 2026-05-23 A | 2026-05-23 A | MLTX-02-004-EN-2850 | 100% |  |  | Draftsman [12.71 h]; Consultant Staff [3.39 h] | MOD-02-EN-3960 | MAK-01-EN-1150 | -100 | -38 | -100 | LS | Eng-AS | Engi | UDF_G1 |
|  | MTS | **METHOD STATEMENTS** |  | 2026-03-31 | 2026-12-05 |  |  |  |  |  |  |  |  |  |  |  |  |  |  |
|  | 1 | **METHOD STATEMENT SUBMITTAL** |  | 2026-03-31 | 2026-11-21 |  |  |  |  |  |  |  |  |  |  |  |  |  |  |
|  | 4 | **CIVIL WORKS** |  | 2026-03-31 | 2026-05-21 |  |  |  |  |  |  |  |  |  |  |  |  |  |  |
| MLTX-02-004-EN-4020 |  | Preparation & Submission of Method Statement for Earthwork | 17d | 2026-03-31 A | 2026-04-19 A | MLTX-02-004-MB-1340 | 100% |  |  | QA/QC Engineer [16.1 h] | MOD-02-EN-4020 | A1010 | 0 | -11 | 0 |  | Eng-AS | Engi |  |
| MLTX-02-004-EN-4040 |  | Preparation & Submission of Method Statement for Waterproofing | 22d | 2026-03-31 A | 2026-04-25 A | MLTX-02-004-MB-1340 | 100% |  |  | QA/QC Engineer [16.1 h] | MOD-02-EN-4040 |  | 0 | -16 | 0 |  | Eng-AS | Engi |  |
| MLTX-02-004-EN-4030 |  | Preparation & Submission of Method Statement for Concrete Works | 1d | 2026-05-21 A | 2026-05-21 A | MLTX-02-004-MB-1340 | 100% |  |  | QA/QC Engineer [16.1 h] | MOD-02-EN-4030 | A1020 | -100 | -38 | -100 |  | Eng-AS | Engi | UDF_G1 |
|  | 1 | **ARCHITECTURE WORKS** |  | 2026-05-31 | 2026-11-21 |  |  |  |  |  |  |  |  |  |  |  |  |  |  |
| MLTX-02-004-EN-4110 |  | Preparation & Submission of Method Statement for Interlock/Curbstone Works | 1d | 2026-05-31 A | 2026-05-31 A | MLTX-02-004-MB-1340 | 100% |  |  | QA/QC Engineer [16.1 h] | MOD-02-EN-4110 |  | -100 | -38 | -100 |  | Eng-AS | Engi | UDF_G1 |
| MLTX-02-004-EN-4120 |  | Preparation & Submission of Method Statement for Parking Works | 1d | 2026-05-31 A | 2026-05-31 A | MLTX-02-004-MB-1340 | 100% |  |  | QA/QC Engineer [16.1 h] | MOD-02-EN-4120 |  | -100 | -38 | -100 |  | Eng-AS | Engi | UDF_G1 |
| MLTX-02-004-EN-4080 |  | Preparation & Submission of Method Statement for Tilling Works | 1d | 2026-06-06 A | 2026-06-06 A | MLTX-02-004-MB-1340 | 100% |  |  | QA/QC Engineer [16.1 h] | MOD-02-EN-4080 |  | -100 | -38 | -100 |  | Eng-AS | Engi | UDF_G1 |
| MLTX-02-004-EN-4100 |  | Preparation & Submission of Method Statement for Doors/Windows Works | 1d | 2026-06-06 A | 2026-06-06 A | MLTX-02-004-MB-1340 | 100% |  |  | QA/QC Engineer [16.1 h] | MOD-02-EN-4100 | A1020 | -100 | -38 | -100 |  | Eng-AS | Engi | UDF_G1 |
| MLTX-02-004-EN-4180 |  | Preparation & Submission of Method Statement for Gypsum Board Works | 1d | 2026-06-13 A | 2026-06-13 A | MLTX-02-004-MB-1340 | 100% |  |  | QA/QC Engineer [16.1 h] | MOD-02-EN-4180 |  | -100 | -38 | -100 |  | Eng-AS | Engi | UDF_G1 |
| MLTX-02-004-EN-4060 |  | Preparation & Submission of Method Statement for Plastering Works | 1d | 2026-06-18 A | 2026-06-18 A | MLTX-02-004-MB-1340 | 100% |  |  | QA/QC Engineer [16.1 h] | MOD-02-EN-4060 | A1010 | -100 | -38 | -100 |  | Eng-AS | Engi | UDF_G1 |
| MLTX-02-004-EN-4070 |  | Preparation & Submission of Method Statement for Masonary Works | 1d | 2026-06-18 A | 2026-06-18 A | MLTX-02-004-MB-1340 | 100% |  |  | QA/QC Engineer [16.1 h] | MOD-02-EN-4070 | A1020 | -100 | -38 | -100 |  | Eng-AS | Engi | UDF_G1 |
| MLTX-02-004-EN-4090 |  | Preparation & Submission of Method Statement for Seats/Benches Works | 1d | 2026-06-18 A | 2026-06-18 A | MLTX-02-004-MB-1340 | 100% |  |  | QA/QC Engineer [16.1 h] | MOD-02-EN-4090 | A1010 | -100 | -38 | -100 |  | Eng-AS | Engi | UDF_G1 |
| MLTX-02-004-EN-4130 |  | Preparation & Submission of Method Statement for Soft Scape Works | 6d | 2026-07-11 A | 2026-07-11 A | MLTX-02-004-MB-1340 | 100% | 2026-07-11 | 2026-07-16 | QA/QC Engineer [16.1 h] | MOD-02-EN-4130 |  | -100 | -38 | -100 |  | Eng-AS | Engi | UDF_G1 |
| MLTX-02-004-EN-4160 |  | Preparation & Submission of Method Statement for Metal Works | 6d | 2026-07-11 A | 2026-07-11 A | MLTX-02-004-MB-1340 | 100% | 2026-07-11 | 2026-07-16 | QA/QC Engineer [16.1 h] | MOD-02-EN-4160 |  | -100 | -38 | -100 |  | Eng-AS | Engi | UDF_G1 |
| MLTX-02-004-EN-4170 |  | Preparation & Submission of Method Statement for Partitions Works | 6d | 2026-07-15 A | 2026-07-15 A | MLTX-02-004-MB-1340 | 100% | 2026-07-15 | 2026-07-21 | QA/QC Engineer [16.1 h] | MOD-02-EN-4170 |  | -100 | -38 | -100 |  | Eng-AS | Engi | UDF_G1 |
| MLTX-02-004-EN-4150 |  | Preparation & Submission of Method Statement for Air Dome Works | 6d | 2026-08-17 A | 2026-08-17 A | MLTX-02-004-MB-1340 | 100% | 2026-09-29 | 2026-10-05 | QA/QC Engineer [16.1 h] | MOD-02-EN-4150 |  | -100 | -38 | -100 |  | Eng-AS | Engi | UDF_G1 |
| MLTX-02-004-EN-4140 |  | Preparation & Submission of Method Statement for Fence Works | 6d | 2026-11-19 A | 2026-11-21 A | MLTX-02-004-MB-1340 | 100% | 2026-11-23 | 2026-11-29 | QA/QC Engineer [16.1 h] | MOD-02-EN-4140 |  | -100 | -38 | -100 |  | Eng-AS | Engi | UDF_G1 |

| ID | WBS | Activity | Duration | Start | Finish | Predecessors | Complete | Planned start | Planned finish | Total float | Free float | Resources | New Activity ID | % Variance | Delay | On Schedule | Engineering | WBS-Project | Old Activity ID - MK | Flag |
| --- | --- | --- | --- | --- | --- | --- | --- | --- | --- | --- | --- | --- | --- | --- | --- | --- | --- | --- | --- | --- |
|  | 2 | **MECHANICAL WORKS** |  | 2026-04-07 | 2026-06-04 |  |  |  |  |  |  |  |  |  |  |  |  |  |  |  |
| MLTX-02-004-EN-4220 |  | Preparation & Submission of Method Statement for Fire Fighting System | 7d | 2026-04-07 A | 2026-04-14 A | MLTX-02-004-EN-4040 | 100% |  |  |  |  | QA/QC Engineer [26.1 h] | MOD-02-EN-4220 | 0 | 0 | 0 | Eng-AS | Engi |  |  |
| MLTX-02-004-EN-4200 |  | Preparation & Submission of Method Statement for Sewage/Drainage System | 1d | 2026-05-31 A | 2026-05-31 A | MLTX-02-004-EN-4020 | 100% |  |  |  |  | QA/QC Engineer [26.1 h] | MOD-02-EN-4200 | -100 | -32 | -100 | Eng-AS | Engi | A1010 | UDF_G1 |
| MLTX-02-004-EN-4210 |  | Preparation & Submission of Method Statement for Water Supply System | 1d | 2026-06-04 A | 2026-06-04 A | MLTX-02-004-EN-4030 | 100% |  |  |  |  | QA/QC Engineer [26.1 h] | MOD-02-EN-4210 | -100 | -38 | -100 | Eng-AS | Engi | A1020 | UDF_G1 |
| MLTX-02-004-EN-4230 |  | Preparation & Submission of Method Statement for Irrigation System | 1d | 2026-06-04 A | 2026-06-04 A | MLTX-02-004-EN-4060 | 100% |  |  |  |  | QA/QC Engineer [26.1 h] | MOD-02-EN-4230 | -100 | -38 | -100 | Eng-AS | Engi | A1010 | UDF_G1 |
| MLTX-02-004-EN-4240 |  | Preparation & Submission of Method Statement for HVAC System | 1d | 2026-06-04 A | 2026-06-04 A | MLTX-02-004-EN-4070 | 100% |  |  |  |  | QA/QC Engineer [26.1 h] | MOD-02-EN-4240 | -100 | -38 | -100 | Eng-AS | Engi | A1020 | UDF_G1 |
|  | 5 | **ELECTRICAL WORKS** |  | 2026-06-18 | 2026-08-11 |  |  |  |  |  |  |  |  |  |  |  |  |  |  |  |
| MLTX-02-004-EN-4280 |  | Preparation & Submission of Method Statement for Lighting Works | 1d | 2026-06-18 A | 2026-06-18 A | MLTX-02-004-MS-1010 SS | 100% |  |  |  |  | QA/QC Engineer [26.1 h] | MOD-02-EN-4280 | -100 | -38 | -100 | Eng-AS | Engi |  | UDF_G1 |
| MLTX-02-004-EN-4290 |  | Preparation & Submission of Method Statement for Earthing/Lightning Works | 1d | 2026-06-18 A | 2026-06-18 A | MLTX-02-004-MS-1010 SS | 100% |  |  |  |  | QA/QC Engineer [36.1 h] | MOD-02-EN-4290 | -100 | -38 | -100 | Eng-AS | Engi |  | UDF_G1 |
| MLTX-02-004-EN-4310 |  | Preparation & Submission of Method Statement for Electrical Conduits/Pulling Works | 1d | 2026-06-18 A | 2026-06-18 A | MLTX-02-004-EN-4110 | 100% |  |  |  |  | QA/QC Engineer [26.1 h] | MOD-02-EN-4310 | -100 | -38 | -100 | Eng-AS | Engi |  | UDF_G1 |
| MLTX-02-004-EN-4330 |  | Preparation & Submission of Method Statement for Lighting Poles Installation | 1d | 2026-06-18 A | 2026-06-18 A | MLTX-02-004-MS-1010 SS | 100% |  |  |  |  | QA/QC Engineer [26.1 h] | MOD-02-EN-4330 | -100 | -38 | -100 | Eng-AS | Engi |  | UDF_G1 |
| MLTX-02-004-EN-4260 |  | Preparation & Submission of Method Statement for Telecommunication & Data System | 7d | 2026-07-15 A | 2026-07-15 A | MLTX-02-004-EN-4240 | 100% | 2026-07-22 | 2026-07-29 |  |  | QA/QC Engineer [26.1 h] | MOD-02-EN-4260 | -100 | -38 | -100 | Eng-AS | Engi |  | UDF_G1 |
| MLTX-02-004-EN-4270 |  | Preparation & Submission of Method Statement for CCTV System | 7d | 2026-07-22 A | 2026-07-22 A | MLTX-02-004-EN-3390, MLTX-02-004-EN-3350, MLTX-02-004-EN-4150, MLTX-02-004-EN-4300, MLTX-02-004-EN-3360, MLTX-02-004-EN-3760, MLTX-02-004-EN-3770, MLTX-02-004-EN-3780, MLTX-02-004-EN-4150 FF, MLTX-02-004-EN-3730, MLTX-02-004-EN-3740, MLTX-02-004-EN-4130, MLTX-02-004-EN-4160 | 100% | 2026-07-29 | 2026-08-05 |  |  | QA/QC Engineer [26.1 h] | MOD-02-EN-4270 | -100 | -38 | -100 | Eng-AS | Engi |  | UDF_G1 |
| MLTX-02-004-EN-4300 |  | Preparation & Submission of Method Statement for Panel Boards Works | 6d | 2026-08-11 A | 2026-08-11 A | MLTX-02-004-EN-4180 | 100% | 2026-08-18 | 2026-08-24 |  |  | QA/QC Engineer [31.1 h] | MOD-02-EN-4300 | -100 | -38 | -100 | Eng-AS | Engi |  | UDF_G1 |
|  | 2 | **METHOD STATEMENT APPROVAL** |  | 2026-04-15 | 2026-12-05 |  |  |  |  |  |  |  |  |  |  |  |  |  |  |  |
|  | 4 | **CIVIL WORKS** |  | 2026-05-31 | 2026-05-31 |  |  |  |  |  |  |  |  |  |  |  |  |  |  |  |
| MLTX-02-004-EN-4360 |  | Approval of Method Statement for Earthwork | 1d | 2026-05-31 A | 2026-05-31 A | MLTX-02-004-EN-4020 | 100% |  |  |  |  | Consultant Staff [16.1 h] | MOD-02-EN-4360 | -100 | -32 | -100 | Eng-AS | Engi | A1010 | UDF_G1 |
| MLTX-02-004-EN-4370 |  | Approval of Method Statement for Concrete Works | 1d | 2026-05-31 A | 2026-05-31 A | MLTX-02-004-EN-4360, MLTX-02-004-EN-4030 | 100% |  |  |  |  | Consultant Staff [16.1 h] | MOD-02-EN-4370 | -100 | -38 | -100 | Eng-AS | Engi | A1020 | UDF_G1 |
| MLTX-02-004-EN-4380 |  | Approval of Method Statement for Waterproofing | 1d | 2026-05-31 A | 2026-05-31 A | MLTX-02-004-EN-4040 | 100% |  |  |  |  | Consultant Staff [16.1 h] | MOD-02-EN-4380 | -100 | -32 | -100 | Eng-AS | Engi |  | UDF_G1 |
|  | 1 | **ARCHITECTURE WORKS** |  | 2026-05-31 | 2026-12-05 |  |  |  |  |  |  |  |  |  |  |  |  |  |  |  |
| MLTX-02-004-EN-4450 |  | Approval of Method Statement for Interlock/Curbstone Works | 1d | 2026-05-31 A | 2026-05-31 A | MLTX-02-004-EN-4110 | 100% |  |  |  |  | Consultant Staff [16.1 h] | MOD-02-EN-4450 | -100 | -38 | -100 | Eng-AS | Engi |  | UDF_G1 |
| MLTX-02-004-EN-4460 |  | Approval of Method Statement for Parking Works | 1d | 2026-05-31 A | 2026-05-31 A | MLTX-02-004-EN-4120 | 100% |  |  |  |  | Consultant Staff [16.1 h] | MOD-02-EN-4460 | -100 | -38 | -100 | Eng-AS | Engi |  | UDF_G1 |
| MLTX-02-004-EN-4420 |  | Approval of Method Statement for Tilling Works | 1d | 2026-06-06 A | 2026-06-06 A | MLTX-02-004-EN-4080 | 100% |  |  |  |  | Consultant Staff [16.1 h] | MOD-02-EN-4420 | -100 | -38 | -100 | Eng-AS | Engi |  | UDF_G1 |
| MLTX-02-004-EN-4440 |  | Approval of Method Statement for Doors/Windows Works | 1d | 2026-06-06 A | 2026-06-06 A | MLTX-02-004-EN-4100 | 100% |  |  |  |  | Consultant Staff [16.1 h] | MOD-02-EN-4440 | -100 | -38 | -100 | Eng-AS | Engi | A1020 | UDF_G1 |
| MLTX-02-004-EN-4400 |  | Approval of Method Statement for Plastering Works | 1d | 2026-06-16 A | 2026-06-16 A | MLTX-02-004-EN-4060 | 100% |  |  |  |  | Consultant Staff [16.1 h] | MOD-02-EN-4400 | -100 | -38 | -100 | Eng-AS | Engi | A1010 | UDF_G1 |
| MLTX-02-004-EN-4410 |  | Approval of Method Statement for Masonary Works | 1d | 2026-06-16 A | 2026-06-16 A | MLTX-02-004-EN-4070 | 100% |  |  |  |  | Consultant Staff [16.1 h] | MOD-02-EN-4410 | -100 | -38 | -100 | Eng-AS | Engi | A1020 | UDF_G1 |
| MLTX-02-004-EN-4520 |  | Approval of Method Statement for Gypsum Board Works | 1d | 2026-06-18 A | 2026-06-18 A | MLTX-02-004-EN-4180 | 100% |  |  |  |  | Consultant Staff [16.1 h] | MOD-02-EN-4520 | -100 | -38 | -100 | Eng-AS | Engi |  | UDF_G1 |
| MLTX-02-004-EN-4430 |  | Approval of Method Statement for Seats/Benches Works | 6d | 2026-07-11 A | 2026-07-11 A | MLTX-02-004-EN-4090 | 100% | 2026-07-11 | 2026-07-16 |  |  | Consultant Staff [16.1 h] | MOD-02-EN-4430 | -100 | -38 | -100 | Eng-AS | Engi | A1010 | UDF_G1 |
| MLTX-02-004-EN-4470 |  | Approval of Method Statement for Soft Scape Works | 10d | 2026-07-11 A | 2026-07-11 A | MLTX-02-004-EN-4130 | 100% | 2026-07-11 | 2026-07-21 |  |  | Consultant Staff [16.1 h] | MOD-02-EN-4470 | -100 | -38 | -100 | Eng-AS | Engi |  | UDF_G1 |
| MLTX-02-004-EN-4490 |  | Approval of Method Statement for Air Dome Works | 10d | 2026-08-27 A | 2026-08-27 A | MLTX-02-004-EN-4150 | 100% | 2026-10-06 | 2026-10-17 |  |  | Consultant Staff [16.1 h] | MOD-02-EN-4490 | -100 | -38 | -100 | Eng-AS | Engi |  | UDF_G1 |
| MLTX-02-004-EN-4510 |  | Approval of Method Statement for Partitions Works | 10d | 2026-08-27 A | 2026-08-27 A | MLTX-02-004-EN-4170, MLTX-02-004-EN-4430 | 100% | 2026-09-29 | 2026-10-10 |  |  | Consultant Staff [16.1 h] | MOD-02-EN-4510 | -100 | -38 | -100 | Eng-AS | Engi |  | UDF_G1 |
| MLTX-02-004-EN-4480 |  | Approval of Method Statement for Fence Works | 10d | 2026-11-24 | 2026-12-05 | MLTX-02-004-EN-4140 |  |  |  | 23d | 0d | Consultant Staff [16.1 h] | MOD-02-EN-4480 | -100 | -38 | -100 | Eng-AS | Engi |  | UDF_G1 |

| ID | WBS | Activity | Duration | Start | Finish | Predecessors | Complete | Planned start | Planned finish | Resources | New Activity ID | % Variance | Delay | On Schedule | Engineering | WBS-Project | Old Activity ID - MK | Flag |
| --- | --- | --- | --- | --- | --- | --- | --- | --- | --- | --- | --- | --- | --- | --- | --- | --- | --- | --- |
|  | 2 | **MECHANICAL WORKS** |  | 2026-04-15 | 2026-06-11 |  |  |  |  |  |  |  |  |  |  |  |  |  |
| MLTX-02-004-EN-4560 |  | Approval of Method Statement for Fire Fighting System | 10d | 2026-04-15 A | 2026-04-26 A | MLTX-02-004-EN-4220 | 100% |  |  | Consultant Staff [16.1 h] | MOD-02-EN-4560 | 0 | 0 | 0 | Eng-AS | Engi |  |  |
| MLTX-02-004-EN-4540 |  | Approval of Method Statement for Sewage/Drainage System | 1d | 2026-06-11 A | 2026-06-11 A | MLTX-02-004-EN-4200 | 100% |  |  | Consultant Staff [16.1 h] | MOD-02-EN-4540 | -100 | -32 | -100 | Eng-AS | Engi | A1010 | UDF_G1 |
| MLTX-02-004-EN-4550 |  | Approval of Method Statement for Water Supply System | 1d | 2026-06-11 A | 2026-06-11 A | MLTX-02-004-EN-4210 | 100% |  |  | Consultant Staff [16.1 h] | MOD-02-EN-4550 | -100 | -38 | -100 | Eng-AS | Engi | A1020 | UDF_G1 |
| MLTX-02-004-EN-4570 |  | Approval of Method Statement for Irrigation System | 1d | 2026-06-11 A | 2026-06-11 A | MLTX-02-004-EN-4230 | 100% |  |  | Consultant Staff [16.1 h] | MOD-02-EN-4570 | -100 | -38 | -100 | Eng-AS | Engi | A1010 | UDF_G1 |
| MLTX-02-004-EN-4580 |  | Approval of Method Statement for HVAC System | 1d | 2026-06-11 A | 2026-06-11 A | MLTX-02-004-EN-4240 | 100% |  |  | Consultant Staff [16.1 h] | MOD-02-EN-4580 | -100 | -38 | -100 | Eng-AS | Engi | A1020 | UDF_G1 |
|  | 5 | **ELECTRICAL WORKS** |  | 2026-06-16 | 2026-08-12 |  |  |  |  |  |  |  |  |  |  |  |  |  |
| MLTX-02-004-EN-4600 |  | Approval of Method Statement for Electrical Conduits/Pulling Works | 1d | 2026-06-16 A | 2026-06-16 A | MLTX-02-004-EN-4310 | 100% |  |  | Consultant Staff [16.1 h] | MOD-02-EN-4600 | -100 | -38 | -100 | Eng-AS | Engi |  | UDF_G1 |
| MLTX-02-004-EN-4620 |  | Approval of Method Statement for Lighting Poles Installation | 10d | 2026-07-11 A | 2026-07-11 A | MLTX-02-004-EN-4330 | 100% | 2026-07-11 | 2026-07-21 | Consultant Staff [16.1 h] | MOD-02-EN-4620 | -100 | -38 | -100 | Eng-AS | Engi |  | UDF_G1 |
| MLTX-02-004-EN-4650 |  | Approval of Method Statement for Lighting Works | 10d | 2026-07-11 A | 2026-07-11 A | MLTX-02-004-EN-3680, MLTX-02-004-EN-4280 | 100% | 2026-07-11 | 2026-07-21 | Consultant Staff [16.1 h] | MOD-02-EN-4650 | -100 | -38 | -100 | Eng-AS | Engi |  | UDF_G1 |
| MLTX-02-004-EN-4660 |  | Approval of Method Statement for Earthing/Lightning Works | 10d | 2026-07-11 A | 2026-07-11 A | MLTX-02-004-EN-4290 | 100% | 2026-07-11 | 2026-07-21 | Consultant Staff [16.1 h] | MOD-02-EN-4660 | -100 | -38 | -100 | Eng-AS | Engi |  | UDF_G1 |
| MLTX-02-004-EN-4630 |  | Approval of Method Statement for Telecommunication & Data System | 10d | 2026-07-15 A | 2026-07-15 A | MLTX-02-004-EN-4490, MLTX-02-004-EN-4660, MLTX-02-004-EN-4260, MLTX-02-004-EN-4620 | 100% | 2026-08-03 | 2026-08-13 | Consultant Staff [16.1 h] | MOD-02-EN-4630 | -100 | -38 | -100 | Eng-AS | Engi |  | UDF_G1 |
| MLTX-02-004-EN-4640 |  | Approval of Method Statement for CCTV System | 10d | 2026-07-22 A | 2026-07-22 A | MLTX-02-004-EN-4660, MLTX-02-004-EN-4270, MLTX-02-004-EN-4470 | 100% | 2026-07-22 | 2026-08-02 | Consultant Staff [16.1 h] | MOD-02-EN-4640 | -100 | -38 | -100 | Eng-AS | Engi |  | UDF_G1 |
| MLTX-02-004-EN-4670 |  | Approval of Method Statement for Panel Boards Works | 10d | 2026-08-12 A | 2026-08-12 A | MLTX-02-004-EN-3740, MLTX-02-004-EN-4300 | 100% | 2026-08-25 | 2026-09-05 | Consultant Staff [16.1 h] | MOD-02-EN-4670 | -100 | -38 | -100 | Eng-AS | Engi |  | UDF_G1 |
|  | PREQ | **PRE-QUALIFICATION & MATERIAL** |  | 2026-03-31 | 2026-08-24 |  |  |  |  |  |  |  |  |  |  |  |  |  |
|  | PRE | **PRE-QUALIFICATION** |  | 2026-03-31 | 2026-05-21 |  |  |  |  |  |  |  |  |  |  |  |  |  |
|  | TOI | **TOILET/SERVICE WORKS** |  | 2026-03-31 | 2026-04-23 |  |  |  |  |  |  |  |  |  |  |  |  |  |
|  | 1 | **STEEL REINFORCEMENT** |  | 2026-03-31 | 2026-04-13 |  |  |  |  |  |  |  |  |  |  |  |  |  |
| MLTX-02-004-EN-4720 |  | Pre-Qualification Submittal for Steel Reinforcement | 11d | 2026-03-31 A | 2026-04-12 A | MLTX-02-004-MB-1340 | 100% |  |  | QA/QC Engineer [16.1 h] | MOD-02-EN-4720 | 0 | -5 | 0 | Eng-AS | Engi | MAK-01-PR-1000 |  |
| MLTX-02-004-EN-4730 |  | Pre-Qualification Approval for Steel Reinforcement | 2d | 2026-04-12 A | 2026-04-13 A | MLTX-02-004-EN-4720 | 100% |  |  | Consultant Staff [16.1 h] | MOD-02-EN-4730 | 0 | 1 | 0 | Eng-AS | Engi | MAK-01-PR-1010 |  |
|  | 2 | **READY MIX CONCRETE** |  | 2026-03-31 | 2026-04-23 |  |  |  |  |  |  |  |  |  |  |  |  |  |
| MLTX-02-004-EN-4750 |  | Pre-Qualification Submittal for Ready Mixed Concrete | 11d | 2026-03-31 A | 2026-04-12 A | MLTX-02-004-EN-4720 SS, MLTX-02-004-MB-1340 | 100% |  |  | QA/QC Engineer [16.1 h] | MOD-02-EN-4750 | 0 | -5 | 0 | Eng-AS | Engi | MAK-01-PR-1040 |  |
| MLTX-02-004-EN-4760 |  | Pre-Qualification Approval of Ready Mixed Concrete | 11d | 2026-04-12 A | 2026-04-23 A | MLTX-02-004-EN-4750 | 100% |  |  | Consultant Staff [16.1 h] | MOD-02-EN-4760 | 0 | -8 | 0 | Eng-AS | Engi | MAK-01-PR-1050 |  |
|  | 3 | **CONCRETE BLOCKS** |  | 2026-03-31 | 2026-04-23 |  |  |  |  |  |  |  |  |  |  |  |  |  |
| MLTX-02-004-EN-4780 |  | Pre-Qualification Submittal for Concrete Blocks | 11d | 2026-03-31 A | 2026-04-12 A | MLTX-02-004-EN-4750 SS, MLTX-02-004-MB-1340 | 100% |  |  | QA/QC Engineer [16.1 h] | MOD-02-EN-4780 | 0 | -5 | 0 | Eng-AS | Engi | MAK-01-PR-1000 |  |
| MLTX-02-004-EN-4790 |  | Pre-Qualification Approval for Concrete Blocks | 15d | 2026-04-07 A | 2026-04-23 A | MLTX-02-004-EN-4780 | 100% |  |  | Consultant Staff [16.1 h] | MOD-02-EN-4790 | 0 | -8 | 0 | Eng-AS | Engi | MAK-01-PR-1010 |  |

| ID | WBS | Activity | Duration | Start | Finish | Predecessors | Complete | Resources | New Activity ID | Old Activity ID - MK | % Variance | Delay | On Schedule | Engineering | WBS-Project |
| --- | --- | --- | --- | --- | --- | --- | --- | --- | --- | --- | --- | --- | --- | --- | --- |
|  | 4 | **WATER PROOFING** |  | 2026-03-31 | 2026-04-13 |  |  |  |  |  |  |  |  |  |  |
| MLTX-02-004-EN-4810 |  | Pre-Qualification Submittal for Water Proofing | 10d | 2026-03-31 A | 2026-04-11 A | MLTX-02-004-EN-4780 SS, MLTX-02-004-MB-1340 | 100% | QA/QC Engineer [16.1 h] | MOD-02-EN-4810 | MAK-01-PR-1060 | 0 | -4 | 0 | Eng-AS | Engi |
| MLTX-02-004-EN-4820 |  | Pre-Qualification Approval for Water Proofing | 3d | 2026-04-11 A | 2026-04-13 A | MLTX-02-004-EN-4810 | 100% | Consultant Staff [16.1 h] | MOD-02-EN-4820 | MAK-01-PR-1070 | 0 | 3 | 0 | Eng-AS | Engi |
|  | 6 | **FLOOR/WALL TILES** |  | 2026-03-31 | 2026-04-12 |  |  |  |  |  |  |  |  |  |  |
| MLTX-02-004-EN-4840 |  | Pre-Qualification Submittal for Tilling Materials | 10d | 2026-03-31 A | 2026-04-11 A | MLTX-02-004-EN-4810 SS, MLTX-02-004-MB-1340 | 100% | QA/QC Engineer [16.1 h] | MOD-02-EN-4840 | MAK-01-PR-1000 | 0 | -4 | 0 | Eng-AS | Engi |
| MLTX-02-004-EN-4850 |  | Pre-Qualification Approval for Tailling Material | 2d | 2026-04-11 A | 2026-04-12 A | MLTX-02-004-EN-4840 | 100% | Consultant Staff [16.1 h] | MOD-02-EN-4850 | MAK-01-PR-1010 | 0 | 2 | 0 | Eng-AS | Engi |
|  | 7 | **SUSPENDED CEILING** |  | 2026-03-31 | 2026-04-13 |  |  |  |  |  |  |  |  |  |  |
| MLTX-02-004-EN-4870 |  | Pre-Qualification Submittal for Suspend Ceiling | 11d | 2026-03-31 A | 2026-04-12 A | MLTX-02-004-EN-4840 SS, MLTX-02-004-MB-1340 | 100% | QA/QC Engineer [16.1 h] | MOD-02-EN-4870 | MAK-01-PR-1000 | 0 | -5 | 0 | Eng-AS | Engi |
| MLTX-02-004-EN-4880 |  | Pre-Qualification Approval for Suspend Ceiling | 2d | 2026-04-12 A | 2026-04-13 A | MLTX-02-004-EN-4870 | 100% | Consultant Staff [16.1 h] | MOD-02-EN-4880 | MAK-01-PR-1010 | 0 | 1 | 0 | Eng-AS | Engi |
|  | 8 | **DOORS/WINDOWS** |  | 2026-03-31 | 2026-04-12 |  |  |  |  |  |  |  |  |  |  |
| MLTX-02-004-EN-4900 |  | Pre-Qualification Submittal for Doors/Windows | 10d | 2026-03-31 A | 2026-04-11 A | MLTX-02-004-EN-4870 SS, MLTX-02-004-MB-1340 | 100% | QA/QC Engineer [16.1 h] | MOD-02-EN-4900 | MAK-01-PR-1000 | 0 | -4 | 0 | Eng-AS | Engi |
| MLTX-02-004-EN-4910 |  | Pre-Qualification Approval for Doors/Windows | 2d | 2026-04-11 A | 2026-04-12 A | MLTX-02-004-EN-4900 | 100% | Consultant Staff [16.1 h] | MOD-02-EN-4910 | MAK-01-PR-1010 | 0 | 2 | 0 | Eng-AS | Engi |
|  | 9 | **FURNITURES** |  | 2026-03-31 | 2026-04-12 |  |  |  |  |  |  |  |  |  |  |
| MLTX-02-004-EN-4930 |  | Pre-Qualification Submittal for Furnitures | 10d | 2026-03-31 A | 2026-04-11 A | MLTX-02-004-EN-4900 SS, MLTX-02-004-MB-1340 | 100% | QA/QC Engineer [16.1 h] | MOD-02-EN-4930 | MAK-01-PR-1000 | 0 | -4 | 0 | Eng-AS | Engi |
| MLTX-02-004-EN-4940 |  | Pre-Qualification Approval for Furnitures | 2d | 2026-04-11 A | 2026-04-12 A | MLTX-02-004-EN-4930 | 100% | Consultant Staff [16.1 h] | MOD-02-EN-4940 | MAK-01-PR-1010 | 0 | 2 | 0 | Eng-AS | Engi |
|  | 10 | **SANITARY FIXTURES** |  | 2026-03-31 | 2026-04-12 |  |  |  |  |  |  |  |  |  |  |
| MLTX-02-004-EN-4960 |  | Pre-Qualification Submittal for Sanitary Fixtures | 10d | 2026-03-31 A | 2026-04-11 A | MLTX-02-004-EN-4930 SS, MLTX-02-004-MB-1340 | 100% | QA/QC Engineer [16.1 h] | MOD-02-EN-4960 | MAK-01-PR-1000 | 0 | -4 | 0 | Eng-AS | Engi |
| MLTX-02-004-EN-4970 |  | Pre-Qualification Approval for Sanitary Fixtures | 2d | 2026-04-11 A | 2026-04-12 A | MLTX-02-004-EN-4960 | 100% | Consultant Staff [16.1 h] | MOD-02-EN-4970 | MAK-01-PR-1010 | 0 | 2 | 0 | Eng-AS | Engi |
|  | 11 | **WATER SUPPLY PIPES** |  | 2026-03-31 | 2026-04-12 |  |  |  |  |  |  |  |  |  |  |
| MLTX-02-004-EN-4990 |  | Pre-Qualification Submittal for Water Supply Pipes | 10d | 2026-03-31 A | 2026-04-11 A | MLTX-02-004-EN-4960 SS, MLTX-02-004-MB-1340 | 100% | QA/QC Engineer [16.1 h] | MOD-02-EN-4990 | MAK-01-PR-1000 | 0 | -4 | 0 | Eng-AS | Engi |
| MLTX-02-004-EN-5000 |  | Pre-Qualification Approval for Water Supply Pipes | 2d | 2026-04-11 A | 2026-04-12 A | MLTX-02-004-EN-4990 | 100% | Consultant Staff [16.1 h] | MOD-02-EN-5000 | MAK-01-PR-1010 | 0 | 2 | 0 | Eng-AS | Engi |
|  | 12 | **SEWAGE/DRAINAGE PIPES** |  | 2026-03-31 | 2026-04-12 |  |  |  |  |  |  |  |  |  |  |
| MLTX-02-004-EN-5020 |  | Pre-Qualification Submittal for Sewage/Drainage Pipes | 10d | 2026-03-31 A | 2026-04-11 A | MLTX-02-004-EN-4990 SS | 100% | QA/QC Engineer [16.1 h] | MOD-02-EN-5020 | MAK-01-PR-1000 | 0 | -4 | 0 | Eng-AS | Engi |
| MLTX-02-004-EN-5030 |  | Pre-Qualification Approval for Sewage/Drainage Pipes | 2d | 2026-04-11 A | 2026-04-12 A | MLTX-02-004-EN-5020 | 100% | Consultant Staff [16.1 h] | MOD-02-EN-5030 | MAK-01-PR-1010 | 0 | 2 | 0 | Eng-AS | Engi |

| ID | WBS | Activity | Duration | Start | Finish | Predecessors | Complete | Resources | New Activity ID | Old Activity ID - MK | % Variance | Delay | On Schedule | Engineering | WBS-Project |
| --- | --- | --- | --- | --- | --- | --- | --- | --- | --- | --- | --- | --- | --- | --- | --- |
|  | 16 | **PACKAGE AC UNITS** |  | 2026-04-07 | 2026-04-15 |  |  |  |  |  |  |  |  |  |  |
| MLTX-02-004-EN-5050 |  | Pre-Qualification Submittal for Package AC Units | 6d | 2026-04-07 A | 2026-04-13 A | MLTX-02-004-EN-4720 | 100% | QA/QC Engineer [16.1 h] | MOD-02-EN-5050 | MAK-01-PR-1000 | 0 | -3 | 0 | Eng-AS | Engi |
| MLTX-02-004-EN-5060 |  | Pre-Qualification Approval for Package AC Units | 5d | 2026-04-11 A | 2026-04-15 A | MLTX-02-004-EN-5050 | 100% | Consultant Staff [16.1 h] | MOD-02-EN-5060 | MAK-01-PR-1010 | 0 | 0 | 0 | Eng-AS | Engi |
|  | 17 | **AIR DIFUSSERS/GRILLS** |  | 2026-04-07 | 2026-04-15 |  |  |  |  |  |  |  |  |  |  |
| MLTX-02-004-EN-5080 |  | Pre-Qualification Submittal for Air Diffusers/Grills | 6d | 2026-04-07 A | 2026-04-13 A | MLTX-02-004-EN-4750 | 100% | QA/QC Engineer [16.1 h] | MOD-02-EN-5080 | MAK-01-PR-1000 | 0 | -3 | 0 | Eng-AS | Engi |
| MLTX-02-004-EN-5090 |  | Pre-Qualification Approval for Air Diffusers/Grills | 5d | 2026-04-11 A | 2026-04-15 A | MLTX-02-004-EN-5080 | 100% | Consultant Staff [16.1 h] | MOD-02-EN-5090 | MAK-01-PR-1010 | 0 | 0 | 0 | Eng-AS | Engi |
|  | 18 | **GALVANIZED DUCTS** |  | 2026-04-07 | 2026-04-15 |  |  |  |  |  |  |  |  |  |  |
| MLTX-02-004-EN-5110 |  | Pre-Qualification Submittal for Galvanized Ducts | 6d | 2026-04-07 A | 2026-04-13 A | MLTX-02-004-EN-4780 | 100% | QA/QC Engineer [16.1 h] | MOD-02-EN-5110 | MAK-01-PR-1000 | 0 | -3 | 0 | Eng-AS | Engi |
| MLTX-02-004-EN-5120 |  | Pre-Qualification Approval for Galvanized Ducts | 5d | 2026-04-11 A | 2026-04-15 A | MLTX-02-004-EN-5110 | 100% | Consultant Staff [16.1 h] | MOD-02-EN-5120 | MAK-01-PR-1010 | 0 | 0 | 0 | Eng-AS | Engi |
|  | 19 | **EXHAUST FANS** |  | 2026-04-07 | 2026-04-15 |  |  |  |  |  |  |  |  |  |  |
| MLTX-02-004-EN-5140 |  | Pre-Qualification Submittal for Exhaust Fans | 5d | 2026-04-07 A | 2026-04-12 A | MLTX-02-004-EN-4810 | 100% | QA/QC Engineer [16.1 h] | MOD-02-EN-5140 | MAK-01-PR-1000 | 0 | -2 | 0 | Eng-AS | Engi |
| MLTX-02-004-EN-5150 |  | Pre-Qualification Approval for Exhaust Fans | 5d | 2026-04-11 A | 2026-04-15 A | MLTX-02-004-EN-5140 | 100% | Consultant Staff [16.1 h] | MOD-02-EN-5150 | MAK-01-PR-1010 | 0 | 0 | 0 | Eng-AS | Engi |
|  | 13 | **LIGHTING FIXTURES** |  | 2026-04-07 | 2026-04-15 |  |  |  |  |  |  |  |  |  |  |
| MLTX-02-004-EN-5170 |  | Pre-Qualification Submittal for Lighting Fixtures | 3d | 2026-04-07 A | 2026-04-09 A | MLTX-02-004-EN-4840 | 100% | QA/QC Engineer [16.1 h] | MOD-02-EN-5170 | MAK-01-PR-1000 | 0 | 0 | 0 | Eng-AS | Engi |
| MLTX-02-004-EN-5180 |  | Pre-Qualification Approval for Lighting Fixtures | 5d | 2026-04-11 A | 2026-04-15 A | MLTX-02-004-EN-5170 | 100% | Consultant Staff [16.1 h] | MOD-02-EN-5180 | MAK-01-PR-1010 | 0 | 0 | 0 | Eng-AS | Engi |
|  | 14 | **SWITCHES/SOCKETS** |  | 2026-04-07 | 2026-04-15 |  |  |  |  |  |  |  |  |  |  |
| MLTX-02-004-EN-5200 |  | Pre-Qualification Submittal for Switches/Sockets | 3d | 2026-04-07 A | 2026-04-09 A | MLTX-02-004-EN-4870 | 100% | QA/QC Engineer [16.1 h] | MOD-02-EN-5200 | MAK-01-PR-1000 | 0 | 0 | 0 | Eng-AS | Engi |
| MLTX-02-004-EN-5210 |  | Pre-Qualification Approval for Switches/Sockets | 5d | 2026-04-11 A | 2026-04-15 A | MLTX-02-004-EN-5200 | 100% | Consultant Staff [16.1 h] | MOD-02-EN-5210 | MAK-01-PR-1010 | 0 | 0 | 0 | Eng-AS | Engi |
|  | 15 | **EARTHING SYSTEM** |  | 2026-04-07 | 2026-04-15 |  |  |  |  |  |  |  |  |  |  |
| MLTX-02-004-EN-5230 |  | Pre-Qualification Submittal for Earthing System | 3d | 2026-04-07 A | 2026-04-09 A | MLTX-02-004-EN-4900 | 100% | QA/QC Engineer [16.1 h] | MOD-02-EN-5230 | MAK-01-PR-1290 | 0 | 0 | 0 | Eng-AS | Engi |
| MLTX-02-004-EN-5240 |  | Pre-Qualification Approval for Earthing System | 5d | 2026-04-11 A | 2026-04-15 A | MLTX-02-004-EN-5230 | 100% | Consultant Staff [16.1 h] | MOD-02-EN-5240 | MAK-01-PR-1300 | 0 | 0 | 0 | Eng-AS | Engi |
|  | 5 | **DISTRIBUTION PANNELS** |  | 2026-04-07 | 2026-04-15 |  |  |  |  |  |  |  |  |  |  |
| MLTX-02-004-EN-5260 |  | Pre-Qualification Submittal for Distribution Panels | 3d | 2026-04-07 A | 2026-04-09 A | MLTX-02-004-EN-4930 | 100% | QA/QC Engineer [16.1 h] | MOD-02-EN-5260 | MAK-01-PR-LLI-1060 | 0 | 0 | 0 | Eng-AS | Engi |
| MLTX-02-004-EN-5270 |  | Pre-Qualification Approval for Distribution Panels | 5d | 2026-04-11 A | 2026-04-15 A | MLTX-02-004-EN-5260 | 100% | Consultant Staff [16.1 h] | MOD-02-EN-5270 | MAK-01-PR-LLI-1070 | 0 | 0 | 0 | Eng-AS | Engi |

| ID | WBS | Activity | Duration | Start | Finish | Predecessors | Complete | Resources | New Activity ID | Old Activity ID - MK | % Variance | Delay | On Schedule | Engineering | WBS-Project |
| --- | --- | --- | --- | --- | --- | --- | --- | --- | --- | --- | --- | --- | --- | --- | --- |
|  | PLG | **PLAYGROUND WORKS** |  | 2026-03-31 | 2026-04-23 |  |  |  |  |  |  |  |  |  |  |
|  | 5 | **PVC MEMBRANE** |  | 2026-03-31 | 2026-04-15 |  |  |  |  |  |  |  |  |  |  |
| MLTX-02-004-EN-5300 |  | Pre-Qualification Submittal for PVC Membrane | 11d | 2026-03-31 A | 2026-04-12 A | MLTX-02-004-EN-5020 SS | 100% | QA/QC Engineer [16.1 h] | MOD-02-EN-5300 | MAK-01-PR-1120 | 0 | -5 | 0 | Eng-AS | Engi |
| MLTX-02-004-EN-5310 |  | Pre-Qualification Approval for PVC Membrane | 4d | 2026-04-12 A | 2026-04-15 A | MLTX-02-004-EN-5300 | 100% | Consultant Staff [16.1 h] | MOD-02-EN-5310 | MAK-01-PR-1130 | 0 | -1 | 0 | Eng-AS | Engi |
|  | 6 | **STEEL TENSION CABLES** |  | 2026-03-31 | 2026-04-15 |  |  |  |  |  |  |  |  |  |  |
| MLTX-02-004-EN-5330 |  | Pre-Qualification Submittal for Steel Tension Cables | 12d | 2026-03-31 A | 2026-04-13 A | MLTX-02-004-EN-5300 SS | 100% | QA/QC Engineer [16.1 h] | MOD-02-EN-5330 | MAK-01-PR-1120 | 0 | -6 | 0 | Eng-AS | Engi |
| MLTX-02-004-EN-5340 |  | Pre-Qualification Approval for Steel Tension Cables | 3d | 2026-04-13 A | 2026-04-15 A | MLTX-02-004-EN-5330 | 100% | Consultant Staff [16.1 h] | MOD-02-EN-5340 | MAK-01-PR-1120 | 0 | -1 | 0 | Eng-AS | Engi |
|  | 7 | **EMERGENCY DOORS** |  | 2026-03-31 | 2026-04-15 |  |  |  |  |  |  |  |  |  |  |
| MLTX-02-004-EN-5360 |  | Pre-Qualification Submittal for Emergency Doors | 12d | 2026-03-31 A | 2026-04-13 A | MLTX-02-004-MB-1340 | 100% | QA/QC Engineer [16.1 h] | MOD-02-EN-5360 | MAK-01-PR-1120 | 0 | -9 | 0 | Eng-AS | Engi |
| MLTX-02-004-EN-5370 |  | Pre-Qualification Approval for Emergency Doors | 3d | 2026-04-13 A | 2026-04-15 A | MLTX-02-004-EN-5360 | 100% | Consultant Staff [16.1 h] | MOD-02-EN-5370 | MAK-01-PR-1120 | 0 | -4 | 0 | Eng-AS | Engi |
|  | 8 | **PRESSURE UNITS** |  | 2026-03-31 | 2026-04-15 |  |  |  |  |  |  |  |  |  |  |
| MLTX-02-004-EN-5390 |  | Pre-Qualification Submittal for Pressure Units | 12d | 2026-03-31 A | 2026-04-13 A | MLTX-02-004-MB-1340 | 100% | QA/QC Engineer [16.1 h] | MOD-02-EN-5390 | MAK-01-PR-1120 | 0 | -9 | 0 | Eng-AS | Engi |
| MLTX-02-004-EN-5400 |  | Pre-Qualification Approval for Pressure Units | 3d | 2026-04-13 A | 2026-04-15 A | MLTX-02-004-EN-5390 | 100% | Consultant Staff [16.1 h] | MOD-02-EN-5400 | MAK-01-PR-1120 | 0 | -4 | 0 | Eng-AS | Engi |
|  | 9 | **AIR LOCK DOORS** |  | 2026-03-31 | 2026-04-15 |  |  |  |  |  |  |  |  |  |  |
| MLTX-02-004-EN-5420 |  | Pre-Qualification Submittal for Lock Doors | 12d | 2026-03-31 A | 2026-04-13 A | MLTX-02-004-MB-1340 | 100% | QA/QC Engineer [16.1 h] | MOD-02-EN-5420 | MAK-01-PR-1120 | 0 | -9 | 0 | Eng-AS | Engi |
| MLTX-02-004-EN-5430 |  | Pre-Qualification Approval for Lock Doors | 3d | 2026-04-13 A | 2026-04-15 A | MLTX-02-004-EN-5420 | 100% | Consultant Staff [16.1 h] | MOD-02-EN-5430 | MAK-01-PR-1120 | 0 | -4 | 0 | Eng-AS | Engi |
|  | 15 | **ARTIFICIAL TURF** |  | 2026-03-31 | 2026-04-12 |  |  |  |  |  |  |  |  |  |  |
| MLTX-02-004-EN-5450 |  | Pre-Qualification Submittal for Artificial TURF | 10d | 2026-03-31 A | 2026-04-11 A | MLTX-02-004-MB-1340 | 100% | QA/QC Engineer [16.1 h] | MOD-02-EN-5450 | MAK-01-PR-1120 | 0 | -7 | 0 | Eng-AS | Engi |
| MLTX-02-004-EN-5460 |  | Pre-Qualification Approval for Artificial TURF | 2d | 2026-04-11 A | 2026-04-12 A | MLTX-02-004-EN-5450 | 100% | Consultant Staff [16.1 h] | MOD-02-EN-5460 | MAK-01-PR-1120 | 0 | -1 | 0 | Eng-AS | Engi |
|  | 20 | **RUBBER GRANULES** |  | 2026-03-31 | 2026-04-15 |  |  |  |  |  |  |  |  |  |  |
| MLTX-02-004-EN-5480 |  | Pre-Qualification Submittal for Rubber Granules | 12d | 2026-03-31 A | 2026-04-13 A | MLTX-02-004-MB-1340 | 100% | QA/QC Engineer [16.1 h] | MOD-02-EN-5480 | MAK-01-PR-1120 | 0 | -9 | 0 | Eng-AS | Engi |
| MLTX-02-004-EN-5490 |  | Pre-Qualification Approval for Rubber Granules | 3d | 2026-04-13 A | 2026-04-15 A | MLTX-02-004-EN-5480 | 100% | Consultant Staff [16.1 h] | MOD-02-EN-5490 | MAK-01-PR-1120 | 0 | -4 | 0 | Eng-AS | Engi |
|  | 21 | **PADEL GLASS** |  | 2026-03-31 | 2026-04-15 |  |  |  |  |  |  |  |  |  |  |
| MLTX-02-004-EN-5510 |  | Pre-Qualification Submittal for Padel Glass | 12d | 2026-03-31 A | 2026-04-13 A | MLTX-02-004-MB-1340 | 100% | QA/QC Engineer [16.1 h] | MOD-02-EN-5510 | MAK-01-PR-1120 | 0 | -9 | 0 | Eng-AS | Engi |
| MLTX-02-004-EN-5520 |  | Pre-Qualification Approval for Padel Glass | 3d | 2026-04-13 A | 2026-04-15 A | MLTX-02-004-EN-5510 | 100% | Consultant Staff [16.1 h] | MOD-02-EN-5520 | MAK-01-PR-1120 | 0 | -4 | 0 | Eng-AS | Engi |

| ID | WBS | Activity | Duration | Start | Finish | Predecessors | Complete | Resources | New Activity ID | Old Activity ID - MK | % Variance | Delay | On Schedule | Engineering | WBS-Project |
| --- | --- | --- | --- | --- | --- | --- | --- | --- | --- | --- | --- | --- | --- | --- | --- |
|  | 22 | **PADEL WIRE MESH/STEEL SETS** |  | 2026-03-31 | 2026-04-15 |  |  |  |  |  |  |  |  |  |  |
| MLTX-02-004-EN-5540 |  | Pre-Qualification Submittal for Wire Mesh/Steel Sets | 12d | 2026-03-31 A | 2026-04-13 A | MLTX-02-004-MB-1340 | 100% | QA/QC Engineer [16.1 h] | MOD-02-EN-5540 | MAK-01-PR-1120 | 0 | -9 | 0 | Eng-AS | Engi |
| MLTX-02-004-EN-5550 |  | Pre-Qualification Approval for Wire Mesh/Steel Sets | 3d | 2026-04-13 A | 2026-04-15 A | MLTX-02-004-EN-5540 | 100% | Consultant Staff [16.1 h] | MOD-02-EN-5550 | MAK-01-PR-1120 | 0 | -4 | 0 | Eng-AS | Engi |
|  | 1 | **AGGREGATE BASE COURSE** |  | 2026-03-31 | 2026-04-15 |  |  |  |  |  |  |  |  |  |  |
| MLTX-02-004-EN-5570 |  | Pre-Qualification Submittal for Aggregate Base Course | 14d | 2026-03-31 A | 2026-04-15 A | MLTX-02-004-MB-1340 | 100% | QA/QC Engineer [16.1 h] | MOD-02-EN-5570 | MAK-01-PR-1090 | 0 | -11 | 0 | Eng-AS | Engi |
| MLTX-02-004-EN-5580 |  | Pre-Qualification Approval for Aggregate Base Course | 1d | 2026-04-15 A | 2026-04-15 A | MLTX-02-004-EN-5570 | 100% | Consultant Staff [16.1 h] | MOD-02-EN-5580 | MAK-01-PR-1100 | 0 | -4 | 0 | Eng-AS | Engi |
|  | 16 | **PACKAGE AC UNITS** |  | 2026-04-04 | 2026-04-15 |  |  |  |  |  |  |  |  |  |  |
| MLTX-02-004-EN-5690 |  | Pre-Qualification Submittal for Package AC Units | 9d | 2026-04-04 A | 2026-04-13 A | MLTX-02-004-EN-5390 | 100% | QA/QC Engineer [16.1 h] | MOD-02-EN-5690 | MAK-01-PR-1000 | 0 | -6 | 0 | Eng-AS | Engi |
| MLTX-02-004-EN-5700 |  | Pre-Qualification Approval for Package AC Units | 3d | 2026-04-13 A | 2026-04-15 A | MLTX-02-004-EN-5690 | 100% | Consultant Staff [16.1 h] | MOD-02-EN-5700 | MAK-01-PR-1010 | 0 | -3 | 0 | Eng-AS | Engi |
|  | 17 | **AIR DIFUSSERS/GRILLS** |  | 2026-04-04 | 2026-04-15 |  |  |  |  |  |  |  |  |  |  |
| MLTX-02-004-EN-5720 |  | Pre-Qualification Submittal for Air Difussers/Grills | 9d | 2026-04-04 A | 2026-04-13 A | MLTX-02-004-EN-5420 | 100% | QA/QC Engineer [16.1 h] | MOD-02-EN-5720 | MAK-01-PR-1000 | 0 | -6 | 0 | Eng-AS | Engi |
| MLTX-02-004-EN-5730 |  | Pre-Qualification Approval for Air Difussers/Grills | 3d | 2026-04-13 A | 2026-04-15 A | MLTX-02-004-EN-5720 | 100% | Consultant Staff [16.1 h] | MOD-02-EN-5730 | MAK-01-PR-1010 | 0 | -3 | 0 | Eng-AS | Engi |
|  | 2 | **BITUMINOUS BASE & WEARING COURSE** |  | 2026-04-07 | 2026-04-14 |  |  |  |  |  |  |  |  |  |  |
| MLTX-02-004-EN-5600 |  | Pre-Qualification Submittal for Bituminous Base & Wearing Cource | 5d | 2026-04-07 A | 2026-04-12 A | MLTX-02-004-EN-5300 | 100% | QA/QC Engineer [16.1 h] | MOD-02-EN-5600 | MAK-01-PR-1120 | 0 | -2 | 0 | Eng-AS | Engi |
| MLTX-02-004-EN-5610 |  | Pre-Qualification Approval for the Site | 3d | 2026-04-12 A | 2026-04-14 A | MLTX-02-004-EN-5600 | 100% | Consultant Staff [16.1 h] | MOD-02-EN-5610 | MAK-01-PR-1130 | 0 | 1 | 0 | Eng-AS | Engi |
|  | 3 | **INTERLOCKING PAVING** |  | 2026-04-07 | 2026-04-23 |  |  |  |  |  |  |  |  |  |  |
| MLTX-02-004-EN-5630 |  | Pre-Qualification Submittal for Interlocking Block Pavers | 5d | 2026-04-07 A | 2026-04-12 A | MLTX-02-004-EN-5330 | 100% | QA/QC Engineer [16.1 h] | MOD-02-EN-5630 | MAK-01-PR-1170 | 0 | -2 | 0 | Eng-AS | Engi |
| MLTX-02-004-EN-5640 |  | Pre-Qualification Approval for Interlocking Block Pavers | 11d | 2026-04-12 A | 2026-04-23 A | MLTX-02-004-EN-5630 | 100% | Consultant Staff [16.1 h] | MOD-02-EN-5640 | MAK-01-PR-1180 | 0 | -7 | 0 | Eng-AS | Engi |
|  | 4 | **MARKING PAINT** |  | 2026-04-04 | 2026-04-12 |  |  |  |  |  |  |  |  |  |  |
| MLTX-02-004-EN-5660 |  | Pre-Qualification Submittal for Marking Paint | 8d | 2026-04-04 A | 2026-04-12 A | MLTX-02-004-EN-5360 | 100% | QA/QC Engineer [16.1 h] | MOD-02-EN-5660 | MAK-01-PR-1120 | 0 | -5 | 0 | Eng-AS | Engi |
| MLTX-02-004-EN-5670 |  | Pre-Qualification Approval for Marking Paint | 5d | 2026-04-07 A | 2026-04-12 A | MLTX-02-004-EN-5660 | 100% | Consultant Staff [16.1 h] | MOD-02-EN-5670 | MAK-01-PR-1120 | 0 | 0 | 0 | Eng-AS | Engi |
|  | 18 | **GALVANIZED DUCTS** |  | 2026-04-04 | 2026-04-15 |  |  |  |  |  |  |  |  |  |  |
| MLTX-02-004-EN-5750 |  | Pre-Qualification Submittal for Galvanized Duct | 9d | 2026-04-04 A | 2026-04-13 A | MLTX-02-004-EN-5720 SS | 100% | QA/QC Engineer [16.1 h] | MOD-02-EN-5750 | MAK-01-PR-1000 | 0 | -6 | 0 | Eng-AS | Engi |
| MLTX-02-004-EN-5760 |  | Pre-Qualification Approval for Galvanized Duct | 3d | 2026-04-13 A | 2026-04-15 A | MLTX-02-004-EN-5750 | 100% | Consultant Staff [16.1 h] | MOD-02-EN-5760 | MAK-01-PR-1010 | 0 | -3 | 0 | Eng-AS | Engi |

| ID | WBS | Activity | Duration | Start | Finish | Predecessors | Complete | Resources | New Activity ID | Old Activity ID - MK | % Variance | Delay | On Schedule | Engineering | WBS-Project |
| --- | --- | --- | --- | --- | --- | --- | --- | --- | --- | --- | --- | --- | --- | --- | --- |
|  | 19 | **EXHAUST FANS** |  | 2026-04-04 | 2026-04-15 |  |  |  |  |  |  |  |  |  |  |
| MLTX-02-004-EN-5780 |  | Pre-Qualification Submittal for Exhaust Fans | 9d | 2026-04-04 A | 2026-04-13 A | MLTX-02-004-EN-5450 | 100% | QA/QC Engineer [16.1 h] | MOD-02-EN-5780 | MAK-01-PR-1000 | 0 | -6 | 0 | Eng-AS | Engi |
| MLTX-02-004-EN-5790 |  | Pre-Qualification Approval for Exhaust Fans | 3d | 2026-04-13 A | 2026-04-15 A | MLTX-02-004-EN-5780 | 100% | Consultant Staff [16.1 h] | MOD-02-EN-5790 | MAK-01-PR-1010 | 0 | -3 | 0 | Eng-AS | Engi |
|  | 10 | **DISTRIBUTION BOARDS** |  | 2026-04-04 | 2026-04-15 |  |  |  |  |  |  |  |  |  |  |
| MLTX-02-004-EN-5810 |  | Pre-Qualification Submittal for Distribution Boards | 9d | 2026-04-04 A | 2026-04-13 A | MLTX-02-004-EN-5420 | 100% | QA/QC Engineer [16.1 h] | MOD-02-EN-5810 | MAK-01-PR-1000 | 0 | -6 | 0 | Eng-AS | Engi |
| MLTX-02-004-EN-5820 |  | Pre-Qualification Approval for Distribution Boards | 3d | 2026-04-13 A | 2026-04-15 A | MLTX-02-004-EN-5810 | 100% | Consultant Staff [16.1 h] | MOD-02-EN-5820 | MAK-01-PR-1010 | 0 | -3 | 0 | Eng-AS | Engi |
|  | 11 | **POWER CABLES** |  | 2026-04-04 | 2026-04-15 |  |  |  |  |  |  |  |  |  |  |
| MLTX-02-004-EN-5840 |  | Pre-Qualification Submittal for Power Cables | 9d | 2026-04-04 A | 2026-04-13 A | MLTX-02-004-EN-5540 | 100% | QA/QC Engineer [16.1 h] | MOD-02-EN-5840 | MAK-01-PR-1000 | 0 | -6 | 0 | Eng-AS | Engi |
| MLTX-02-004-EN-5850 |  | Pre-Qualification Approval for Power Cables | 3d | 2026-04-13 A | 2026-04-15 A | MLTX-02-004-EN-5840 | 100% | Consultant Staff [16.1 h] | MOD-02-EN-5850 | MAK-01-PR-1010 | 0 | -3 | 0 | Eng-AS | Engi |
|  | 12 | **LIGHT FIXTURES** |  | 2026-04-04 | 2026-04-15 |  |  |  |  |  |  |  |  |  |  |
| MLTX-02-004-EN-5870 |  | Pre-Qualification Submittal for Light Fixtures | 9d | 2026-04-04 A | 2026-04-13 A | MLTX-02-004-EN-5480 | 100% | QA/QC Engineer [16.1 h] | MOD-02-EN-5870 | MAK-01-PR-1000 | 0 | -6 | 0 | Eng-AS | Engi |
| MLTX-02-004-EN-5880 |  | Pre-Qualification Approval for Light Fixtures | 3d | 2026-04-13 A | 2026-04-15 A | MLTX-02-004-EN-5870 | 100% | Consultant Staff [16.1 h] | MOD-02-EN-5880 | MAK-01-PR-1010 | 0 | -3 | 0 | Eng-AS | Engi |
|  | 13 | **CCTV MATERIALS** |  | 2026-04-04 | 2026-04-12 |  |  |  |  |  |  |  |  |  |  |
| MLTX-02-004-EN-5900 |  | Pre-Qualification Submittal for CCTV | 3d | 2026-04-04 A | 2026-04-06 A | MLTX-02-004-EN-5510 | 100% | QA/QC Engineer [16.1 h] | MOD-02-EN-5900 | MAK-01-PR-1000 | 0 | 0 | 0 | Eng-AS | Engi |
| MLTX-02-004-EN-5910 |  | Pre-Qualification Approval for CCTV | 5d | 2026-04-07 A | 2026-04-12 A | MLTX-02-004-EN-5900 | 100% | Consultant Staff [16.1 h] | MOD-02-EN-5910 | MAK-01-PR-1010 | 0 | 0 | 0 | Eng-AS | Engi |
|  | 14 | **POWER OUTLETS/SWITCHES** |  | 2026-04-04 | 2026-04-15 |  |  |  |  |  |  |  |  |  |  |
| MLTX-02-004-EN-5930 |  | Pre-Qualification Submittal for Power Outlets/Switches | 9d | 2026-04-04 A | 2026-04-13 A | MLTX-02-004-EN-5570 | 100% | QA/QC Engineer [16.1 h] | MOD-02-EN-5930 | MAK-01-PR-1000 | 0 | -6 | 0 | Eng-AS | Engi |
| MLTX-02-004-EN-5940 |  | Pre-Qualification Approval for Power Outlets/Switches | 3d | 2026-04-13 A | 2026-04-15 A | MLTX-02-004-EN-5930 | 100% | Consultant Staff [16.1 h] | MOD-02-EN-5940 | MAK-01-PR-1010 | 0 | -3 | 0 | Eng-AS | Engi |
|  | LSC | **LANDSCAPE WORKS** |  | 2026-04-04 | 2026-05-21 |  |  |  |  |  |  |  |  |  |  |
|  | 7 | **INTERLOCKING PAVING** |  | 2026-04-04 | 2026-04-23 |  |  |  |  |  |  |  |  |  |  |
| MLTX-02-004-EN-5970 |  | Pre-Qualification Submittal for Interlocking Block Pavers | 8d | 2026-04-04 A | 2026-04-12 A | MLTX-02-004-EN-5570 | 100% | QA/QC Engineer [16.1 h] | MOD-02-EN-5970 | MAK-01-PR-1170 | 0 | -5 | 0 | Eng-AS | Engi |
| MLTX-02-004-EN-5980 |  | Pre-Qualification Approval for Interlocking Block Pavers | 11d | 2026-04-12 A | 2026-04-23 A | MLTX-02-004-EN-5970 | 100% | Consultant Staff [16.1 h] | MOD-02-EN-5980 | MAK-01-PR-1180 | 0 | -10 | 0 | Eng-AS | Engi |
|  | 9 | **CURBSTONE** |  | 2026-04-04 | 2026-04-23 |  |  |  |  |  |  |  |  |  |  |
| MLTX-02-004-EN-6000 |  | Pre-Qualification Submittal for Curbstone | 8d | 2026-04-04 A | 2026-04-12 A | MLTX-02-004-EN-5570 | 100% | QA/QC Engineer [16.1 h] | MOD-02-EN-6000 | MAK-01-PR-1260 | 0 | -5 | 0 | Eng-AS | Engi |
| MLTX-02-004-EN-6010 |  | Pre-Qualification Approval for Curbstone | 11d | 2026-04-12 A | 2026-04-23 A | MLTX-02-004-EN-6000 | 100% | Consultant Staff [16.1 h] | MOD-02-EN-6010 | MAK-01-PR-1270 | 0 | -10 | 0 | Eng-AS | Engi |

| ID | WBS | Activity | Duration | Start | Finish | Predecessors | Complete | Resources | New Activity ID | Old Activity ID - MK | % Variance | Delay | On Schedule | Engineering | WBS-Project | Flag |
| --- | --- | --- | --- | --- | --- | --- | --- | --- | --- | --- | --- | --- | --- | --- | --- | --- |
|  | 1 | **PAVEMENT MARKING** |  | 2026-04-04 | 2026-04-12 |  |  |  |  |  |  |  |  |  |  |  |
| MLTX-02-004-EN-6030 |  | Pre-Qualification Submittal for Pavement Markings | 3d | 2026-04-04 A | 2026-04-06 A | MLTX-02-004-EN-5570 | 100% | QA/QC Engineer [16.1 h] | MOD-02-EN-6030 | MAK-01-PR-1200 | 0 | 0 | 0 | Eng-AS | Engi |  |
| MLTX-02-004-EN-6040 |  | Pre-Qualification Approval for Pavement Markings | 5d | 2026-04-07 A | 2026-04-12 A | MLTX-02-004-EN-6030 | 100% | Consultant Staff [16.1 h] | MOD-02-EN-6040 | MAK-01-PR-1210 | 0 | 0 | 0 | Eng-AS | Engi |  |
|  | 2 | **TRAFFIC SIGNS** |  | 2026-05-06 | 2026-05-21 |  |  |  |  |  |  |  |  |  |  |  |
| MLTX-02-004-EN-6060 |  | Pre-Qualification Submittal for Traffic Signs | 1d | 2026-05-06 A | 2026-05-06 A | MLTX-02-004-EN-5570 | 100% | QA/QC Engineer [16.1 h] | MOD-02-EN-6060 | MAK-01-PR-1230 | 0 | -26 | 0 | Eng-AS | Engi |  |
| MLTX-02-004-EN-6070 |  | Pre-Qualification Approval for Traffic Signs | 1d | 2026-05-21 A | 2026-05-21 A | MLTX-02-004-EN-6060 | 100% | Consultant Staff [16.1 h] | MOD-02-EN-6070 | MAK-01-PR-1240 | -100 | -35 | -100 | Eng-AS | Engi | UDF_G1 |
|  | 3 | **IRRIGATION PIPES/SPRINKLERS** |  | 2026-04-04 | 2026-05-21 |  |  |  |  |  |  |  |  |  |  |  |
| MLTX-02-004-EN-6090 |  | Pre-Qualification Submittal for Irrigation Pipes/Sprinkles | 20d | 2026-04-04 A | 2026-04-26 A | MLTX-02-004-EN-5570 | 100% | QA/QC Engineer [16.1 h] | MOD-02-EN-6090 | MAK-01-PR-1260 | 0 | -17 | 0 | Eng-AS | Engi |  |
| MLTX-02-004-EN-6100 |  | Pre-Qualification Approval for Irrigation Pipes/Sprinkles | 1d | 2026-05-21 A | 2026-05-21 A | MLTX-02-004-EN-6090 | 100% | Consultant Staff [16.1 h] | MOD-02-EN-6100 | MAK-01-PR-1270 | -100 | -32 | -100 | Eng-AS | Engi | UDF_G1 |
|  | 5 | **AGRICULTURE SOIL** |  | 2026-04-04 | 2026-05-21 |  |  |  |  |  |  |  |  |  |  |  |
| MLTX-02-004-EN-6120 |  | Pre-Qualification Submittal for Agriculture Soil | 20d | 2026-04-04 A | 2026-04-26 A | MLTX-02-004-EN-5570 | 100% | QA/QC Engineer [16.1 h] | MOD-02-EN-6120 | MAK-01-PR-1260 | 0 | -17 | 0 | Eng-AS | Engi |  |
| MLTX-02-004-EN-6130 |  | Pre-Qualification Approval for Agriculture Soil | 1d | 2026-05-21 A | 2026-05-21 A | MLTX-02-004-EN-6120 | 100% | Consultant Staff [16.1 h] | MOD-02-EN-6130 | MAK-01-PR-1270 | -100 | -32 | -100 | Eng-AS | Engi | UDF_G1 |
|  | 8 | **TRACK SURFACE** |  | 2026-04-04 | 2026-04-12 |  |  |  |  |  |  |  |  |  |  |  |
| MLTX-02-004-EN-6150 |  | Pre-Qualification Submittal for Track Surface | 3d | 2026-04-04 A | 2026-04-06 A | MLTX-02-004-EN-5570 | 100% | QA/QC Engineer [30 h] | MOD-02-EN-6150 | MAK-01-PR-1260 | 0 | 0 | 0 | Eng-AS | Engi |  |
| MLTX-02-004-EN-6160 |  | Pre-Qualification Approval for Track Surface | 5d | 2026-04-07 A | 2026-04-12 A | MLTX-02-004-EN-6150 | 100% | Consultant Staff [30 h] | MOD-02-EN-6160 | MAK-01-PR-1270 | 0 | 0 | 0 | Eng-AS | Engi |  |
|  | 10 | **GRASS/TREES** |  | 2026-04-04 | 2026-04-19 |  |  |  |  |  |  |  |  |  |  |  |
| MLTX-02-004-EN-6180 |  | Pre-Qualification Submittal for Grass/Trees | 10d | 2026-04-04 A | 2026-04-14 A | MLTX-02-004-EN-5570 | 100% | QA/QC Engineer [30 h] | MOD-02-EN-6180 | MAK-01-PR-1260 | 0 | -7 | 0 | Eng-AS | Engi |  |
| MLTX-02-004-EN-6190 |  | Pre-Qualification Approval for Grass/Trees | 5d | 2026-04-14 A | 2026-04-19 A | MLTX-02-004-EN-6180 | 100% | Consultant Staff [30 h] | MOD-02-EN-6190 | MAK-01-PR-1270 | 0 | -6 | 0 | Eng-AS | Engi |  |
|  | 6 | **CABLES** |  | 2026-05-06 | 2026-05-07 |  |  |  |  |  |  |  |  |  |  |  |
| MLTX-02-004-EN-6210 |  | Pre-Qualification Submittal for Cables | 1d | 2026-05-06 A | 2026-05-06 A | MLTX-02-004-EN-5570 | 100% | QA/QC Engineer [30 h] | MOD-02-EN-6210 | MAK-01-PR-1200 | 0 | -26 | 0 | Eng-AS | Engi |  |
| MLTX-02-004-EN-6220 |  | Pre-Qualification Approval for Cables | 1d | 2026-05-07 A | 2026-05-07 A | MLTX-02-004-EN-6210 | 100% | Consultant Staff [30 h] | MOD-02-EN-6220 | MAK-01-PR-1210 | 0 | -22 | 0 | Eng-AS | Engi |  |
|  | 4 | **LIGHT POLES** |  | 2026-05-06 | 2026-05-07 |  |  |  |  |  |  |  |  |  |  |  |
| MLTX-02-004-EN-6240 |  | Pre-Qualification Submittal for Lighting poles | 1d | 2026-05-06 A | 2026-05-06 A | MLTX-02-004-EN-5570 | 100% | QA/QC Engineer [30 h] | MOD-02-EN-6240 | MAK-01-PR-LLI-1120 | 0 | -26 | 0 | Eng-AS | Engi |  |
| MLTX-02-004-EN-6250 |  | Pre-Qualification Approval for Lighting poles | 1d | 2026-05-07 A | 2026-05-07 A | MLTX-02-004-EN-6240 | 100% | Consultant Staff [26.8 h] | MOD-02-EN-6250 | MAK-01-PR-LLI-1130 | 0 | -22 | 0 | Eng-AS | Engi |  |

| ID | WBS | Activity | Duration | Start | Finish | Predecessors | Complete | Planned start | Planned finish | Resources | New Activity ID | Old Activity ID - MK | % Variance | Delay | On Schedule | Engineering | WBS-Project | Flag |
| --- | --- | --- | --- | --- | --- | --- | --- | --- | --- | --- | --- | --- | --- | --- | --- | --- | --- | --- |
|  | MAT | **MATERIAL SUBMITTAL & APPROVAL** |  | 2026-04-11 | 2026-08-24 |  |  |  |  |  |  |  |  |  |  |  |  |  |
|  | TOI | **TOILET/SERVICE WORKS** |  | 2026-04-11 | 2026-07-22 |  |  |  |  |  |  |  |  |  |  |  |  |  |
|  | 1 | **STEEL REINFORCEMENT** |  | 2026-04-11 | 2026-04-14 |  |  |  |  |  |  |  |  |  |  |  |  |  |
| MLTX-02-004-EN-6290 |  | Material Submittal for Steel Reinforcement | 2d | 2026-04-11 A | 2026-04-12 A | MLTX-02-004-EN-4730 | 100% |  |  | QA/QC Engineer [16.1 h] | MOD-02-EN-6290 | MAK-01-PR-1000 | 0 | 5 | 0 | Eng-AS | Engi |  |
| MLTX-02-004-EN-6300 |  | Material Approval for Steel Reinforcement | 3d | 2026-04-12 A | 2026-04-14 A | MLTX-02-004-EN-6290 | 100% |  |  | Consultant Staff [16.1 h] | MOD-02-EN-6300 | MAK-01-PR-1010 | 0 | 10 | 0 | Eng-AS | Engi |  |
|  | 2 | **READY MIX CONCRETE** |  | 2026-04-15 | 2026-04-26 |  |  |  |  |  |  |  |  |  |  |  |  |  |
| MLTX-02-004-EN-6320 |  | Material Submittal for Ready Mixed Concrete | 3d | 2026-04-15 A | 2026-04-18 A | MLTX-02-004-EN-4760 | 100% |  |  | QA/QC Engineer [16.1 h] | MOD-02-EN-6320 | MAK-01-PR-1040 | 0 | 0 | 0 | Eng-AS | Engi |  |
| MLTX-02-004-EN-6330 |  | Material Approval of Ready Mixed Concrete | 7d | 2026-04-19 A | 2026-04-26 A | MLTX-02-004-EN-6320 | 100% |  |  | Consultant Staff [16.1 h] | MOD-02-EN-6330 | MAK-01-PR-1050 | 0 | 0 | 0 | Eng-AS | Engi |  |
|  | 3 | **CONCRETE BLOCKS** |  | 2026-04-15 | 2026-04-26 |  |  |  |  |  |  |  |  |  |  |  |  |  |
| MLTX-02-004-EN-6350 |  | Material Submittal for Concrete Blocks | 3d | 2026-04-15 A | 2026-04-18 A | MLTX-02-004-EN-4790 | 100% |  |  | QA/QC Engineer [16.1 h] | MOD-02-EN-6350 | MAK-01-PR-1000 | 0 | 0 | 0 | Eng-AS | Engi |  |
| MLTX-02-004-EN-6360 |  | Material Approval for Concrete Blocks | 7d | 2026-04-19 A | 2026-04-26 A | MLTX-02-004-EN-6350 | 100% |  |  | Consultant Staff [16.1 h] | MOD-02-EN-6360 | MAK-01-PR-1010 | 0 | 0 | 0 | Eng-AS | Engi |  |
|  | 6 | **FLOOR/WALL TILES** |  | 2026-04-15 | 2026-07-22 |  |  |  |  |  |  |  |  |  |  |  |  |  |
| MLTX-02-004-EN-6410 |  | Material Submittal for Tilling Materials | 3d | 2026-04-15 A | 2026-04-18 A | MLTX-02-004-EN-4850 | 100% |  |  | QA/QC Engineer [16.1 h] | MOD-02-EN-6410 | MAK-01-PR-1000 | 0 | 0 | 0 | Eng-AS | Engi |  |
| MLTX-02-004-EN-6420 |  | Material Approval for Tilling Material | 7d | 2026-07-22 A | 2026-07-22 A | MLTX-02-004-EN-6410 | 100% | 2026-07-22 | 2026-07-29 | Consultant Staff [16.1 h] | MOD-02-EN-6420 | MAK-01-PR-1010 | -100 | -22 | -100 | Eng-AS | Engi | UDF_G1 |
|  | 7 | **SUSPENDED CEILING** |  | 2026-04-15 | 2026-04-20 |  |  |  |  |  |  |  |  |  |  |  |  |  |
| MLTX-02-004-EN-6440 |  | Material Submittal for Suspend Ceiling | 3d | 2026-04-15 A | 2026-04-18 A | MLTX-02-004-EN-4880 | 100% |  |  | QA/QC Engineer [16.1 h] | MOD-02-EN-6440 | MAK-01-PR-1000 | 0 | 0 | 0 | Eng-AS | Engi |  |
| MLTX-02-004-EN-6450 |  | Material Approval for Suspend Ceiling | 2d | 2026-04-19 A | 2026-04-20 A | MLTX-02-004-EN-6440 | 100% |  |  | Consultant Staff [16.1 h] | MOD-02-EN-6450 | MAK-01-PR-1010 | 0 | 5 | 0 | Eng-AS | Engi |  |
|  | 8 | **DOORS/WINDOWS** |  | 2026-05-06 | 2026-05-21 |  |  |  |  |  |  |  |  |  |  |  |  |  |
| MLTX-02-004-EN-6470 |  | Material Submittal for Doors/Windows | 1d | 2026-05-06 A | 2026-05-06 A | MLTX-02-004-EN-4910 | 100% |  |  | QA/QC Engineer [16.1 h] | MOD-02-EN-6470 | MAK-01-PR-1000 | 0 | -16 | 0 | Eng-AS | Engi |  |
| MLTX-02-004-EN-6480 |  | Material Approval for Doors/Windows | 1d | 2026-05-21 A | 2026-05-21 A | MLTX-02-004-EN-6470 | 100% |  |  | Consultant Staff [16.1 h] | MOD-02-EN-6480 | MAK-01-PR-1010 | -100 | -22 | -100 | Eng-AS | Engi | UDF_G1 |
|  | 9 | **FURNITURES** |  | 2026-05-06 | 2026-05-07 |  |  |  |  |  |  |  |  |  |  |  |  |  |
| MLTX-02-004-EN-6500 |  | Material Submittal for Furnitures | 1d | 2026-05-06 A | 2026-05-06 A | MLTX-02-004-EN-4940 | 100% |  |  | QA/QC Engineer [16.1 h] | MOD-02-EN-6500 | MAK-01-PR-1000 | 0 | -16 | 0 | Eng-AS | Engi |  |
| MLTX-02-004-EN-6510 |  | Material Approval for Furnitures | 1d | 2026-05-07 A | 2026-05-07 A | MLTX-02-004-EN-6500 | 100% |  |  | Consultant Staff [16.1 h] | MOD-02-EN-6510 | MAK-01-PR-1010 | 0 | -10 | 0 | Eng-AS | Engi |  |
|  | 10 | **SANITARY FIXTURES** |  | 2026-04-15 | 2026-04-30 |  |  |  |  |  |  |  |  |  |  |  |  |  |
| MLTX-02-004-EN-6530 |  | Material Submittal for Sanitary Fixtures | 6d | 2026-04-15 A | 2026-04-21 A | MLTX-02-004-EN-4970 | 100% |  |  | QA/QC Engineer [16.1 h] | MOD-02-EN-6530 | MAK-01-PR-1000 | 0 | -3 | 0 | Eng-AS | Engi |  |
| MLTX-02-004-EN-6540 |  | Material Approval for Sanitary Fixtures | 11d | 2026-04-19 A | 2026-04-30 A | MLTX-02-004-EN-6530 | 100% |  |  | Consultant Staff [16.1 h] | MOD-02-EN-6540 | MAK-01-PR-1010 | 0 | -4 | 0 | Eng-AS | Engi |  |

| ID | WBS | Activity | Duration | Start | Finish | Predecessors | Complete | Resources | New Activity ID | Old Activity ID - MK | % Variance | Delay | On Schedule | Engineering | WBS-Project | Flag |
| --- | --- | --- | --- | --- | --- | --- | --- | --- | --- | --- | --- | --- | --- | --- | --- | --- |
|  | 11 | **WATER SUPPLY PIPES** |  | 2026-04-15 | 2026-04-16 |  |  |  |  |  |  |  |  |  |  |  |
| MLTX-02-004-EN-6560 |  | Material Submittal for Water Supply Pipes | 1d | 2026-04-15 A | 2026-04-15 A | MLTX-02-004-EN-5000 | 100% | QA/QC Engineer [16.1 h] | MOD-02-EN-6560 | MAK-01-PR-1000 | 0 | 2 | 0 | Eng-AS | Engi |  |
| MLTX-02-004-EN-6570 |  | Material Approval for Water Supply Pipes | 2d | 2026-04-15 A | 2026-04-16 A | MLTX-02-004-EN-6560 | 100% | Consultant Staff [16.1 h] | MOD-02-EN-6570 | MAK-01-PR-1010 | 0 | 8 | 0 | Eng-AS | Engi |  |
|  | 12 | **SEWAGE/DRAINAGE PIPES** |  | 2026-04-15 | 2026-04-16 |  |  |  |  |  |  |  |  |  |  |  |
| MLTX-02-004-EN-6590 |  | Material Submittal for Sewage/Drainage Pipes | 1d | 2026-04-15 A | 2026-04-15 A | MLTX-02-004-EN-5030 | 100% | QA/QC Engineer [16.1 h] | MOD-02-EN-6590 | MAK-01-PR-1000 | 0 | 2 | 0 | Eng-AS | Engi |  |
| MLTX-02-004-EN-6600 |  | Material Approval for Sewage/Drainage Pipes | 2d | 2026-04-15 A | 2026-04-16 A | MLTX-02-004-EN-6590 | 100% | Consultant Staff [16.1 h] | MOD-02-EN-6600 | MAK-01-PR-1010 | 0 | 8 | 0 | Eng-AS | Engi |  |
|  | 16 | **PACKAGE AC UNITS** |  | 2026-05-06 | 2026-05-07 |  |  |  |  |  |  |  |  |  |  |  |
| MLTX-02-004-EN-6620 |  | Material Submittal for Package AC Units | 1d | 2026-05-06 A | 2026-05-06 A | MLTX-02-004-EN-5060 | 100% | QA/QC Engineer [16.1 h] | MOD-02-EN-6620 | MAK-01-PR-1000 | 0 | -15 | 0 | Eng-AS | Engi |  |
| MLTX-02-004-EN-6630 |  | Material Approval for Package AC Units | 1d | 2026-05-07 A | 2026-05-07 A | MLTX-02-004-EN-6620 | 100% | Consultant Staff [16.1 h] | MOD-02-EN-6630 | MAK-01-PR-1010 | 0 | -10 | 0 | Eng-AS | Engi |  |
|  | 17 | **AIR DIFUSSERS/GRILLS** |  | 2026-04-16 | 2026-05-06 |  |  |  |  |  |  |  |  |  |  |  |
| MLTX-02-004-EN-6650 |  | Material Submittal for Air Diffusers/Grills | 6d | 2026-04-16 A | 2026-04-22 A | MLTX-02-004-EN-5090 | 100% | QA/QC Engineer [16.1 h] | MOD-02-EN-6650 | MAK-01-PR-1000 | 0 | -3 | 0 | Eng-AS | Engi |  |
| MLTX-02-004-EN-6660 |  | Material Approval for Air Diffusers/Grills | 1d | 2026-05-06 A | 2026-05-06 A | MLTX-02-004-EN-6650 | 100% | Consultant Staff [16.1 h] | MOD-02-EN-6660 | MAK-01-PR-1010 | 0 | -9 | 0 | Eng-AS | Engi |  |
|  | 18 | **GALVANIZED DUCTS** |  | 2026-06-13 | 2026-06-18 |  |  |  |  |  |  |  |  |  |  |  |
| MLTX-02-004-EN-6680 |  | Material Submittal for Galvanized Ducts | 1d | 2026-06-13 A | 2026-06-13 A | MLTX-02-004-EN-5120 | 100% | QA/QC Engineer [16.1 h] | MOD-02-EN-6680 | MAK-01-PR-1000 | -100 | -24 | -100 | Eng-AS | Engi | UDF_G1 |
| MLTX-02-004-EN-6690 |  | Material Approval for Galvanized Ducts | 1d | 2026-06-18 A | 2026-06-18 A | MLTX-02-004-EN-6680 | 100% | Consultant Staff [16.1 h] | MOD-02-EN-6690 | MAK-01-PR-1010 | -100 | -24 | -100 | Eng-AS | Engi | UDF_G1 |
|  | 19 | **EXHAUST FANS** |  | 2026-04-16 | 2026-05-06 |  |  |  |  |  |  |  |  |  |  |  |
| MLTX-02-004-EN-6710 |  | Material Submittal for Exhaust Fans | 2d | 2026-04-16 A | 2026-04-18 A | MLTX-02-004-EN-5150 | 100% | QA/QC Engineer [16.1 h] | MOD-02-EN-6710 | MAK-01-PR-1000 | 0 | 1 | 0 | Eng-AS | Engi |  |
| MLTX-02-004-EN-6720 |  | Material Approval for Exhaust Fans | 1d | 2026-05-06 A | 2026-05-06 A | MLTX-02-004-EN-6710 | 100% | Consultant Staff [16.1 h] | MOD-02-EN-6720 | MAK-01-PR-1010 | 0 | -9 | 0 | Eng-AS | Engi |  |
|  | 13 | **LIGHTING FIXTURES** |  | 2026-04-16 | 2026-04-25 |  |  |  |  |  |  |  |  |  |  |  |
| MLTX-02-004-EN-6740 |  | Material Submittal for Lighting Fixtures | 3d | 2026-04-16 A | 2026-04-19 A | MLTX-02-004-EN-5180 | 100% | QA/QC Engineer [16.1 h] | MOD-02-EN-6740 | MAK-01-PR-1000 | 0 | 0 | 0 | Eng-AS | Engi |  |
| MLTX-02-004-EN-6750 |  | Material Approval for Lighting Fixtures | 5d | 2026-04-20 A | 2026-04-25 A | MLTX-02-004-EN-6740 | 100% | Consultant Staff [16.1 h] | MOD-02-EN-6750 | MAK-01-PR-1010 | 0 | 1 | 0 | Eng-AS | Engi |  |
|  | 14 | **SWITCHES/SOCKETS** |  | 2026-04-16 | 2026-04-25 |  |  |  |  |  |  |  |  |  |  |  |
| MLTX-02-004-EN-6770 |  | Material Submittal for Switches/Sockets | 3d | 2026-04-16 A | 2026-04-19 A | MLTX-02-004-EN-5210 | 100% | QA/QC Engineer [16.1 h] | MOD-02-EN-6770 | MAK-01-PR-1000 | 0 | 0 | 0 | Eng-AS | Engi |  |
| MLTX-02-004-EN-6780 |  | Material Approval for Switches/Sockets | 5d | 2026-04-20 A | 2026-04-25 A | MLTX-02-004-EN-6770 | 100% | Consultant Staff [16.1 h] | MOD-02-EN-6780 | MAK-01-PR-1010 | 0 | 1 | 0 | Eng-AS | Engi |  |

| ID | WBS | Activity | Duration | Start | Finish | Predecessors | Complete | Planned start | Planned finish | Resources | New Activity ID | Old Activity ID - MK | % Variance | Delay | On Schedule | Engineering | WBS-Project | Flag |
| --- | --- | --- | --- | --- | --- | --- | --- | --- | --- | --- | --- | --- | --- | --- | --- | --- | --- | --- |
|  | 15 | **EARTHING SYSTEM** |  | 2026-05-06 | 2026-05-07 |  |  |  |  |  |  |  |  |  |  |  |  |  |
| MLTX-02-004-EN-6800 |  | Material Submittal for Earthing System | 1d | 2026-05-06 A | 2026-05-06 A | MLTX-02-004-EN-5240 | 100% |  |  | QA/QC Engineer [16.1 h] | MOD-02-EN-6800 | MAK-01-PR-1290 | 0 | -15 | 0 | Eng-AS | Engi |  |
| MLTX-02-004-EN-6810 |  | Material Approval for Earthing System | 1d | 2026-05-07 A | 2026-05-07 A | MLTX-02-004-EN-6800 | 100% |  |  | Consultant Staff [16.1 h] | MOD-02-EN-6810 | MAK-01-PR-1300 | 0 | -10 | 0 | Eng-AS | Engi |  |
|  | 5 | **DISTRIBUTION PANNELS** |  | 2026-04-16 | 2026-04-25 |  |  |  |  |  |  |  |  |  |  |  |  |  |
| MLTX-02-004-EN-6830 |  | Material Submittal for Distribution Panels | 3d | 2026-04-16 A | 2026-04-19 A | MLTX-02-004-EN-5270 | 100% |  |  | QA/QC Engineer [16.1 h] | MOD-02-EN-6830 | MAK-01-PR-LLI-1060 | 0 | 0 | 0 | Eng-AS | Engi |  |
| MLTX-02-004-EN-6840 |  | Material Approval for Distribution Panels | 5d | 2026-04-20 A | 2026-04-25 A | MLTX-02-004-EN-6830 | 100% |  |  | Consultant Staff [16.1 h] | MOD-02-EN-6840 | MAK-01-PR-LLI-1070 | 0 | 1 | 0 | Eng-AS | Engi |  |
|  | PLG | **PLAYGROUND WORKS** |  | 2026-04-12 | 2026-08-24 |  |  |  |  |  |  |  |  |  |  |  |  |  |
|  | 5 | **PVC MEMBRANE** |  | 2026-04-15 | 2026-04-19 |  |  |  |  |  |  |  |  |  |  |  |  |  |
| MLTX-02-004-EN-6870 |  | Material Submittal for PVC Membrane | 3d | 2026-04-15 A | 2026-04-18 A | MLTX-02-004-EN-5310 | 100% |  |  | QA/QC Engineer [16.1 h] | MOD-02-EN-6870 | MAK-01-PR-1120 | 0 | 0 | 0 | Eng-AS | Engi |  |
| MLTX-02-004-EN-6880 |  | Material Approval for PVC Membrane | 8d | 2026-04-18 A | 2026-04-19 A | MLTX-02-004-EN-6870 | 100% | 2026-11-23 | 2026-12-01 | Consultant Staff [16.1 h] | MOD-02-EN-6880 | MAK-01-PR-1130 | -100 | -22 | -100 | Eng-AS | Engi | UDF_G1 |
|  | 6 | **STEEL TENSION CABLES** |  | 2026-05-06 | 2026-05-10 |  |  |  |  |  |  |  |  |  |  |  |  |  |
| MLTX-02-004-EN-6900 |  | Material Submittal for Steel Tension Cables | 1d | 2026-05-06 A | 2026-05-06 A | MLTX-02-004-EN-5340 | 100% |  |  | QA/QC Engineer [16.1 h] | MOD-02-EN-6900 | MAK-01-PR-1120 | 0 | -16 | 0 | Eng-AS | Engi |  |
| MLTX-02-004-EN-6910 |  | Material Approval for Steel Tension Cables | 9d | 2026-05-09 A | 2026-05-10 A | MLTX-02-004-EN-6900, MLTX-02-004-EN-6880, MLTX-02-004-EN-7670 | 100% | 2026-12-02 | 2026-12-12 | Consultant Staff [16.1 h] | MOD-02-EN-6910 | MAK-01-PR-1120 | -100 | -22 | -100 | Eng-AS | Engi | UDF_G1 |
|  | 7 | **EMERGENCY DOORS** |  | 2026-05-06 | 2026-05-16 |  |  |  |  |  |  |  |  |  |  |  |  |  |
| MLTX-02-004-EN-6930 |  | Material Submittal for Emergency Doors | 1d | 2026-05-06 A | 2026-05-06 A | MLTX-02-004-EN-5370 | 100% |  |  | QA/QC Engineer [16.1 h] | MOD-02-EN-6930 | MAK-01-PR-1120 | 0 | -19 | 0 | Eng-AS | Engi |  |
| MLTX-02-004-EN-6940 |  | Material Approval for Emergency Doors | 9d | 2026-05-14 A | 2026-05-16 A | MLTX-02-004-EN-6930, MLTX-02-004-EN-6910 | 100% | 2026-12-13 | 2026-12-22 | Consultant Staff [16.1 h] | MOD-02-EN-6940 | MAK-01-PR-1120 | -100 | -25 | -100 | Eng-AS | Engi | UDF_G1 |
|  | 8 | **PRESSURE UNITS** |  | 2026-05-06 | 2026-08-24 |  |  |  |  |  |  |  |  |  |  |  |  |  |
| MLTX-02-004-EN-6960 |  | Material Submittal for Pressure Units | 1d | 2026-05-06 A | 2026-05-06 A | MLTX-02-004-EN-5400 | 100% |  |  | QA/QC Engineer [16.1 h] | MOD-02-EN-6960 | MAK-01-PR-1120 | 0 | -19 | 0 | Eng-AS | Engi |  |
| MLTX-02-004-EN-6970 |  | Material Approval for Pressure Units | 9d | 2026-08-24 A | 2026-08-24 A | MLTX-02-004-EN-6960 | 100% | 2026-11-16 | 2026-11-25 | Consultant Staff [16.1 h] | MOD-02-EN-6970 | MAK-01-PR-1120 | -100 | -25 | -100 | Eng-AS | Engi | UDF_G1 |
|  | 9 | **AIR LOCK DOORS** |  | 2026-05-06 | 2026-05-16 |  |  |  |  |  |  |  |  |  |  |  |  |  |
| MLTX-02-004-EN-6990 |  | Material Submittal for Lock Doors | 1d | 2026-05-06 A | 2026-05-06 A | MLTX-02-004-EN-5430 | 100% |  |  | QA/QC Engineer [16.1 h] | MOD-02-EN-6990 | MAK-01-PR-1120 | 0 | -19 | 0 | Eng-AS | Engi |  |
| MLTX-02-004-EN-7000 |  | Material Approval for Lock Doors | 8d | 2026-05-14 A | 2026-05-16 A | MLTX-02-004-EN-6990, MLTX-02-004-EN-6970, MLTX-02-004-PR-8090, MLTX-02-004-PR-8370, MLTX-02-004-PR-8410, MLTX-02-004-PR-8450, MLTX-02-004-PR-8610, MLTX-02-004-PR-8170, MLTX-02-004-PR-8850, MLTX-02-004-PR-8890, MLTX-02-004-PR-8930, MLTX-02-004-PR-9070, MLTX-02-004-PR-9110, MLTX-02-004-PR-9150, MLTX-02-004-PR-9190, MLTX-02-004-PR-9230, MLTX-02-004-PR-9270, MLTX-02-004-PR-9310, MLTX-02-004-PR-9350, MLTX-02-004-PR-9390, MLTX-02-004-PR-9470 | 100% | 2026-12-16 | 2026-12-24 | Consultant Staff [16.1 h] | MOD-02-EN-7000 | MAK-01-PR-1120 | -100 | -25 | -100 | Eng-AS | Engi | UDF_G1 |
|  | 15 | **ARTIFICIAL TURF** |  | 2026-04-12 | 2026-04-30 |  |  |  |  |  |  |  |  |  |  |  |  |  |
| MLTX-02-004-EN-7020 |  | Material Submittal for Artificial TURF | 15d | 2026-04-12 A | 2026-04-28 A | MLTX-02-004-EN-5460 | 100% |  |  | QA/QC Engineer [16.1 h] | MOD-02-EN-7020 | MAK-01-PR-1120 | 0 | -12 | 0 | Eng-AS | Engi |  |
| MLTX-02-004-EN-7030 |  | Material Approval for Artificial TURF | 3d | 2026-04-28 A | 2026-04-30 A | MLTX-02-004-EN-7020 | 100% |  |  | Consultant Staff [16.1 h] | MOD-02-EN-7030 | MAK-01-PR-1120 | 0 | -7 | 0 | Eng-AS | Engi |  |

| ID | WBS | Activity | Duration | Start | Finish | Predecessors | Complete | Planned start | Planned finish | Resources | New Activity ID | Old Activity ID - MK | % Variance | Delay | On Schedule | Engineering | WBS-Project | Flag |
| --- | --- | --- | --- | --- | --- | --- | --- | --- | --- | --- | --- | --- | --- | --- | --- | --- | --- | --- |
|  | 20 | **RUBBER GRANULES** |  | 2026-05-06 | 2026-05-21 |  |  |  |  |  |  |  |  |  |  |  |  |  |
| MLTX-02-004-EN-7050 |  | Material Submittal for Rubber Granules | 1d | 2026-05-06 A | 2026-05-06 A | MLTX-02-004-EN-5490 | 100% |  |  | QA/QC Engineer [16.1 h] | MOD-02-EN-7050 | MAK-01-PR-1120 | 0 | -19 | 0 | Eng-AS | Engi |  |
| MLTX-02-004-EN-7060 |  | Material Approval for Rubber Granules | 1d | 2026-05-21 A | 2026-05-21 A | MLTX-02-004-EN-7050 | 100% |  |  | Consultant Staff [16.1 h] | MOD-02-EN-7060 | MAK-01-PR-1120 | -100 | -25 | -100 | Eng-AS | Engi | UDF_G1 |
|  | 21 | **PADEL GLASS** |  | 2026-05-06 | 2026-05-21 |  |  |  |  |  |  |  |  |  |  |  |  |  |
| MLTX-02-004-EN-7080 |  | Material Submittal for Padel Glass | 1d | 2026-05-06 A | 2026-05-06 A | MLTX-02-004-EN-5520 | 100% |  |  | QA/QC Engineer [16.1 h] | MOD-02-EN-7080 | MAK-01-PR-1120 | 0 | -19 | 0 | Eng-AS | Engi |  |
| MLTX-02-004-EN-7090 |  | Material Approval for Padel Glass | 1d | 2026-05-21 A | 2026-05-21 A | MLTX-02-004-EN-7080 | 100% |  |  | Consultant Staff [16.1 h] | MOD-02-EN-7090 | MAK-01-PR-1120 | -100 | -25 | -100 | Eng-AS | Engi | UDF_G1 |
|  | 22 | **PADEL WIRE MESH/STEEL SETS** |  | 2026-05-25 | 2026-05-27 |  |  |  |  |  |  |  |  |  |  |  |  |  |
| MLTX-02-004-EN-7110 |  | Material Submittal for Wire Mesh/Steel Sets | 1d | 2026-05-25 A | 2026-05-25 A | MLTX-02-004-EN-5550 | 100% |  |  | QA/QC Engineer [16.1 h] | MOD-02-EN-7110 | MAK-01-PR-1120 | -100 | -28 | -100 | Eng-AS | Engi | UDF_G1 |
| MLTX-02-004-EN-7120 |  | Material Approval for Wire Mesh/Steel Sets | 8d | 2026-05-26 A | 2026-05-27 A | MLTX-02-004-EN-6940, MLTX-02-004-EN-7110, MLTX-02-004-EN-7000 | 100% | 2026-12-26 | 2027-01-03 | Consultant Staff [16.1 h] | MOD-02-EN-7120 | MAK-01-PR-1120 | -100 | -28 | -100 | Eng-AS | Engi | UDF_G1 |
|  | 1 | **AGGREGATE BASE COURSE** |  | 2026-05-21 | 2026-06-18 |  |  |  |  |  |  |  |  |  |  |  |  |  |
| MLTX-02-004-EN-7140 |  | Material Submittal for Aggregate Base Course | 1d | 2026-05-21 A | 2026-05-21 A | MLTX-02-004-EN-5580 | 100% |  |  | QA/QC Engineer [16.1 h] | MOD-02-EN-7140 | MAK-01-PR-1090 | -100 | -28 | -100 | Eng-AS | Engi | UDF_G1 |
| MLTX-02-004-EN-7150 |  | Material Approval for Aggregate Base Course | 1d | 2026-06-18 A | 2026-06-18 A | MLTX-02-004-EN-7140 | 100% |  |  | Consultant Staff [16.1 h] | MOD-02-EN-7150 | MAK-01-PR-1100 | -100 | -28 | -100 | Eng-AS | Engi | UDF_G1 |
|  | 16 | **PACKAGE AC UNITS** |  | 2026-05-21 | 2026-05-21 |  |  |  |  |  |  |  |  |  |  |  |  |  |
| MLTX-02-004-EN-7260 |  | Material Submittal for Package AC Units | 1d | 2026-05-21 A | 2026-05-21 A | MLTX-02-004-EN-5700 | 100% |  |  | QA/QC Engineer [16.1 h] | MOD-02-EN-7260 | MAK-01-PR-1000 | -100 | -27 | -100 | Eng-AS | Engi | UDF_G1 |
| MLTX-02-004-EN-7270 |  | Material Approval for Package AC Units | 1d | 2026-05-21 A | 2026-05-21 A | MLTX-02-004-EN-7260 | 100% |  |  | Consultant Staff [16.1 h] | MOD-02-EN-7270 | MAK-01-PR-1010 | -100 | -27 | -100 | Eng-AS | Engi | UDF_G1 |
|  | 17 | **AIR DIFUSSERS/GRILLS** |  | 2026-04-13 | 2026-05-06 |  |  |  |  |  |  |  |  |  |  |  |  |  |
| MLTX-02-004-EN-7290 |  | Material Submittal for Air Difussers/Grills | 9d | 2026-04-13 A | 2026-04-22 A | MLTX-02-004-EN-5730 | 100% |  |  | QA/QC Engineer [16.1 h] | MOD-02-EN-7290 | MAK-01-PR-1000 | 0 | -6 | 0 | Eng-AS | Engi |  |
| MLTX-02-004-EN-7300 |  | Material Approval for Air Difussers/Grills | 1d | 2026-05-06 A | 2026-05-06 A | MLTX-02-004-EN-7290 | 100% |  |  | Consultant Staff [16.1 h] | MOD-02-EN-7300 | MAK-01-PR-1010 | 0 | -12 | 0 | Eng-AS | Engi |  |
|  | 2 | **BITUMINOUS BASE & WEARING COURSE** |  | 2026-04-16 | 2026-04-18 |  |  |  |  |  |  |  |  |  |  |  |  |  |
| MLTX-02-004-EN-7170 |  | Material Submittal for Bituminous Base & Wearing Cource | 2d | 2026-04-16 A | 2026-04-18 A | MLTX-02-004-EN-5610 | 100% |  |  | QA/QC Engineer [16.1 h] | MOD-02-EN-7170 | MAK-01-PR-1120 | 0 | 1 | 0 | Eng-AS | Engi |  |
| MLTX-02-004-EN-7180 |  | Material Approval for the Site | 1d | 2026-04-18 A | 2026-04-18 A | MLTX-02-004-EN-7170 | 100% |  |  | Consultant Staff [16.1 h] | MOD-02-EN-7180 | MAK-01-PR-1130 | 0 | 7 | 0 | Eng-AS | Engi |  |
|  | 3 | **INTERLOCKING PAVING** |  | 2026-05-21 | 2026-05-21 |  |  |  |  |  |  |  |  |  |  |  |  |  |
| MLTX-02-004-EN-7200 |  | Material Submittal for Interlocking Block Pavers | 1d | 2026-05-21 A | 2026-05-21 A | MLTX-02-004-EN-5640 | 100% |  |  | QA/QC Engineer [16.1 h] | MOD-02-EN-7200 | MAK-01-PR-1170 | -100 | -24 | -100 | Eng-AS | Engi | UDF_G1 |
| MLTX-02-004-EN-7210 |  | Material Approval for Interlocking Block Pavers | 1d | 2026-05-21 A | 2026-05-21 A | MLTX-02-004-EN-7200 | 100% |  |  | Consultant Staff [16.1 h] | MOD-02-EN-7210 | MAK-01-PR-1180 | -100 | -24 | -100 | Eng-AS | Engi | UDF_G1 |

| ID | WBS | Activity | Duration | Start | Finish | Predecessors | Complete | Resources | New Activity ID | Old Activity ID - MK | % Variance | Delay | On Schedule | Engineering | WBS-Project | Flag |
| --- | --- | --- | --- | --- | --- | --- | --- | --- | --- | --- | --- | --- | --- | --- | --- | --- |
|  | 4 | **MARKING PAINT** |  | 2026-04-13 | 2026-04-19 |  |  |  |  |  |  |  |  |  |  |  |
| MLTX-02-004-EN-7230 |  | Material Submittal for Marking Paint | 5d | 2026-04-13 A | 2026-04-18 A | MLTX-02-004-EN-5670 | 100% | QA/QC Engineer [16.1 h] | MOD-02-EN-7230 | MAK-01-PR-1120 | 0 | -2 | 0 | Eng-AS | Engi |  |
| MLTX-02-004-EN-7240 |  | Material Approval for Marking Paint | 2d | 2026-04-18 A | 2026-04-19 A | MLTX-02-004-EN-7230 | 100% | Consultant Staff [16.1 h] | MOD-02-EN-7240 | MAK-01-PR-1120 | 0 | 3 | 0 | Eng-AS | Engi |  |
|  | 18 | **GALVANIZED DUCTS** |  | 2026-06-13 | 2026-06-18 |  |  |  |  |  |  |  |  |  |  |  |
| MLTX-02-004-EN-7320 |  | Material Submittal for Galvanized Duct | 1d | 2026-06-13 A | 2026-06-13 A | MLTX-02-004-EN-5760 | 100% | QA/QC Engineer [16.1 h] | MOD-02-EN-7320 | MAK-01-PR-1000 | -100 | -27 | -100 | Eng-AS | Engi | UDF_G1 |
| MLTX-02-004-EN-7330 |  | Material Approval for Galvanized Duct | 1d | 2026-06-18 A | 2026-06-18 A | MLTX-02-004-EN-7320 | 100% | Consultant Staff [16.1 h] | MOD-02-EN-7330 | MAK-01-PR-1010 | -100 | -27 | -100 | Eng-AS | Engi | UDF_G1 |
|  | 19 | **EXHAUST FANS** |  | 2026-04-13 | 2026-05-06 |  |  |  |  |  |  |  |  |  |  |  |
| MLTX-02-004-EN-7350 |  | Material Submittal for Exhaust Fans | 5d | 2026-04-13 A | 2026-04-18 A | MLTX-02-004-EN-5790 | 100% | QA/QC Engineer [16.1 h] | MOD-02-EN-7350 | MAK-01-PR-1000 | 0 | -2 | 0 | Eng-AS | Engi |  |
| MLTX-02-004-EN-7360 |  | Material Approval for Exhaust Fans | 1d | 2026-05-06 A | 2026-05-06 A | MLTX-02-004-EN-7350 | 100% | Consultant Staff [16.1 h] | MOD-02-EN-7360 | MAK-01-PR-1010 | 0 | -12 | 0 | Eng-AS | Engi |  |
|  | 10 | **DISTRIBUTION BOARDS** |  | 2026-04-13 | 2026-04-25 |  |  |  |  |  |  |  |  |  |  |  |
| MLTX-02-004-EN-7380 |  | Material Submittal for Distribution Boards | 6d | 2026-04-13 A | 2026-04-19 A | MLTX-02-004-EN-5820 | 100% | QA/QC Engineer [16.1 h] | MOD-02-EN-7380 | MAK-01-PR-1000 | 0 | -3 | 0 | Eng-AS | Engi |  |
| MLTX-02-004-EN-7390 |  | Material Approval for Distribution Boards | 6d | 2026-04-19 A | 2026-04-25 A | MLTX-02-004-EN-7380 | 100% | Consultant Staff [16.1 h] | MOD-02-EN-7390 | MAK-01-PR-1010 | 0 | -2 | 0 | Eng-AS | Engi |  |
|  | 11 | **POWER CABLES** |  | 2026-04-13 | 2026-04-20 |  |  |  |  |  |  |  |  |  |  |  |
| MLTX-02-004-EN-7410 |  | Material Submittal for Power Cables | 5d | 2026-04-13 A | 2026-04-18 A | MLTX-02-004-EN-5850 | 100% | QA/QC Engineer [16.1 h] | MOD-02-EN-7410 | MAK-01-PR-1000 | 0 | -2 | 0 | Eng-AS | Engi |  |
| MLTX-02-004-EN-7420 |  | Material Approval for Power Cables | 4d | 2026-04-16 A | 2026-04-20 A | MLTX-02-004-EN-7410 | 100% | Consultant Staff [16.1 h] | MOD-02-EN-7420 | MAK-01-PR-1010 | 0 | 2 | 0 | Eng-AS | Engi |  |
|  | 12 | **LIGHT FIXTURES** |  | 2026-04-13 | 2026-04-22 |  |  |  |  |  |  |  |  |  |  |  |
| MLTX-02-004-EN-7440 |  | Material Submittal for Light Fixtures | 3d | 2026-04-13 A | 2026-04-15 A | MLTX-02-004-EN-5880 | 100% | QA/QC Engineer [16.1 h] | MOD-02-EN-7440 | MAK-01-PR-1000 | 0 | 0 | 0 | Eng-AS | Engi |  |
| MLTX-02-004-EN-7450 |  | Material Approval for Light Fixtures | 6d | 2026-04-16 A | 2026-04-22 A | MLTX-02-004-EN-7440 | 100% | Consultant Staff [16.1 h] | MOD-02-EN-7450 | MAK-01-PR-1010 | 0 | 0 | 0 | Eng-AS | Engi |  |
|  | 13 | **CCTV MATERIALS** |  | 2026-04-13 | 2026-04-22 |  |  |  |  |  |  |  |  |  |  |  |
| MLTX-02-004-EN-7470 |  | Material Submittal for CCTV | 3d | 2026-04-13 A | 2026-04-15 A | MLTX-02-004-EN-5910 | 100% | QA/QC Engineer [16.1 h] | MOD-02-EN-7470 | MAK-01-PR-1000 | 0 | 0 | 0 | Eng-AS | Engi |  |
| MLTX-02-004-EN-7480 |  | Material Approval for CCTV | 6d | 2026-04-16 A | 2026-04-22 A | MLTX-02-004-EN-7470 | 100% | Consultant Staff [16.1 h] | MOD-02-EN-7480 | MAK-01-PR-1010 | 0 | 0 | 0 | Eng-AS | Engi |  |
|  | 14 | **POWER OUTLETS/SWITCHES** |  | 2026-05-06 | 2026-05-07 |  |  |  |  |  |  |  |  |  |  |  |
| MLTX-02-004-EN-7500 |  | Material Submittal for Power Outlets/Switches | 1d | 2026-05-06 A | 2026-05-06 A | MLTX-02-004-EN-5940 | 100% | QA/QC Engineer [16.1 h] | MOD-02-EN-7500 | MAK-01-PR-1000 | 0 | -18 | 0 | Eng-AS | Engi |  |
| MLTX-02-004-EN-7510 |  | Material Approval for Power Outlets/Switches | 1d | 2026-05-07 A | 2026-05-07 A | MLTX-02-004-EN-7500 | 100% | Consultant Staff [16.1 h] | MOD-02-EN-7510 | MAK-01-PR-1010 | 0 | -13 | 0 | Eng-AS | Engi |  |

| ID | WBS | Activity | Duration | Start | Finish | Predecessors | Complete | Planned start | Planned finish | Resources | New Activity ID | Old Activity ID - MK | % Variance | Delay | On Schedule | Engineering | WBS-Project | Flag |
| --- | --- | --- | --- | --- | --- | --- | --- | --- | --- | --- | --- | --- | --- | --- | --- | --- | --- | --- |
|  | LSC | **LANDSCAPE WORKS** |  | 2026-04-13 | 2026-07-27 |  |  |  |  |  |  |  |  |  |  |  |  |  |
|  | 7 | **INTERLOCKING PAVING** |  | 2026-04-13 | 2026-04-22 |  |  |  |  |  |  |  |  |  |  |  |  |  |
| MLTX-02-004-EN-7540 |  | Material Submittal for Interlocking Block Pavers | 3d | 2026-04-13 A | 2026-04-15 A | MLTX-02-004-EN-5980 | 100% |  |  | QA/QC Engineer [16.1 h] | MOD-02-EN-7540 | MAK-01-PR-1170 | 0 | 0 | 0 | Eng-AS | Engi |  |
| MLTX-02-004-EN-7550 |  | Material Approval for Interlocking Block Pavers | 6d | 2026-04-16 A | 2026-04-22 A | MLTX-02-004-EN-7540 | 100% |  |  | Consultant Staff [16.1 h] | MOD-02-EN-7550 | MAK-01-PR-1180 | 0 | 0 | 0 | Eng-AS | Engi |  |
|  | 9 | **CURBSTONE** |  | 2026-04-13 | 2026-04-22 |  |  |  |  |  |  |  |  |  |  |  |  |  |
| MLTX-02-004-EN-7570 |  | Material Submittal for Curbstone | 3d | 2026-04-13 A | 2026-04-15 A | MLTX-02-004-EN-6010 | 100% |  |  | QA/QC Engineer [16.1 h] | MOD-02-EN-7570 | MAK-01-PR-1260 | 0 | 0 | 0 | Eng-AS | Engi |  |
| MLTX-02-004-EN-7580 |  | Material Approval for Curbstone | 6d | 2026-04-16 A | 2026-04-22 A | MLTX-02-004-EN-7570 | 100% |  |  | Consultant Staff [16.1 h] | MOD-02-EN-7580 | MAK-01-PR-1270 | 0 | 0 | 0 | Eng-AS | Engi |  |
|  | 1 | **PAVEMENT MARKING** |  | 2026-04-13 | 2026-04-19 |  |  |  |  |  |  |  |  |  |  |  |  |  |
| MLTX-02-004-EN-7600 |  | Material Submittal for Pavement Markings | 5d | 2026-04-13 A | 2026-04-18 A | MLTX-02-004-EN-6040 | 100% |  |  | QA/QC Engineer [16.1 h] | MOD-02-EN-7600 | MAK-01-PR-1200 | 0 | -2 | 0 | Eng-AS | Engi |  |
| MLTX-02-004-EN-7610 |  | Material Approval for Pavement Markings | 2d | 2026-04-18 A | 2026-04-19 A | MLTX-02-004-EN-7600 | 100% |  |  | Consultant Staff [16.1 h] | MOD-02-EN-7610 | MAK-01-PR-1210 | 0 | 3 | 0 | Eng-AS | Engi |  |
|  | 2 | **TRAFFIC SIGNS** |  | 2026-04-13 | 2026-04-22 |  |  |  |  |  |  |  |  |  |  |  |  |  |
| MLTX-02-004-EN-7630 |  | Material Submittal for Traffic Signs | 3d | 2026-04-13 A | 2026-04-15 A | MLTX-02-004-EN-6070 | 100% |  |  | QA/QC Engineer [16.1 h] | MOD-02-EN-7630 | MAK-01-PR-1230 | 0 | 0 | 0 | Eng-AS | Engi |  |
| MLTX-02-004-EN-7640 |  | Material Approval for Traffic Signs | 6d | 2026-04-16 A | 2026-04-22 A | MLTX-02-004-EN-7630 | 100% |  |  | Consultant Staff [16.1 h] | MOD-02-EN-7640 | MAK-01-PR-1240 | 0 | 0 | 0 | Eng-AS | Engi |  |
|  | 3 | **IRRIGATION PIPES/SPRINKLERS** |  | 2026-04-13 | 2026-07-27 |  |  |  |  |  |  |  |  |  |  |  |  |  |
| MLTX-02-004-EN-7660 |  | Material Submittal for Irrigation Pipes/Sprinkles | 5d | 2026-04-13 A | 2026-04-18 A | MLTX-02-004-EN-6100 | 100% |  |  | QA/QC Engineer [16.1 h] | MOD-02-EN-7660 | MAK-01-PR-1260 | 0 | -2 | 0 | Eng-AS | Engi |  |
| MLTX-02-004-EN-7670 |  | Material Approval for Irrigation Pipes/Sprinkles | 6d | 2026-07-27 A | 2026-07-27 A | MLTX-02-004-EN-7660 | 100% | 2026-07-27 | 2026-08-02 | Consultant Staff [16.1 h] | MOD-02-EN-7670 | MAK-01-PR-1270 | -100 | -24 | -100 | Eng-AS | Engi | UDF_G1 |
|  | 5 | **AGRICULTURE SOIL** |  | 2026-05-06 | 2026-05-21 |  |  |  |  |  |  |  |  |  |  |  |  |  |
| MLTX-02-004-EN-7690 |  | Material Submittal for Agriculture Soil | 1d | 2026-05-06 A | 2026-05-06 A | MLTX-02-004-EN-6130 | 100% |  |  | QA/QC Engineer [16.1 h] | MOD-02-EN-7690 | MAK-01-PR-1260 | 0 | -18 | 0 | Eng-AS | Engi |  |
| MLTX-02-004-EN-7700 |  | Material Approval for Agriculture Soil | 1d | 2026-05-21 A | 2026-05-21 A | MLTX-02-004-EN-7690 | 100% |  |  | Consultant Staff [16.1 h] | MOD-02-EN-7700 | MAK-01-PR-1270 | -100 | -24 | -100 | Eng-AS | Engi | UDF_G1 |
|  | 8 | **TRACK SURFACE** |  | 2026-05-06 | 2026-05-21 |  |  |  |  |  |  |  |  |  |  |  |  |  |
| MLTX-02-004-EN-7720 |  | Material Submittal for Track Surface | 1d | 2026-05-06 A | 2026-05-06 A | MLTX-02-004-EN-6160 | 100% |  |  | QA/QC Engineer [16.1 h] | MOD-02-EN-7720 | MAK-01-PR-1260 | 0 | -18 | 0 | Eng-AS | Engi |  |
| MLTX-02-004-EN-7730 |  | Material Approval for Track Surface | 1d | 2026-05-21 A | 2026-05-21 A | MLTX-02-004-EN-7720 | 100% |  |  | Consultant Staff [16.1 h] | MOD-02-EN-7730 | MAK-01-PR-1270 | -100 | -24 | -100 | Eng-AS | Engi | UDF_G1 |
|  | 10 | **GRASS/TREES** |  | 2026-05-06 | 2026-05-21 |  |  |  |  |  |  |  |  |  |  |  |  |  |
| MLTX-02-004-EN-7750 |  | Material Submittal for Grass/Trees | 1d | 2026-05-06 A | 2026-05-06 A | MLTX-02-004-EN-6190 | 100% |  |  | QA/QC Engineer [16.1 h] | MOD-02-EN-7750 | MAK-01-PR-1260 | 0 | -18 | 0 | Eng-AS | Engi |  |
| MLTX-02-004-EN-7760 |  | Material Approval for Grass/Trees | 1d | 2026-05-21 A | 2026-05-21 A | MLTX-02-004-EN-7750 | 100% |  |  | Consultant Staff [16.1 h] | MOD-02-EN-7760 | MAK-01-PR-1270 | -100 | -24 | -100 | Eng-AS | Engi | UDF_G1 |

| ID | WBS | Activity | Duration | Start | Finish | Predecessors | Complete | Planned start | Planned finish | Total float | Free float | Resources | Cost | Actual cost | New Activity ID | Old Activity ID - MK | % Variance | Delay | On Schedule | Engineering | WBS-Project | W-Construction | WBS-Construction Type | Flag |
| --- | --- | --- | --- | --- | --- | --- | --- | --- | --- | --- | --- | --- | --- | --- | --- | --- | --- | --- | --- | --- | --- | --- | --- | --- |
|  | 6 | **CABLES** |  | 2026-04-13 | 2026-04-20 |  |  |  |  |  |  |  |  |  |  |  |  |  |  |  |  |  |  |  |
| MLTX-02-004-EN-7780 |  | Material Submittal for Cables | 5d | 2026-04-13 A | 2026-04-18 A | MLTX-02-004-EN-6220 | 100% |  |  |  |  | QA/QC Engineer [16.1 h] |  |  | MOD-02-EN-7780 | MAK-01-PR-1200 | 0 | -2 | 0 | Eng-AS | Engi |  |  |  |
| MLTX-02-004-EN-7790 |  | Material Approval for Cables | 4d | 2026-04-16 A | 2026-04-20 A | MLTX-02-004-EN-7780 | 100% |  |  |  |  | Consultant Staff [16.1 h] |  |  | MOD-02-EN-7790 | MAK-01-PR-1210 | 0 | 2 | 0 | Eng-AS | Engi |  |  |  |
|  | 4 | **LIGHT POLES** |  | 2026-04-13 | 2026-05-06 |  |  |  |  |  |  |  |  |  |  |  |  |  |  |  |  |  |  |  |
| MLTX-02-004-EN-7810 |  | Material Submittal for Lighting poles | 7d | 2026-04-13 A | 2026-04-20 A | MLTX-02-004-EN-6250 | 100% |  |  |  |  | QA/QC Engineer [16.1 h] |  |  | MOD-02-EN-7810 | MAK-01-PR-LLI-1120 | 0 | -4 | 0 | Eng-AS | Engi |  |  |  |
| MLTX-02-004-EN-7820 |  | Material Approval for Lighting poles | 18d | 2026-04-16 A | 2026-05-06 A | MLTX-02-004-EN-7810 | 100% |  |  |  |  | Consultant Staff [16.1 h] |  |  | MOD-02-EN-7820 | MAK-01-PR-LLI-1130 | 0 | -12 | 0 | Eng-AS | Engi |  |  |  |
|  | CONST | **CONSTRUCTION PHASE** |  | 2026-04-27 | 2027-02-20 |  |  |  |  |  |  |  |  |  |  |  |  |  |  |  |  |  |  |  |
|  | SW | **SITE WORKS** |  | 2026-04-27 | 2027-02-20 |  |  |  |  |  |  |  |  |  |  |  |  |  |  |  |  |  |  |  |
|  | 1 | **EARTH WORKS** |  | 2026-04-27 | 2026-08-12 |  |  |  |  |  |  |  |  |  |  |  |  |  |  |  |  |  |  |  |
| MLTX-02-004-CN-9930 |  | Excavation (in all types of soil) including Compaction (Playground Area) | 12.75d | 2026-04-27 A | 2026-05-11 A | MLTX-02-004-CN-9940 | 100% |  |  |  |  | Labor [300 h]; Driver [380 h]; Excavator [140 h]; Loader [50 h]; Water Tanker [80 h]; Dump Truck [200 h]; Milling machine [40 h]; Excavation in any type of soil from existing level [1600] | 101,400 | 101,400 | MOD-02-CN-9930 |  | 0 | -4.75 | 0 |  | Const | ER | Earth |  |
| MLTX-02-004-CN-9950 |  | Excavation (in all types of soil) including Compaction (Landscape Area) | 17.35d | 2026-04-29 A | 2026-05-19 A | MLTX-02-004-EN-3810, MLTX-02-004-EN-3820, MLTX-02-004-EN-3840, MLTX-02-004-EN-3830, MLTX-02-004-CN-9930 | 100% |  |  |  |  | Labor [400 h]; Driver [200 h]; Excavator [140 h]; Loader [130 h]; Water Tanker [100 h]; Dump Truck [200 h]; Milling machine [40 h]; Excavation in any type of soil from existing level [3303] | 209,327.62 | 209,327.62 | MOD-02-CN-9950 |  | 0 | -0.7 | -7 |  | Const | ER | Earth | UDF_G1 |
| MLTX-02-004-CN-9940 |  | Excavation (in all types of soil) including Compaction (Service/Toilet Building) | 8.04d | 2026-05-06 A | 2026-05-16 A | MLTX-02-004-EN-2950 | 100% |  |  |  |  | Labor [300 h]; Driver [80 h]; Excavator [60 h]; Loader [60 h]; Water Tanker [60 h]; Dump Truck [80 h]; Milling machine [20 h]; Excavation in any type of soil from existing level [510] | 32,321.25 | 32,321.25 | MOD-02-CN-9940 |  | 0 | -12.08 | 0 |  | Const | ER | Earth | UDF_G1 |
| MLTX-02-004-CN-9960 |  | Backfilling on Layers (Selected Soil) including Compaction (Playground Area) | 20.4d | 2026-05-17 A | 2026-06-13 A | MLTX-02-004-CN-9930 | 100% |  |  |  |  | Labor [550 h]; Driver [300 h]; Loader [130 h]; Water Tanker [100 h]; Compactor [100 h]; Backfilling with selected fill material [1800] | 61,425 | 61,425 | MOD-02-CN-9960 |  | -55 | -17 | -90 |  | Const | ER | Earth | UDF_G1 |
| MLTX-02-004-CN-9970 |  | Backfilling on Layers (Selected Soil) including Compaction (Service/Toilet Building) | 17.8d | 2026-05-17 A | 2026-06-09 A | MLTX-02-004-CN-9940 | 100% |  |  |  |  | Labor [300 h]; Driver [140 h]; Loader [90 h]; Water Tanker [80 h]; Compactor [60 h]; Backfilling with selected fill material [500] | 17,062.5 | 17,062.5 | MOD-02-CN-9970 |  | -55 | -12.08 | -100 |  | Const | ER | Earth | UDF_G1 |
| MLTX-02-004-CN-9980 |  | Backfilling on Layers (Selected Soil) including Compaction (Landscape Area) | 23d | 2026-06-08 A | 2026-07-04 A | MLTX-02-004-CN-9950 | 100% |  |  |  |  | Labor [300 h]; Driver [150 h]; Loader [30 h]; Water Tanker [50 h]; Compactor [50 h]; Backfilling with selected fill material [875] | 29,859.38 | 29,859.38 | MOD-02-CN-9980 |  | -50 | -0.7 | -20 |  | Const | ER | Earth |  |
| MLTX-02-004-CN-9980R |  | Backfilling on Layers (Selected Soil) including Compaction (Landscape Area) Remaining | 30.07d | 2026-07-04 A | 2026-08-12 A | MLTX-02-004-CN-9980 | 100% | 2026-07-08 | 2026-08-12 |  |  | Labor [300 h]; Driver [150 h]; Loader [30 h]; Water Tanker [50 h]; Compactor [50 h]; Backfilling with selected fill material [1062.27] | 36,249.96 | 18,124.98 |  |  |  |  |  |  | Const | ER | Earth |  |
|  | 4 | **LANDSCAPE WORKS** |  | 2026-05-23 | 2027-02-20 |  |  |  |  |  |  |  |  |  |  |  |  |  |  |  |  |  |  |  |
|  | 4 | **PLAYGROUND AREA** |  | 2026-05-23 | 2027-02-07 |  |  |  |  |  |  |  |  |  |  |  |  |  |  |  |  |  |  |  |
|  | 6 | **FOOTBALL PLAYGROUND** |  | 2026-05-23 | 2027-01-23 |  |  |  |  |  |  |  |  |  |  |  |  |  |  |  |  |  |  |  |
| MLTX-02-004-CN-10020 |  | Preparation and Proofing for Subgrade (Football Playground) | 1.2d | 2026-05-23 A | 2026-05-24 A | MLTX-02-004-CN-9960 | 100% |  |  |  |  | Labor [500 h]; Skilled Labor [200 h]; Driver [300 h]; Forklift [270 h]; Football playground [100] | 28,762.5 | 28,762.5 | MOD-02-CN-10020 |  | -18.1818181818182 | -20 | 0 |  | Const | PL | Play |  |
| MLTX-02-004-CN-10030 |  | Backfilling and Compaction of Base Layers (Football Playground) | 32.4d | 2026-05-24 A | 2026-07-04 A | MLTX-02-004-CN-10020 | 100% |  |  |  |  | Labor [597 h]; Skilled Labor [213 h]; Driver [299 h]; Loader [68 h]; Dump Truck [171 h]; Compactor [85 h]; Football playground [85] | 24,448.12 | 24,448.12 | MOD-02-CN-10030 |  | 0 | -20 | 0 |  | Const | PL | Play |  |
| MLTX-02-004-CN-10030R |  | Backfilling and Compaction of Base Layers (Football Playground) Remaining | 30d | 2026-07-20 A | 2026-08-31 A | MLTX-02-004-CN-10030, MLTX-02-004-CN-10030 FF | 100% | 2026-07-20 | 2026-08-23 |  |  | Labor [103 h]; Skilled Labor [37 h]; Driver [51 h]; Loader [12 h]; Dump Truck [29 h]; Compactor [15 h]; Football playground [15] | 4,314.38 | 4,314.38 |  |  |  |  |  |  | Const | PL | Play |  |
| MLTX-02-004-CN-10040 |  | Finishing and Surface Finish Works (Football Playground) | 30d | 2026-11-24 | 2026-12-28 | MLTX-02-004-CN-10340, MLTX-02-004-EN-4490, MLTX-02-004-CN-10030R, MLTX-02-004-CN-10030R FF |  |  |  | -2d | 13d | Labor [800 h]; Skilled Labor [150 h]; Driver [100 h]; Forklift [90 h]; Football playground [500] | 143,812.5 |  | MOD-02-CN-10040 |  | 0 | -20 | 0 |  | Const | PL | Play |  |
| MLTX-02-004-CN-10050 |  | Install Sport Equipments - Goal / Nets - (Football Playground) | 9d | 2027-01-13 | 2027-01-23 | MLTX-02-004-EN-3610, MLTX-02-004-CN-10040, MLTX-02-004-CN-10430, MLTX-02-004-CN-10060 SS |  |  |  | -15d | 0d | Labor [390 h]; Skilled Labor [150 h]; Driver [100 h]; Crane [140 h]; Football playground [250] | 71,906.25 |  | MOD-02-CN-10050 |  | 0 | -20 | 0 |  | Const | PL | Play |  |
| MLTX-02-004-CN-10060 |  | Surface Marking and Painting (Football Playground) | 8d | 2027-01-13 | 2027-01-21 | MLTX-02-004-CN-10040, MLTX-02-004-CN-10430 |  |  |  | -15d | 0d | Skilled Labor [250 h]; Painter [240 h]; Football playground [50] | 14,381.25 |  | MOD-02-CN-10060 |  | 0 | -20 | 0 |  | Const | PL | Play |  |

| ID | WBS | Activity | Duration | Start | Finish | Predecessors | Complete | Planned start | Planned finish | Total float | Free float | Resources | Cost | Actual cost | New Activity ID | % Variance | Delay | On Schedule | W-Construction | WBS-Project | WBS-Construction Type |
| --- | --- | --- | --- | --- | --- | --- | --- | --- | --- | --- | --- | --- | --- | --- | --- | --- | --- | --- | --- | --- | --- |
|  | 7 | **PADEL PLAYGROUND** |  | 2026-05-23 | 2027-01-24 |  |  |  |  |  |  |  |  |  |  |  |  |  |  |  |  |
| MLTX-02-004-CN-10080 |  | Preparation and Proofing for Subgrade (Padel Playground) | 1d | 2026-05-23 A | 2026-05-23 A | MLTX-02-004-CN-10020 | 100% |  |  |  |  | Labor [300 h]; Skilled Labor [150 h]; Driver [200 h]; Forklift [90 h]; Padel playgound [70] | 75,075 | 75,075 | MOD-02-CN-10080 | 0 | -20 | 0 | PL | Const | Play |
| MLTX-02-004-CN-10090 |  | Backfilling and Compaction of Base Layers (Padel Playground) | 32.4d | 2026-05-24 A | 2026-07-04 A | MLTX-02-004-PR-9030, MLTX-02-004-PR-9000, MLTX-02-004-CN-10080 | 100% |  |  |  |  | Labor [477 h]; Skilled Labor [173 h]; Driver [243 h]; Loader [69 h]; Dump Truck [173 h]; Compactor [87 h]; Padel playgound [35] | 37,537.5 | 37,537.5 | MOD-02-CN-10090 | 0 | -20 | 0 | PL | Const | Play |
| MLTX-02-004-CN-10090R |  | Backfilling and Compaction of Base Layers (Padel Playground) Remaining | 30d | 2026-07-20 A | 2026-08-09 A | MLTX-02-004-CN-10030R, MLTX-02-004-CN-10090, MLTX-02-004-CN-10030R SS | 100% | 2026-08-24 | 2026-09-28 |  |  | Labor [73 h]; Skilled Labor [27 h]; Driver [37 h]; Loader [11 h]; Dump Truck [27 h]; Compactor [13 h]; Padel playgound [5] | 5,362.5 | 5,362.5 |  |  |  |  | PL | Const | Play |
| MLTX-02-004-CN-10100 |  | Finishing and Surface Finish Works (Padel Playground) | 30d | 2026-09-15 A | 2026-09-16 A | MLTX-02-004-CN-10340 SS, MLTX-02-004-CN-10090R | 100% | 2027-01-11 | 2027-02-14 |  |  | Labor [720 h]; Skilled Labor [200 h]; Driver [90 h]; Forklift [270 h]; Padel playgound [50] | 53,625 | 53,625 | MOD-02-CN-10100 | 0 | -20 | 0 | PL | Const | Play |
| MLTX-02-004-CN-10110 |  | Install Sport Equipments - Goal / Nets - (Padel Playground) | 10d | 2027-01-13 | 2027-01-24 | MLTX-02-004-PR-8970, MLTX-02-004-CN-10100, MLTX-02-004-CN-10050 SS, MLTX-02-004-CN-10100 FF, MLTX-02-004-CN-10050 FF |  |  |  | -15d | 0d | Labor [950 h]; Skilled Labor [440 h]; Driver [260 h]; Crane [160 h]; Padel playgound [30] | 32,175 |  | MOD-02-CN-10110 | 0 | -20 | 0 | PL | Const | Play |
| MLTX-02-004-CN-10120 |  | Surface Marking and Painting (Padel Playground) | 8d | 2027-01-16 | 2027-01-24 | MLTX-02-004-CN-10100, MLTX-02-004-CN-10110 SS, MLTX-02-004-CN-10110 FF |  |  |  | -15d | 5d | Skilled Labor [500 h]; Painter [240 h]; Padel playgound [10] | 10,725 |  | MOD-02-CN-10120 | 0 | -20 | 0 | PL | Const | Play |
|  | 8 | **BASKETBALL PLAYGROUND** |  | 2026-05-23 | 2027-02-07 |  |  |  |  |  |  |  |  |  |  |  |  |  |  |  |  |
| MLTX-02-004-CN-10180 |  | Backfilling and Compaction Subgrade (Basketball Playground) | 0.6d | 2026-05-23 A | 2026-05-23 A | MLTX-02-004-CN-10080 | 100% |  |  |  |  | Labor [550 h]; Skilled Labor [200 h]; Driver [280 h]; Forklift [90 h]; Basketball playground [53.33] | 31,200 | 31,200 | MOD-02-CN-10180 | 0 | -20 | 0 | PL | Const | Play |
| MLTX-02-004-CN-10190 |  | Backfilling and Compaction of Base Layers (Basketball Playground) | 32.4d | 2026-05-24 A | 2026-07-04 A | MLTX-02-004-CN-10180 | 100% |  |  |  |  | Labor [352 h]; Skilled Labor [176 h]; Driver [264 h]; Loader [70 h]; Dump Truck [176 h]; Compactor [88 h]; Basketball playground [47] | 27,495 | 27,495 | MOD-02-CN-10190 | 0 | -20 | 0 | PL | Const | Play |
| MLTX-02-004-CN-10190R |  | Backfilling and Compaction of Base Layers (Basketball Playground) Remaining | 30d | 2026-07-20 A | 2026-08-09 A | MLTX-02-004-CN-10190, MLTX-02-004-CN-10090R | 100% | 2026-08-24 | 2026-09-28 |  |  | Labor [48 h]; Skilled Labor [24 h]; Driver [36 h]; Loader [10 h]; Dump Truck [24 h]; Compactor [12 h]; Basketball playground [6] | 3,510 | 3,510 |  |  |  |  | PL | Const | Play |
| MLTX-02-004-CN-10200 |  | Finishing and Surface Finish Works (Basketball Playground) | 30d | 2026-09-15 A | 2026-09-16 A | MLTX-02-004-CN-10340 SS, MLTX-02-004-CN-10190R | 100% | 2027-01-11 | 2027-02-14 |  |  | Labor [740 h]; Skilled Labor [150 h]; Driver [100 h]; Forklift [90 h]; Basketball playground [266.67] | 156,000 | 156,000 | MOD-02-CN-10200 | 0 | -20 | 0 | PL | Const | Play |
| MLTX-02-004-CN-10210 |  | Install Sport Equipments - Goal / Nets - (Basketball Playground) | 15d | 2027-01-13 | 2027-01-30 | MLTX-02-004-CN-10110 SS, MLTX-02-004-CN-10200, MLTX-02-004-CN-10110 FF |  |  |  | -13d | 7d | Labor [200 h]; Skilled Labor [90 h]; Driver [100 h]; Crane [140 h]; Basketball playground [133.33] | 78,000 |  | MOD-02-CN-10210 | 0 | -20 | 0 | PL | Const | Play |
| MLTX-02-004-CN-10220 |  | Surface Marking and Painting (Basketball Playground) | 7d | 2027-01-31 | 2027-02-07 | MLTX-02-004-CN-10200, MLTX-02-004-CN-10120, MLTX-02-004-CN-10210 SS, MLTX-02-004-CN-12200, MLTX-02-004-CN-10060, MLTX-02-004-CN-10210 FF |  |  |  | -20d | 2d | Skilled Labor [250 h]; Painter [240 h]; Basketball playground [26.67] | 15,600 |  | MOD-02-CN-10220 | 0 | -20 | 0 | PL | Const | Play |
|  | 9 | **PADEL FENCE** |  | 2026-08-16 | 2026-12-09 |  |  |  |  |  |  |  |  |  |  |  |  |  |  |  |  |
| MLTX-02-004-CN-10240 |  | Excavation for Fence | 5d | 2026-08-16 A | 2026-08-16 A | MLTX-02-004-CN-10190R | 100% | 2027-02-03 | 2027-02-08 |  |  | Labor [250 h]; Driver [160 h]; Excavator [80 h]; Dump Truck [160 h]; Supply and install of padel playground fence [0.1] | 8,287.5 | 8,287.5 | MOD-02-CN-10240 | 0 | -20 | 0 | PL | Const | Play |
| MLTX-02-004-CN-10250 |  | Concrete Foundation for Fence including Posts Fixation | 5d | 2026-08-25 A | 2026-09-01 A | MLTX-02-004-CN-10240 | 100% | 2026-08-26 | 2026-08-31 |  |  | Skilled Labor [150 h]; Driver [100 h]; Steel Fixer [140 h]; Supply and install of padel playground fence [0.2] | 16,575 | 16,575 | MOD-02-CN-10250 | 0 | -20 | 0 | PL | Const | Play |
| MLTX-02-004-CN-10251 |  | Backfilling and Reinstatement for Concrete Foundation | 4d | 2026-10-08 A | 2026-10-08 A | MLTX-02-004-CN-10250 SS, MLTX-02-004-CN-10250 | 100% | 2027-03-09 | 2027-03-16 |  |  | Skilled Labor [257.14 h]; Driver [342.86 h]; Loader [180 h]; Dump Truck [240 h]; Compactor [120 h]; Supply and install of padel playground fence [0.05] | 4,143.75 | 4,143.75 | MOD-02-CN-10290 | 0 | -20 | 0 | PL | Const | Play |
| MLTX-02-004-CN-10260 |  | Tempered Glass Fenc Installation and Fixation | 2d | 2026-12-06 | 2026-12-07 | MLTX-02-004-EN-4480, MLTX-02-004-CN-10251 SS, MLTX-02-004-CN-10251, MLTX-02-004-CN-10251 FF, MLTX-02-004-CN-10240 |  |  |  | 23d | 0d | Skilled Labor [250 h]; Driver [180 h]; Crane [240 h]; Supply and install of padel playground fence [0.4] | 33,150 |  | MOD-02-CN-10260 | 0 | -20 | 0 | PL | Const | Play |
| MLTX-02-004-CN-10270 |  | Chain Link Fence Installation and Fixation | 2d | 2026-12-08 | 2026-12-09 | MLTX-02-004-CN-10260 FF, MLTX-02-004-CN-10260 |  |  |  | 23d | 0d | Labor [200 h]; Skilled Labor [150 h]; Driver [150 h]; Crane [200 h]; Supply and install of padel playground fence [0.2] | 16,575 |  | MOD-02-CN-10270 | 0 | -20 | 0 | PL | Const | Play |
| MLTX-02-004-CN-10280 |  | Install of Fence Gates | 2d | 2026-12-08 | 2026-12-09 | MLTX-02-004-CN-10270 SS, MLTX-02-004-CN-10260 SS |  |  |  | 23d | 45d | Labor [380 h]; Skilled Labor [90 h]; Driver [100 h]; Crane [120 h]; Supply and install of padel playground fence [0.05] | 4,143.75 |  | MOD-02-CN-10280 | 0 | -20 | 0 | PL | Const | Play |
|  | 1 | **CURBSTOEN/INTERLOCK** |  | 2026-08-10 | 2026-12-16 |  |  |  |  |  |  |  |  |  |  |  |  |  |  |  |  |
| MLTX-02-004-CN-10150 |  | Concrete Works Under Curbstone | 15d | 2026-08-10 A | 2026-08-10 A | MLTX-02-004-CN-10330, MLTX-02-004-CN-9980R, MLTX-02-004-EN-3460, MLTX-02-004-EN-4450, MLTX-02-004-CN-10330 SS, MLTX-02-004-CN-9980R SS | 100% | 2026-08-29 | 2026-09-15 |  |  | Skilled Labor [200 h]; Kerb type K1A [100]; Kerb type K1B [5]; Kerb type K4 [300] | 19,987.5 | 19,987.5 | MOD-02-CN-10150 | 0 | -38 | 0 | PL | Const | Play |
| MLTX-02-004-CN-10160 |  | Curbstone Installation | 4d | 2026-08-11 A | 2026-08-16 A | MLTX-02-004-PR-9840, MLTX-02-004-CN-10150 | 100% | 2026-10-14 | 2026-10-18 |  |  | Labor [940 h]; Skilled Labor [440 h]; Driver [340 h]; Forklift [300 h]; Kerb type K1A [300]; Kerb type K1B [30]; Kerb type K4 [300] | 36,562.5 | 36,562.5 | MOD-02-CN-10160 | 0 | -38 | 0 | PL | Const | Play |
| MLTX-02-004-CN-10140 |  | Interlock Installation (Grey Scale) for LandScape (Including Finishing Works) | 10d | 2026-12-06 | 2026-12-16 | MLTX-02-004-PR-9520, MLTX-02-004-PR-9070, MLTX-02-004-PR-9600, MLTX-02-004-CN-10160 |  |  |  | -32d | 2d | Labor [1000 h]; Skilled Labor [440 h]; Driver [540 h]; Forklift [330 h]; Interlock tiles grey scale with black marble chips 600*300*60mm zero joint [1466.67] | 185,900 |  | MOD-02-CN-10140 | 0 | -38 | 0 | PL | Const | Play |

| ID | WBS | Activity | Duration | Start | Finish | Predecessors | Complete | Remaining | Planned start | Planned finish | Total float | Free float | Resources | Cost | Actual cost | New Activity ID | % Variance | Delay | On Schedule | W-Construction | WBS-Project | WBS-Construction Type | New Activity Code |
| --- | --- | --- | --- | --- | --- | --- | --- | --- | --- | --- | --- | --- | --- | --- | --- | --- | --- | --- | --- | --- | --- | --- | --- |
|  | 10 | **AIR DOME** |  | 2026-06-16 | 2027-02-10 |  |  |  |  |  |  |  |  |  |  |  |  |  |  |  |  |  |  |
|  | 1 | **CIVIL WORKS** |  | 2026-06-16 | 2027-01-04 |  |  |  |  |  |  |  |  |  |  |  |  |  |  |  |  |  |  |
| MLTX-02-004-CN-10320 |  | Excavation for Foundation & Playground Area (Air Dome) | 11.5d | 2026-06-16 A | 2026-06-29 A | MLTX-02-004-EN-3480, MLTX-02-004-EN-3500, MLTX-02-004-EN-3510, MLTX-02-004-EN-3520, MLTX-02-004-EN-3530, MLTX-02-004-EN-3550, MLTX-02-004-EN-3560, MLTX-02-004-EN-3570, MLTX-02-004-EN-3580, MLTX-02-004-EN-3590, MLTX-02-004-CN-10180, MLTX-02-004-CN-10090 SS | 100% |  |  |  |  |  | Labor [200 h]; Driver [80 h]; Excavator [80 h]; Water Tanker [70 h]; Compactor [80 h]; Design, supply, install, testing and commissioning of air dome | 280,312.5 | 280,312.5 | MOD-02-CN-10320 | 0 | -20 | 0 | PL | Const | Play |  |
| MLTX-02-004-CN-10330 |  | Concrete Works for Foundations including Anchor Bolts (Air Dome) | 26d | 2026-07-11 A | 2026-09-22 A | MLTX-02-004-CN-10320 | 100% |  | 2026-07-30 | 2026-08-29 |  |  | Skilled Labor [200 h]; Steel Fixer [180 h]; Design, supply, install, testing and commissioning of air dome [392438] | 392,437.5 | 211,916.25 | MOD-02-CN-10330 | 0 | -20 | 0 | PL | Const | Play |  |
| MLTX-02-004-CN-10340 |  | Cable System Installation (Air Dome) | 10d | 2026-09-24 A | 2026-10-12 A | MLTX-02-004-CN-10330 | 100% |  | 2027-01-07 | 2027-01-18 |  |  | Labor [700 h]; Skilled Labor [250 h]; Driver [250 h]; Crane [300 h]; Design, supply, install, testing and commissioning of air dome [0.27] | 560,625 |  | MOD-02-CN-10340 | 0 | -38 | 0 | PL | Const | Play |  |
| MLTX-02-004-CN-10370 |  | Thermal Insulation Works (Air Dome) | 14d | 2026-10-21 A | 2027-01-04 | MLTX-02-004-PR-8090, MLTX-02-004-CN-10360 FF, MLTX-02-004-PR-9470 FF | 25% | 9d | 2027-02-04 | 2027-02-20 | -34d | 0d | Labor [500 h]; Skilled Labor [240 h]; Driver [100 h]; Crane [160 h]; Design, supply, install, testing and commissioning of air dome [0.06] | 560,625 | 140,156.25 | MOD-02-CN-10370 | 0 | -38 | 0 | PL | Const | Play |  |
| MLTX-02-004-CN-10360 |  | Install of Membrane Covering System (Air Dome) | 14d | 2026-12-20 | 2027-01-04 | MLTX-02-004-PR-9890, MLTX-02-004-CN-10570, MLTX-02-004-CN-10140 |  |  |  |  | -34d | 0d | Labor [500 h]; Skilled Labor [90 h]; Driver [100 h]; Crane [160 h]; Design, supply, install, testing and commissioning of air dome [0.06] | 560,625 |  | MOD-02-CN-10360 | 0 | -38 | 0 | PL | Const | Play |  |
|  | 3 | **MECHANICAL WORKS** |  | 2027-01-05 | 2027-01-19 |  |  |  |  |  |  |  |  |  |  |  |  |  |  |  |  |  |  |
| MLTX-02-004-CN-10410 |  | Air Ducts and Grills Installation (Air Dome) | 10d | 2027-01-05 | 2027-01-16 | MLTX-02-004-CN-10370, MLTX-02-004-CN-10360 |  |  |  |  | -34d | 0d | Labor [876.9 h]; Skilled Labor [353.8 h]; Mechanical [269.2 h]; Crane [120 h]; Design, supply, install, testing and commissioning of air dome [0.11] | 280,312.5 |  | MOD-02-CN-10410 | 0 | -38 | 0 | PL | Const | Play |  |
| MLTX-02-004-CN-10420 |  | Air Units Installation (Air Dome) | 13d | 2027-01-05 | 2027-01-19 | MLTX-02-004-CN-10410 SS |  |  |  |  | -34d | 0d | Labor [800 h]; Skilled Labor [440 h]; Driver [420 h]; Mechanical [160 h]; Forklift [240 h]; Design, supply, install, testing and commissioning of air dome [0.06] | 448,500 |  | MOD-02-CN-10420 | 0 | -38 | 0 | PL | Const | Play |  |
| MLTX-02-004-CN-10430 |  | Exhaust Fans and Ducts Installation (Air Dome) | 7d | 2027-01-05 | 2027-01-12 | MLTX-02-004-CN-10420 SS, MLTX-02-004-CN-10410 SS |  |  |  |  | -24d | 0d | Labor [700 h]; Skilled Labor [300 h]; Driver [370 h]; Mechanical [140 h]; Forklift [210 h]; Design, supply, install, testing and commissioning of air dome [0.02] | 392,437.5 |  | MOD-02-CN-10430 | 0 | -38 | 0 | PL | Const | Play |  |
|  | 4 | **ELECTRICAL WORKS** |  | 2026-10-07 | 2027-02-10 |  |  |  |  |  |  |  |  |  |  |  |  |  |  |  |  |  |  |
| MLTX-02-004-CN-10450 |  | Light Fixture Works (Air Dome) | 4d | 2026-10-07 A | 2027-01-19 | MLTX-02-004-CN-10420 FF, MLTX-02-004-CN-10430 FF, MLTX-02-004-EN-3770 | 95% | 4d | 2027-02-25 | 2027-03-01 | -30d | 0d | Skilled Labor [440 h]; Electrician [300 h]; Design, supply, install, testing and commissioning of air dome [0.04] | 280,312.5 |  | MOD-02-CN-10450 | 0 | -38 | 0 | PL | Const | Play |  |
| MLTX-02-004-CN-10460 |  | Distribution Board and Electrical Works (Air Dome) | 3d | 2027-01-20 | 2027-01-23 | MLTX-02-004-CN-10450 SS, MLTX-02-004-CN-10450 |  |  |  |  | -30d | 0d | Skilled Labor [300 h]; Electrician [120 h]; Design, supply, install, testing and commissioning of air dome [0.03] | 280,312.5 |  | MOD-02-CN-10460 | 0 | -38 | 0 | PL | Const | Play |  |
| MLTX-02-004-CN-10470 |  | External Electrical Connection Works (Air Dome) | 4d | 2027-01-24 | 2027-01-27 | MLTX-02-004-CN-10460 SS, MLTX-02-004-CN-10460 |  |  |  |  | -30d | 0d | Skilled Labor [350 h]; Electrician [200 h]; Design, supply, install, testing and commissioning of air dome [0.05] | 280,312.5 |  | MOD-02-CN-10470 | 0 | -38 | 0 | PL | Const | Play |  |
| MLTX-02-004-CN-10480 |  | Emergency Generator Installation (Air Dome) | 4d | 2027-01-28 | 2027-02-01 | MLTX-02-004-CN-10470 SS, MLTX-02-004-CN-10470 |  |  |  |  | -30d | 4d | Skilled Labor [300 h]; Electrician [220 h]; Design, supply, install, testing and commissioning of air dome [0.11] | 560,625 |  | MOD-02-CN-10480 | 0 | -38 | 0 | PL | Const | Play |  |
| MLTX-02-004-CN-10490 |  | Control System Installation (Air Dome) | 4d | 2027-02-07 | 2027-02-10 | MLTX-02-004-CN-10480 SS, MLTX-02-004-CN-10390, MLTX-02-004-CN-10480 |  |  |  |  | -34d | 0d | Skilled Labor [1000 h]; Electrician [500 h]; Design, supply, install, testing and commissioning of air dome [0.09] | 280,312.5 |  | MOD-02-CN-10490 | 0 | -38 | 0 | PL | Const | Play |  |
|  | 2 | **FINISHES WORKS** |  | 2027-01-20 | 2027-02-06 |  |  |  |  |  |  |  |  |  |  |  |  |  |  |  |  |  |  |
| MLTX-02-004-CN-10380 |  | Doors Installation Including Emergency, Entrance doors (Air Dome) | 6d | 2027-01-20 | 2027-01-26 | MLTX-02-004-CN-10420 |  |  |  |  | -34d | 0d | Labor [400 h]; Skilled Labor [200 h]; Forklift [150 h]; Design, supply, install, testing and commissioning of air dome [0.02] | 224,250 |  | MOD-02-CN-10380 | 0 | -38 | 0 | PL | Const | Play |  |
| MLTX-02-004-CN-10390 |  | Logo and Signs Installation (Air Dome) | 9d | 2027-01-27 | 2027-02-06 | MLTX-02-004-CN-10380 |  |  |  |  | -34d | 0d | Labor [1300 h]; Skilled Labor [900 h]; Driver [340 h]; Crane [120 h]; Design, supply, install, testing and commissioning of air dome [0.02] | 224,250 |  | MOD-02-CN-10390 | 0 | -38 | 0 | PL | Const | Play |  |
|  | 1 | **IRRIGATION NETWORK** |  | 2026-08-20 | 2026-12-19 |  |  |  |  |  |  |  |  |  |  |  |  |  |  |  |  |  |  |
| MLTX-02-004-CN-11430 |  | Installing of HDPE Pipes for Irrigation Network (Main Line) | 4d | 2026-08-20 A | 2026-08-29 A | MLTX-02-004-EN-3880, MLTX-02-004-EN-3920, MLTX-02-004-EN-4570, MLTX-02-004-CN-10160 | 100% |  | 2026-09-24 | 2026-09-28 |  |  | Labor [1000 h]; Driver [540 h]; Mechanical [320 h]; Plumber [300 h]; Crane [220 h]; HDPE Pipes pipe line O.D 90 mm PN 10, in depth 0 to 1.5 m [500] | 107,250 | 107,250 | MOD-02-CN-11430 | 0 | -38 | 0 | LS | Const | Play | CN.MB.D15.1950 |
| MLTX-02-004-CN-11440 |  | Installing of HDPE Pipes for Irrigation Network (Branch Lines) | 4d | 2026-08-29 A | 2026-08-31 A | MLTX-02-004-CN-11430 | 100% |  | 2026-11-08 | 2026-11-12 |  |  | Labor [800 h]; Driver [240 h]; Mechanical [240 h]; Plumber [240 h]; Crane [140 h]; HDPE Pipes pipe line O.D 50 mm PN 10, in depth 0 to 1.5 m [200]; HDPE Pipes pipe line O.D 32 mm PN 10, in depth 0 to 1.5 m [600]; HDPE Pipes pipe line O.D 25 mm PN 10, in depth 0 to 1.5 m [1500] | 108,712.5 | 108,712.5 | MOD-02-CN-11440 | 0 | -38 | 0 | LS | Const | Play | CN.MB.D15.1960 |
| MLTX-02-004-CN-11450 |  | Installing of Valves and fittings for Irrigation Network | 4d | 2026-09-24 A | 2026-12-08 | MLTX-02-004-CN-11500 FF, MLTX-02-004-CN-11830 FF, MLTX-02-004-CN-11770 FF, MLTX-02-004-CN-11820 FF, MLTX-02-004-CN-11620 FF, MLTX-02-004-CN-11760 FF, MLTX-02-004-CN-11790 FF, MLTX-02-004-CN-11750 FF, MLTX-02-004-CN-11440 | 80% | 4d | 2026-12-05 | 2026-12-08 | -38d | 0d | Labor [950 h]; Mechanical [160 h]; Plumber [260 h]; Electrical Solenoid Valve ( 1") inside PVC box [5.33]; Gate valve 100 mm PN16 [1]; Gate valve 50 mm PN16 [5.33]; Gate valve 32 mm PN16 [8]; Flushing Bronze gate valve dia 1.5" inside PVC box [2.67]; Air release valve 1.5" inside PVC box [3.33] | 46,475 |  | MOD-02-CN-11450 | 0 | -38 | 0 | LS | Const | Play | CN.MB.D15.1970 |
| MLTX-02-004-CN-11460 |  | Installing of Bubblers and Spreyers | 3d | 2026-12-16 | 2026-12-19 | MLTX-02-004-PR-9800, MLTX-02-004-CN-10550, MLTX-02-004-PR-9720 |  |  |  |  | -38d | 0d | Labor [1300 h]; Mechanical [240 h]; Plumber [240 h]; Pressureâ€“compensating bubblers 110 Lit/Hr [6.67]; Pressureâ€“ bubblers 60 Lit/Hr [293.33]; Pop up sprayer 90?- 210?, Radius 3.0 mtr [400]; Pop up sprayer 360?,Radius 3.0 mtr. [550] | 46,150 |  | MOD-02-CN-11460 | 0 | -38 | 0 | LS | Const | Play | CN.MB.D15.1980 |

| ID | WBS | Activity | Duration | Start | Finish | Predecessors | Complete | Remaining | Planned start | Planned finish | Total float | Free float | Resources | Cost | Actual cost | New Activity ID | % Variance | Delay | On Schedule | W-Construction | WBS-Project | WBS-Construction Type | New Activity Code |
| --- | --- | --- | --- | --- | --- | --- | --- | --- | --- | --- | --- | --- | --- | --- | --- | --- | --- | --- | --- | --- | --- | --- | --- |
|  | 5 | **NATURAL GROUND** |  | 2026-12-09 | 2026-12-15 |  |  |  |  |  |  |  |  |  |  |  |  |  |  |  |  |  |  |
| MLTX-02-004-CN-10550 |  | Compacted Natural Ground Soil Installation Works for Landscape | 6d | 2026-12-09 | 2026-12-15 | MLTX-02-004-CN-11450, MLTX-02-004-CN-11710, MLTX-02-004-CN-11740 |  |  |  |  | -38d | 0d | Labor [1800 h]; Skilled Labor [1900 h]; Driver [370 h]; Water Tanker [270 h]; Dump Truck [360 h]; Compactor [180 h]; Compacted Natural ground soil [5490] | 80,291.25 |  | MOD-02-CN-10550 | 0 | -38 | 0 | LS | Const | Play |  |
|  | 2 | **PLANTING** |  | 2026-10-13 | 2027-01-23 |  |  |  |  |  |  |  |  |  |  |  |  |  |  |  |  |  |  |
| MLTX-02-004-CN-10570 |  | Placement of Sweet/Agricultural Soil (Including Levelling and Grading) | 3d | 2026-10-13 A | 2026-12-19 | MLTX-02-004-PR-9640 FF, MLTX-02-004-CN-11460 FF | 80% | 3d | 2027-01-20 | 2027-01-23 | -34d | 0d | Labor [1850 h]; Driver [380 h]; Dump Truck [500 h]; Bobcat [280 h]; Cassia Glauca [44]; Plumeria Alba [44]; Neem [1.5]; Lawn [1400] | 186,420 | 56,842.55 | MOD-02-CN-10570 | 0 | -38 | 0 | LS | Const | Play |  |
| MLTX-02-004-CN-10590 |  | Placement and Fixation of Trees | 3d | 2027-01-17 | 2027-01-19 | MLTX-02-004-CN-10410 |  |  |  |  | -22d | 0d | Labor [2250 h]; Skilled Labor [1500 h]; Driver [500 h]; Water Tanker [250 h]; Cassia Glauca [93]; Plumeria Alba [93]; Neem [3.5] | 236,242.5 |  | MOD-02-CN-10590 | 0 | -38 | 0 | LS | Const | Play |  |
| MLTX-02-004-CN-10580 |  | Placement of Lawn Ground Cover (Rolling and Compaction) | 3d | 2027-01-20 | 2027-01-23 | MLTX-02-004-CN-10590 |  |  |  |  | -22d | 0d | Labor [2500 h]; Skilled Labor [1550 h]; Driver [540 h]; Water Tanker [250 h]; Lawn [3266.67] | 175,175 |  | MOD-02-CN-10580 | 0 | -38 | 0 | LS | Const | Play |  |
|  | 3 | **WALKING/BIKE PATHS** |  | 2026-08-11 | 2027-01-23 |  |  |  |  |  |  |  |  |  |  |  |  |  |  |  |  |  |  |
| MLTX-02-004-CN-10510 |  | Bike Path Preparation and Installation Works | 12d | 2026-08-11 A | 2027-01-23 | MLTX-02-004-PR-9760 FF, MLTX-02-004-CN-10580 FF | 70% | 12d | 2027-01-02 | 2027-01-14 | -22d | 0d | Skilled Labor [850 h]; Driver [460 h]; Bobcat [180 h]; Bike path [832.5] | 142,045.36 | 127,221.09 | MOD-02-CN-10510 | 0 | -38 | 0 | LS | Const | Play |  |
| MLTX-02-004-CN-10520 |  | Walking Path Preparation and Installation Works | 12d | 2026-08-11 A | 2026-11-18 A | MLTX-02-004-CN-10510 FF, MLTX-02-004-CN-10510 SS | 100% |  | 2027-01-02 | 2027-01-14 |  |  | Skilled Labor [850 h]; Driver [460 h]; Bobcat [180 h]; Walking path [787.5] | 134,367.41 | 134,367.41 | MOD-02-CN-10520 | 0 | -38 | 0 | LS | Const | Play |  |
|  | 6 | **GENERAL/FURNITURE** |  | 2026-09-29 | 2027-02-20 |  |  |  |  |  |  |  |  |  |  |  |  |  |  |  |  |  |  |
| MLTX-02-004-CN-11710 |  | Preleminary Works for Site Light Poles Including Cable and Bases Works | 12d | 2026-09-29 A | 2026-10-01 A | MLTX-02-004-EN-3970, MLTX-02-004-EN-3980, MLTX-02-004-EN-3950, MLTX-02-004-EN-3960, MLTX-02-004-CN-10160 | 100% |  | 2026-10-24 | 2026-11-05 |  |  | Labor [950 h]; Driver [340 h]; Electrician [460 h]; Forklift [240 h]; Supply, install, testing, and commissioning of ground mounted decorated landscape LED lighting with 6.0m height pole [32.2] | 202,497.75 | 202,497.75 | MOD-02-CN-11710 | 0 | -38 | 0 | LS | Const | Play | CN.MB.D16.2130 |
| MLTX-02-004-CN-11800 |  | Installing of Site Light Poles | 11d | 2026-10-01 A | 2027-02-02 | MLTX-02-004-CN-10580 FF, MLTX-02-004-CN-10610 FF, MLTX-02-004-PR-9930 | 92% | 11d | 2027-03-16 | 2027-03-28 | -7d | 6d | Skilled Labor [700 h]; Electrician [500 h]; Crane [140 h]; Supply, install, testing, and commissioning of ground mounted decorated landscape LED lighting with 6.0m height pole [75.13] | 472,473.79 | 269,569.82 | MOD-02-CN-11800 | 0 | -38 | 0 | LS | Const | Play | CN.MB.D16.2140 |
| MLTX-02-004-CN-10610 |  | Stamped Concrete Works for LandScape (Including Finishing Works) | 9d | 2027-01-24 | 2027-02-02 | MLTX-02-004-MS-1150, MLTX-02-004-CN-10520 |  |  |  |  | -16d | 0d | Skilled Labor [850 h]; Steel Fixer [320 h]; Stamped concrete floor [179.78] | 42,068.52 |  | MOD-02-CN-10610 | 0 | -38 | 0 | LS | Const | Play |  |
| MLTX-02-004-CN-10630 |  | Fixation and Installation of Steel Frame for Benches | 7d | 2027-01-24 | 2027-01-31 | MLTX-02-004-CN-10510 |  |  |  |  | -22d | 0d | Skilled Labor [850 h]; Driver [420 h]; Crane [160 h]; Supply and install playground benches consists of 6 seats [1] | 17,276.03 |  | MOD-02-CN-10630 | 0 | -38 | 0 | LS | Const | Play |  |
| MLTX-02-004-CN-10640 |  | Fixation and Installation of Benches | 7d | 2027-02-01 | 2027-02-08 | MLTX-02-004-CN-10630, MLTX-02-004-CN-10280 |  |  |  |  | -22d | 0d | Skilled Labor [700 h]; Driver [420 h]; Crane [160 h]; Supply and install playground benches consists of 6 seats [2.33] | 40,310.72 |  | MOD-02-CN-10640 | 0 | -38 | 0 | LS | Const | Play |  |
| MLTX-02-004-CN-10650 |  | Fixation and Installation of Precast Concrete Seats (Rectangular) | 7d | 2027-02-01 | 2027-02-08 | MLTX-02-004-CN-10640 SS, MLTX-02-004-CN-11710 |  |  |  |  | -22d | 0d | Skilled Labor [700 h]; Driver [420 h]; Crane [160 h]; Supply and install recycled precast concrete rectangular seats [37.33] | 43,680 |  | MOD-02-CN-10650 | 0 | -38 | 0 | LS | Const | Play |  |
| MLTX-02-004-CN-10660 |  | Fixation and Installation of Precast Concrete Seats (Circular) | 8d | 2027-02-01 | 2027-02-09 | MLTX-02-004-CN-10650 SS, MLTX-02-004-CN-10650 FF |  |  |  |  | -22d | 0d | Skilled Labor [700 h]; Driver [420 h]; Crane [160 h]; Supply and install recycled precast concrete circular seats [32] | 17,160 |  | MOD-02-CN-10660 | 0 | -38 | 0 | LS | Const | Play |  |
| MLTX-02-004-CN-10670 |  | Fixation and Installation of Precast Concrete Trash Bins | 9d | 2027-02-10 | 2027-02-20 | MLTX-02-004-CN-10220, MLTX-02-004-CN-10660, MLTX-02-004-EN-4460, MLTX-02-004-CN-10610, MLTX-02-004-CN-10270, MLTX-02-004-CN-10640 |  |  |  |  | -22d | 64d | Skilled Labor [400 h]; Driver [320 h]; Crane [160 h]; Supply and install recycled precast concrete trash bins [10] | 14,625 |  | MOD-02-CN-10670 | 0 | -38 | 0 | LS | Const | Play |  |
|  | TO | **TOILET/SERVICE BUILDING** |  | 2026-06-06 | 2026-12-13 |  |  |  |  |  |  |  |  |  |  |  |  |  |  |  |  |  |  |
|  | 13 | **STRUCTURE WORKS** |  | 2026-06-06 | 2026-07-26 |  |  |  |  |  |  |  |  |  |  |  |  |  |  |  |  |  |  |
|  | 2 | **CONCRETE WORKS** |  | 2026-06-14 | 2026-07-26 |  |  |  |  |  |  |  |  |  |  |  |  |  |  |  |  |  |  |
|  | 1 | **SUB-STRUCTURE** |  | 2026-06-14 | 2026-06-23 |  |  |  |  |  |  |  |  |  |  |  |  |  |  |  |  |  |  |
| MLTX-02-004-CN-10750 |  | Plain Concrete Under Footing | 2.2d | 2026-06-14 A | 2026-06-16 A | MLTX-02-004-EN-3060, MLTX-02-004-EN-3070, MLTX-02-004-EN-3080, MLTX-02-004-EN-4370, MLTX-02-004-EN-6330, MLTX-02-004-CN-10960, MLTX-02-004-CN-10930 | 100% |  |  |  |  |  | Labor [100 h]; Skilled Labor [60 h]; lean concrete under foundation [1.5] | 1,170 | 1,170 | MOD-02-CN-10750 | -50 | -17 | 0 | TO | Const | Toilet | CN.MB.D01.1500 |
| MLTX-02-004-CN-10800 |  | Reinforced Concrete Works for Slab on Grade Including Steel Fixing | 7.2d | 2026-06-15 A | 2026-06-23 A | MLTX-02-004-PR-7900, MLTX-02-004-CN-10750 | 100% |  |  |  |  |  | Labor [300 h]; Skilled Labor [100 h]; Steel Fixer [120 h]; Provide and cast 35 Mpa concrete floor slab on grade [15] | 32,175 | 32,175 | MOD-02-CN-10800 | 0 | -17 | 0 | TO | Const | Toilet | CN.MB.D01.1590 |

| ID | WBS | Activity | Duration | Start | Finish | Predecessors | Complete | Planned start | Planned finish | Resources | Cost | Actual cost | New Activity Code | New Activity ID | % Variance | Delay | On Schedule | W-Construction | WBS-Project | WBS-Construction Type | Flag |
| --- | --- | --- | --- | --- | --- | --- | --- | --- | --- | --- | --- | --- | --- | --- | --- | --- | --- | --- | --- | --- | --- |
|  | 2 | **SUPER-STRUCTURE** |  | 2026-07-22 | 2026-07-26 |  |  |  |  |  |  |  |  |  |  |  |  |  |  |  |  |
| MLTX-02-004-CN-10820 |  | AAC Panels Works for Walls | 12d | 2026-07-22 A | 2026-07-23 A | MLTX-02-004-EN-2980, MLTX-02-004-EN-2990, MLTX-02-004-EN-3000, MLTX-02-004-EN-3010, MLTX-02-004-EN-3020, MLTX-02-004-EN-3030, MLTX-02-004-EN-3040, MLTX-02-004-CN-11030 | 100% | 2026-08-02 | 2026-08-15 | Labor [500 h]; Skilled Labor [200 h]; Driver [280 h]; Crane [100 h]; The autoclaved aerated panel for slabs, external and internal walls and parapet [150] | 48,262.5 | 48,262.5 | CN.MB.D01.1550 | MOD-02-CN-10820 | 0 | -17 | 0 | TO | Const | Toilet |  |
| MLTX-02-004-CN-10830 |  | AAC Panels Works for Slabs | 10d | 2026-07-23 A | 2026-07-26 A | MLTX-02-004-CN-10820 | 100% | 2026-07-25 | 2026-08-04 | Labor [250 h]; Skilled Labor [100 h]; Driver [200 h]; Crane [100 h]; The autoclaved aerated panel for slabs, external and internal walls and parapet [50] | 16,087.5 | 16,087.5 | CN.MB.D01.1600 | MOD-02-CN-10830 | 0 | -17 | 0 | TO | Const | Toilet |  |
| MLTX-02-004-CN-10840 |  | Parpet Works and Lintels | 8d | 2026-07-26 A | 2026-07-26 A | MLTX-02-004-CN-10830, MLTX-02-004-CN-10890 | 100% | 2026-07-27 | 2026-08-04 | Labor [200 h]; Skilled Labor [60 h]; Driver [100 h]; Crane [50 h]; The autoclaved aerated panel for slabs, external and internal walls and parapet [50] | 16,087.5 | 16,087.5 | CN.MB.D01.1570 | MOD-02-CN-10840 | 0 | -17 | 0 | TO | Const | Toilet |  |
|  | 1 | **UNDER GROUND SEPTIC TANK** |  | 2026-06-06 | 2026-06-27 |  |  |  |  |  |  |  |  |  |  |  |  |  |  |  |  |
| MLTX-02-004-CN-10860 |  | Plain Concrete Under Footing | 4d | 2026-06-06 A | 2026-06-10 A | MLTX-02-004-CN-10950, MLTX-02-004-CN-10920, MLTX-02-004-CN-10950 FF | 100% |  |  | Labor [100 h]; Skilled Labor [40 h]; lean concrete under foundation [1.5] | 1,170 | 1,170 | CN.MB.D01.1500 | MOD-02-CN-10860 | -100 | -17 | -100 | TO | Const | Toilet | UDF_G1 |
| MLTX-02-004-CN-10870 |  | Reinforced Concrete Works for Tank Foundation Including Shuttering and Steel Fixing | 8.6d | 2026-06-10 A | 2026-06-20 A | MLTX-02-004-CN-10860 | 100% |  |  | Labor [350 h]; Skilled Labor [100 h]; Steel Fixer [120 h]; Tank foundation [3] | 7,605 | 7,605 | CN.MB.D01.1530 | MOD-02-CN-10870 | -100 | -17 | -100 | TO | Const | Toilet | UDF_G1 |
| MLTX-02-004-CN-10880 |  | Reinforced Concrete Works for Tank Walls Including Steel Fixing | 3.8d | 2026-06-17 A | 2026-06-21 A | MLTX-02-004-CN-10870 | 100% |  |  | Labor [600 h]; Skilled Labor [200 h]; Steel Fixer [200 h]; Tank Walls [6] | 16,380 | 16,380 | CN.MB.D01.1590 | MOD-02-CN-10880 | -30 | -17 | 0 | TO | Const | Toilet |  |
| MLTX-02-004-CN-10890 |  | Reinforced Concrete Works for Tank Slab Including Shuttering and Steel Fixing | 4.6d | 2026-06-22 A | 2026-06-27 A | MLTX-02-004-CN-10880 | 100% |  |  | Labor [700 h]; Skilled Labor [250 h]; Steel Fixer [240 h]; Tank Slab [3] | 8,775 | 8,775 | CN.MB.D01.1520 | MOD-02-CN-10890 | 0 | -17 | 0 | TO | Const | Toilet |  |
|  | 3 | **THERMAL & MOISTER PROTECTION** |  | 2026-06-06 | 2026-07-22 |  |  |  |  |  |  |  |  |  |  |  |  |  |  |  |  |
|  | 1 | **ANTI TERMIT CONTROL** |  | 2026-06-06 | 2026-06-29 |  |  |  |  |  |  |  |  |  |  |  |  |  |  |  |  |
| MLTX-02-004-CN-10920 |  | Anti Termite Works Under Foundation | 7.34d | 2026-06-06 A | 2026-06-14 A | MLTX-02-004-CN-9970, MLTX-02-004-CN-9980 SS | 100% |  |  | Labor [40 h]; Skilled Labor [20 h]; Supply and apply anti termite under all concrete in contact with soil. [36] | 1,755 | 1,755 | CN.MB.D01.1640 | MOD-02-CN-10920 | -100 | -12.08 | -100 | TO | Const | Toilet | UDF_G1 |
| MLTX-02-004-CN-10930 |  | Anti Termite Works Under Slab on Grade and Grade Beams | 5.4d | 2026-06-23 A | 2026-06-29 A | MLTX-02-004-CN-10870 | 100% |  |  | Labor [50 h]; Skilled Labor [30 h]; Supply and apply anti termite under all concrete in contact with soil. [54] | 2,632.5 | 2,632.5 | CN.MB.D01.1650 | MOD-02-CN-10930 | -100 | -17 | 0 | TO | Const | Toilet |  |
|  | 2 | **POLYETHYLENE SHEET** |  | 2026-06-06 | 2026-06-29 |  |  |  |  |  |  |  |  |  |  |  |  |  |  |  |  |
| MLTX-02-004-CN-10950 |  | Water Proofing Under Blinding Concrete (Polythelen Sheet) | 7.34d | 2026-06-06 A | 2026-06-14 A | MLTX-02-004-EN-4380, MLTX-02-004-EN-4820, MLTX-02-004-CN-10920 SS | 100% |  |  | Labor [40 h]; Skilled Labor [20 h]; Supply and lay 250 micron thk polyethylene sheet under grade slab [36] | 877.5 | 877.5 | CN.MB.D01.1620 | MOD-02-CN-10950 | -100 | -17 | -100 | TO | Const | Toilet | UDF_G1 |
| MLTX-02-004-CN-10960 |  | Water Proofing Under Slab on Grade (Polythelen Sheet) | 5.8d | 2026-06-23 A | 2026-06-29 A | MLTX-02-004-CN-10930 SS, MLTX-02-004-CN-10870 | 100% |  |  | Labor [50 h]; Skilled Labor [30 h]; Supply and lay 250 micron thk polyethylene sheet under grade slab [54] | 1,316.25 | 1,316.25 | CN.MB.D01.1630 | MOD-02-CN-10960 | -100 | -17 | 0 | TO | Const | Toilet |  |
|  | 4 | **EPOXY** |  | 2026-07-14 | 2026-07-22 |  |  |  |  |  |  |  |  |  |  |  |  |  |  |  |  |
| MLTX-02-004-CN-11000 |  | Surface Preparation for Epoxy Coating | 5d | 2026-07-14 A | 2026-07-21 A | MLTX-02-004-CN-10890 | 100% | 2026-07-15 | 2026-07-20 | Labor [200 h]; Skilled Labor [90 h]; Provide and lay epoxy 2 coating for inner surfaces for RC walls, RC footings and bottom of the roof [7.99] | 1,168.54 | 1,168.54 | CN.MB.D01.1660 | MOD-02-CN-11000 | 0 | -17 | 0 | TO | Const | Toilet |  |
| MLTX-02-004-CN-11010 |  | Epoxy Coating for Walls and Slab of Tank | 7d | 2026-07-21 A | 2026-07-22 A | MLTX-02-004-CN-11000 | 100% | 2026-07-22 | 2026-07-29 | Labor [300 h]; Skilled Labor [150 h]; Provide and lay epoxy 2 coating for inner surfaces for RC walls, RC footings and bottom of the roof [17.5] | 2,559.38 | 2,559.38 | CN.MB.D01.1670 | MOD-02-CN-11010 | 0 | -17 | 0 | TO | Const | Toilet |  |
|  | 5 | **MASONARY WORK** |  | 2026-07-26 | 2026-07-28 |  |  |  |  |  |  |  |  |  |  |  |  |  |  |  |  |
| MLTX-02-004-CN-11030 |  | CMU Masonary Works Including all Accessories | 5d | 2026-07-26 A | 2026-07-28 A | MLTX-02-004-EN-4410, MLTX-02-004-PR-7970, MLTX-02-004-CN-10800 | 100% | 2026-08-01 | 2026-08-05 | Labor [300 h]; Mason [150 h]; Concrete masonry unit, 100 mm thick wall [45] | 12,285 | 12,285 | CN.MB.D04.1690 | MOD-02-CN-11030 | 0 | -17 | 0 | TO | Const | Toilet |  |
|  | 3 | **THERMAL & MOISTER PROTECTION** |  | 2026-09-26 | 2026-10-19 |  |  |  |  |  |  |  |  |  |  |  |  |  |  |  |  |
| MLTX-02-004-CN-11060 |  | Preparing Surface and Preliminary Works for Roofing and Wet Areas Insulation | 5d | 2026-09-26 A | 2026-09-26 A | MLTX-02-004-CN-10840 | 100% | 2026-10-06 | 2026-10-11 | Labor [250 h]; Skilled Labor [150 h]; Plumber [60 h]; Supply and cast in place foam concrete screed 50mm thk minimum laid to fall and cross fall [28]; Supply and install 4mm thick APP modified bituminous membrane for roof insulation [28]; Supply and install 300 micron polyethylene sheet [28]; Supply and install 50mm thk rigid insulation (extruded polystyrene) with density of 35 kg./m3 [28]; Supply and install 50mm thk loose gravel toppings [28]; Supplying and fixing 3mm thk extruded aluminum flashing [13.6]; Provide and lay 2 layers of waterproofing membrane 4mm [8] | 11,072.1 | 11,072.1 | CN.MB.D07.1790 | MOD-02-CN-11060 | 0 | -17 | 0 | TO | Const | Toilet |  |
| MLTX-02-004-CN-11080 |  | Finalize Water Proofing Works for Roofing and Wet Areas | 8d | 2026-09-27 A | 2026-10-17 A | MLTX-02-004-CN-11060 | 100% | 2026-09-28 | 2026-10-06 | Labor [300 h]; Skilled Labor [200 h]; Supply and cast in place foam concrete screed 50mm thk minimum laid to fall and cross fall [42]; Supply and install 4mm thick APP modified bituminous membrane for roof insulation [42]; Supply and install 300 micron polyethylene sheet [42]; Supply and install 50mm thk rigid insulation (extruded polystyrene) with density of 35 kg./m3 [42]; Supply and install 50mm thk loose gravel toppings [42]; Supplying and fixing 3mm thk extruded aluminum flashing [20.4]; Provide and lay 2 layers of waterproofing membrane 4mm [12] | 16,608.15 | 16,608.15 | CN.MB.D07.1800 | MOD-02-CN-11080 | 0 | -17 | 0 | TO | Const | Toilet |  |
| MLTX-02-004-CN-11070 |  | Finalize Water Proofing Works for Toilets | 6d | 2026-10-06 A | 2026-10-10 A | MLTX-02-004-CN-11060 | 100% | 2026-10-14 | 2026-10-20 | Labor [280 h]; Skilled Labor [150 h]; Supply and install liquid applied waterproofing membrane for toilets according to drawings and specifications. [33.6] | 4,914 | 4,914 | CN.MB.D07.1780 | MOD-02-CN-11070 | 0 | -17 | 0 | TO | Const | Toilet |  |
| MLTX-02-004-CN-11050 |  | Preparing Surface and Preliminary Works for Toilets Waterproofing | 2d | 2026-10-15 A | 2026-10-19 A | MLTX-02-004-CN-10840, MLTX-02-004-CN-11010, MLTX-02-004-CN-10330 | 100% | 2026-10-21 | 2026-10-22 | Labor [120 h]; Skilled Labor [60 h]; Plumber [20 h]; Supply and install liquid applied waterproofing membrane for toilets according to drawings and specifications. [14.4] | 2,106 | 2,106 | CN.MB.D07.1770 | MOD-02-CN-11050 | 0 | -17 | 0 | TO | Const | Toilet |  |

| ID | WBS | Activity | Duration | Start | Finish | Predecessors | Complete | Planned start | Planned finish | Total float | Free float | Resources | Cost | Actual cost | New Activity Code | New Activity ID | % Variance | Delay | On Schedule | W-Construction | WBS-Project | WBS-Construction Type |
| --- | --- | --- | --- | --- | --- | --- | --- | --- | --- | --- | --- | --- | --- | --- | --- | --- | --- | --- | --- | --- | --- | --- |
|  | 11 | **MECHANICAL WORK** |  | 2026-07-04 | 2026-12-13 |  |  |  |  |  |  |  |  |  |  |  |  |  |  |  |  |  |
|  | 4 | **HVAC SYSTEM** |  | 2026-08-10 | 2026-12-06 |  |  |  |  |  |  |  |  |  |  |  |  |  |  |  |  |  |
| MLTX-02-004-CN-11480 |  | Preliminary HVAC and Ventilation Works | 3d | 2026-08-10 A | 2026-08-10 A | MLTX-02-004-CN-11310, MLTX-02-004-EN-3150, MLTX-02-004-EN-3160, MLTX-02-004-EN-3100, MLTX-02-004-EN-3120, MLTX-02-004-EN-3110, MLTX-02-004-EN-4580 | 100% | 2026-09-26 | 2026-09-28 |  |  | Labor [240 h]; Skilled Labor [90 h]; Mechanical [60 h]; Square Exhaust Diffuser 6"X6 " [6]; Supply, install, test and commission indoor ductwork [100]; Door Grilles 18"X6 " [1] | 9,360 | 9,360 | CN.MB.D15.1920 | MOD-02-CN-11480 | 0 | -17 | 0 | TO | Const | Toilet |
| MLTX-02-004-CN-11490 |  | Exhaust, Air Ducts Installation with all Accessories | 8d | 2026-11-03 A | 2026-12-06 A | MLTX-02-004-PR-8450, MLTX-02-004-CN-11480 | 100% | 2026-11-23 | 2026-12-01 |  |  | Labor [200 h]; Skilled Labor [180 h]; Driver [60 h]; Mechanical [120 h]; Crane [120 h]; Supply, install, test and commission inline exhaust fans duct [1] | 3,900 | 3,900 | CN.MB.D15.1940 | MOD-02-CN-11490 | 0 | -17 | 0 | TO | Const | Toilet |
| MLTX-02-004-CN-11500 |  | Install and Finish HVAC and Ventilation Works Including Split Air Units | 6d | 2026-11-11 A | 2026-11-18 A | MLTX-02-004-PR-8330, MLTX-02-004-CN-11260, MLTX-02-004-CN-11490 FF | 100% | 2026-12-10 | 2026-12-16 |  |  | Labor [150 h]; Skilled Labor [90 h]; Driver [60 h]; Mechanical [60 h]; Crane [60 h]; Supply and install split air conditioning unit (DX-MINI SPLIT UNIT) [1] | 14,625 | 14,625 | CN.MB.D15.1930 | MOD-02-CN-11500 | 0 | -17 | 0 | TO | Const | Toilet |
|  | 2 | **WATER SUPPLY SYSTEM** |  | 2026-07-04 | 2026-12-10 |  |  |  |  |  |  |  |  |  |  |  |  |  |  |  |  |  |
| MLTX-02-004-CN-11540 |  | Installing of PPR Pipes and Fittings for Water Network | 3d | 2026-07-04 A | 2026-08-09 A | MLTX-02-004-EN-3180, MLTX-02-004-EN-3190, MLTX-02-004-EN-4550, MLTX-02-004-PR-8250, MLTX-02-004-CN-11590 | 100% | 2026-09-07 | 2026-09-09 |  |  | Labor [100 h]; Plumber [60 h]; PPR Pipe with 65 mm ? Cold water [6]; PPR Pipe with 50 mm ? Cold water [4]; PPR Pipe with 40 mm ? Cold water [1]; PPR Pipe with 32 mm ? Cold water [2]; PPR Pipe with 25 mm ? Cold water [4]; PPR Pipe with 20 mm ? Cold water [7]; PPR Pipe with 20 mm ? Hot water [22] | 6,922.5 | 6,922.5 | CN.MB.D15.1950 | MOD-02-CN-11540 | 0 | -17 | 0 | TO | Const | Toilet |
| MLTX-02-004-CN-11860 |  | Installing of Water Heater | 4d | 2026-11-01 A | 2026-11-05 A | MLTX-02-004-CN-11320 | 100% | 2026-12-22 | 2026-12-26 |  |  | Labor [100 h]; Plumber [20 h]; 50 Liter Capacity [1] | 1,755 | 1,755 | CN.MB.D15.1980 | MOD-02-CN-11560 | 0 | -17 | 0 | TO | Const | Toilet |
| MLTX-02-004-CN-11520 |  | Installing of Valves and Fittings | 2d | 2026-11-05 A | 2026-11-11 A | MLTX-02-004-CN-11050, MLTX-02-004-CN-11540 | 100% | 2026-11-16 | 2026-11-17 |  |  | Labor [100 h]; Plumber [40 h]; SERVICE CONNECTIONS 50 mm [20] | 9,750 | 9,750 | CN.MB.D15.1950 | MOD-02-CN-11520 | 0 | -17 | 0 | TO | Const | Toilet |
| MLTX-02-004-CN-11530 |  | Installing of HDPE Pipes and Valves for Water Supply Network | 3d | 2026-11-09 A | 2026-11-10 A | MLTX-02-004-CN-11520 | 100% | 2026-11-18 | 2026-11-21 |  |  | Labor [250 h]; Plumber [100 h]; SERVICE CONNECTIONS 50 mm [80] | 39,000 | 39,000 | CN.MB.D15.1960 | MOD-02-CN-11530 | 0 | -17 | 0 | TO | Const | Toilet |
| MLTX-02-004-CN-11560 |  | Installing of GRP Tanks | 8d | 2026-11-24 | 2026-12-02 | MLTX-02-004-CN-11270 |  |  |  | 37d | 0d | Skilled Labor [120 h]; Driver [100 h]; Plumber [140 h]; Crane [160 h]; Hot Press GRP Sectional Panel Water Tanks (4x3x3m) [0.67] | 104,000 |  | CN.MB.D15.1980 | MOD-02-CN-11560 | 0 | -17 | 0 | TO | Const | Toilet |
| MLTX-02-004-CN-11550 |  | Installing of Booster Pump Units Including fittings and accessories | 7d | 2026-12-03 | 2026-12-10 | MLTX-02-004-CN-11560, MLTX-02-004-CN-11490 |  |  |  | 37d | 0d | Labor [200 h]; Plumber [80 h]; (2W+1S Pumps) - flow of each pump 5 L/S @ 30 Meters [0.67] | 51,000 |  | CN.MB.D15.1970 | MOD-02-CN-11550 | 0 | -17 | 0 | TO | Const | Toilet |
|  | 1 | **SEWER/DRAINAGE SYSTEM** |  | 2026-07-04 | 2026-12-13 |  |  |  |  |  |  |  |  |  |  |  |  |  |  |  |  |  |
| MLTX-02-004-CN-11590 |  | Installing UPVC Pipes for Sewage Network | 2d | 2026-07-04 A | 2026-08-09 A | MLTX-02-004-CN-11070, MLTX-02-004-EN-3130, MLTX-02-004-EN-3140, MLTX-02-004-EN-4540, MLTX-02-004-PR-8290 | 100% | 2026-09-05 | 2026-09-06 |  |  | Skilled Labor [150 h]; Plumber [60 h]; uPVC Sewer pipes Pipe with ? 4" (110mm) [21]; uPVC Sewer pipes Pipe Pipe with ? 3" (75mm) [13]; uPVC Sewer pipes Pipe Pipe with ? 2" (50mm) [20]; uPVC Sewer pipes Pipe Pipe with ? 1" (25mm) [5] | 11,768.25 | 11,768.25 | CN.MB.D15.1990 | MOD-02-CN-11590 | 0 | -17 | 0 | TO | Const | Toilet |
| MLTX-02-004-CN-11580 |  | Installing UPVC Pipes for External Connection for Sewage Network | 4d | 2026-10-08 A | 2026-10-10 A | MLTX-02-004-CN-11540 | 100% | 2026-10-31 | 2026-11-03 |  |  | Skilled Labor [90 h]; Plumber [30 h]; Supply and install 150 mm uPVC pipes to external wastewater network [90] | 76,781.25 | 76,781.25 | CN.MB.D15.1990 | MOD-02-CN-11580 | 0 | -17 | 0 | TO | Const | Toilet |
| MLTX-02-004-CN-11870 |  | Installing of Toilet Fixtures and Accessories Such as Closets and Basins | 9d | 2026-11-09 A | 2026-11-12 A | MLTX-02-004-PR-8210, MLTX-02-004-CN-11320 | 100% | 2026-12-22 | 2026-12-31 |  |  | Skilled Labor [120 h]; Plumber [80 h]; Supply and installation of western water closet [3]; Supply and installation of western water closet [1]; Supply and installation of Bib tap with Perenial Hose (BPH) [4]; Supply, installation, testing and commissioning of Lavatory / wash basin [1]; Supply, installation, testing and commissioning of wall hung Lavatory / wash basin [1]; Supply and install Complete stainless steel 316 Handicap Rails Grab Bars [1]; Supply and install roof drain (RD) dome typ [1]; Supply and install shower mixer [4] | 31,395 | 31,395 | CN.MB.D15.2000 | MOD-02-CN-11600 | 0 | -17 | 0 | TO | Const | Toilet |
| MLTX-02-004-CN-11850 |  | Installing Inspection Chamber for Sewage Network | 9d | 2026-11-24 | 2026-12-03 | MLTX-02-004-CN-11590 |  |  |  | 43d | 0d | Driver [80 h]; Plumber [80 h]; Crane [80 h]; Supply, installation, testing and commissioning of Inspection chamber [1] | 12,187.5 |  | CN.MB.D15.1990 | MOD-02-CN-11590 | 0 | -17 | 0 | TO | Const | Toilet |
| MLTX-02-004-CN-11600 |  | Installing of Plumping Fixtures and Accessories | 2d | 2026-12-12 | 2026-12-13 | MLTX-02-004-CN-11550, MLTX-02-004-CN-11230, MLTX-02-004-CN-11580 |  |  |  | 37d | 123d | Skilled Labor [120 h]; Plumber [80 h]; galvanized iron vent stack Vent Cap with 3" ? [1]; Supply and installation of Floor drain [9]; FCO 4" ? (110mm) [1]; FCO 3" ? (75mm) [1]; Supply, installation,testing and commissioning of Gully Traps [1] | 10,359.38 |  | CN.MB.D15.2000 | MOD-02-CN-11600 | 0 | -17 | 0 | TO | Const | Toilet |
|  | 3 | **FIRE PROTECTION** |  | 2026-11-24 | 2026-11-28 |  |  |  |  |  |  |  |  |  |  |  |  |  |  |  |  |  |
| MLTX-02-004-CN-11620 |  | Installing of Fire Fighting Extinguisher and accessories (PFE-1, PFE-2) | 4d | 2026-11-24 | 2026-11-28 | MLTX-02-004-CN-11870, MLTX-02-004-EN-3170, MLTX-02-004-EN-4560, MLTX-02-004-CN-11840, MLTX-02-004-CN-11350 |  |  |  | -29d | 9d | Labor [100 h]; Mechanical [40 h]; Supply and install, PFE-1, Portable dry powder fire extinguisher 4.5 Kg capacity [1]; Supply and install, PFE-2, Portable Carbon Dioxide fire extinguisher. [1] | 1,950 |  | CN.MB.D15.2010 | MOD-02-CN-11620 | 0 | -17 | 0 | TO | Const | Toilet |
|  | 12 | **ELECTRICAL WORKS** |  | 2026-07-30 | 2026-12-08 |  |  |  |  |  |  |  |  |  |  |  |  |  |  |  |  |  |
|  | 1 | **ROUGH-IN WORKS** |  | 2026-07-30 | 2026-08-26 |  |  |  |  |  |  |  |  |  |  |  |  |  |  |  |  |  |
| MLTX-02-004-CN-11680 |  | Preleminary Works for Sockets and Power Points | 10d | 2026-07-30 A | 2026-07-30 A | MLTX-02-004-CN-10840 | 100% | 2026-08-01 | 2026-08-11 |  |  | Labor [140 h]; Electrician [40 h]; 1 way, One Gang Switch [0.8]; 1 way, Two Gang Switch [1.6]; 1 way, One Gang Switch, weatherproof [0.4]; Exaust fan DP switch weatherproof [0.4]; Indoor AC DP switch weatherproof [0.4]; High level Single Receptacle outlet [1.6]; Duplex Receptacle outlet [2.8]; Hand Dryer switch weatherproof [0.4]; Water heater switch [0.4]; Outdoor Disconnect Switch for air conditioiner [0.4]; Outdoor Disconnect Switch for exhaust fans [0.4] | 9,230.91 | 9,230.91 | CN.MB.D16.2070 | MOD-02-CN-11680 | 0 | -17 | 0 | TO | Const | Toilet |
| MLTX-02-004-CN-11650 |  | Preleminary Works for Earthing Works | 10d | 2026-08-11 A | 2026-08-26 A | MLTX-02-004-EN-3290, MLTX-02-004-EN-3380, MLTX-02-004-EN-4660, MLTX-02-004-PR-8570, MLTX-02-004-CN-10840 | 100% | 2026-08-12 | 2026-08-23 |  |  | Labor [210 h]; Electrician [60 h]; Distribution boards, panelboards, lighting installations and wiring accessories [0.4]; Telecom equipment [0.4]; KWHM [0.8] | 15,600 | 15,600 | CN.MB.D16.2090 | MOD-02-CN-11650 | 0 | -17 | 0 | TO | Const | Toilet |
| MLTX-02-004-CN-11660 |  | Preleminary Works for Panel Boards | 10d | 2026-08-11 A | 2026-08-26 A | MLTX-02-004-EN-3220, MLTX-02-004-EN-3230, MLTX-02-004-EN-3240, MLTX-02-004-EN-3260, MLTX-02-004-EN-3270, MLTX-02-004-EN-4670, MLTX-02-004-CN-10840 | 100% | 2026-08-31 | 2026-09-10 |  |  | Labor [140 h]; Electrician [40 h]; Main Distribution Board including all related works to install power meter (power meter is excluded) [0.4]; Power Panel for pump room [0.4]; Power Panel for street lighting [0.4] | 76,050 | 76,050 | CN.MB.D16.2030 | MOD-02-CN-11660 | 0 | -17 | 0 | TO | Const | Toilet |
| MLTX-02-004-CN-11670 |  | Preleminary Works for Cable Works | 10d | 2026-08-11 A | 2026-08-26 A | MLTX-02-004-EN-3210, MLTX-02-004-EN-3250, MLTX-02-004-EN-4600, MLTX-02-004-EN-4650, MLTX-02-004-EN-3280, MLTX-02-004-CN-10840 | 100% | 2026-08-12 | 2026-08-23 |  |  | Labor [210 h]; Electrician [60 h]; Recessed mounted LED downlight luminaire 40 watt with reflector; IP44 ,230V , 4000k, 4200 LUMEN ,CRI > 80; Low glare [12]; LED flood light outdoor type 96 watt, 4000k, 12720 LUMEN [0.4]; Wall mounted emergency LED luminaire, 230V, 60 Hz., 3 hour back up time 1800 lumen,CRI>80, 2*18 watt, IP 65 [1.6]; LED Exit light fixture 4.5 watt with battery for 3 hours, and a visibility of 30 meters [0.4]; Wall mounted outdoor LED luminaire, 17 watt, 2000 lumens, with light emission from two sides [0.4]; Wall mounted outdoor LED luminaire, 13 watt, 1000 LUMEN, CR>80, for roof lighting [2.4] | 10,700.04 | 10,700.04 | CN.MB.D16.2050 | MOD-02-CN-11670 | 0 | -17 | 0 | TO | Const | Toilet |
| MLTX-02-004-CN-11690 |  | Preleminary Works for Lightning Works | 10d | 2026-08-11 A | 2026-08-26 A | MLTX-02-004-EN-3320, MLTX-02-004-EN-3330, MLTX-02-004-EN-4660, MLTX-02-004-CN-10840 | 100% | 2026-08-12 | 2026-08-23 |  |  | Labor [140 h]; Electrician [40 h]; For Building [0.4] | 9,750 | 9,750 | CN.MB.D16.2090 | MOD-02-CN-11690 | 0 | -17 | 0 | TO | Const | Toilet |
| MLTX-02-004-CN-11700 |  | Preleminary Works for Data & Telecommunication System | 10d | 2026-08-11 A | 2026-08-26 A | MLTX-02-004-EN-3370, MLTX-02-004-EN-3400, MLTX-02-004-EN-4630, MLTX-02-004-CN-10840 | 100% | 2026-08-31 | 2026-09-10 |  |  | Labor [140 h]; Electrician [40 h]; Wall telephone outlet [1.2]; Wall mounted data outlet [1.2]; Telecom/IT rack complete with switch, router and patch Panel [0.4]; AV floor box outlet (1 HDMI) [0.4]; AV wall outlet (1 HDMI) [0.4] | 12,285 | 12,285 | CN.MB.D16.2110 | MOD-02-CN-11700 | 0 | -17 | 0 | TO | Const | Toilet |
| MLTX-02-004-CN-11720 |  | Preleminary Works for Security and Access Control System | 10d | 2026-08-11 A | 2026-08-26 A | MLTX-02-004-EN-4640, MLTX-02-004-CN-10840 | 100% | 2026-08-19 | 2026-08-30 |  |  | Labor [210 h]; Electrician [60 h]; 1 CCTV cabinet (Rack) [0.4]; NVR [0.4]; 21" LED monitor [0.4]; Indoor dome type Camera IP-20 ,IK-10, POE type with infra red feature, minimum coverage 20 meters, ONVIF supported [2.4]; Outdoor fixed camera weahter proof IP-65, POE type [1.6]; Pull box for fiber optic cable pulling from provider [0.4] | 15,266.55 | 15,266.55 | CN.MB.D16.2150 | MOD-02-CN-11720 | 0 | -17 | 0 | TO | Const | Toilet |

| ID | WBS | Activity | Duration | Start | Finish | Predecessors | Complete | Planned start | Planned finish | Total float | Free float | Resources | Cost | Actual cost | New Activity Code | New Activity ID | % Variance | Delay | On Schedule | W-Construction | WBS-Project | WBS-Construction Type |
| --- | --- | --- | --- | --- | --- | --- | --- | --- | --- | --- | --- | --- | --- | --- | --- | --- | --- | --- | --- | --- | --- | --- |
|  | 2 | **FIXTURE WORKS** |  | 2026-11-01 | 2026-12-08 |  |  |  |  |  |  |  |  |  |  |  |  |  |  |  |  |  |
| MLTX-02-004-CN-11740 |  | Installing and Finish Works of Panel Boards | 10d | 2026-11-01 A | 2026-11-05 A | MLTX-02-004-CN-11260 | 100% | 2026-12-29 | 2027-01-09 |  |  | Labor [350 h]; Electrician [100 h]; Main Distribution Board including all related works to install power meter (power meter is excluded) [0.6]; Power Panel for pump room [0.6]; Power Panel for street lighting [0.6] | 84,075 | 32,175 | CN.MB.D16.2040 | MOD-02-CN-11740 | 0 | -17 | 0 | TO | Const | Toilet |
| MLTX-02-004-CN-11760 |  | Installing and Finalize Works of Sockets and Power Points | 4d | 2026-11-01 A | 2026-11-05 A | MLTX-02-004-PR-8530, MLTX-02-004-CN-11840 | 100% | 2026-11-21 | 2026-11-24 |  |  | Labor [60 h]; Electrician [60 h]; 1 way, One Gang Switch [1.2]; 1 way, Two Gang Switch [2.4]; 1 way, One Gang Switch, weatherproof [0.6]; Exaust fan DP switch weatherproof [0.6]; Indoor AC DP switch weatherproof [0.6]; High level Single Receptacle outlet [2.4]; Duplex Receptacle outlet [4.2]; Hand Dryer switch weatherproof [0.6]; Water heater switch [0.6]; Outdoor Disconnect Switch for air conditioiner [0.6]; Outdoor Disconnect Switch for exhaust fans [0.6] | 13,846.36 | 13,846.36 | CN.MB.D16.2080 | MOD-02-CN-11760 | 0 | -17 | 0 | TO | Const | Toilet |
| MLTX-02-004-CN-11770 |  | Installing and Finalize Works of Earthing Works | 6d | 2026-11-01 A | 2026-11-05 A | MLTX-02-004-CN-11260 | 100% | 2026-12-31 | 2027-01-06 |  |  | Labor [60 h]; Electrician [60 h]; Distribution boards, panelboards, lighting installations and wiring accessories [0.6]; Telecom equipment [0.6]; KWHM [1.2] | 23,400 | 23,400 | CN.MB.D16.2190 | MOD-02-CN-11770 | 0 | -17 | 0 | TO | Const | Toilet |
| MLTX-02-004-CN-11820 |  | Installing and Finalize Works of Lightning Protection System | 6d | 2026-11-02 A | 2026-11-08 A | MLTX-02-004-CN-11260 | 100% | 2026-12-29 | 2027-01-04 |  |  | Labor [100 h]; Electrician [100 h]; For Building [0.6] | 14,625 | 14,625 | CN.MB.D16.2200 | MOD-02-CN-11820 | 0 | -17 | 0 | TO | Const | Toilet |
| MLTX-02-004-CN-11790 |  | Installing and Finalize Works of Lighting Works including Light Fixtures | 4d | 2026-11-05 A | 2026-11-08 A | MLTX-02-004-PR-8490, MLTX-02-004-CN-11840 | 100% | 2026-11-26 | 2026-11-30 |  |  | Labor [80 h]; Electrician [80 h]; Recessed mounted LED downlight luminaire 40 watt with reflector; IP44 ,230V , 4000k, 4200 LUMEN ,CRI > 80; Low glare [18]; LED flood light outdoor type 96 watt, 4000k, 12720 LUMEN [0.6]; Wall mounted emergency LED luminaire, 230V, 60 Hz., 3 hour back up time 1800 lumen,CRI>80, 2*18 watt, IP 65 [2.4]; LED Exit light fixture 4.5 watt with battery for 3 hours, and a visibility of 30 meters [0.6]; Wall mounted outdoor LED luminaire, 17 watt, 2000 lumens, with light emission from two sides [0.6]; Wall mounted outdoor LED luminaire, 13 watt, 1000 LUMEN, CR>80, for roof lighting [3.6] | 16,050.06 | 16,050.06 | CN.MB.D16.2100 | MOD-02-CN-11790 | 0 | -17 | 0 | TO | Const | Toilet |
| MLTX-02-004-CN-11750 |  | Installing Data and Telecommunication System with all Accessories | 4d | 2026-11-24 | 2026-11-28 | MLTX-02-004-CN-11840, MLTX-02-004-CN-11860 |  |  |  | -29d | 9d | Labor [80 h]; Electrician [80 h]; Wall telephone outlet [1.8]; Wall mounted data outlet [1.8]; Telecom/IT rack complete with switch, router and patch Panel [0.6]; AV floor box outlet (1 HDMI) [0.6]; AV wall outlet (1 HDMI) [0.6] | 18,427.5 |  | CN.MB.D16.2120 | MOD-02-CN-11750 | 0 | -17 | 0 | TO | Const | Toilet |
| MLTX-02-004-CN-11780 |  | Installing of Fire automation and Fire Alarm System | 4d | 2026-11-24 | 2026-11-28 | MLTX-02-004-EN-3300, MLTX-02-004-EN-3310, MLTX-02-004-EN-3340, MLTX-02-004-CN-11500 |  |  |  | -20d | 0d | Labor [200 h]; Electrician [80 h]; Analog addressable fire alarm control panel [1]; Intelligent Photoelectric smoke and heat detector with base [12]; Addressable Manual Pull Station, wall mounted [2]; Addressable Fire Alarm Strobe with Sounder, wall mounted [1]; Addressable Fire Alarm Strobe with Sounder, wall mounted water proof IP66 [1] | 34,320 |  | CN.MB.D15.2020 | MOD-02-CN-11780 | 0 | -17 | 0 | TO | Const | Toilet |
| MLTX-02-004-CN-11830 |  | Installing and Finalize Works of Security and Access Control System | 6d | 2026-12-02 | 2026-12-08 | MLTX-02-004-CN-11260 |  |  |  | -38d | 0d | Labor [80 h]; Electrician [80 h]; 1 CCTV cabinet (Rack) [0.6]; NVR [0.6]; 21" LED monitor [0.6]; Indoor dome type Camera IP-20 ,IK-10, POE type with infra red feature, minimum coverage 20 meters, ONVIF supported [3.6]; Outdoor fixed camera weahter proof IP-65, POE type [2.4]; Pull box for fiber optic cable pulling from provider [0.6] | 22,899.83 |  | CN.MB.D16.2170 | MOD-02-CN-11830 | 0 | -17 | 0 | TO | Const | Toilet |
|  | 7 | **DOORS/WINDOWS** |  | 2026-10-01 | 2026-12-06 |  |  |  |  |  |  |  |  |  |  |  |  |  |  |  |  |  |
| MLTX-02-004-CN-11110 |  | Preliminary Works For Doors | 3d | 2026-10-01 A | 2026-10-05 A | MLTX-02-004-EN-4440, MLTX-02-004-PR-8130, MLTX-02-004-CN-10840 | 100% | 2026-11-23 | 2026-11-25 |  |  | Labor [180 h]; Skilled Labor [60 h]; Metal Door D2 : [0.4] | 3,900 | 3,900 | CN.MB.D08.1810 | MOD-02-CN-11110 | 0 | -17 | 0 | TO | Const | Toilet |
| MLTX-02-004-CN-11120 |  | Finalize Metal Doors for Toilets Building | 7d | 2026-10-07 A | 2026-10-11 A | MLTX-02-004-CN-11260, MLTX-02-004-CN-11170, MLTX-02-004-CN-11170 FF, MLTX-02-004-CN-11170 SS | 100% | 2026-12-01 | 2026-12-08 |  |  | Labor [240 h]; Skilled Labor [90 h]; Metal Door D2 : [0.6] | 5,850 | 5,850 | CN.MB.D08.1820 | MOD-02-CN-11120 | 0 | -17 | 0 | TO | Const | Toilet |
| MLTX-02-004-CN-11130 |  | Finalize Glazzed Curtain Wall Works | 7d | 2026-11-29 | 2026-12-06 | MLTX-02-004-CN-11780, MLTX-02-004-CN-11220, MLTX-02-004-CN-11120 |  |  |  | -5d | 16d | Labor [320 h]; Skilled Labor [120 h]; Supply and install curtain wall with structural glass [0.6] | 35,100 |  | CN.MB.D08.1840 | MOD-02-CN-11130 | 0 | -17 | 0 | TO | Const | Toilet |
| MLTX-02-004-CN-11100 |  | Preliminary Works For Windows/Curtain Wall | 2d | 2026-12-05 | 2026-12-06 | MLTX-02-004-PR-8130, MLTX-02-004-CN-11850 |  |  |  | 43d | 129d | Labor [120 h]; Skilled Labor [40 h]; Supply and install curtain wall with structural glass [0.4] | 23,400 |  | CN.MB.D08.1810 | MOD-02-CN-11100 | 0 | -17 | 0 | TO | Const | Toilet |
|  | 4 | **METAL WORKS** |  | 2026-09-20 | 2026-10-05 |  |  |  |  |  |  |  |  |  |  |  |  |  |  |  |  |  |
| MLTX-02-004-CN-11170 |  | Installation of Galvanized Steel Roof Scupper | 12d | 2026-09-20 A | 2026-09-20 A | MLTX-02-004-CN-11150 | 100% | 2026-11-16 | 2026-11-30 |  |  | Labor [200 h]; Skilled Labor [120 h]; Plumber [80 h]; Supply and install and testing of overflow galvanized steel roof scupper [1] | 3,900 | 3,900 | CN.MB.D05.1810 | MOD-02-CN-11170 | 0 | -17 | 0 | TO | Const | Toilet |
| MLTX-02-004-CN-11150 |  | Installation of Galvanized Steel Ladder | 12d | 2026-09-21 A | 2026-10-03 A | MLTX-02-004-CN-11590 | 100% | 2026-11-02 | 2026-11-16 |  |  | Skilled Labor [120 h]; Driver [80 h]; Crane [80 h]; Supply and install Galvanized steel ladder [1] | 5,850 | 5,850 | CN.MB.D05.1760 | MOD-02-CN-11150 | 0 | -17 | 0 | TO | Const | Toilet |
| MLTX-02-004-CN-11160 |  | Installation of DI Cover for Tank | 10d | 2026-10-01 A | 2026-10-05 A | MLTX-02-004-CN-11150, MLTX-02-004-EN-4160 | 100% | 2026-11-23 | 2026-12-03 |  |  | Skilled Labor [120 h]; Driver [80 h]; Crane [50 h]; Supply and install heavy duty ductile iron steel cover [1] | 3,900 | 3,900 | CN.MB.D05.1770 | MOD-02-CN-11160 | 0 | -17 | 0 | TO | Const | Toilet |
|  | 6 | **FINISHING WORKS** |  | 2026-08-29 | 2026-12-01 |  |  |  |  |  |  |  |  |  |  |  |  |  |  |  |  |  |
|  | 1 | **FLOOR FINISHES** |  | 2026-10-28 | 2026-11-05 |  |  |  |  |  |  |  |  |  |  |  |  |  |  |  |  |  |
| MLTX-02-004-CN-11220 |  | Epoxy Coat on Concrete Floor | 3d | 2026-10-28 A | 2026-10-31 A | MLTX-02-004-CN-11260 | 100% | 2026-12-31 | 2027-01-03 |  |  | Labor [160 h]; Skilled Labor [60 h]; Floor Finishes Epoxy paint on concrete slab on grade [6] | 1,170 | 1,170 | CN.MB.D09.1970 | MOD-02-CN-11220 | 0 | -17 | 0 | TO | Const | Toilet |
| MLTX-02-004-CN-11200 |  | Creamic Tiles Floor Finish Works | 2d | 2026-10-31 A | 2026-11-05 A | MLTX-02-004-EN-4420, MLTX-02-004-PR-8050, MLTX-02-004-CN-11280, MLTX-02-004-CN-11540, MLTX-02-004-CN-11110, MLTX-02-004-CN-11100, MLTX-02-004-CN-11160 | 100% | 2026-11-25 | 2026-11-26 |  |  | Labor [200 h]; Tile Fixer [80 h]; Floor Finishes Anti-slip glazed grey ceramic tiles, 600*600 mm [13]; Floor Finishes Light grey Ceramic tiles, 300*300 mm [48] | 11,895 | 11,895 | CN.MB.D09.1840 | MOD-02-CN-11200 | 0 | -17 | 0 | TO | Const | Toilet |
| MLTX-02-004-CN-11210 |  | Granite Tiles Floor Finish Works | 4d | 2026-11-01 A | 2026-11-05 A | MLTX-02-004-CN-11200 | 100% | 2026-11-28 | 2026-12-01 |  |  | Labor [200 h]; Tile Fixer [80 h]; Floor Finishes Anti-slip granite tiles for entrance [6] | 2,925 | 2,925 | CN.MB.D09.1960 | MOD-02-CN-11210 | 0 | -17 | 0 | TO | Const | Toilet |
| MLTX-02-004-CN-11230 |  | Ceramic Skirting Tiles Finish Works | 4d | 2026-11-01 A | 2026-11-03 A | MLTX-02-004-CN-11210 | 100% | 2026-12-02 | 2026-12-06 |  |  | Labor [300 h]; Tile Fixer [40 h]; Floor Finishes Anti-slip glazed ceramic skirting tiles 600*100*10 mm [12] | 1,170 | 1,170 | CN.MB.D09.1980 | MOD-02-CN-11230 | 0 | -17 | 0 | TO | Const | Toilet |

| ID | WBS | Activity | Duration | Start | Finish | Predecessors | Complete | Planned start | Planned finish | Total float | Free float | Resources | Cost | Actual cost | New Activity Code | New Activity ID | % Variance | Delay | On Schedule | W-Construction | WBS-Project | WBS-Construction Type | Old Activity ID - MK | Flag | Procurement |
| --- | --- | --- | --- | --- | --- | --- | --- | --- | --- | --- | --- | --- | --- | --- | --- | --- | --- | --- | --- | --- | --- | --- | --- | --- | --- |
|  | 2 | **WALL FINISHES** |  | 2026-08-29 | 2026-12-01 |  |  |  |  |  |  |  |  |  |  |  |  |  |  |  |  |  |  |  |  |
| MLTX-02-004-CN-11280 |  | Preliminary Works for Wall Finish Works including Plastering (Internal) | 5d | 2026-08-29 A | 2026-09-09 A | MLTX-02-004-CN-11070, MLTX-02-004-EN-4400, MLTX-02-004-CN-11660, MLTX-02-004-CN-11670, MLTX-02-004-CN-11680, MLTX-02-004-CN-11690, MLTX-02-004-CN-11700, MLTX-02-004-CN-11720, MLTX-02-004-CN-11650 | 100% | 2026-09-21 | 2026-09-28 |  |  | Labor [100 h]; Skilled Labor [60 h]; Wall Finishes Supply and install plastering to walls [157] | 18,369 | 18,369 | CN.MB.D09.1870 | MOD-02-CN-11280 | 0 | -17 | 0 | TO | Const | Toilet |  |  |  |
| MLTX-02-004-CN-11290 |  | Preliminary Works for Wall Finish Works (External) | 10d | 2026-09-10 A | 2026-09-12 A | MLTX-02-004-CN-11280 | 100% | 2026-10-05 | 2026-10-17 |  |  | Labor [200 h]; Skilled Labor [80 h]; Wall Finishes Supply and install acrylic paint for external elevations [37.33] | 6,552 | 6,552 | CN.MB.D09.1900 | MOD-02-CN-11290 | 0 | -17 | 0 | TO | Const | Toilet |  |  |  |
| MLTX-02-004-CN-11310 |  | Ceramic Finish Works for Walls | 5d | 2026-09-12 A | 2026-09-14 A | MLTX-02-004-CN-11250 | 100% | 2026-10-08 | 2026-10-13 |  |  | Labor [200 h]; Driver [100 h]; Tile Fixer [120 h]; Forklift [180 h]; Wall Finishes Supply and install 300*300 mm ceramic [115] | 15,697.5 | 15,697.5 | CN.MB.D09.1920 | MOD-02-CN-11310 | 0 | -17 | 0 | TO | Const | Toilet |  |  |  |
| MLTX-02-004-CN-11250 |  | Stone Cladding Finish Works for External Walls | 5d | 2026-09-19 A | 2026-09-26 A | MLTX-02-004-CN-11170 | 100% | 2026-10-05 | 2026-10-10 |  |  | Labor [300 h]; Driver [80 h]; Tile Fixer [100 h]; Forklift [150 h]; Wall Finishes Supply and install Riyadh stone cladding (300x600mm) [46.67] | 9,100 | 9,100 | CN.MB.D09.1920 | MOD-02-CN-11250 | 0 | -17 | 0 | TO | Const | Toilet |  |  |  |
| MLTX-02-004-CN-11840 |  | Painting Finish Works for Internal Walls | 2d | 2026-10-20 A | 2026-10-29 A | MLTX-02-004-CN-11260 | 100% | 2026-12-30 | 2026-12-31 |  |  | Labor [160 h]; Skilled Labor [40 h]; Wall Finishes Supply and install 2 coats of acrylic paint at internal walls and columns [120] | 2,340 | 2,340 | CN.MB.D09.1910 | MOD-02-CN-11300 | 0 | -17 | 0 | TO | Const | Toilet |  |  |  |
| MLTX-02-004-CN-11300 |  | Painting Finish Works for External Walls | 7d | 2026-11-01 A | 2026-11-05 A | MLTX-02-004-CN-11530, MLTX-02-004-CN-11290 | 100% | 2026-11-21 | 2026-11-28 |  |  | Labor [200 h]; Skilled Labor [60 h]; Wall Finishes Supply and install acrylic paint for external elevations [56]; Wall Finishes Supply and spray decorative paint ( profile ) for external elevations [0.33] | 10,478 | 10,478 | CN.MB.D09.1910 | MOD-02-CN-11300 | 0 | -17 | 0 | TO | Const | Toilet |  |  |  |
| MLTX-02-004-CN-11270 |  | Granite Capping for Parpet | 2d | 2026-11-02 A | 2026-11-11 A | MLTX-02-004-CN-11080 | 100% | 2026-11-17 | 2026-11-18 |  |  | Labor [160 h]; Driver [40 h]; Tile Fixer [40 h]; Forklift [60 h]; Wall Finishes Supply and install granite capping for parapet [38] | 8,151 | 8,151 | CN.MB.D09.1930 | MOD-02-CN-11270 | 0 | -17 | 0 | TO | Const | Toilet |  |  |  |
| MLTX-02-004-CN-11320 |  | Phenolic Partitions for Toilets | 7d | 2026-11-05 A | 2026-11-14 A | MLTX-02-004-CN-11250, MLTX-02-004-CN-11390, MLTX-02-004-CN-11360 | 100% | 2026-12-14 | 2026-12-21 |  |  | Labor [700 h]; Driver [340 h]; Tile Fixer [220 h]; Forklift [330 h]; Wall Finishes Supply and install solid phenolic toilets partition board [40] | 31,200 | 31,200 | CN.MB.D09.1930 | MOD-02-CN-11320 | 0 | -17 | 0 | TO | Const | Toilet |  |  |  |
| MLTX-02-004-CN-11260 |  | Glass Partitions including all accessories and doors | 7d | 2026-11-24 | 2026-12-01 | MLTX-02-004-EN-4510, MLTX-02-004-CN-11320 |  |  |  | -38d | 0d | Labor [350 h]; Skilled Labor [120 h]; Wall Finishes Supply and install 12 mm glass partition [7] | 12,285 |  | CN.MB.D09.1930 | MOD-02-CN-11260 | 0 | -17 | 0 | TO | Const | Toilet |  |  |  |
|  | 3 | **CELLING FINISHES** |  | 2026-10-20 | 2026-11-05 |  |  |  |  |  |  |  |  |  |  |  |  |  |  |  |  |  |  |  |  |
| MLTX-02-004-CN-11350 |  | Painting Finish Works for Ceiling | 3d | 2026-10-20 A | 2026-10-29 A | MLTX-02-004-CN-11360, MLTX-02-004-CN-11340 | 100% | 2026-11-15 | 2026-11-17 |  |  | Labor [200 h]; Skilled Labor [60 h]; CEILING FINISHES Supply and install 2 coats of acrylic paint at under side slab [14] | 1,638 | 1,638 | CN.MB.D09.1940 | MOD-02-CN-11350 | 0 | -17 | 0 | TO | Const | Toilet |  |  |  |
| MLTX-02-004-CN-11360 |  | Gypsum Board Suspended Ceiling Finish Works For Ceiling | 7d | 2026-10-25 A | 2026-10-26 A | MLTX-02-004-CN-11480 | 100% | 2026-11-01 | 2026-11-08 |  |  | Labor [400 h]; Skilled Labor [120 h]; CEILING FINISHES Supply and install 12.5mm thk, moisture resistant gypsum board suspended ceiling [25.2]; CEILING FINISHES Supply and install 12.5mm thk, gypsum board suspended ceiling [7.8] | 6,926.4 | 6,926.4 | CN.MB.D09.1950 | MOD-02-CN-11360 | 0 | -17 | 0 | TO | Const | Toilet |  |  |  |
| MLTX-02-004-CN-11340 |  | Preliminary Works for Ceiling Painting Works | 3d | 2026-11-01 A | 2026-11-05 A | MLTX-02-004-CN-11280, MLTX-02-004-EN-4520, MLTX-02-004-PR-8090 | 100% | 2026-11-15 | 2026-11-17 |  |  | Labor [200 h]; Skilled Labor [90 h]; CEILING FINISHES Supply and install 12.5mm thk, moisture resistant gypsum board suspended ceiling [16.8]; CEILING FINISHES Supply and install 12.5mm thk, gypsum board suspended ceiling [5.2] | 4,617.6 | 4,617.6 | CN.MB.D09.1890 | MOD-02-CN-11340 | 0 | -7 | 0 | TO | Const | Toilet |  |  |  |
|  | 8 | **SPECIALTIES WORK** |  | 2026-10-14 | 2026-11-18 |  |  |  |  |  |  |  |  |  |  |  |  |  |  |  |  |  |  |  |  |
| MLTX-02-004-CN-11380 |  | Installation of Phenolic Locker | 3d | 2026-10-14 A | 2026-10-22 A | MLTX-02-004-CN-11320 | 100% | 2026-11-23 | 2026-11-25 |  |  | Labor [100 h]; Skilled Labor [60 h]; phenolic locker Size 2400*550*2200 mm [1]; phenolic locker Size 3500*550*2200 mm [1] | 24,375 | 24,375 | CN.MB.D10.1900 | MOD-02-CN-11380 | 0 | -17 | 0 | TO | Const | Toilet |  |  |  |
| MLTX-02-004-CN-11390 |  | Sanitary Fixtures and Accessories Works | 5d | 2026-11-01 A | 2026-11-18 A | MLTX-02-004-CN-11600, MLTX-02-004-CN-11300 | 100% | 2026-12-13 | 2026-12-17 |  |  | Plumber [100 h]; Supply and install toilet Accessories [1] | 14,625 | 14,625 | CN.MB.D10.1890 | MOD-02-CN-11390 | 0 | -17 | 0 | TO | Const | Toilet |  |  |  |
|  | PRO | **PROCUREMENT** |  | 2026-05-07 | 2027-01-24 |  |  |  |  |  |  |  |  |  |  |  |  |  |  |  |  |  |  |  |  |
|  | SLI | **SHORT LEAD ITEM** |  | 2026-05-07 | 2026-12-16 |  |  |  |  |  |  |  |  |  |  |  |  |  |  |  |  |  |  |  |  |
|  | TOI | **TOILET/SERVICE WORKS** |  | 2026-05-07 | 2026-12-16 |  |  |  |  |  |  |  |  |  |  |  |  |  |  |  |  |  |  |  |  |
|  | 1 | **STEEL REINFORCEMENT** |  | 2026-05-13 | 2026-06-13 |  |  |  |  |  |  |  |  |  |  |  |  |  |  |  |  |  |  |  |  |
| MLTX-02-004-PR-7880 |  | PO for Steel Reinforcement | 2d | 2026-05-13 A | 2026-05-14 A | MLTX-02-004-EN-6300 | 100% |  |  |  |  | Purchaser [150 h] |  |  |  | MOD-02-PR-7880 | 0 | -15 | 0 |  | Procu |  | MAK-01-PR-1000 | UDF_G1 | TO |
| MLTX-02-004-PR-7900 |  | Material Delivery of Steel Reinforcement | 1d | 2026-06-13 A | 2026-06-13 A | MLTX-02-004-PR-7880 | 100% |  |  |  |  | Purchaser [156.8 h] |  |  |  | MOD-02-PR-7900 | -100 | -15 | -100 |  | Procu |  | MAK-01-PR-1020 | UDF_G1 | TO |
|  | 3 | **CONCRETE BLOCKS** |  | 2026-05-07 | 2026-07-27 |  |  |  |  |  |  |  |  |  |  |  |  |  |  |  |  |  |  |  |  |
| MLTX-02-004-PR-7950 |  | PO for Concrete Blocks | 1d | 2026-05-07 A | 2026-05-07 A | MLTX-02-004-EN-6360, MLTX-02-004-EN-6330, MLTX-02-004-PR-7880 | 100% |  |  |  |  | Purchaser [150 h] |  |  |  | MOD-02-PR-7950 | 0 | 0 | 0 |  | Procu |  | MAK-01-PR-1000 |  | TO |
| MLTX-02-004-PR-7970 |  | Material Delivery of Concrete Blocks | 4d | 2026-07-27 A | 2026-07-27 A | MLTX-02-004-PR-7950 | 100% | 2026-07-27 | 2026-07-30 |  |  | Purchaser [150 h] |  |  |  | MOD-02-PR-7970 | -100 | -5 | -87.5 |  | Procu |  | MAK-01-PR-1020 | UDF_G1 | TO |

| ID | WBS | Activity | Duration | Start | Finish | Predecessors | Complete | Planned start | Planned finish | Resources | New Activity ID | Old Activity ID - MK | % Variance | Delay | Flag | On Schedule | Procurement | WBS-Project |
| --- | --- | --- | --- | --- | --- | --- | --- | --- | --- | --- | --- | --- | --- | --- | --- | --- | --- | --- |
|  | 6 | **FLOOR/WALL TILES** |  | 2026-07-22 | 2026-09-12 |  |  |  |  |  |  |  |  |  |  |  |  |  |
| MLTX-02-004-PR-8030 |  | PO for Tilling Materials | 5d | 2026-07-22 A | 2026-07-22 A | MLTX-02-004-EN-6420, MLTX-02-004-PR-7950 | 100% | 2026-07-22 | 2026-07-27 | Purchaser [150 h] | MOD-02-PR-8030 | MAK-01-PR-1000 | -100 | -12 | UDF_G1 | -100 | TO | Procu |
| MLTX-02-004-PR-8050 |  | Material Delivery of Tailling Material | 13d | 2026-09-12 A | 2026-09-12 A | MLTX-02-004-PR-8030 | 100% | 2026-09-29 | 2026-10-13 | Purchaser [150 h] | MOD-02-PR-8050 | MAK-01-PR-1020 | -38.4615384615385 | -12 |  | -15.3846153846154 | TO | Procu |
|  | 7 | **SUSPENDED CEILING** |  | 2026-07-22 | 2026-10-10 |  |  |  |  |  |  |  |  |  |  |  |  |  |
| MLTX-02-004-PR-8070 |  | PO for Suspend Ceiling | 5d | 2026-07-22 A | 2026-07-22 A | MLTX-02-004-PR-8030, MLTX-02-004-PR-9050 | 100% | 2026-07-22 | 2026-07-27 | Purchaser [150 h] | MOD-02-PR-8070 | MAK-01-PR-1000 | 0 | 23 |  | 0 | TO | Procu |
| MLTX-02-004-PR-8090 |  | Material Delivery of Suspend Ceiling | 13d | 2026-10-10 A | 2026-10-10 A | MLTX-02-004-PR-8070 | 100% | 2026-10-17 | 2026-10-31 | Purchaser [150 h] | MOD-02-PR-8090 | MAK-01-PR-1020 | 0 | 23 |  | 0 | TO | Procu |
|  | 8 | **DOORS/WINDOWS** |  | 2026-06-24 | 2026-10-03 |  |  |  |  |  |  |  |  |  |  |  |  |  |
| MLTX-02-004-PR-8110 |  | PO for Doors/Windows | 1d | 2026-06-24 A | 2026-06-24 A | MLTX-02-004-EN-6480, MLTX-02-004-EN-6450, MLTX-02-004-EN-6510, MLTX-02-004-EN-6570, MLTX-02-004-EN-6660, MLTX-02-004-EN-6690, MLTX-02-004-EN-6750, MLTX-02-004-EN-6780, MLTX-02-004-EN-7210, MLTX-02-004-EN-7270, MLTX-02-004-EN-7300, MLTX-02-004-EN-7330, MLTX-02-004-EN-7360, MLTX-02-004-EN-7390, MLTX-02-004-EN-7420, MLTX-02-004-EN-7450, MLTX-02-004-EN-7480, MLTX-02-004-EN-7510, MLTX-02-004-EN-7550, MLTX-02-004-EN-7580, MLTX-02-004-EN-7610, MLTX-02-004-EN-7640, MLTX-02-004-EN-7700, MLTX-02-004-EN-7730, MLTX-02-004-EN-7760, MLTX-02-004-EN-7790, MLTX-02-004-EN-7820 | 100% |  |  | Purchaser [150 h] | MOD-02-PR-8110 | MAK-01-PR-1000 | -100 | -12 |  | -40 | TO | Procu |
| MLTX-02-004-PR-8130 |  | Material Delivery for Doors/Windows | 15d | 2026-10-01 A | 2026-10-03 A | MLTX-02-004-PR-8110 | 100% | 2026-10-17 | 2026-11-02 | Purchaser [150 h] | MOD-02-PR-8130 | MAK-01-PR-1020 | 0 | -12 |  | 0 | TO | Procu |
|  | 11 | **WATER SUPPLY PIPES** |  | 2026-06-13 | 2026-06-13 |  |  |  |  |  |  |  |  |  |  |  |  |  |
| MLTX-02-004-PR-8230 |  | PO for Water Supply Pipes | 1d | 2026-06-13 A | 2026-06-13 A | MLTX-02-004-PR-8110 | 100% |  |  | Purchaser [150 h] | MOD-02-PR-8230 | MAK-01-PR-1000 | 0 | -12 |  | 0 | TO | Procu |
| MLTX-02-004-PR-8250 |  | Material Delivery for Water Supply Pipes | 1d | 2026-06-13 A | 2026-06-13 A | MLTX-02-004-PR-8230 | 100% |  |  | Purchaser [150 h] | MOD-02-PR-8250 | MAK-01-PR-1020 | 0 | -12 |  | 0 | TO | Procu |
|  | 12 | **SEWAGE/DRAINAGE PIPES** |  | 2026-06-13 | 2026-06-13 |  |  |  |  |  |  |  |  |  |  |  |  |  |
| MLTX-02-004-PR-8270 |  | PO for Sewage/Drainage Pipes | 1d | 2026-06-13 A | 2026-06-13 A | MLTX-02-004-EN-6600, MLTX-02-004-PR-8110 | 100% |  |  | Purchaser [150 h] | MOD-02-PR-8270 | MAK-01-PR-1000 | 0 | -12 |  | 0 | TO | Procu |
| MLTX-02-004-PR-8290 |  | Material Delivery for Sewage/Drainage Pipes | 1d | 2026-06-13 A | 2026-06-13 A | MLTX-02-004-PR-8270 | 100% |  |  | Purchaser [150 h] | MOD-02-PR-8290 | MAK-01-PR-1020 | 0 | -12 |  | 0 | TO | Procu |
|  | 10 | **SANITARY FIXTURES** |  | 2026-06-16 | 2026-08-03 |  |  |  |  |  |  |  |  |  |  |  |  |  |
| MLTX-02-004-PR-8190 |  | PO for Sanitary Fixtures | 1d | 2026-06-16 A | 2026-06-16 A | MLTX-02-004-EN-6540, MLTX-02-004-PR-8270 | 100% |  |  | Purchaser [150 h] | MOD-02-PR-8190 | MAK-01-PR-1000 | 0 | -12 |  | 0 | TO | Procu |
| MLTX-02-004-PR-8210 |  | Material Delivery for Sanitary Fixtures | 13d | 2026-08-03 A | 2026-08-03 A | MLTX-02-004-PR-8190 | 100% | 2026-10-17 | 2026-10-31 | Purchaser [150 h] | MOD-02-PR-8210 | MAK-01-PR-1020 | 0 | -12 |  | 0 | TO | Procu |
|  | 16 | **PACKAGE AC UNITS** |  | 2026-06-16 | 2026-10-03 |  |  |  |  |  |  |  |  |  |  |  |  |  |
| MLTX-02-004-PR-8310 |  | PO for Package AC Units | 1d | 2026-06-16 A | 2026-06-16 A | MLTX-02-004-EN-6630, MLTX-02-004-PR-8190 | 100% |  |  | Purchaser [150 h] | MOD-02-PR-8310 | MAK-01-PR-1000 | 0 | -12 |  | 0 | TO | Procu |
| MLTX-02-004-PR-8330 |  | Material Delivery for Package AC Units | 15d | 2026-10-01 A | 2026-10-03 A | MLTX-02-004-PR-8310 | 100% | 2026-11-23 | 2026-12-09 | Purchaser [150 h] | MOD-02-PR-8330 | MAK-01-PR-1020 | 0 | -12 |  | 0 | TO | Procu |
|  | 17 | **AIR DIFUSSERS/GRILLS** |  | 2026-06-16 | 2026-08-08 |  |  |  |  |  |  |  |  |  |  |  |  |  |
| MLTX-02-004-PR-8350 |  | PO for Air Diffusers/Grills | 1d | 2026-06-16 A | 2026-06-16 A | MLTX-02-004-PR-8190 | 100% |  |  | Purchaser [150 h] | MOD-02-PR-8350 | MAK-01-PR-1000 | 0 | -12 |  | 0 | TO | Procu |
| MLTX-02-004-PR-8370 |  | Material Delivery for Air Diffusers/Grills | 15d | 2026-08-08 A | 2026-08-08 A | MLTX-02-004-PR-8350 | 100% | 2026-10-17 | 2026-11-02 | Purchaser [150 h] | MOD-02-PR-8370 | MAK-01-PR-1020 | 0 | -12 |  | 0 | TO | Procu |

| ID | WBS | Activity | Duration | Start | Finish | Predecessors | Complete | Planned start | Planned finish | Total float | Free float | Resources | New Activity ID | Old Activity ID - MK | % Variance | Delay | On Schedule | Procurement | WBS-Project | Flag |
| --- | --- | --- | --- | --- | --- | --- | --- | --- | --- | --- | --- | --- | --- | --- | --- | --- | --- | --- | --- | --- |
|  | 18 | **GALVANIZED DUCTS** |  | 2026-06-16 | 2026-08-08 |  |  |  |  |  |  |  |  |  |  |  |  |  |  |  |
| MLTX-02-004-PR-8390 |  | PO for Galvanized Ducts | 1d | 2026-06-16 A | 2026-06-16 A | MLTX-02-004-PR-8190 | 100% |  |  |  |  | Purchaser [150 h] | MOD-02-PR-8390 | MAK-01-PR-1000 | 0 | -12 | 0 | TO | Procu |  |
| MLTX-02-004-PR-8410 |  | Material Delivery for Galvanized Ducts | 15d | 2026-08-08 A | 2026-08-08 A | MLTX-02-004-PR-8390 | 100% | 2026-10-17 | 2026-11-02 |  |  | Purchaser [150 h] | MOD-02-PR-8410 | MAK-01-PR-1020 | 0 | -12 | 0 | TO | Procu |  |
|  | 19 | **EXHAUST FANS** |  | 2026-06-16 | 2026-08-17 |  |  |  |  |  |  |  |  |  |  |  |  |  |  |  |
| MLTX-02-004-PR-8430 |  | PO for Exhaust Fans | 1d | 2026-06-16 A | 2026-06-16 A | MLTX-02-004-EN-6720, MLTX-02-004-PR-8190 | 100% |  |  |  |  | Purchaser [150 h] | MOD-02-PR-8430 | MAK-01-PR-1000 | 0 | -12 | 0 | TO | Procu |  |
| MLTX-02-004-PR-8450 |  | Material Delivery for Exhaust Fans | 10d | 2026-08-17 A | 2026-08-17 A | MLTX-02-004-PR-8430 | 100% | 2026-10-17 | 2026-10-27 |  |  | Purchaser [150 h] | MOD-02-PR-8450 | MAK-01-PR-1020 | 0 | -12 | 0 | TO | Procu |  |
|  | 13 | **LIGHTING FIXTURES** |  | 2026-06-16 | 2026-11-12 |  |  |  |  |  |  |  |  |  |  |  |  |  |  |  |
| MLTX-02-004-PR-8470 |  | PO for Lighting Fixtures | 1d | 2026-06-16 A | 2026-06-16 A | MLTX-02-004-PR-8430 | 100% |  |  |  |  | Purchaser [150 h] | MOD-02-PR-8470 | MAK-01-PR-1000 | 0 | -12 | 0 | TO | Procu |  |
| MLTX-02-004-PR-8490 |  | Material Delivery for Lighting Fixtures | 10d | 2026-11-10 A | 2026-11-12 A | MLTX-02-004-PR-8470 | 100% | 2026-11-23 | 2026-12-03 |  |  | Purchaser [150 h] | MOD-02-PR-8490 | MAK-01-PR-1020 | 0 | -12 | 0 | TO | Procu |  |
|  | 14 | **SWITCHES/SOCKETS** |  | 2026-06-24 | 2026-11-09 |  |  |  |  |  |  |  |  |  |  |  |  |  |  |  |
| MLTX-02-004-PR-8510 |  | PO for Switches/Sockets | 1d | 2026-06-24 A | 2026-06-24 A | MLTX-02-004-PR-8470 | 100% |  |  |  |  | Purchaser [150 h] | MOD-02-PR-8510 | MAK-01-PR-1000 | 0 | -12 | 0 | TO | Procu |  |
| MLTX-02-004-PR-8530 |  | Material Delivery for Switches/Sockets | 7d | 2026-11-08 A | 2026-11-09 A | MLTX-02-004-PR-8510 | 100% | 2026-11-23 | 2026-11-30 |  |  | Purchaser [150 h] | MOD-02-PR-8530 | MAK-01-PR-1020 | 0 | -12 | 0 | TO | Procu |  |
|  | 15 | **EARTHING SYSTEM** |  | 2026-05-21 | 2026-05-21 |  |  |  |  |  |  |  |  |  |  |  |  |  |  |  |
| MLTX-02-004-PR-8550 |  | PO for Earthing System | 1d | 2026-05-21 A | 2026-05-21 A | MLTX-02-004-EN-6810 | 100% |  |  |  |  | Purchaser [150 h] | MOD-02-PR-8550 | MAK-01-PR-1290 | -100 | -15 | -100 | TO | Procu | UDF_G1 |
| MLTX-02-004-PR-8570 |  | Material Delivery for Earthing System | 1d | 2026-05-21 A | 2026-05-21 A | MLTX-02-004-PR-9030, MLTX-02-004-PR-8550 | 100% |  |  |  |  | Purchaser [150 h] | MOD-02-PR-8570 | MAK-01-PR-1310 | -53.3333333333333 | -15 | -33.3333333333333 | TO | Procu | UDF_G1 |
|  | 5 | **DISTRIBUTION PANNELS** |  | 2026-07-22 | 2026-12-10 |  |  |  |  |  |  |  |  |  |  |  |  |  |  |  |
| MLTX-02-004-PR-8590 |  | PO for Distribution Panels | 5d | 2026-07-22 A | 2026-07-22 A | MLTX-02-004-EN-6840 | 100% | 2026-07-22 | 2026-07-27 |  |  | Purchaser [150 h] | MOD-02-PR-8590 | MAK-01-PR-LLI-1060 | -100 | -15 | -100 | TO | Procu | UDF_G1 |
| MLTX-02-004-PR-8610 |  | Material Delivery for Distribution Panels | 15d | 2026-11-09 A | 2026-12-10 A | MLTX-02-004-PR-8590 | 100% | 2026-11-23 | 2026-12-09 |  |  | Purchaser [150 h] | MOD-02-PR-8610 | MAK-01-PR-LLI-1100 | -100 | -15 | -80 | TO | Procu | UDF_G1 |
|  | 9 | **FURNITURES** |  | 2026-06-16 | 2026-12-16 |  |  |  |  |  |  |  |  |  |  |  |  |  |  |  |
| MLTX-02-004-PR-8150 |  | PO for Furnitures | 1d | 2026-06-16 A | 2026-06-16 A | MLTX-02-004-PR-8430 | 100% |  |  |  |  | Purchaser [150 h] | MOD-02-PR-8150 | MAK-01-PR-1000 | 0 | -12 | 0 | TO | Procu |  |
| MLTX-02-004-PR-8170 |  | Material Delivery for Furnitures | 20d | 2026-11-24 | 2026-12-16 | MLTX-02-004-PR-8150 |  |  |  | 34d | 7d | Purchaser [150 h] | MOD-02-PR-8170 | MAK-01-PR-1020 | 0 | -12 | 0 | TO | Procu |  |
|  | PLG | **PLAYGROUND WORKS** |  | 2026-05-07 | 2026-12-14 |  |  |  |  |  |  |  |  |  |  |  |  |  |  |  |
|  | 5 | **PVC MEMBRANE** |  | 2026-06-16 | 2026-11-28 |  |  |  |  |  |  |  |  |  |  |  |  |  |  |  |
| MLTX-02-004-PR-8640 |  | PO for PVC Membrane | 1d | 2026-06-16 A | 2026-06-16 A | MLTX-02-004-MS-1010 SS | 100% |  |  |  |  | Purchaser [150 h] | MOD-02-PR-8640 | MAK-01-PR-1120 | -100 | -22 | -100 | PL | Procu | UDF_G1 |
| MLTX-02-004-PR-8650 |  | Material Delivery for PVC Membrane | 4d | 2026-11-24 | 2026-11-28 | MLTX-02-004-PR-8640 |  |  |  | 38d | 0d | Purchaser [150 h] | MOD-02-PR-8650 | MAK-01-PR-1130 | -100 | -22 | -100 | PL | Procu | UDF_G1 |

| ID | WBS | Activity | Duration | Start | Finish | Predecessors | Complete | Planned start | Planned finish | Total float | Free float | Resources | New Activity ID | Old Activity ID - MK | % Variance | Delay | Flag | On Schedule | Procurement | WBS-Project |
| --- | --- | --- | --- | --- | --- | --- | --- | --- | --- | --- | --- | --- | --- | --- | --- | --- | --- | --- | --- | --- |
|  | 15 | **ARTIFICIAL TURF** |  | 2026-06-16 | 2026-12-12 |  |  |  |  |  |  |  |  |  |  |  |  |  |  |  |
| MLTX-02-004-PR-8830 |  | PO for Artificial TURF | 1d | 2026-06-16 A | 2026-06-16 A | MLTX-02-004-EN-7030 | 100% |  |  |  |  | Purchaser [150 h] | MOD-02-PR-8830 | MAK-01-PR-1120 | -100 | -18 | UDF_G1 | -100 | PL | Procu |
| MLTX-02-004-PR-8850 |  | Material Delivery for Artificial TURF | 12d | 2026-11-29 | 2026-12-12 | MLTX-02-004-PR-8650, MLTX-02-004-PR-8830 |  |  |  | 38d | 124d | Purchaser [150 h] | MOD-02-PR-8850 | MAK-01-PR-1130 | -100 | -18 | UDF_G1 | -100 | PL | Procu |
|  | 20 | **RUBBER GRANULES** |  | 2026-06-16 | 2026-07-22 |  |  |  |  |  |  |  |  |  |  |  |  |  |  |  |
| MLTX-02-004-PR-8870 |  | PO for Rubber Granules | 1d | 2026-06-16 A | 2026-06-16 A | MLTX-02-004-EN-7060 | 100% |  |  |  |  | Purchaser [150 h] | MOD-02-PR-8870 | MAK-01-PR-1120 | -100 | -25 | UDF_G1 | -100 | PL | Procu |
| MLTX-02-004-PR-8890 |  | Material Delivery for Rubber Granules | 12d | 2026-07-22 A | 2026-07-22 A | MLTX-02-004-PR-8870 | 100% | 2026-07-22 | 2026-08-04 |  |  | Purchaser [150 h] | MOD-02-PR-8890 | MAK-01-PR-1130 | -100 | -25 | UDF_G1 | -100 | PL | Procu |
|  | 21 | **PADEL GLASS** |  | 2026-06-16 | 2026-12-14 |  |  |  |  |  |  |  |  |  |  |  |  |  |  |  |
| MLTX-02-004-PR-8910 |  | PO for Padel Glass | 1d | 2026-06-16 A | 2026-06-16 A | MLTX-02-004-EN-7090 | 100% |  |  |  |  | Purchaser [150 h] | MOD-02-PR-8910 | MAK-01-PR-1120 | -100 | -25 | UDF_G1 | -100 | PL | Procu |
| MLTX-02-004-PR-8930 |  | Material Delivery for Padel Glass | 18d | 2026-11-24 | 2026-12-14 | MLTX-02-004-PR-8910 |  |  |  | 36d | 122d | Purchaser [150 h] | MOD-02-PR-8930 | MAK-01-PR-1130 | -100 | -25 | UDF_G1 | -83.3333333333333 | PL | Procu |
|  | 22 | **PADEL WIRE MESH/STEEL SETS** |  | 2026-06-16 | 2026-12-12 |  |  |  |  |  |  |  |  |  |  |  |  |  |  |  |
| MLTX-02-004-PR-8950 |  | PO for Wire Mesh/Steel Sets | 1d | 2026-06-16 A | 2026-06-16 A | MLTX-02-004-PR-8910 | 100% |  |  |  |  | Purchaser [150 h] | MOD-02-PR-8950 | MAK-01-PR-1120 | -100 | -25 | UDF_G1 | -100 | PL | Procu |
| MLTX-02-004-PR-8970 |  | Material Delivery for Wire Mesh/Steel Sets | 16d | 2026-11-24 | 2026-12-12 | MLTX-02-004-PR-8950 |  |  |  | 12d | 27d | Purchaser [150 h] | MOD-02-PR-8970 | MAK-01-PR-1130 | -86.6666666666667 | -25 | UDF_G1 | -66.6666666666667 | PL | Procu |
|  | 1 | **AGGREGATE BASE COURSE** |  | 2026-05-21 | 2026-05-21 |  |  |  |  |  |  |  |  |  |  |  |  |  |  |  |
| MLTX-02-004-PR-8990 |  | PO for Aggregate Base Course | 1d | 2026-05-21 A | 2026-05-21 A | MLTX-02-004-EN-7150 | 100% |  |  |  |  | Purchaser [150 h] | MOD-02-PR-8990 | MAK-01-PR-1090 | -100 | -28 | UDF_G1 | -100 | PL | Procu |
| MLTX-02-004-PR-9000 |  | Material Delivery for Aggregate Base Course | 1d | 2026-05-21 A | 2026-05-21 A | MLTX-02-004-PR-8990 | 100% |  |  |  |  | Purchaser [150 h] | MOD-02-PR-9000 | MAK-01-PR-1100 | -100 | -28 | UDF_G1 | -100 | PL | Procu |
|  | 16 | **PACKAGE AC UNITS** |  | 2026-06-16 | 2026-06-18 |  |  |  |  |  |  |  |  |  |  |  |  |  |  |  |
| MLTX-02-004-PR-9130 |  | PO for Package AC Units | 1d | 2026-06-16 A | 2026-06-16 A | MLTX-02-004-PR-8310 | 100% |  |  |  |  | Purchaser [200 h] | MOD-02-PR-9130 | MAK-01-PR-1000 | 0 | -12 |  | 0 | PL | Procu |
| MLTX-02-004-PR-9150 |  | Material Delivery for Package AC Units | 15d | 2026-06-17 A | 2026-06-18 A | MLTX-02-004-PR-9130 | 100% | 2026-11-23 | 2026-12-09 |  |  | Purchaser [200 h] | MOD-02-PR-9150 | MAK-01-PR-1020 | 0 | -12 |  | 0 | PL | Procu |
|  | 17 | **AIR DIFUSSERS/GRILLS** |  | 2026-06-16 | 2026-08-08 |  |  |  |  |  |  |  |  |  |  |  |  |  |  |  |
| MLTX-02-004-PR-9170 |  | PO for Air Difussers/Grills | 1d | 2026-06-16 A | 2026-06-16 A | MLTX-02-004-PR-8310 | 100% |  |  |  |  | Purchaser [200 h] | MOD-02-PR-9170 | MAK-01-PR-1000 | 0 | -12 |  | 0 | PL | Procu |
| MLTX-02-004-PR-9190 |  | Material Delivery for Air Difussers/Grills | 15d | 2026-08-08 A | 2026-08-08 A | MLTX-02-004-PR-9170 | 100% | 2026-10-17 | 2026-11-02 |  |  | Purchaser [200 h] | MOD-02-PR-9190 | MAK-01-PR-1020 | 0 | -12 |  | 0 | PL | Procu |
|  | 2 | **BITUMINOUS BASE & WEARING COURSE** |  | 2026-06-16 | 2026-06-16 |  |  |  |  |  |  |  |  |  |  |  |  |  |  |  |
| MLTX-02-004-PR-9020 |  | PO for Bituminous Base & Wearing Course | 1d | 2026-06-16 A | 2026-06-16 A | MLTX-02-004-EN-7180 | 100% |  |  |  |  | Purchaser [150 h] | MOD-02-PR-9020 | MAK-01-PR-1120 | -100 | -15 | UDF_G1 | -100 | PL | Procu |
| MLTX-02-004-PR-9030 |  | Material Delivery for the Site | 1d | 2026-06-16 A | 2026-06-16 A | MLTX-02-004-PR-9020 | 100% |  |  |  |  | Purchaser [150 h] | MOD-02-PR-9030 | MAK-01-PR-1130 | -100 | -15 | UDF_G1 | -100 | PL | Procu |

| ID | WBS | Activity | Duration | Start | Finish | Predecessors | Complete | Planned start | Planned finish | Total float | Free float | Resources | New Activity ID | Old Activity ID - MK | % Variance | Delay | On Schedule | Procurement | WBS-Project | Flag |
| --- | --- | --- | --- | --- | --- | --- | --- | --- | --- | --- | --- | --- | --- | --- | --- | --- | --- | --- | --- | --- |
|  | 3 | **INTERLOCKING PAVING** |  | 2026-05-07 | 2026-11-10 |  |  |  |  |  |  |  |  |  |  |  |  |  |  |  |
| MLTX-02-004-PR-9050 |  | PO for Interlocking Block Pavers | 1d | 2026-05-07 A | 2026-05-07 A | MLTX-02-004-PR-8510 | 100% |  |  |  |  | Purchaser [200 h] | MOD-02-PR-9050 | MAK-01-PR-1170 | 100 | 40 | 100 | PL | Procu |  |
| MLTX-02-004-PR-9070 |  | Material Delivery for Interlocking Block Pavers | 7d | 2026-11-05 A | 2026-11-10 A | MLTX-02-004-PR-9030, MLTX-02-004-PR-9050 | 100% | 2026-11-23 | 2026-11-30 |  |  | Purchaser [200 h] | MOD-02-PR-9070 | MAK-01-PR-1190 | 0 | 23 | 0 | PL | Procu |  |
|  | 4 | **MARKING PAINT** |  | 2026-07-18 | 2026-12-01 |  |  |  |  |  |  |  |  |  |  |  |  |  |  |  |
| MLTX-02-004-PR-9090 |  | PO for Marking Paint | 5d | 2026-07-18 A | 2026-07-18 A | MLTX-02-004-EN-7240, MLTX-02-004-PR-9020 | 100% | 2026-07-18 | 2026-07-22 |  |  | Purchaser [150 h] | MOD-02-PR-9090 | MAK-01-PR-1120 | -100 | -15 | -100 | PL | Procu | UDF_G1 |
| MLTX-02-004-PR-9110 |  | Material Delivery for Marking Paint | 7d | 2026-11-24 | 2026-12-01 | MLTX-02-004-PR-9090 |  |  |  | 47d | 133d | Purchaser [150 h] | MOD-02-PR-9110 | MAK-01-PR-1130 | -100 | -15 | -85.7142857142857 | PL | Procu | UDF_G1 |
|  | 18 | **GALVANIZED DUCTS** |  | 2026-06-16 | 2026-08-08 |  |  |  |  |  |  |  |  |  |  |  |  |  |  |  |
| MLTX-02-004-PR-9210 |  | PO for Galvanized Duct | 1d | 2026-06-16 A | 2026-06-16 A | MLTX-02-004-PR-8310 | 100% |  |  |  |  | Purchaser [150 h] | MOD-02-PR-9210 | MAK-01-PR-1000 | 0 | -12 | 0 | PL | Procu |  |
| MLTX-02-004-PR-9230 |  | Material Delivery for Galvanized Duct | 15d | 2026-08-08 A | 2026-08-08 A | MLTX-02-004-PR-9210 | 100% | 2026-10-17 | 2026-11-02 |  |  | Purchaser [150 h] | MOD-02-PR-9230 | MAK-01-PR-1020 | 0 | -12 | 0 | PL | Procu |  |
|  | 19 | **EXHAUST FANS** |  | 2026-06-16 | 2026-08-17 |  |  |  |  |  |  |  |  |  |  |  |  |  |  |  |
| MLTX-02-004-PR-9250 |  | PO for Exhaust Fans | 1d | 2026-06-16 A | 2026-06-16 A | MLTX-02-004-PR-8310 | 100% |  |  |  |  | Purchaser [150 h] | MOD-02-PR-9250 | MAK-01-PR-1000 | 0 | -12 | 0 | PL | Procu |  |
| MLTX-02-004-PR-9270 |  | Material Delivery for Exhaust Fans | 15d | 2026-08-17 A | 2026-08-17 A | MLTX-02-004-PR-9250 | 100% | 2026-10-17 | 2026-11-02 |  |  | Purchaser [150 h] | MOD-02-PR-9270 | MAK-01-PR-1020 | 0 | -12 | 0 | PL | Procu |  |
|  | 10 | **DISTRIBUTION BOARDS** |  | 2026-07-22 | 2026-11-09 |  |  |  |  |  |  |  |  |  |  |  |  |  |  |  |
| MLTX-02-004-PR-9290 |  | PO for Distribution Boards | 5d | 2026-07-22 A | 2026-07-22 A | MLTX-02-004-PR-8310 | 100% | 2026-08-10 | 2026-08-15 |  |  | Purchaser [150 h] | MOD-02-PR-9290 | MAK-01-PR-1000 | 0 | -12 | 0 | PL | Procu |  |
| MLTX-02-004-PR-9310 |  | Material Delivery for Distribution Boards | 15d | 2026-11-08 A | 2026-11-09 A | MLTX-02-004-PR-9290 | 100% | 2026-11-23 | 2026-12-09 |  |  | Purchaser [150 h] | MOD-02-PR-9310 | MAK-01-PR-1020 | 0 | -12 | 0 | PL | Procu |  |
|  | 11 | **POWER CABLES** |  | 2026-07-22 | 2026-09-14 |  |  |  |  |  |  |  |  |  |  |  |  |  |  |  |
| MLTX-02-004-PR-9330 |  | PO for Power Cables | 5d | 2026-07-22 A | 2026-07-22 A | MLTX-02-004-PR-9290 | 100% | 2026-07-22 | 2026-07-27 |  |  | Purchaser [150 h] | MOD-02-PR-9330 | MAK-01-PR-1000 | 0 | -12 | 0 | PL | Procu |  |
| MLTX-02-004-PR-9350 |  | Material Delivery for Power Cables | 10d | 2026-09-13 A | 2026-09-14 A | MLTX-02-004-PR-9330 | 100% | 2026-11-23 | 2026-12-03 |  |  | Purchaser [150 h] | MOD-02-PR-9350 | MAK-01-PR-1020 | 0 | -12 | 0 | PL | Procu |  |
|  | 12 | **LIGHT FIXTURES** |  | 2026-06-16 | 2026-11-14 |  |  |  |  |  |  |  |  |  |  |  |  |  |  |  |
| MLTX-02-004-PR-9370 |  | PO for Light Fixtures | 1d | 2026-06-16 A | 2026-06-16 A | MLTX-02-004-EN-7450 | 100% |  |  |  |  | Purchaser [150 h] | MOD-02-PR-9370 | MAK-01-PR-1000 | 0 | -12 | 0 | PL | Procu |  |
| MLTX-02-004-PR-9390 |  | Material Delivery for Light Fixtures | 16d | 2026-11-12 A | 2026-11-14 A | MLTX-02-004-PR-9370 | 100% | 2026-11-23 | 2026-12-10 |  |  | Purchaser [150 h] | MOD-02-PR-9390 | MAK-01-PR-1020 | 0 | -12 | 0 | PL | Procu |  |
|  | 13 | **CCTV MATERIALS** |  | 2026-11-14 | 2026-12-10 |  |  |  |  |  |  |  |  |  |  |  |  |  |  |  |
| MLTX-02-004-PR-9410 |  | PO for CCTV | 5d | 2026-11-14 A | 2026-11-15 A | MLTX-02-004-EN-3780, MLTX-02-004-EN-7480, MLTX-02-004-PR-9370 | 100% | 2026-11-23 | 2026-11-28 |  |  | Purchaser [150 h] | MOD-02-PR-9410 | MAK-01-PR-1000 | 0 | -12 | 0 | PL | Procu |  |
| MLTX-02-004-PR-9430 |  | Material Delivery for CCTV | 15d | 2026-11-24 | 2026-12-10 | MLTX-02-004-PR-9410, MLTX-02-004-PR-9310, MLTX-02-004-PR-9270, MLTX-02-004-PR-9230, MLTX-02-004-PR-9190, MLTX-02-004-PR-9150 |  |  |  | 39d | 125d | Purchaser [150 h] | MOD-02-PR-9430 | MAK-01-PR-1020 | 0 | -12 | 0 | PL | Procu |  |

| ID | WBS | Activity | Duration | Start | Finish | Predecessors | Complete | Planned start | Planned finish | Total float | Free float | Resources | New Activity ID | Old Activity ID - MK | % Variance | Delay | On Schedule | Procurement | WBS-Project |
| --- | --- | --- | --- | --- | --- | --- | --- | --- | --- | --- | --- | --- | --- | --- | --- | --- | --- | --- | --- |
|  | 14 | **POWER OUTLETS/SWITCHES** |  | 2026-07-22 | 2026-11-10 |  |  |  |  |  |  |  |  |  |  |  |  |  |  |
| MLTX-02-004-PR-9450 |  | PO for Power Outlets/Switches | 6d | 2026-07-22 A | 2026-07-22 A | MLTX-02-004-PR-9370 | 100% | 2026-08-09 | 2026-08-15 |  |  | Purchaser [150 h] | MOD-02-PR-9450 | MAK-01-PR-1000 | 0 | -12 | 0 | PL | Procu |
| MLTX-02-004-PR-9470 |  | Material Delivery for Power Outlets/Switches | 15d | 2026-11-09 A | 2026-11-10 A | MLTX-02-004-PR-9450 | 100% | 2026-11-23 | 2026-12-09 |  |  | Purchaser [150 h] | MOD-02-PR-9470 | MAK-01-PR-1020 | 0 | -12 | 0 | PL | Procu |
|  | LSC | **LANDSCAPE WORKS** |  | 2026-05-07 | 2026-12-10 |  |  |  |  |  |  |  |  |  |  |  |  |  |  |
|  | 7 | **INTERLOCKING PAVING** |  | 2026-05-07 | 2026-11-10 |  |  |  |  |  |  |  |  |  |  |  |  |  |  |
| MLTX-02-004-PR-9500 |  | PO for Interlocking Block Pavers | 1d | 2026-05-07 A | 2026-05-07 A | MLTX-02-004-EN-7550 | 100% |  |  |  |  | Purchaser [150 h] | MOD-02-PR-9500 | MAK-01-PR-1170 | 100 | 56 | 100 | LS | Procu |
| MLTX-02-004-PR-9520 |  | Material Delivery for Interlocking Block Pavers | 12d | 2026-11-05 A | 2026-11-10 A | MLTX-02-004-PR-9500, MLTX-02-004-PR-9350, MLTX-02-004-PR-9430 | 100% | 2026-12-28 | 2027-01-10 |  |  | Purchaser [150 h] | MOD-02-PR-9520 | MAK-01-PR-1190 | 0 | -1 | 0 | LS | Procu |
|  | 9 | **CURBSTONE** |  | 2026-05-07 | 2026-08-12 |  |  |  |  |  |  |  |  |  |  |  |  |  |  |
| MLTX-02-004-PR-9540 |  | PO for Curbstone | 1d | 2026-05-07 A | 2026-05-07 A | MLTX-02-004-EN-7580 | 100% |  |  |  |  | Purchaser [150 h] | MOD-02-PR-9540 | MAK-01-PR-1260 | 100 | 56 | 100 | LS | Procu |
| MLTX-02-004-PR-9560 |  | Material Delivery for Curbstone | 12d | 2026-08-12 A | 2026-08-12 A | MLTX-02-004-PR-9540 | 100% | 2026-09-06 | 2026-09-19 |  |  | Purchaser [150 h] | MOD-02-PR-9560 | MAK-01-PR-1280 | 0 | -12 | 0 | LS | Procu |
|  | 1 | **PAVEMENT MARKING** |  | 2026-07-22 | 2026-12-05 |  |  |  |  |  |  |  |  |  |  |  |  |  |  |
| MLTX-02-004-PR-9580 |  | PO for Pavement Markings | 5d | 2026-07-22 A | 2026-07-22 A | MLTX-02-004-PR-9560, MLTX-02-004-PR-9450 | 100% | 2026-08-24 | 2026-08-29 |  |  | Purchaser [150 h] | MOD-02-PR-9580 | MAK-01-PR-1200 | 0 | -12 | 0 | LS | Procu |
| MLTX-02-004-PR-9600 |  | Material Delivery for Pavement Markings | 10d | 2026-11-24 | 2026-12-05 | MLTX-02-004-PR-9580 |  |  |  | -32d | 0d | Purchaser [150 h] | MOD-02-PR-9600 | MAK-01-PR-1220 | 0 | -12 | 0 | LS | Procu |
|  | 2 | **TRAFFIC SIGNS** |  | 2026-07-22 | 2026-12-03 |  |  |  |  |  |  |  |  |  |  |  |  |  |  |
| MLTX-02-004-PR-9620 |  | PO for Traffic Signs | 5d | 2026-07-22 A | 2026-07-27 A | MLTX-02-004-PR-9780 | 100% | 2027-02-04 | 2027-02-09 |  |  | Purchaser [150 h] | MOD-02-PR-9620 | MAK-01-PR-1230 | 0 | -38 | 0 | LS | Procu |
| MLTX-02-004-PR-9640 |  | Material Delivery for Traffic Signs | 9d | 2026-11-24 | 2026-12-03 | MLTX-02-004-PR-9620, MLTX-02-004-PR-9520 |  |  |  | -21d | 13d | Purchaser [150 h] | MOD-02-PR-9640 | MAK-01-PR-1250 | 0 | -38 | 0 | LS | Procu |
|  | 3 | **IRRIGATION PIPES/SPRINKLERS** |  | 2026-07-18 | 2026-08-13 |  |  |  |  |  |  |  |  |  |  |  |  |  |  |
| MLTX-02-004-PR-9660 |  | PO for Irrigation Pipes/Sprinkles | 5d | 2026-07-18 A | 2026-07-18 A | MLTX-02-004-EN-7670, MLTX-02-004-PR-9580 | 100% | 2026-08-25 | 2026-08-30 |  |  | Purchaser [150 h] | MOD-02-PR-9660 | MAK-01-PR-1260 | 0 | -12 | 0 | LS | Procu |
| MLTX-02-004-PR-9680 |  | Material Delivery for Irrigation Pipes/Sprinkles | 8d | 2026-08-13 A | 2026-08-13 A | MLTX-02-004-PR-9660 | 100% | 2026-11-09 | 2026-11-17 |  |  | Purchaser [150 h] | MOD-02-PR-9680 | MAK-01-PR-1280 | 0 | -12 | 0 | LS | Procu |
|  | 5 | **AGRICULTURE SOIL** |  | 2026-08-08 | 2026-11-10 |  |  |  |  |  |  |  |  |  |  |  |  |  |  |
| MLTX-02-004-PR-9700 |  | PO for Agriculture Soil | 5d | 2026-08-08 A | 2026-08-08 A | MLTX-02-004-PR-9680 | 100% | 2026-08-08 | 2026-08-12 |  |  | Purchaser [150 h] | MOD-02-PR-9700 | MAK-01-PR-1260 | 0 | -38 | 0 | LS | Procu |
| MLTX-02-004-PR-9720 |  | Material Delivery for Agriculture Soil | 12d | 2026-11-05 A | 2026-11-10 A | MLTX-02-004-PR-9700 | 100% | 2026-11-23 | 2026-12-06 |  |  | Purchaser [150 h] | MOD-02-PR-9720 | MAK-01-PR-1280 | 0 | -38 | 0 | LS | Procu |
|  | 8 | **TRACK SURFACE** |  | 2026-06-24 | 2026-12-05 |  |  |  |  |  |  |  |  |  |  |  |  |  |  |
| MLTX-02-004-PR-9740 |  | PO for Track Surface | 5d | 2026-06-24 A | 2026-06-25 A | MLTX-02-004-PR-9600, MLTX-02-004-PR-9680, MLTX-02-004-PR-9900 | 100% | 2027-01-24 | 2027-01-28 |  |  | Purchaser [150 h] | MOD-02-PR-9740 | MAK-01-PR-1260 | 0 | -38 | 0 | LS | Procu |
| MLTX-02-004-PR-9760 |  | Material Delivery for Track Surface | 10d | 2026-11-24 | 2026-12-05 | MLTX-02-004-PR-9740 |  |  |  | 20d | 42d | Purchaser [150 h] | MOD-02-PR-9760 | MAK-01-PR-1280 | 0 | -38 | 0 | LS | Procu |

| ID | WBS | Activity | Duration | Start | Finish | Predecessors | Complete | Planned start | Planned finish | Total float | Free float | Resources | New Activity ID | Old Activity ID - MK | % Variance | Delay | On Schedule | Procurement | WBS-Project | Flag |
| --- | --- | --- | --- | --- | --- | --- | --- | --- | --- | --- | --- | --- | --- | --- | --- | --- | --- | --- | --- | --- |
|  | 10 | **GRASS/TREES** |  | 2026-07-18 | 2026-12-10 |  |  |  |  |  |  |  |  |  |  |  |  |  |  |  |
| MLTX-02-004-PR-9780 |  | PO for Grass/Trees | 5d | 2026-07-18 A | 2026-07-19 A | MLTX-02-004-PR-9740 | 100% | 2027-01-30 | 2027-02-03 |  |  | Purchaser [150 h] | MOD-02-PR-9780 | MAK-01-PR-1260 | 0 | -38 | 0 | LS | Procu |  |
| MLTX-02-004-PR-9800 |  | Material Delivery for Grass/Trees | 15d | 2026-11-24 | 2026-12-10 | MLTX-02-004-PR-9780 |  |  |  | -34d | 4d | Purchaser [150 h] | MOD-02-PR-9800 | MAK-01-PR-1280 | 0 | -38 | 0 | LS | Procu |  |
|  | 6 | **CABLES** |  | 2026-09-28 | 2026-09-28 |  |  |  |  |  |  |  |  |  |  |  |  |  |  |  |
| MLTX-02-004-PR-9820 |  | PO for Cables | 5d | 2026-09-28 A | 2026-09-28 A | MLTX-02-004-PR-9580 | 100% | 2026-09-30 | 2026-10-05 |  |  | Purchaser [150 h] | MOD-02-PR-9820 | MAK-01-PR-1200 | 0 | -12 | 0 | LS | Procu |  |
| MLTX-02-004-PR-9840 |  | Material Delivery for Cables | 15d | 2026-09-28 A | 2026-09-28 A | MLTX-02-004-PR-9820 | 100% | 2026-10-06 | 2026-10-22 |  |  | Purchaser [150 h] | MOD-02-PR-9840 | MAK-01-PR-1220 | 0 | -12 | 0 | LS | Procu |  |
|  | LLI | **LONG LEAD ITEM** |  | 2026-06-16 | 2027-01-24 |  |  |  |  |  |  |  |  |  |  |  |  |  |  |  |
|  | PLG | **PLAYGROUND WORKS** |  | 2026-06-16 | 2027-01-24 |  |  |  |  |  |  |  |  |  |  |  |  |  |  |  |
|  | 6 | **STEEL TENSION CABLES** |  | 2026-06-16 | 2026-06-30 |  |  |  |  |  |  |  |  |  |  |  |  |  |  |  |
| MLTX-02-004-PR-8670 |  | PO for Steel Tension Cables | 1d | 2026-06-16 A | 2026-06-16 A | MLTX-02-004-EN-4570 | 100% |  |  |  |  | Purchaser [300 h] | MOD-02-PR-8670 | MAK-01-PR-1120 | -100 | -38 | -100 | PL | Procu | UDF_G1 |
| MLTX-02-004-PR-8680 |  | Material Fabrication for Steel Tension Cables | 20d | 2026-06-18 A | 2026-06-20 A | MLTX-02-004-PR-8670, MLTX-02-004-PR-9450 | 100% | 2026-11-23 | 2026-12-15 |  |  | Purchaser [300 h] | MOD-02-PR-8680 | MAK-01-PR-1120 | -60 | -38 | -45 | PL | Procu | UDF_G1 |
| MLTX-02-004-PR-8690 |  | Material Delivery for Steel Tension Cables | 29d | 2026-06-22 A | 2026-06-24 A | MLTX-02-004-EN-3620, MLTX-02-004-EN-12080, MLTX-02-004-EN-12090, MLTX-02-004-EN-16350, MLTX-02-004-EN-16360, MLTX-02-004-PR-8680, MLTX-02-004-EN-7120, MLTX-02-004-PR-9910, MLTX-02-004-PR-9900, MLTX-02-004-PR-9920 | 100% | 2027-01-24 | 2027-02-27 |  |  | Purchaser [294.3 h] | MOD-02-PR-8690 | MAK-01-PR-1130 | 0 | -38 | 0 | PL | Procu |  |
| MLTX-02-004-PR-9890 |  | Staging time | 7d | 2026-06-25 A | 2026-06-30 A | MLTX-02-004-PR-10520, MLTX-02-004-PR-8690 | 100% | 2027-02-28 | 2027-03-07 |  |  | Purchaser [290 h] | MOD-02-PR-8690 | MAK-01-PR-1130 | 0 | -38 | 0 | PL | Procu |  |
|  | 7 | **EMERGENCY DOORS** |  | 2026-06-16 | 2027-01-24 |  |  |  |  |  |  |  |  |  |  |  |  |  |  |  |
| MLTX-02-004-PR-8710 |  | PO for Emergency Doors | 1d | 2026-06-16 A | 2026-06-16 A | MLTX-02-004-MS-1010 SS | 100% |  |  |  |  | Purchaser [150 h] | MOD-02-PR-8710 | MAK-01-PR-1120 | 0 | -38 | 0 | PL | Procu |  |
| MLTX-02-004-PR-8720 |  | Material Fabrication for Emergency Doors | 20d | 2026-11-24 | 2026-12-16 | MLTX-02-004-PR-8710 |  |  |  | 1d | 0d | Purchaser [150 h] | MOD-02-PR-8720 | MAK-01-PR-1120 | 0 | -38 | 0 | PL | Procu |  |
| MLTX-02-004-PR-8730 |  | Material Delivery for Emergency Doors | 25d | 2026-12-17 | 2027-01-14 | MLTX-02-004-PR-8720 |  |  |  | 1d | 0d | Purchaser [150 h] | MOD-02-PR-8730 | MAK-01-PR-1130 | 0 | -38 | 0 | PL | Procu |  |
| MLTX-02-004-PR-9900 |  | Staging time | 8d | 2027-01-16 | 2027-01-24 | MLTX-02-004-PR-8730 |  |  |  | 1d | 87d | Purchaser [150 h] | MOD-02-PR-8730 | MAK-01-PR-1130 | 0 | -38 | 0 | PL | Procu |  |
|  | 8 | **PRESSURE UNITS** |  | 2026-06-16 | 2027-01-24 |  |  |  |  |  |  |  |  |  |  |  |  |  |  |  |
| MLTX-02-004-PR-8750 |  | PO for Pressure Units | 1d | 2026-06-16 A | 2026-06-16 A | MLTX-02-004-MS-1010 SS | 100% |  |  |  |  | Purchaser [150 h] | MOD-02-PR-8750 | MAK-01-PR-1120 | 0 | -38 | 0 | PL | Procu |  |
| MLTX-02-004-PR-8760 |  | Material Fabrication for Pressure Units | 20d | 2026-11-24 | 2026-12-16 | MLTX-02-004-PR-8750 |  |  |  | 1d | 0d | Purchaser [150 h] | MOD-02-PR-8760 | MAK-01-PR-1120 | 0 | -38 | 0 | PL | Procu |  |
| MLTX-02-004-PR-8770 |  | Material Delivery for Pressure Units | 25d | 2026-12-17 | 2027-01-14 | MLTX-02-004-PR-8760 |  |  |  | 1d | 0d | Purchaser [150 h] | MOD-02-PR-8770 | MAK-01-PR-1130 | 0 | -38 | 0 | PL | Procu |  |
| MLTX-02-004-PR-9910 |  | Staging time | 8d | 2027-01-16 | 2027-01-24 | MLTX-02-004-PR-8770 |  |  |  | 1d | 87d | Purchaser [150 h] | MOD-02-PR-8770 | MAK-01-PR-1130 | 0 | -38 | 0 | PL | Procu |  |
|  | 9 | **AIR LOCK DOORS** |  | 2026-06-16 | 2027-01-24 |  |  |  |  |  |  |  |  |  |  |  |  |  |  |  |
| MLTX-02-004-PR-8790 |  | PO for Lock Doors | 1d | 2026-06-16 A | 2026-06-16 A | MLTX-02-004-MS-1010 SS | 100% |  |  |  |  | Purchaser [150 h] | MOD-02-PR-8790 | MAK-01-PR-1120 | 0 | -38 | 0 | PL | Procu |  |
| MLTX-02-004-PR-8800 |  | Material Fabrication for Lock Doors | 20d | 2026-11-24 | 2026-12-16 | MLTX-02-004-PR-8790 |  |  |  | 1d | 0d | Purchaser [150 h] | MOD-02-PR-8800 | MAK-01-PR-1120 | 0 | -38 | 0 | PL | Procu |  |
| MLTX-02-004-PR-8810 |  | Material Delivery for Lock Doors | 25d | 2026-12-17 | 2027-01-14 | MLTX-02-004-PR-8800 |  |  |  | 1d | 0d | Purchaser [150 h] | MOD-02-PR-8810 | MAK-01-PR-1130 | 0 | -38 | 0 | PL | Procu |  |
| MLTX-02-004-PR-9920 |  | Staging time | 8d | 2027-01-16 | 2027-01-24 | MLTX-02-004-PR-8810 |  |  |  | 1d | 87d | Purchaser [150 h] | MOD-02-PR-8810 | MAK-01-PR-1130 | 0 | -38 | 0 | PL | Procu |  |

| ID | WBS | Activity | Duration | Start | Finish | Predecessors | Complete | Planned start | Planned finish | Total float | Free float | Resources | New Activity ID | Old Activity ID - MK | % Variance | Delay | On Schedule | Procurement | WBS-Project | Testing & Commissioning | Moblization | Flag |
| --- | --- | --- | --- | --- | --- | --- | --- | --- | --- | --- | --- | --- | --- | --- | --- | --- | --- | --- | --- | --- | --- | --- |
|  | LSC | **LANDSCAPE WORKS** |  | 2026-06-18 | 2026-09-29 |  |  |  |  |  |  |  |  |  |  |  |  |  |  |  |  |  |
|  | 4 | **LIGHT POLES** |  | 2026-06-18 | 2026-09-29 |  |  |  |  |  |  |  |  |  |  |  |  |  |  |  |  |  |
| MLTX-02-004-PR-9860 |  | PO for Lighting poles | 1d | 2026-06-18 A | 2026-06-18 A | MLTX-02-004-EN-7820 | 100% |  |  |  |  | Purchaser [150 h] | MOD-02-PR-9860 | MAK-01-PR-LLI-1120 | 0 | -12 | 0 | LS | Procu |  |  |  |
| MLTX-02-004-PR-9870 |  | Material Fabrication for Lighting poles | 30d | 2026-09-29 A | 2026-09-29 A | MLTX-02-004-PR-9860 | 100% | 2026-12-09 | 2027-01-12 |  |  | Purchaser [150 h] | MOD-02-PR-9870 | MAK-01-PR-LLI-1130 | 0 | -12 | 0 | LS | Procu |  |  |  |
| MLTX-02-004-PR-9880 |  | Material Delivery for Lighting poles | 25d | 2026-09-29 A | 2026-09-29 A | MLTX-02-004-PR-9870 | 100% | 2027-01-13 | 2027-02-10 |  |  | Purchaser [150 h] | MOD-02-PR-9880 | MAK-01-PR-LLI-1160 | 0 | -12 | 0 | LS | Procu |  |  |  |
| MLTX-02-004-PR-9930 |  | Staging time | 15d | 2026-09-29 A | 2026-09-29 A | MLTX-02-004-PR-9880 | 100% | 2027-02-11 | 2027-03-01 |  |  | Purchaser [150 h] | MOD-02-PR-9880 | MAK-01-PR-LLI-1160 | 0 | -12 | 0 | LS | Procu |  |  |  |
|  | T & C | **TESTING & COMMISSIONING** |  | 2026-12-20 | 2027-02-23 |  |  |  |  |  |  |  |  |  |  |  |  |  |  |  |  |  |
| MLTX-02-004-TC-11870 |  | Testing and Commissioning for MEP Works for Toilet/Service Building | 22d | 2026-12-20 | 2027-01-13 | MLTX-02-004-CN-11780, MLTX-02-004-CN-11220, MLTX-02-004-CN-11460 |  |  |  | -38d | 0d | QA/QC Engineer [1420 h] | MOD-02-TC-11870 | T&C-1030 | 0 | -38 | 0 |  | Test | AS |  |  |
| MLTX-02-004-TC-11880 |  | Testing and Commissioning for MEP Works for Landscape Works | 22d | 2027-01-14 | 2027-02-08 | MLTX-02-004-TC-11870, MLTX-02-004-CN-11130, MLTX-02-004-TC-11870 FF |  |  |  | -38d | 1d | QA/QC Engineer [1432.8 h] | MOD-02-TC-11880 | T&C-1050 | 0 | -38 | 0 |  | Test | AS |  |  |
| MLTX-02-004-TC-11860 |  | Testing and Commissioning for MEP Works for Playground Area | 10d | 2027-02-11 | 2027-02-23 | MLTX-02-004-CN-10490 |  |  |  | -34d | 15d | QA/QC Engineer [1420 h] | MOD-02-TC-11860 | T&C-1020 | 0 | -38 | 0 |  | Test | AS |  |  |
|  | 2 | **JAZAN** |  | 2026-03-26 | 2027-05-10 |  |  |  |  |  |  |  |  |  |  |  |  |  |  |  |  |  |
|  | MOB | **MOBILIZATION** |  | 2026-03-26 | 2026-06-10 |  |  |  |  |  |  |  |  |  |  |  |  |  |  |  |  |  |
|  | SURV | **TOPOGRAPHIC SURVEY** |  | 2026-03-26 | 2026-03-30 |  |  |  |  |  |  |  |  |  |  |  |  |  |  |  |  |  |
| MLTX-02-004-MB-1860 |  | Site Survey Works | 4d | 2026-03-26 A | 2026-03-30 A | MLTX-02-004-MS-1010 SS | 100% |  |  |  |  | QA/QC Engineer [60 h] | MOD-02-MB-1320 | MAK-01-TPS-1000 | 0 | 0 | 0 |  | Mob |  | JAZ |  |
|  | OFFICE | **SITE FACILITIES & OFFICES** |  | 2026-03-26 | 2026-06-02 |  |  |  |  |  |  |  |  |  |  |  |  |  |  |  |  |  |
| MLTX-02-004-MB-1770 |  | Site Layout Plan | 4d | 2026-03-26 A | 2026-03-30 A | MLTX-02-004-MS-1010 SS | 100% |  |  |  |  | Labor [230 h] | MOD-02-MB-1340 | MAK-01-MOB-1000 | 0 | 0 | 0 |  | Mob |  | JAZ |  |
| MLTX-02-004-MB-1780 |  | Clear & Grub for Offices & Access Road | 3d | 2026-03-31 A | 2026-04-02 A | MLTX-02-004-MB-1770 | 100% |  |  |  |  | Labor [200 h] | MOD-02-MB-1350 | MAK-01-MOB-1010 | 0 | 0 | 0 |  | Mob |  | JAZ |  |
| MLTX-02-004-MB-1790 |  | Construct Site Access Roads | 4d | 2026-03-31 A | 2026-04-04 A | MLTX-02-004-MB-1770 | 100% |  |  |  |  | Labor [200 h] | MOD-02-MB-1360 | MAK-01-MOB-1020 | 0 | 0 | 0 |  | Mob |  | JAZ |  |
| MLTX-02-004-MB-1800 |  | Construct Temporary Fence | 38.75d | 2026-04-15 A | 2026-06-02 A | MLTX-02-004-MB-1780 | 100% |  |  |  |  | Labor [200 h] | MOD-02-MB-1370 | MAK-01-MOB-1030 | -25 | -29.75 | -25 |  | Mob |  | JAZ | UDF_G1 |
| MLTX-02-004-MB-1740 |  | Manpower Mobalization | 31.5d | 2026-04-16 A | 2026-05-23 A | MLTX-02-004-MB-1830 | 100% |  |  |  |  | Labor [250 h] | MOD-02-MB-1440 | MAK-01-MOB-1090 | -10 | -19.5 | -10 |  | Mob |  | JAZ | UDF_G1 |
| MLTX-02-004-MB-1820 |  | Install Project Signs | 18d | 2026-04-20 A | 2026-05-10 A | MLTX-02-004-MB-1790 | 100% |  |  |  |  | Labor [200 h] | MOD-02-MB-1390 | MAK-01-MOB-1050 | 0 | -23 | 0 |  | Mob |  | JAZ |  |
| MLTX-02-004-MB-1750 |  | Equipment Mobalization | 2d | 2026-05-06 A | 2026-05-07 A | MLTX-02-004-MB-1820 | 100% |  |  |  |  | Labor [282.9 h] | MOD-02-MB-1430 | MAK-01-MOB-1100 | 0 | -14 | 0 |  | Mob |  | JAZ |  |
| MLTX-02-004-MB-1810 |  | Construct Site Offices & Storage | 2d | 2026-05-06 A | 2026-05-07 A | MLTX-02-004-MB-1790 | 100% |  |  |  |  | Labor [200 h] | MOD-02-MB-1380 | MAK-01-MOB-1040 | 0 | -15 | 0 |  | Mob |  | JAZ |  |
| MLTX-02-004-MB-1830 |  | Install Site Facilities | 1d | 2026-05-06 A | 2026-05-07 A | MLTX-02-004-MB-1800 | 100% |  |  |  |  | Labor [300 h] | MOD-02-MB-1400 | MAK-01-MOB-1060 | 0 | -18.75 | 0 |  | Mob |  | JAZ |  |
| MLTX-02-004-MB-1840 |  | Electrical Works & Connections | 1d | 2026-05-06 A | 2026-05-07 A | MLTX-02-004-MB-1800 | 100% |  |  |  |  | Labor [300 h] | MOD-02-MB-1410 | MAK-01-MOB-1070 | 0 | -16.75 | 0 |  | Mob |  | JAZ |  |
| MLTX-02-004-MB-1850 |  | Construct Parking Sheds | 1d | 2026-05-06 A | 2026-05-07 A | MLTX-02-004-MB-1800 | 100% |  |  |  |  | Labor [300 h] | MOD-02-MB-1420 | MAK-01-MOB-1080 | 0 | -16.75 | 0 |  | Mob |  | JAZ |  |

| ID | WBS | Activity | Duration | Start | Finish | Predecessors | Complete | Planned start | Planned finish | Resources | New Activity ID | Old Activity ID - MK | % Variance | Delay | On Schedule | Moblization | WBS-Project | Flag | Shop Drawings |
| --- | --- | --- | --- | --- | --- | --- | --- | --- | --- | --- | --- | --- | --- | --- | --- | --- | --- | --- | --- |
|  | PRELI | **PRELIMINARY SUBMITTALS** |  | 2026-03-31 | 2026-06-10 |  |  |  |  |  |  |  |  |  |  |  |  |  |  |
|  | P&S | **PREPARATIONS & SUBMITTAL BY CONTRACTORS** |  | 2026-03-31 | 2026-04-30 |  |  |  |  |  |  |  |  |  |  |  |  |  |  |
| MLTX-02-004-MB-1760 |  | Preparation and Submittal of Detailed Work Order Programme (Baseline) | 25d | 2026-03-31 A | 2026-04-28 A | MLTX-02-004-MB-1770 | 100% |  |  | QA/QC Engineer [150 h] | MOD-02-MB-1540 | MAK-01-PS-1070 | 0 | -13 | 0 | JAZ | Mob |  |  |
| MLTX-02-004-MB-1870 |  | Preparation and Submittal of Project Execution Plan | 27d | 2026-03-31 A | 2026-04-30 A | MLTX-02-004-MB-1770 | 100% |  |  | QA/QC Engineer [120 h] | MOD-02-MB-1550 | MAK-01-PS-1080 | 0 | -19 | 0 | JAZ | Mob |  |  |
| MLTX-02-004-MB-1880 |  | Submission of Contractor Project Quality Plan | 10d | 2026-03-31 A | 2026-04-11 A | MLTX-02-004-MB-1770 | 100% |  |  | QA/QC Engineer [120 h] | MOD-02-MB-1560 | MAK-01-PS-1090 | 0 | -2 | 0 | JAZ | Mob |  |  |
| MLTX-02-004-MB-1890 |  | Submission of Construction Safety & Environmental Management Plan | 10d | 2026-03-31 A | 2026-04-11 A | MLTX-02-004-MB-1770 | 100% |  |  | QA/QC Engineer [120 h] | MOD-02-MB-1570 | MAK-01-PS-1100 | 0 | -2 | 0 | JAZ | Mob |  |  |
| MLTX-02-004-MB-1900 |  | Preparation and Submittal of Organization Chart | 8d | 2026-03-31 A | 2026-04-08 A | MLTX-02-004-MB-1770 | 100% |  |  | QA/QC Engineer [120 h] | MOD-02-MB-1580 | MAK-01-PS-1110 | 0 | 0 | 0 | JAZ | Mob |  |  |
| MLTX-02-004-MB-1910 |  | Preparation and Submittal of Communication Plan | 8d | 2026-03-31 A | 2026-04-08 A | MLTX-02-004-MB-1770 | 100% |  |  | QA/QC Engineer [120 h] | MOD-02-MB-1590 | MAK-01-PS-1120 | 0 | 0 | 0 | JAZ | Mob |  |  |
|  | APP | **APPROVALS BY EMPLOYERS** |  | 2026-04-09 | 2026-06-10 |  |  |  |  |  |  |  |  |  |  |  |  |  |  |
| MLTX-02-004-MB-1940 |  | Approval of Contractor Project Quality Plan | 19d | 2026-04-09 A | 2026-04-30 A | MLTX-02-004-MB-1880 | 100% |  |  | Consultant Staff [120 h] | MOD-02-MB-1700 | MAK-01-PS-1220 | 0 | -9 | 0 | JAZ | Mob |  |  |
| MLTX-02-004-MB-1960 |  | Approval of Organization Chart | 10d | 2026-04-09 A | 2026-04-20 A | MLTX-02-004-MB-1900 | 100% |  |  | Consultant Staff [120 h] | MOD-02-MB-1720 | MAK-01-PS-1240 | 0 | 0 | 0 | JAZ | Mob |  |  |
| MLTX-02-004-MB-1970 |  | Approval of Communication Plan | 10d | 2026-04-09 A | 2026-04-20 A | MLTX-02-004-MB-1910 | 100% |  |  | Consultant Staff [120 h] | MOD-02-MB-1730 | MAK-01-PS-1250 | 0 | 0 | 0 | JAZ | Mob |  |  |
| MLTX-02-004-MB-1920 |  | Approval of Detailed Work Order Programme (Baseline) | 1d | 2026-04-29 A | 2026-04-29 A | MLTX-02-004-MB-1760 | 100% |  |  | Consultant Staff [120 h] | MOD-02-MB-1680 | MAK-01-PS-1200 | 0 | -4 | 0 | JAZ | Mob |  |  |
| MLTX-02-004-MB-1930 |  | Approval of Project Execution Plan | 1d | 2026-05-13 A | 2026-05-13 A | MLTX-02-004-MB-1870 | 100% |  |  | Consultant Staff [120 h] | MOD-02-MB-1690 | MAK-01-PS-1210 | 0 | -20 | 0 | JAZ | Mob |  |  |
| MLTX-02-004-MB-1950 |  | Approval of Construction Safety & Environmental Management Plan | 1d | 2026-06-10 A | 2026-06-10 A | MLTX-02-004-MB-1890 | 100% |  |  | Consultant Staff [120 h] | MOD-02-MB-1710 | MAK-01-PS-1230 | -100 | -30 | -100 | JAZ | Mob | UDF_G1 |  |
|  | ENGG | **ENGINEERING** |  | 2026-03-31 | 2026-12-05 |  |  |  |  |  |  |  |  |  |  |  |  |  |  |
|  | SD | **SHOP DRAWINGS** |  | 2026-03-31 | 2026-08-26 |  |  |  |  |  |  |  |  |  |  |  |  |  |  |
|  | SUB | **SHOP DRAWINGS SUBMISSION** |  | 2026-03-31 | 2026-08-25 |  |  |  |  |  |  |  |  |  |  |  |  |  |  |
|  | 2 | **SHOP DRAWING SUBMITTALS FOR EARTHING WORKS** |  | 2026-03-31 | 2026-06-21 |  |  |  |  |  |  |  |  |  |  |  |  |  |  |
| MLTX-02-004-EN-7830 |  | Shop DWG Submittal for Layout Plan | 15d | 2026-03-31 A | 2026-04-16 A | MLTX-02-004-MB-1860 | 100% |  |  | Draftsman [18 h] | MOD-02-EN-1790 | MAK-01-EN-1010 | 0 | -9 | 0 |  | Engi |  | ER |
| MLTX-02-004-EN-7840 |  | Shop DWG Submittal for Setting Out | 21d | 2026-03-31 A | 2026-04-25 A | MLTX-02-004-MB-1860 | 100% | 2026-03-31 | 2026-04-23 | Draftsman [17.8 h] | MOD-02-EN-1800 | MAK-01-EN-1030 | 0 | -15 | 0 |  | Engi |  | ER |
| MLTX-02-004-EN-7850 |  | Shop DWG Submittal for Grading Layout Plan | 6d | 2026-03-31 A | 2026-04-06 A | MLTX-02-004-MB-1860 | 100% |  |  | Draftsman [16.1 h] | MOD-02-EN-1810 | MAK-01-EN-1050 | 0 | 0 | 0 |  | Engi |  | ER |
| MLTX-02-004-EN-7880 |  | Shop DWG Submittal for Standards Details | 1d | 2026-05-21 A | 2026-05-21 A | MLTX-02-004-MB-1860 | 100% |  |  | Draftsman [16.1 h] | MOD-02-EN-1840 | MAK-01-EN-1080 | -100 | -38 | -100 |  | Engi | UDF_G1 | ER |
| MLTX-02-004-EN-7860 |  | Shop DWG Submittal for Curb Setting Out Points | 1d | 2026-05-23 A | 2026-05-23 A | MLTX-02-004-MB-1860 | 100% |  |  | Draftsman [16.1 h] | MOD-02-EN-1820 | MAK-01-EN-1060 | 0 | -38 | -100 |  | Engi | UDF_G1 | ER |
| MLTX-02-004-EN-7870 |  | Shop DWG Submittal for Signing & Marking Layout Plan | 1d | 2026-06-21 A | 2026-06-21 A | MLTX-02-004-MB-1860 | 100% |  |  | Draftsman [16.1 h] | MOD-02-EN-1830 | MAK-01-EN-1070 | -100 | -38 | -100 |  | Engi | UDF_G1 | ER |

| ID | WBS | Activity | Duration | Start | Finish | Predecessors | Complete | Resources | New Activity Code | New Activity ID | % Variance | Delay | On Schedule | Shop Drawings | WBS-Project | Flag |
| --- | --- | --- | --- | --- | --- | --- | --- | --- | --- | --- | --- | --- | --- | --- | --- | --- |
|  | ROAD | **SHOP DRAWING SUBMITTALS FOR SERVICE/TOILET WORKS** |  | 2026-03-31 | 2026-08-25 |  |  |  |  |  |  |  |  |  |  |  |
|  | 2 | **ARCHITECTURE WORKS** |  | 2026-03-31 | 2026-04-13 |  |  |  |  |  |  |  |  |  |  |  |
| MLTX-02-004-EN-8210 |  | Shop DWG Submittal for Floor Plan | 12d | 2026-03-31 A | 2026-04-13 A | MLTX-02-004-EN-7830 SS, MLTX-02-004-EN-7840 SS | 100% | Draftsman [16.1 h] | EN.MB.SD.AR.PR.1110 | MOD-02-EN-1870 | 0 | -5 | 0 | TO | Engi |  |
| MLTX-02-004-EN-8220 |  | Shop DWG Submittal for Elevations | 12d | 2026-03-31 A | 2026-04-13 A | MLTX-02-004-EN-8210 SS | 100% | Draftsman [16.1 h] | EN.MB.SD.AR.PR.1140 | MOD-02-EN-1880 | 0 | -5 | 0 | TO | Engi |  |
| MLTX-02-004-EN-8230 |  | Shop DWG Submittal for Sections | 12d | 2026-03-31 A | 2026-04-13 A | MLTX-02-004-EN-7850 SS, MLTX-02-004-EN-8220 SS | 100% | Draftsman [16.1 h] | EN.MB.SD.AR.PR.1150 | MOD-02-EN-1890 | 0 | -5 | 0 | TO | Engi |  |
| MLTX-02-004-EN-8240 |  | Shop DWG Submittal for Ceiling Plan | 12d | 2026-03-31 A | 2026-04-13 A | MLTX-02-004-EN-8230 SS | 100% | Draftsman [16.1 h] | EN.MB.SD.AR.PR.1160 | MOD-02-EN-1900 | 0 | -5 | 0 | TO | Engi |  |
| MLTX-02-004-EN-8250 |  | Shop DWG Submittal for Finishes Plan | 12d | 2026-03-31 A | 2026-04-13 A | MLTX-02-004-EN-8240 SS | 100% | Draftsman [16.1 h] | EN.MB.SD.AR.PR.1190 | MOD-02-EN-1910 | 0 | -5 | 0 | TO | Engi |  |
| MLTX-02-004-EN-8260 |  | Shop DWG Submittal for Toilet Details | 12d | 2026-03-31 A | 2026-04-13 A | MLTX-02-004-EN-8250 SS | 100% | Draftsman [16.1 h] | EN.MB.SD.AR.PR.1210 | MOD-02-EN-1920 | 0 | -5 | 0 | TO | Engi |  |
| MLTX-02-004-EN-8270 |  | Shop DWG Submittal for Doors/Windows Schedule | 12d | 2026-03-31 A | 2026-04-13 A | MLTX-02-004-EN-8260 SS | 100% | Draftsman [16.1 h] | EN.MB.SD.AR.PR.1220 | MOD-02-EN-1930 | 0 | -5 | 0 | TO | Engi |  |
|  | 1 | **STRUCTURE WORKS** |  | 2026-04-08 | 2026-04-30 |  |  |  |  |  |  |  |  |  |  |  |
| MLTX-02-004-EN-8280 |  | Shop DWG Submittal for Foundation Plan | 20d | 2026-04-08 A | 2026-04-30 A | MLTX-02-004-EN-8270 | 100% | Draftsman [16.1 h] | EN.MB.SD.CV.PR.1460 | MOD-02-EN-1950 | 0 | -14 | 0 | TO | Engi |  |
| MLTX-02-004-EN-8290 |  | Shop DWG Submittal for Ground Floor Framing Plan | 20d | 2026-04-08 A | 2026-04-30 A | MLTX-02-004-EN-8280 SS | 100% | Draftsman [16.1 h] | EN.MB.SD.CV.PR.1480 | MOD-02-EN-1960 | 0 | -14 | 0 | TO | Engi |  |
| MLTX-02-004-EN-8300 |  | Shop DWG Submittal for Sections/Details | 20d | 2026-04-08 A | 2026-04-30 A | MLTX-02-004-EN-8270 | 100% | Draftsman [16.1 h] | EN.MB.SD.CV.PR.1530 | MOD-02-EN-1970 | 0 | -14 | 0 | TO | Engi |  |
|  | 3 | **MECHANCAL WORKS** |  | 2026-04-08 | 2026-05-21 |  |  |  |  |  |  |  |  |  |  |  |
| MLTX-02-004-EN-8310 |  | Shop DWG Submittal for HVAC Plan | 6d | 2026-04-08 A | 2026-04-14 A | MLTX-02-004-EN-8270 | 100% | Draftsman [16.1 h] | EN.MB.SD.MC.PR.1740 | MOD-02-EN-1990 | 0 | 0 | 0 | TO | Engi |  |
| MLTX-02-004-EN-8320 |  | Shop DWG Submittal for Exhaust Air Plan | 6d | 2026-04-08 A | 2026-04-14 A | MLTX-02-004-EN-8270 | 100% | Draftsman [16.1 h] | EN.MB.SD.MC.PR.1750 | MOD-02-EN-2000 | 0 | 0 | 0 | TO | Engi |  |
| MLTX-02-004-EN-8330 |  | Shop DWG Submittal for HVAC Equipment Schedule | 6d | 2026-04-08 A | 2026-04-14 A | MLTX-02-004-EN-8270 | 100% | Draftsman [16.1 h] | EN.MB.SD.MC.PR.1770 | MOD-02-EN-2010 | 0 | 0 | 0 | TO | Engi |  |
| MLTX-02-004-EN-8340 |  | Shop DWG Submittal for Fire Fighting Layout | 6d | 2026-04-08 A | 2026-04-14 A | MLTX-02-004-EN-8270 | 100% | Draftsman [16.1 h] | EN.MB.SD.MC.PR.1780 | MOD-02-EN-2060 | 0 | 0 | 0 | TO | Engi |  |
| MLTX-02-004-EN-8360 |  | Shop DWG Submittal for Water Supply Details | 6d | 2026-04-08 A | 2026-04-14 A | MLTX-02-004-EN-8270 | 100% | Draftsman [16.1 h] | EN.MB.SD.MC.PR.1800 | MOD-02-EN-2080 | 0 | 0 | 0 | TO | Engi |  |
| MLTX-02-004-EN-8380 |  | Shop DWG Submittal for Drainage Details | 6d | 2026-04-08 A | 2026-04-14 A | MLTX-02-004-EN-8270 | 100% | Draftsman [16.1 h] | EN.MB.SD.MC.PR.1720 | MOD-02-EN-2030 | 0 | 0 | 0 | TO | Engi |  |
| MLTX-02-004-EN-8920 |  | Shop DWG Submittal for Dut Routing Layout | 6d | 2026-04-08 A | 2026-04-14 A | MLTX-02-004-EN-8270 | 100% | Draftsman [16.1 h] | EN.MB.SD.MC.PR.1770 | MOD-02-EN-2040 | 0 | 0 | 0 | TO | Engi |  |
| MLTX-02-004-EN-8350 |  | Shop DWG Submittal for Water Supply Layout | 1d | 2026-05-06 A | 2026-05-06 A | MLTX-02-004-EN-8270 | 100% | Draftsman [16.1 h] | EN.MB.SD.MC.PR.1790 | MOD-02-EN-2070 | 0 | -19 | 0 | TO | Engi |  |
| MLTX-02-004-EN-8370 |  | Shop DWG Submittal for Drainage Layout | 1d | 2026-05-21 A | 2026-05-21 A | MLTX-02-004-EN-8270 | 100% | Draftsman [16.1 h] | EN.MB.SD.MC.PR.1710 | MOD-02-EN-2020 | -100 | -31 | -100 | TO | Engi | UDF_G1 |
| MLTX-02-004-EN-8930 |  | Shop DWG Submittal for Diffusers Layout | 1d | 2026-05-21 A | 2026-05-21 A | MLTX-02-004-EN-8270 | 100% | Draftsman [16.1 h] | EN.MB.SD.MC.PR.1770 | MOD-02-EN-2050 | -100 | -31 | -100 | TO | Engi | UDF_G1 |

| ID | WBS | Activity | Duration | Start | Finish | Predecessors | Complete | Planned start | Planned finish | Resources | New Activity Code | New Activity ID | % Variance | Delay | On Schedule | Shop Drawings | WBS-Project | Flag |
| --- | --- | --- | --- | --- | --- | --- | --- | --- | --- | --- | --- | --- | --- | --- | --- | --- | --- | --- |
|  | 4 | **ELECTRICAL WORKS** |  | 2026-04-08 | 2026-08-25 |  |  |  |  |  |  |  |  |  |  |  |  |  |
| MLTX-02-004-EN-8390 |  | Shop DWG Submittal for Lighting Layout | 10d | 2026-04-08 A | 2026-04-19 A | MLTX-02-004-EN-8270 | 100% |  |  | Draftsman [16.1 h] | EN.MB.SD.EL.PR.1980 | MOD-02-EN-2100 | 0 | -4 | 0 | TO | Engi |  |
| MLTX-02-004-EN-8430 |  | Shop DWG Submittal for Lighting Installation Details | 10d | 2026-04-08 A | 2026-04-19 A | MLTX-02-004-EN-8440 SS | 100% |  |  | Draftsman [16.1 h] | EN.MB.SD.EL.PR.2040 | MOD-02-EN-2140 | 0 | -4 | 0 | TO | Engi |  |
| MLTX-02-004-EN-8440 |  | Shop DWG Submittal for Power Installation Details | 10d | 2026-04-08 A | 2026-04-19 A | MLTX-02-004-EN-8420 SS | 100% |  |  | Draftsman [16.1 h] | EN.MB.SD.EL.PR.2050 | MOD-02-EN-2150 | 0 | -4 | 0 | TO | Engi |  |
| MLTX-02-004-EN-8480 |  | Shop DWG Submittal for Lightning Protection Details | 10d | 2026-04-08 A | 2026-04-19 A | MLTX-02-004-EN-8470 SS | 100% |  |  | Draftsman [16.1 h] | EN.MB.SD.EL.PR.2110 | MOD-02-EN-2210 | 0 | -4 | 0 | TO | Engi |  |
| MLTX-02-004-EN-8490 |  | Shop DWG Submittal for Fire Alarm Installation Details | 11d | 2026-04-08 A | 2026-04-20 A | MLTX-02-004-EN-8480 SS | 100% |  |  | Draftsman [16.1 h] | EN.MB.SD.EL.PR.2090 | MOD-02-EN-2190 | 0 | -5 | 0 | TO | Engi |  |
| MLTX-02-004-EN-8520 |  | Shop DWG Submittal for Lightning Protection System Layout | 10d | 2026-04-08 A | 2026-04-19 A | MLTX-02-004-EN-8510 SS | 100% |  |  | Draftsman [16.1 h] | EN.MB.SD.EL.PR.2120 | MOD-02-EN-2220 | 0 | -4 | 0 | TO | Engi |  |
| MLTX-02-004-EN-8530 |  | Shop DWG Submittal for Fire Alarm Layout | 11d | 2026-04-08 A | 2026-04-20 A | MLTX-02-004-EN-8520 SS | 100% |  |  | Draftsman [16.1 h] | EN.MB.SD.EL.PR.2100 | MOD-02-EN-2200 | 0 | -5 | 0 | TO | Engi |  |
| MLTX-02-004-EN-8540 |  | Shop DWG Submittal for Fire Alarm Riser Diagram | 11d | 2026-04-08 A | 2026-04-20 A | MLTX-02-004-EN-8530 SS | 100% |  |  | Draftsman [16.1 h] | EN.MB.SD.EL.PR.2130 | MOD-02-EN-2230 | 0 | -5 | 0 | TO | Engi |  |
| MLTX-02-004-EN-8570 |  | Shop DWG Submittal for Telephone & Data Layout | 11d | 2026-04-08 A | 2026-04-20 A | MLTX-02-004-MS-1010 SS | 100% |  |  | Draftsman [16.1 h] | EN.MB.SD.EL.PR.2160 | MOD-02-EN-2260 | 0 | -5 | 0 | TO | Engi |  |
| MLTX-02-004-EN-8580 |  | Shop DWG Submittal for Telephone & Data Riser Diagram | 11d | 2026-04-08 A | 2026-04-20 A | MLTX-02-004-EN-8270, MLTX-02-004-EN-8570 SS | 100% |  |  | Draftsman [16.1 h] | EN.MB.SD.EL.PR.2190 | MOD-02-EN-2290 | 0 | -5 | 0 | TO | Engi |  |
| MLTX-02-004-EN-8400 |  | Shop DWG Submittal for Power Layout | 2d | 2026-05-06 A | 2026-05-07 A | MLTX-02-004-EN-8270 | 100% |  |  | Draftsman [16.1 h] | EN.MB.SD.EL.PR.2000 | MOD-02-EN-2110 | 0 | -20 | 0 | TO | Engi |  |
| MLTX-02-004-EN-8410 |  | Shop DWG Submittal for Power Single Line Diagram | 2d | 2026-05-06 A | 2026-05-07 A | MLTX-02-004-EN-8270 | 100% |  |  | Draftsman [16.1 h] | EN.MB.SD.EL.PR.2020 | MOD-02-EN-2120 | 0 | -20 | 0 | TO | Engi |  |
| MLTX-02-004-EN-8420 |  | Shop DWG Submittal for Panel Board Schedules | 2d | 2026-05-06 A | 2026-05-07 A | MLTX-02-004-EN-8270 | 100% |  |  | Draftsman [16.1 h] | EN.MB.SD.EL.PR.2030 | MOD-02-EN-2130 | 0 | -20 | 0 | TO | Engi |  |
| MLTX-02-004-EN-8450 |  | Shop DWG Submittal for Cable Tray Installation Details | 2d | 2026-05-06 A | 2026-05-07 A | MLTX-02-004-EN-8440 SS | 100% |  |  | Draftsman [16.1 h] | EN.MB.SD.EL.PR.2060 | MOD-02-EN-2160 | 0 | -20 | 0 | TO | Engi |  |
| MLTX-02-004-EN-8460 |  | Shop DWG Submittal for Manhole & Ductbank Details | 2d | 2026-05-06 A | 2026-05-07 A | MLTX-02-004-EN-8450 SS | 100% |  |  | Draftsman [16.1 h] | EN.MB.SD.EL.PR.2070 | MOD-02-EN-2170 | 0 | -20 | 0 | TO | Engi |  |
| MLTX-02-004-EN-8470 |  | Shop DWG Submittal for Grounding Details | 2d | 2026-05-06 A | 2026-05-07 A | MLTX-02-004-EN-8460 SS | 100% |  |  | Draftsman [16.1 h] | EN.MB.SD.EL.PR.2080 | MOD-02-EN-2180 | 0 | -20 | 0 | TO | Engi |  |
| MLTX-02-004-EN-8510 |  | Shop DWG Submittal for Grounding Layout | 2d | 2026-05-06 A | 2026-05-07 A | MLTX-02-004-MS-1010 SS | 100% |  |  | Draftsman [16.1 h] | EN.MB.SD.EL.PR.2170 | MOD-02-EN-2270 | 0 | -20 | 0 | TO | Engi |  |
| MLTX-02-004-EN-8500 |  | Shop DWG Submittal for CCTV Details | 5d | 2026-08-25 A | 2026-08-25 A | MLTX-02-004-EN-8490 | 100% | 2026-09-01 | 2026-09-06 | Draftsman [16.1 h] | EN.MB.SD.EL.PR.2140 | MOD-02-EN-2240 | -100 | -31 | -100 | TO | Engi | UDF_G1 |
| MLTX-02-004-EN-8550 |  | Shop DWG Submittal for CCTV Layout | 5d | 2026-08-25 A | 2026-08-25 A | MLTX-02-004-EN-8540 | 100% | 2026-09-01 | 2026-09-06 | Draftsman [16.1 h] | EN.MB.SD.EL.PR.2150 | MOD-02-EN-2250 | -100 | -31 | -100 | TO | Engi | UDF_G1 |
| MLTX-02-004-EN-8560 |  | Shop DWG Submittal for CCTV Riser Diagram | 5d | 2026-08-25 A | 2026-08-25 A | MLTX-02-004-MS-1010 SS | 100% | 2026-09-01 | 2026-09-06 | Draftsman [16.1 h] | EN.MB.SD.EL.PR.2180 | MOD-02-EN-2280 | -100 | -31 | -100 | TO | Engi | UDF_G1 |
|  | ELE | **SHOP DRAWINGS SUBMITTALS FOR PLAYGROUND WORKS** |  | 2026-03-31 | 2026-08-25 |  |  |  |  |  |  |  |  |  |  |  |  |  |
|  | 3 | **ARCHITECTURE WORKS** |  | 2026-03-31 | 2026-05-14 |  |  |  |  |  |  |  |  |  |  |  |  |  |
| MLTX-02-004-EN-8780 |  | Shop DWG Submittal for Playground Plan/Layout | 16d | 2026-03-31 A | 2026-04-18 A | MLTX-02-004-MB-1860 | 100% |  |  | Draftsman [16.1 h] | EN.MB.SD.AR.PR.1110 | MOD-02-EN-2320 | 0 | -9 | 0 | PL | Engi |  |
| MLTX-02-004-EN-8800 |  | Shop DWG Submittal for Sections | 16d | 2026-03-31 A | 2026-04-18 A | MLTX-02-004-EN-8790 SS | 100% |  |  | Draftsman [16.1 h] | EN.MB.SD.AR.PR.1150 | MOD-02-EN-2340 | 0 | -9 | 0 | PL | Engi |  |
| MLTX-02-004-EN-8810 |  | Shop DWG Submittal for Interlock Pattern Plan | 7d | 2026-03-31 A | 2026-04-07 A | MLTX-02-004-EN-8800 SS | 100% |  |  | Draftsman [16.1 h] | EN.MB.SD.AR.PR.1190 | MOD-02-EN-2350 | 0 | 0 | 0 | PL | Engi |  |
| MLTX-02-004-EN-8790 |  | Shop DWG Submittal for Furniture & Marking | 2d | 2026-05-13 A | 2026-05-14 A | MLTX-02-004-EN-8780 SS | 100% |  |  | Draftsman [16.1 h] | EN.MB.SD.AR.PR.1140 | MOD-02-EN-2330 | 0 | -38 | 0 | PL | Engi | UDF_G1 |
| MLTX-02-004-EN-8820 |  | Shop DWG Submittal for Doors/Windows Schedule | 2d | 2026-05-13 A | 2026-05-14 A | MLTX-02-004-EN-8810 SS | 100% |  |  | Draftsman [16.1 h] | EN.MB.SD.AR.PR.1220 | MOD-02-EN-2360 | 0 | -38 | 0 | PL | Engi | UDF_G1 |
| MLTX-02-004-EN-8850 |  | Shop DWG Submittal for Dome Internal Layout | 2d | 2026-05-13 A | 2026-05-14 A | MLTX-02-004-EN-8820 SS | 100% |  |  | Draftsman [16.1 h] | EN.MB.SD.AR.PR.1110 | MOD-02-EN-2370 | 0 | -38 | 0 | PL | Engi | UDF_G1 |

| ID | WBS | Activity | Duration | Start | Finish | Predecessors | Complete | Planned start | Planned finish | Resources | New Activity Code | New Activity ID | % Variance | Delay | Flag | On Schedule | Shop Drawings | WBS-Project |
| --- | --- | --- | --- | --- | --- | --- | --- | --- | --- | --- | --- | --- | --- | --- | --- | --- | --- | --- |
|  | 4 | **STRUCTURE WORKS** |  | 2026-05-13 | 2026-05-14 |  |  |  |  |  |  |  |  |  |  |  |  |  |
| MLTX-02-004-EN-8830 |  | Shop DWG Submittal for Air Dome System | 2d | 2026-05-13 A | 2026-05-14 A | MLTX-02-004-EN-8850 | 100% |  |  | Draftsman [16.1 h] | EN.MB.SD.AR.PR.1110 | MOD-02-EN-2390 | 0 | -38 | UDF_G1 | 0 | PL | Engi |
| MLTX-02-004-EN-8840 |  | Shop DWG Submittal for Foundation of Air Dome | 2d | 2026-05-13 A | 2026-05-14 A | MLTX-02-004-EN-8830 SS | 100% |  |  | Draftsman [16.1 h] | EN.MB.SD.AR.PR.1140 | MOD-02-EN-2400 | 0 | -38 | UDF_G1 | 0 | PL | Engi |
| MLTX-02-004-EN-8860 |  | Shop DWG Submittal for Anchor Bolt Layout of Air Dome | 2d | 2026-05-13 A | 2026-05-14 A | MLTX-02-004-EN-8840 SS | 100% |  |  | Draftsman [16.1 h] | EN.MB.SD.AR.PR.1140 | MOD-02-EN-2420 | 0 | -38 | UDF_G1 | 0 | PL | Engi |
|  | 5 | **AIR DOME SYSTEM** |  | 2026-05-13 | 2026-05-14 |  |  |  |  |  |  |  |  |  |  |  |  |  |
| MLTX-02-004-EN-8870 |  | Shop DWG Submittal for Air Dome Structural Layout | 2d | 2026-05-13 A | 2026-05-14 A | MLTX-02-004-EN-8860 SS | 100% |  |  | Draftsman [16.1 h] | EN.MB.SD.AR.PR.1110 | MOD-02-EN-2440 | 0 | -38 | UDF_G1 | 0 | PL | Engi |
| MLTX-02-004-EN-8880 |  | Shop DWG Submittal for Membrane Panel Layout | 2d | 2026-05-13 A | 2026-05-14 A | MLTX-02-004-EN-8870 SS | 100% |  |  | Draftsman [16.1 h] | EN.MB.SD.AR.PR.1140 | MOD-02-EN-2450 | 0 | -38 | UDF_G1 | 0 | PL | Engi |
| MLTX-02-004-EN-8890 |  | Shop DWG Submittal for Cable Tension Layout | 2d | 2026-05-13 A | 2026-05-14 A | MLTX-02-004-EN-8880 SS | 100% |  |  | Draftsman [16.1 h] | EN.MB.SD.AR.PR.1150 | MOD-02-EN-2460 | 0 | -38 | UDF_G1 | 0 | PL | Engi |
| MLTX-02-004-EN-8900 |  | Shop DWG Submittal for Airlock Door Details | 2d | 2026-05-13 A | 2026-05-14 A | MLTX-02-004-EN-8890 SS | 100% |  |  | Draftsman [16.1 h] | EN.MB.SD.AR.PR.1140 | MOD-02-EN-2470 | 0 | -38 | UDF_G1 | 0 | PL | Engi |
| MLTX-02-004-EN-8910 |  | Shop DWG Submittal for Emergency Exit Details | 2d | 2026-05-13 A | 2026-05-14 A | MLTX-02-004-EN-8900 SS | 100% |  |  | Draftsman [16.1 h] | EN.MB.SD.AR.PR.1140 | MOD-02-EN-2480 | 0 | -38 | UDF_G1 | 0 | PL | Engi |
|  | 6 | **SPORTS EQUIPMENT** |  | 2026-05-13 | 2026-05-14 |  |  |  |  |  |  |  |  |  |  |  |  |  |
| MLTX-02-004-EN-8940 |  | Shop DWG Submittal for Football Turf Installation | 2d | 2026-05-13 A | 2026-05-14 A | MLTX-02-004-EN-8910 SS | 100% |  |  | Draftsman [16.1 h] | EN.MB.SD.EL.PR.2170 | MOD-02-EN-2500 | 0 | -38 | UDF_G1 | 0 | PL | Engi |
| MLTX-02-004-EN-8950 |  | Shop DWG Submittal for Basketball Court Marking | 2d | 2026-05-13 A | 2026-05-14 A | MLTX-02-004-EN-8940 SS | 100% |  |  | Draftsman [16.1 h] | EN.MB.SD.EL.PR.2180 | MOD-02-EN-2510 | 0 | -38 | UDF_G1 | 0 | PL | Engi |
| MLTX-02-004-EN-8960 |  | Shop DWG Submittal for Padel Court Structure | 2d | 2026-05-13 A | 2026-05-14 A | MLTX-02-004-EN-8950 SS | 100% |  |  | Draftsman [16.1 h] | EN.MB.SD.EL.PR.2160 | MOD-02-EN-2520 | 0 | -38 | UDF_G1 | 0 | PL | Engi |
|  | 1 | **MECHANCAL WORKS** |  | 2026-04-08 | 2026-04-30 |  |  |  |  |  |  |  |  |  |  |  |  |  |
| MLTX-02-004-EN-8760 |  | Shop DWG Submittal for HVAC Plan | 20d | 2026-04-08 A | 2026-04-30 A | MLTX-02-004-EN-11310, MLTX-02-004-EN-8960 SS | 100% |  |  | Draftsman [16.1 h] | EN.MB.SD.MC.PR.1740 | MOD-02-EN-2540 | 0 | -14 |  | 0 | PL | Engi |
| MLTX-02-004-EN-8770 |  | Shop DWG Submittal for Exhaust Air Plan | 20d | 2026-04-08 A | 2026-04-30 A | MLTX-02-004-EN-8760 SS | 100% |  |  | Draftsman [16.1 h] | EN.MB.SD.MC.PR.1750 | MOD-02-EN-2550 | 0 | -14 |  | 0 | PL | Engi |
|  | 2 | **ELECTRICAL WORKS** |  | 2026-05-23 | 2026-08-25 |  |  |  |  |  |  |  |  |  |  |  |  |  |
| MLTX-02-004-EN-8700 |  | Shop DWG Submittal for Fire Alarm Installation Details | 1d | 2026-05-23 A | 2026-05-23 A | MLTX-02-004-MS-1010 SS | 100% |  |  | Draftsman [16.1 h] | EN.MB.SD.EL.PR.2090 | MOD-02-EN-2600 | -100 | -31 | UDF_G1 | -100 | PL | Engi |
| MLTX-02-004-EN-8720 |  | Shop DWG Submittal for Fire Alarm Layout | 1d | 2026-05-23 A | 2026-05-23 A | MLTX-02-004-EN-8700 SS | 100% |  |  | Draftsman [16.1 h] | EN.MB.SD.EL.PR.2100 | MOD-02-EN-2610 | -100 | -31 | UDF_G1 | -100 | PL | Engi |
| MLTX-02-004-EN-8730 |  | Shop DWG Submittal for Fire Alarm Riser Diagram | 1d | 2026-05-23 A | 2026-05-23 A | MLTX-02-004-EN-8700 SS | 100% |  |  | Draftsman [16.1 h] | EN.MB.SD.EL.PR.2130 | MOD-02-EN-2640 | -100 | -31 | UDF_G1 | -100 | PL | Engi |
| MLTX-02-004-EN-8650 |  | Shop DWG Submittal for Lighting Layout | 1d | 2026-05-25 A | 2026-05-25 A | MLTX-02-004-EN-8770 SS | 100% |  |  | Draftsman [16.1 h] | EN.MB.SD.EL.PR.1980 | MOD-02-EN-2570 | -100 | -31 | UDF_G1 | -100 | PL | Engi |
| MLTX-02-004-EN-8660 |  | Shop DWG Submittal for Power Layout | 5d | 2026-07-08 A | 2026-07-08 A | MLTX-02-004-MS-1010 | 100% | 2026-07-08 | 2026-07-13 | Draftsman [16.1 h] | EN.MB.SD.EL.PR.2000 | MOD-02-EN-2580 | -100 | -31 | UDF_G1 | -100 | PL | Engi |
| MLTX-02-004-EN-8670 |  | Shop DWG Submittal for Power Single Line Diagram | 5d | 2026-07-08 A | 2026-07-08 A | MLTX-02-004-MS-1010 SS | 100% | 2026-07-08 | 2026-07-13 | Draftsman [16.1 h] | EN.MB.SD.EL.PR.2020 | MOD-02-EN-2620 | -100 | -31 | UDF_G1 | -100 | PL | Engi |
| MLTX-02-004-EN-8680 |  | Shop DWG Submittal for Panel Board Schedules | 5d | 2026-07-08 A | 2026-07-08 A | MLTX-02-004-MS-1010 | 100% | 2026-07-08 | 2026-07-13 | Draftsman [16.1 h] | EN.MB.SD.EL.PR.2030 | MOD-02-EN-2630 | -100 | -31 | UDF_G1 | -100 | PL | Engi |
| MLTX-02-004-EN-8690 |  | Shop DWG Submittal for Power Installation Details | 5d | 2026-07-08 A | 2026-07-08 A | MLTX-02-004-MS-1010 | 100% | 2026-07-08 | 2026-07-13 | Draftsman [16.1 h] | EN.MB.SD.EL.PR.2050 | MOD-02-EN-2590 | -100 | -31 | UDF_G1 | -100 | PL | Engi |
| MLTX-02-004-EN-8710 |  | Shop DWG Submittal for CCTV Details | 5d | 2026-08-25 A | 2026-08-25 A | MLTX-02-004-MS-1010 | 100% | 2026-09-01 | 2026-09-06 | Draftsman [16.1 h] | EN.MB.SD.EL.PR.2140 | MOD-02-EN-2650 | -100 | -31 | UDF_G1 | -100 | PL | Engi |
| MLTX-02-004-EN-8740 |  | Shop DWG Submittal for CCTV Layout | 5d | 2026-08-25 A | 2026-08-25 A | MLTX-02-004-MS-1010 | 100% | 2026-09-01 | 2026-09-06 | Draftsman [16.1 h] | EN.MB.SD.EL.PR.2150 | MOD-02-EN-2660 | -100 | -31 | UDF_G1 | -100 | PL | Engi |
| MLTX-02-004-EN-8750 |  | Shop DWG Submittal for CCTV Riser Diagram | 5d | 2026-08-25 A | 2026-08-25 A | MLTX-02-004-MS-1010 | 100% | 2026-09-01 | 2026-09-06 | Draftsman [16.1 h] | EN.MB.SD.EL.PR.2180 | MOD-02-EN-2670 | -100 | -31 | UDF_G1 | -100 | PL | Engi |

| ID | WBS | Activity | Duration | Start | Finish | Predecessors | Complete | Planned start | Planned finish | Resources | New Activity ID | Old Activity ID - MK | % Variance | Delay | On Schedule | Shop Drawings | WBS-Project | Flag | New Activity Code |
| --- | --- | --- | --- | --- | --- | --- | --- | --- | --- | --- | --- | --- | --- | --- | --- | --- | --- | --- | --- |
|  | EAR | **SHOP DRAWINGS SUBMITTALS FOR LANDSCAPE WORKS** |  | 2026-03-31 | 2026-07-18 |  |  |  |  |  |  |  |  |  |  |  |  |  |  |
|  | 3 | **ARCHITECTURE WORKS** |  | 2026-03-31 | 2026-05-14 |  |  |  |  |  |  |  |  |  |  |  |  |  |  |
| MLTX-02-004-EN-8590 |  | Shop DWG Submittal for Landscape Layout | 15d | 2026-03-31 A | 2026-04-16 A | MLTX-02-004-MB-1860 | 100% |  |  | Draftsman [16.1 h] | MOD-02-EN-2700 | MAK-01-EN-1120 | 0 | -9 | 0 | LS | Engi |  |  |
| MLTX-02-004-EN-8600 |  | Shop DWG Submittal for Hardscape Plan | 2d | 2026-05-13 A | 2026-05-14 A | MLTX-02-004-MB-1860 | 100% |  |  | Draftsman [16.1 h] | MOD-02-EN-2710 | MAK-01-EN-1130 | 0 | -38 | 0 | LS | Engi | UDF_G1 |  |
| MLTX-02-004-EN-8610 |  | Shop DWG Submittal for Planting Plan | 2d | 2026-05-13 A | 2026-05-14 A | MLTX-02-004-EN-8620 | 100% |  |  | Draftsman [16.1 h] | MOD-02-EN-2720 | MAK-01-EN-1140 | 0 | -38 | 0 | LS | Engi | UDF_G1 |  |
| MLTX-02-004-EN-8620 |  | Shop DWG Submittal for Landscape Details | 2d | 2026-05-13 A | 2026-05-14 A | MLTX-02-004-MB-1860 | 100% |  |  | Draftsman [16.1 h] | MOD-02-EN-2730 | MAK-01-EN-1150 | 0 | -38 | 0 | LS | Engi | UDF_G1 |  |
|  | 1 | **MECHANCAL WORKS** |  | 2026-07-18 | 2026-07-18 |  |  |  |  |  |  |  |  |  |  |  |  |  |  |
| MLTX-02-004-EN-8630 |  | Shop DWG Submittal for Irrigation Details | 5d | 2026-07-18 A | 2026-07-18 A | MLTX-02-004-MB-1860 | 100% | 2026-07-18 | 2026-07-22 | Draftsman [16.1 h] | MOD-02-EN-2770 | MAK-01-EN-1140 | -100 | -38 | -100 | LS | Engi | UDF_G1 |  |
| MLTX-02-004-EN-8640 |  | Shop DWG Submittal for Irrigation Layout | 5d | 2026-07-18 A | 2026-07-18 A | MLTX-02-004-MB-1860 | 100% | 2026-07-18 | 2026-07-22 | Draftsman [16.1 h] | MOD-02-EN-2810 | MAK-01-EN-1140 | -100 | -38 | -100 | LS | Engi | UDF_G1 |  |
|  | 2 | **ELECTRICAL WORKS** |  | 2026-05-23 | 2026-05-23 |  |  |  |  |  |  |  |  |  |  |  |  |  |  |
| MLTX-02-004-EN-7890 |  | Shop DWG Submittal for Lighting General Arrangement | 1d | 2026-05-23 A | 2026-05-23 A | MLTX-02-004-MB-1860 | 100% |  |  | Draftsman [16.1 h] | MOD-02-EN-2860 | MAK-01-EN-1120 | -100 | -38 | -100 | LS | Engi | UDF_G1 |  |
| MLTX-02-004-EN-7900 |  | Shop DWG Submittal for Lighting Network Layout | 1d | 2026-05-23 A | 2026-05-23 A | MLTX-02-004-MB-1860 | 100% |  |  | Draftsman [16.1 h] | MOD-02-EN-2870 | MAK-01-EN-1130 | -100 | -38 | -100 | LS | Engi | UDF_G1 |  |
| MLTX-02-004-EN-7910 |  | Shop DWG Submittal for Lighting Details | 1d | 2026-05-23 A | 2026-05-23 A | MLTX-02-004-MB-1860 | 100% |  |  | Draftsman [16.1 h] | MOD-02-EN-2840 | MAK-01-EN-1140 | -100 | -38 | -100 | LS | Engi | UDF_G1 |  |
| MLTX-02-004-EN-7920 |  | Shop DWG Submittal for Lighting Single Line Diagram | 1d | 2026-05-23 A | 2026-05-23 A | MLTX-02-004-MB-1860 | 100% |  |  | Draftsman [16.1 h] | MOD-02-EN-2850 | MAK-01-EN-1150 | -100 | -38 | -100 | LS | Engi | UDF_G1 |  |
|  | APP | **SHOP DRAWINGS APPROVALS** |  | 2026-04-07 | 2026-08-26 |  |  |  |  |  |  |  |  |  |  |  |  |  |  |
|  | 2 | **SHOP DRAWING APPROVAL FOR EARTHING WORKS** |  | 2026-04-07 | 2026-07-01 |  |  |  |  |  |  |  |  |  |  |  |  |  |  |
| MLTX-02-004-EN-11270 |  | Shop DWG Approval for Setting Out | 17d | 2026-04-07 A | 2026-04-26 A | MLTX-02-004-EN-11260, MLTX-02-004-EN-7840 | 100% |  |  | Draftsman [12.71 h]; Consultant Staff [3.39 h] | MOD-02-EN-2910 | MAK-01-EN-1030 | 0 | -7 | 0 | ER | Engi |  |  |
| MLTX-02-004-EN-11260 |  | Shop DWG Approval for Layout Plan | 1d | 2026-05-21 A | 2026-05-21 A | MLTX-02-004-EN-11900, MLTX-02-004-EN-7830 | 100% |  |  | Draftsman [12.71 h]; Consultant Staff [3.39 h] | MOD-02-EN-2900 | MAK-01-EN-1010 | -100 | -32 | -100 | ER | Engi | UDF_G1 |  |
| MLTX-02-004-EN-11280 |  | Shop DWG Approval for Grading Layout Plan | 1d | 2026-05-21 A | 2026-05-21 A | MLTX-02-004-EN-11270, MLTX-02-004-EN-7850 | 100% |  |  | Draftsman [12.71 h]; Consultant Staff [3.39 h] | MOD-02-EN-2920 | MAK-01-EN-1050 | -100 | -32 | -100 | ER | Engi | UDF_G1 |  |
| MLTX-02-004-EN-11310 |  | Shop DWG Approval for Standards Details | 1d | 2026-05-21 A | 2026-05-21 A | MLTX-02-004-EN-11300, MLTX-02-004-EN-7880 | 100% |  |  | Draftsman [12.71 h]; Consultant Staff [3.39 h] | MOD-02-EN-2950 | MAK-01-EN-1080 | -100 | -38 | -100 | ER | Engi | UDF_G1 |  |
| MLTX-02-004-EN-11290 |  | Shop DWG Approval for Curb Setting Out Points | 1d | 2026-05-23 A | 2026-05-23 A | MLTX-02-004-EN-11280, MLTX-02-004-EN-7860 | 100% |  |  | Draftsman [12.71 h]; Consultant Staff [3.39 h] | MOD-02-EN-2930 | MAK-01-EN-1060 | -100 | -38 | -100 | ER | Engi | UDF_G1 |  |
| MLTX-02-004-EN-11300 |  | Shop DWG Approval for Signing & Marking Layout Plan | 1d | 2026-07-01 A | 2026-07-01 A | MLTX-02-004-EN-11290, MLTX-02-004-EN-7870 | 100% |  |  | Draftsman [12.71 h]; Consultant Staff [3.39 h] | MOD-02-EN-2940 | MAK-01-EN-1070 | -100 | -38 | -100 | ER | Engi | UDF_G1 |  |
|  | ROAD | **SHOP DRAWING APPROVAL FOR SERVICE/TOILET WORKS** |  | 2026-04-14 | 2026-08-26 |  |  |  |  |  |  |  |  |  |  |  |  |  |  |
|  | 2 | **ARCHITECTURE WORKS** |  | 2026-04-14 | 2026-04-24 |  |  |  |  |  |  |  |  |  |  |  |  |  |  |
| MLTX-02-004-EN-11360 |  | Shop DWG Approval for Floor Plan | 9d | 2026-04-14 A | 2026-04-24 A | MLTX-02-004-EN-8210 | 100% | 2026-04-14 | 2026-04-23 | Draftsman [12.71 h]; Consultant Staff [3.39 h] | MOD-02-EN-2980 |  | 0 | -4 | 0 | TO | Engi |  | EN.MB.SD.AR.PR.1110 |
| MLTX-02-004-EN-11370 |  | Shop DWG Approval for Elevations | 9d | 2026-04-14 A | 2026-04-24 A | MLTX-02-004-EN-8220 | 100% | 2026-04-14 | 2026-04-23 | Draftsman [12.71 h]; Consultant Staff [3.39 h] | MOD-02-EN-2990 |  | 0 | -4 | 0 | TO | Engi |  | EN.MB.SD.AR.PR.1140 |
| MLTX-02-004-EN-11380 |  | Shop DWG Approval for Sections | 9d | 2026-04-14 A | 2026-04-24 A | MLTX-02-004-EN-11920, MLTX-02-004-EN-8230 | 100% | 2026-04-14 | 2026-04-23 | Draftsman [12.71 h]; Consultant Staff [3.39 h] | MOD-02-EN-3000 |  | 0 | -4 | 0 | TO | Engi |  | EN.MB.SD.AR.PR.1150 |
| MLTX-02-004-EN-11390 |  | Shop DWG Approval for Ceiling Plan | 9d | 2026-04-14 A | 2026-04-24 A | MLTX-02-004-EN-8240 | 100% | 2026-04-14 | 2026-04-23 | Draftsman [12.71 h]; Consultant Staff [3.39 h] | MOD-02-EN-3010 |  | 0 | -4 | 0 | TO | Engi |  | EN.MB.SD.AR.PR.1160 |
| MLTX-02-004-EN-11400 |  | Shop DWG Approval for Finishes Plan | 9d | 2026-04-14 A | 2026-04-24 A | MLTX-02-004-EN-8250 | 100% | 2026-04-14 | 2026-04-23 | Draftsman [12.71 h]; Consultant Staff [3.39 h] | MOD-02-EN-3020 |  | 0 | -4 | 0 | TO | Engi |  | EN.MB.SD.AR.PR.1190 |
| MLTX-02-004-EN-11410 |  | Shop DWG Approval for Toilet Details | 9d | 2026-04-14 A | 2026-04-24 A | MLTX-02-004-EN-8260 | 100% | 2026-04-14 | 2026-04-23 | Draftsman [12.71 h]; Consultant Staff [3.39 h] | MOD-02-EN-3030 |  | 0 | -4 | 0 | TO | Engi |  | EN.MB.SD.AR.PR.1210 |
| MLTX-02-004-EN-11420 |  | Shop DWG Approval for Doors/Windows Schedule | 9d | 2026-04-14 A | 2026-04-24 A | MLTX-02-004-EN-11940, MLTX-02-004-EN-8270 | 100% | 2026-04-14 | 2026-04-23 | Draftsman [12.71 h]; Consultant Staff [3.39 h] | MOD-02-EN-3040 |  | 0 | -4 | 0 | TO | Engi |  | EN.MB.SD.AR.PR.1220 |

| ID | WBS | Activity | Duration | Start | Finish | Predecessors | Complete | Planned start | Planned finish | Resources | New Activity Code | New Activity ID | % Variance | Delay | On Schedule | Shop Drawings | WBS-Project | Flag |
| --- | --- | --- | --- | --- | --- | --- | --- | --- | --- | --- | --- | --- | --- | --- | --- | --- | --- | --- |
|  | 1 | **STRUCTURE WORKS** |  | 2026-05-07 | 2026-05-07 |  |  |  |  |  |  |  |  |  |  |  |  |  |
| MLTX-02-004-EN-11430 |  | Shop DWG Approval for Foundation Plan | 1d | 2026-05-07 A | 2026-05-07 A | MLTX-02-004-EN-8280 | 100% |  |  | Draftsman [12.71 h]; Consultant Staff [3.39 h] | EN.MB.SD.CV.PR.1460 | MOD-02-EN-3060 | 0 | -10 | 0 | TO | Engi |  |
| MLTX-02-004-EN-11440 |  | Shop DWG Approval for Ground Floor Framing Plan | 1d | 2026-05-07 A | 2026-05-07 A | MLTX-02-004-EN-8290 | 100% |  |  | Draftsman [12.71 h]; Consultant Staff [3.39 h] | EN.MB.SD.CV.PR.1480 | MOD-02-EN-3070 | 0 | -10 | 0 | TO | Engi |  |
| MLTX-02-004-EN-11450 |  | Shop DWG Approval for Sections/Details | 1d | 2026-05-07 A | 2026-05-07 A | MLTX-02-004-EN-8300 | 100% |  |  | Draftsman [12.71 h]; Consultant Staff [3.39 h] | EN.MB.SD.CV.PR.1530 | MOD-02-EN-3080 | 0 | -10 | 0 | TO | Engi |  |
|  | 3 | **MECHANCAL WORKS** |  | 2026-05-07 | 2026-05-21 |  |  |  |  |  |  |  |  |  |  |  |  |  |
| MLTX-02-004-EN-11460 |  | Shop DWG Approval for HVAC Plan | 1d | 2026-05-07 A | 2026-05-07 A | MLTX-02-004-EN-8310 | 100% |  |  | Draftsman [12.71 h]; Consultant Staff [3.39 h] | EN.MB.SD.MC.PR.1740 | MOD-02-EN-3100 | 0 | -10 | 0 | TO | Engi |  |
| MLTX-02-004-EN-11470 |  | Shop DWG Approval for Exhaust Air Plan | 1d | 2026-05-07 A | 2026-05-07 A | MLTX-02-004-EN-8320 | 100% |  |  | Draftsman [12.71 h]; Consultant Staff [3.39 h] | EN.MB.SD.MC.PR.1750 | MOD-02-EN-3110 | 0 | -10 | 0 | TO | Engi |  |
| MLTX-02-004-EN-11480 |  | Shop DWG Approval for HVAC Equipment Schedule | 4d | 2026-05-07 A | 2026-05-11 A | MLTX-02-004-EN-8330 | 100% |  |  | Draftsman [12.71 h]; Consultant Staff [3.39 h] | EN.MB.SD.MC.PR.1770 | MOD-02-EN-3120 | 0 | -13 | 0 | TO | Engi |  |
| MLTX-02-004-EN-11490 |  | Shop DWG Approval for Fire Fighting Layout | 1d | 2026-05-07 A | 2026-05-07 A | MLTX-02-004-EN-8340 | 100% |  |  | Draftsman [12.71 h]; Consultant Staff [3.39 h] | EN.MB.SD.MC.PR.1780 | MOD-02-EN-3170 | 0 | -10 | 0 | TO | Engi |  |
| MLTX-02-004-EN-11500 |  | Shop DWG Approval for Water Supply Layout | 1d | 2026-05-07 A | 2026-05-07 A | MLTX-02-004-EN-8350 | 100% |  |  | Draftsman [12.71 h]; Consultant Staff [3.39 h] | EN.MB.SD.MC.PR.1790 | MOD-02-EN-3180 | 0 | -10 | 0 | TO | Engi |  |
| MLTX-02-004-EN-11510 |  | Shop DWG Approval for Water Supply Details | 1d | 2026-05-07 A | 2026-05-07 A | MLTX-02-004-EN-8360 | 100% |  |  | Draftsman [12.71 h]; Consultant Staff [3.39 h] | EN.MB.SD.MC.PR.1800 | MOD-02-EN-3190 | 0 | -10 | 0 | TO | Engi |  |
| MLTX-02-004-EN-11530 |  | Shop DWG Approval for Drainage Details | 1d | 2026-05-07 A | 2026-05-07 A | MLTX-02-004-EN-8380 | 100% |  |  | Draftsman [12.71 h]; Consultant Staff [3.39 h] | EN.MB.SD.MC.PR.1720 | MOD-02-EN-3140 | 0 | -10 | 0 | TO | Engi |  |
| MLTX-02-004-EN-12050 |  | Shop DWG Approval for Duct Routing Layout | 1d | 2026-05-07 A | 2026-05-07 A | MLTX-02-004-EN-8920 | 100% |  |  | Draftsman [12.71 h]; Consultant Staff [3.39 h] | EN.MB.SD.MC.PR.1770 | MOD-02-EN-3150 | 0 | -10 | 0 | TO | Engi |  |
| MLTX-02-004-EN-11520 |  | Shop DWG Approval for Drainage Layout | 1d | 2026-05-21 A | 2026-05-21 A | MLTX-02-004-EN-8370 | 100% |  |  | Draftsman [12.71 h]; Consultant Staff [3.39 h] | EN.MB.SD.MC.PR.1710 | MOD-02-EN-3130 | -100 | -31 | -100 | TO | Engi | UDF_G1 |
| MLTX-02-004-EN-12060 |  | Shop DWG Approval for Diffusers Layout | 1d | 2026-05-21 A | 2026-05-21 A | MLTX-02-004-EN-8930 | 100% |  |  | Draftsman [12.71 h]; Consultant Staff [3.39 h] | EN.MB.SD.MC.PR.1770 | MOD-02-EN-3160 | -100 | -31 | -100 | TO | Engi | UDF_G1 |
|  | 4 | **ELECTRICAL WORKS** |  | 2026-04-15 | 2026-08-26 |  |  |  |  |  |  |  |  |  |  |  |  |  |
| MLTX-02-004-EN-11540 |  | Shop DWG Approval for Lighting Layout | 10d | 2026-04-15 A | 2026-04-26 A | MLTX-02-004-EN-8390 | 100% |  |  | Draftsman [12.71 h]; Consultant Staff [3.39 h] | EN.MB.SD.EL.PR.1980 | MOD-02-EN-3210 | 0 | 0 | 0 | TO | Engi |  |
| MLTX-02-004-EN-11550 |  | Shop DWG Approval for Power Layout | 10d | 2026-04-15 A | 2026-04-26 A | MLTX-02-004-EN-8400 | 100% |  |  | Draftsman [12.71 h]; Consultant Staff [3.39 h] | EN.MB.SD.EL.PR.2000 | MOD-02-EN-3220 | 0 | 0 | 0 | TO | Engi |  |
| MLTX-02-004-EN-11580 |  | Shop DWG Approval for Lighting Installation Details | 10d | 2026-04-15 A | 2026-04-26 A | MLTX-02-004-EN-8430 | 100% |  |  | Draftsman [12.71 h]; Consultant Staff [3.39 h] | EN.MB.SD.EL.PR.2040 | MOD-02-EN-3250 | 0 | 0 | 0 | TO | Engi |  |
| MLTX-02-004-EN-11630 |  | Shop DWG Approval for Lightning Protection Details | 10d | 2026-04-15 A | 2026-04-26 A | MLTX-02-004-EN-8480 | 100% |  |  | Draftsman [12.71 h]; Consultant Staff [3.39 h] | EN.MB.SD.EL.PR.2110 | MOD-02-EN-3320 | 0 | 0 | 0 | TO | Engi |  |
| MLTX-02-004-EN-11670 |  | Shop DWG Approval for Lightning Protection System Layout | 10d | 2026-04-15 A | 2026-04-26 A | MLTX-02-004-EN-8520 | 100% |  |  | Draftsman [12.71 h]; Consultant Staff [3.39 h] | EN.MB.SD.EL.PR.2120 | MOD-02-EN-3330 | 0 | 0 | 0 | TO | Engi |  |
| MLTX-02-004-EN-11640 |  | Shop DWG Approval for Fire Alarm Installation Details | 6d | 2026-04-21 A | 2026-04-27 A | MLTX-02-004-EN-8490 | 100% |  |  | Draftsman [12.71 h]; Consultant Staff [3.39 h] | EN.MB.SD.EL.PR.2090 | MOD-02-EN-3300 | 0 | -1 | 0 | TO | Engi |  |
| MLTX-02-004-EN-11680 |  | Shop DWG Approval for Fire Alarm Layout | 6d | 2026-04-21 A | 2026-04-27 A | MLTX-02-004-EN-8530 | 100% |  |  | Draftsman [12.71 h]; Consultant Staff [3.39 h] | EN.MB.SD.EL.PR.2100 | MOD-02-EN-3310 | 0 | -1 | 0 | TO | Engi |  |
| MLTX-02-004-EN-11690 |  | Shop DWG Approval for Fire Alarm Riser Diagram | 6d | 2026-04-21 A | 2026-04-27 A | MLTX-02-004-EN-8540 | 100% |  |  | Draftsman [12.71 h]; Consultant Staff [3.39 h] | EN.MB.SD.EL.PR.2130 | MOD-02-EN-3340 | 0 | -1 | 0 | TO | Engi |  |
| MLTX-02-004-EN-11720 |  | Shop DWG Approval for Telephone & Data Layout | 6d | 2026-04-21 A | 2026-04-27 A | MLTX-02-004-EN-8570 | 100% |  |  | Draftsman [12.71 h]; Consultant Staff [3.39 h] | EN.MB.SD.EL.PR.2160 | MOD-02-EN-3370 | 0 | -1 | 0 | TO | Engi |  |
| MLTX-02-004-EN-11730 |  | Shop DWG Approval for Telephone & Data Riser Diagram | 6d | 2026-04-21 A | 2026-04-27 A | MLTX-02-004-EN-8580 | 100% |  |  | Draftsman [12.71 h]; Consultant Staff [3.39 h] | EN.MB.SD.EL.PR.2190 | MOD-02-EN-3400 | 0 | -1 | 0 | TO | Engi |  |
| MLTX-02-004-EN-11560 |  | Shop DWG Approval for Power Single Line Diagram | 1d | 2026-05-23 A | 2026-05-23 A | MLTX-02-004-EN-8410 | 100% |  |  | Draftsman [12.71 h]; Consultant Staff [3.39 h] | EN.MB.SD.EL.PR.2020 | MOD-02-EN-3230 | -100 | -25 | -100 | TO | Engi | UDF_G1 |
| MLTX-02-004-EN-11570 |  | Shop DWG Approval for Panel Board Schedules | 1d | 2026-05-23 A | 2026-05-23 A | MLTX-02-004-EN-8420 | 100% |  |  | Draftsman [12.71 h]; Consultant Staff [3.39 h] | EN.MB.SD.EL.PR.2030 | MOD-02-EN-3240 | -100 | -25 | -100 | TO | Engi | UDF_G1 |
| MLTX-02-004-EN-11590 |  | Shop DWG Approval for Power Installation Details | 1d | 2026-05-23 A | 2026-05-23 A | MLTX-02-004-EN-8440 | 100% |  |  | Draftsman [12.71 h]; Consultant Staff [3.39 h] | EN.MB.SD.EL.PR.2050 | MOD-02-EN-3260 | -100 | -25 | -100 | TO | Engi | UDF_G1 |
| MLTX-02-004-EN-11600 |  | Shop DWG Approval for Cable Tray Installation Details | 1d | 2026-05-23 A | 2026-05-23 A | MLTX-02-004-EN-8450 | 100% |  |  | Draftsman [12.71 h]; Consultant Staff [3.39 h] | EN.MB.SD.EL.PR.2060 | MOD-02-EN-3270 | -100 | -25 | -100 | TO | Engi | UDF_G1 |
| MLTX-02-004-EN-11610 |  | Shop DWG Approval for Manhole & Ductbank Details | 1d | 2026-05-23 A | 2026-05-23 A | MLTX-02-004-EN-8460 | 100% |  |  | Draftsman [12.71 h]; Consultant Staff [3.39 h] | EN.MB.SD.EL.PR.2070 | MOD-02-EN-3280 | -100 | -25 | -100 | TO | Engi | UDF_G1 |
| MLTX-02-004-EN-11620 |  | Shop DWG Approval for Grounding Details | 1d | 2026-05-23 A | 2026-05-23 A | MLTX-02-004-EN-8470 | 100% |  |  | Draftsman [12.71 h]; Consultant Staff [3.39 h] | EN.MB.SD.EL.PR.2080 | MOD-02-EN-3290 | -100 | -25 | -100 | TO | Engi | UDF_G1 |
| MLTX-02-004-EN-11660 |  | Shop DWG Approval for Grounding Layout | 1d | 2026-05-23 A | 2026-05-23 A | MLTX-02-004-EN-8510 | 100% |  |  | Draftsman [12.71 h]; Consultant Staff [3.39 h] | EN.MB.SD.EL.PR.2170 | MOD-02-EN-3380 | -100 | -25 | -100 | TO | Engi | UDF_G1 |
| MLTX-02-004-EN-11650 |  | Shop DWG Approval for CCTV Details | 10d | 2026-08-26 A | 2026-08-26 A | MLTX-02-004-EN-8660, MLTX-02-004-EN-8670, MLTX-02-004-EN-8680, MLTX-02-004-EN-8690, MLTX-02-004-EN-8710, MLTX-02-004-EN-8740, MLTX-02-004-EN-8750, MLTX-02-004-EN-8500 | 100% | 2026-09-07 | 2026-09-17 | Draftsman [12.71 h]; Consultant Staff [3.39 h] | EN.MB.SD.EL.PR.2140 | MOD-02-EN-3350 | -100 | -31 | -100 | TO | Engi | UDF_G1 |
| MLTX-02-004-EN-11700 |  | Shop DWG Approval for CCTV Layout | 10d | 2026-08-26 A | 2026-08-26 A | MLTX-02-004-EN-8550 | 100% | 2026-09-07 | 2026-09-17 | Draftsman [12.71 h]; Consultant Staff [3.39 h] | EN.MB.SD.EL.PR.2150 | MOD-02-EN-3360 | -100 | -31 | -100 | TO | Engi | UDF_G1 |
| MLTX-02-004-EN-11710 |  | Shop DWG Approval for CCTV Riser Diagram | 10d | 2026-08-26 A | 2026-08-26 A | MLTX-02-004-EN-8560 | 100% | 2026-09-07 | 2026-09-17 | Draftsman [12.71 h]; Consultant Staff [3.39 h] | EN.MB.SD.EL.PR.2180 | MOD-02-EN-3390 | -100 | -31 | -100 | TO | Engi | UDF_G1 |

| ID | WBS | Activity | Duration | Start | Finish | Predecessors | Complete | Planned start | Planned finish | Resources | New Activity Code | New Activity ID | % Variance | Delay | On Schedule | Shop Drawings | WBS-Project | Flag |
| --- | --- | --- | --- | --- | --- | --- | --- | --- | --- | --- | --- | --- | --- | --- | --- | --- | --- | --- |
|  | ELE | **SHOP DRAWINGS APPROVAL FOR PLAYGROUND WORKS** |  | 2026-04-08 | 2026-08-26 |  |  |  |  |  |  |  |  |  |  |  |  |  |
|  | 3 | **ARCHITECTURE WORKS** |  | 2026-04-08 | 2026-06-18 |  |  |  |  |  |  |  |  |  |  |  |  |  |
| MLTX-02-004-EN-11930 |  | Shop DWG Approval for Interlock Pattern Plan | 10d | 2026-04-08 A | 2026-04-19 A | MLTX-02-004-EN-8810 | 100% |  |  | Draftsman [12.71 h]; Consultant Staff [3.39 h] | EN.MB.SD.AR.PR.1190 | MOD-02-EN-3460 | 0 | 0 | 0 | PL | Engi |  |
| MLTX-02-004-EN-11900 |  | Shop DWG Approval for Playground Plan/Layout | 5d | 2026-04-19 A | 2026-04-24 A | MLTX-02-004-EN-8780 | 100% | 2026-04-19 | 2026-04-23 | Draftsman [12.71 h]; Consultant Staff [3.39 h] | EN.MB.SD.AR.PR.1110 | MOD-02-EN-3430 | 0 | -4 | 0 | PL | Engi |  |
| MLTX-02-004-EN-11920 |  | Shop DWG Approval for Sections | 5d | 2026-04-19 A | 2026-04-24 A | MLTX-02-004-EN-8800 | 100% | 2026-04-19 | 2026-04-23 | Draftsman [12.71 h]; Consultant Staff [3.39 h] | EN.MB.SD.AR.PR.1150 | MOD-02-EN-3450 | 0 | -4 | 0 | PL | Engi |  |
| MLTX-02-004-EN-11940 |  | Shop DWG Approval for Doors/Windows Schedule | 1d | 2026-06-13 A | 2026-06-13 A | MLTX-02-004-EN-8820 | 100% |  |  | Draftsman [12.71 h]; Consultant Staff [3.39 h] | EN.MB.SD.AR.PR.1220 | MOD-02-EN-3470 | -100 | -38 | -100 | PL | Engi | UDF_G1 |
| MLTX-02-004-EN-11980 |  | Shop DWG Approval for Dome Internal Layout | 1d | 2026-06-13 A | 2026-06-13 A | MLTX-02-004-EN-8850 | 100% |  |  | Draftsman [12.71 h]; Consultant Staff [3.39 h] | EN.MB.SD.AR.PR.1110 | MOD-02-EN-3480 | -100 | -38 | -100 | PL | Engi | UDF_G1 |
| MLTX-02-004-EN-11910 |  | Shop DWG Approval for Furniture & Marking | 1d | 2026-06-18 A | 2026-06-18 A | MLTX-02-004-EN-8790 | 100% |  |  | Draftsman [12.71 h]; Consultant Staff [3.39 h] | EN.MB.SD.AR.PR.1140 | MOD-02-EN-3440 | -100 | -38 | -100 | PL | Engi | UDF_G1 |
|  | 4 | **STRUCTURE WORKS** |  | 2026-06-24 | 2026-06-24 |  |  |  |  |  |  |  |  |  |  |  |  |  |
| MLTX-02-004-EN-11950 |  | Shop DWG Approval for Air Dome System | 1d | 2026-06-24 A | 2026-06-24 A | MLTX-02-004-EN-8830 | 100% |  |  | Draftsman [12.71 h]; Consultant Staff [3.39 h] | EN.MB.SD.AR.PR.1110 | MOD-02-EN-3500 | -100 | -38 | -100 | PL | Engi | UDF_G1 |
| MLTX-02-004-EN-11960 |  | Shop DWG Approval for Foundation of Air Dome | 1d | 2026-06-24 A | 2026-06-24 A | MLTX-02-004-EN-8840 | 100% |  |  | Draftsman [12.71 h]; Consultant Staff [3.39 h] | EN.MB.SD.AR.PR.1140 | MOD-02-EN-3510 | -100 | -38 | -100 | PL | Engi | UDF_G1 |
| MLTX-02-004-EN-11970 |  | Shop DWG Approval for Foundation of Air Dome | 1d | 2026-06-24 A | 2026-06-24 A | MLTX-02-004-EN-11960 SS | 100% |  |  | Draftsman [12.71 h]; Consultant Staff [3.39 h] | EN.MB.SD.AR.PR.1150 | MOD-02-EN-3520 | -100 | -38 | -100 | PL | Engi | UDF_G1 |
| MLTX-02-004-EN-11990 |  | Shop DWG Approval for Anchor Bolt Layout of Air Dome | 1d | 2026-06-24 A | 2026-06-24 A | MLTX-02-004-EN-8860 | 100% |  |  | Draftsman [12.71 h]; Consultant Staff [3.39 h] | EN.MB.SD.AR.PR.1140 | MOD-02-EN-3530 | -100 | -38 | -100 | PL | Engi | UDF_G1 |
|  | 5 | **AIR DOME SYSTEM** |  | 2026-06-13 | 2026-06-13 |  |  |  |  |  |  |  |  |  |  |  |  |  |
| MLTX-02-004-EN-12000 |  | Shop DWG Approval for Air Dome Structural Layout | 1d | 2026-06-13 A | 2026-06-13 A | MLTX-02-004-EN-8870 | 100% |  |  | Draftsman [12.71 h]; Consultant Staff [3.39 h] | EN.MB.SD.AR.PR.1110 | MOD-02-EN-3550 | -100 | -38 | -100 | PL | Engi | UDF_G1 |
| MLTX-02-004-EN-12010 |  | Shop DWG Approval for Membrane Panel Layout | 1d | 2026-06-13 A | 2026-06-13 A | MLTX-02-004-EN-8880 | 100% |  |  | Draftsman [12.71 h]; Consultant Staff [3.39 h] | EN.MB.SD.AR.PR.1140 | MOD-02-EN-3560 | -100 | -38 | -100 | PL | Engi | UDF_G1 |
| MLTX-02-004-EN-12020 |  | Shop DWG Approval for Cable Tension Layout | 1d | 2026-06-13 A | 2026-06-13 A | MLTX-02-004-EN-12010 SS, MLTX-02-004-EN-8890 | 100% |  |  | Draftsman [12.71 h]; Consultant Staff [3.39 h] | EN.MB.SD.AR.PR.1150 | MOD-02-EN-3570 | -100 | -38 | -100 | PL | Engi | UDF_G1 |
| MLTX-02-004-EN-12030 |  | Shop DWG Approval for Airlock Door Details | 1d | 2026-06-13 A | 2026-06-13 A | MLTX-02-004-EN-8900 | 100% |  |  | Draftsman [12.71 h]; Consultant Staff [3.39 h] | EN.MB.SD.AR.PR.1140 | MOD-02-EN-3580 | -100 | -38 | -100 | PL | Engi | UDF_G1 |
| MLTX-02-004-EN-12040 |  | Shop DWG Approval for Emergency Exit Details | 1d | 2026-06-13 A | 2026-06-13 A | MLTX-02-004-EN-8910 | 100% |  |  | Draftsman [12.71 h]; Consultant Staff [3.39 h] | EN.MB.SD.AR.PR.1140 | MOD-02-EN-3590 | -100 | -38 | -100 | PL | Engi | UDF_G1 |
|  | 6 | **SPORTS EQUIPMENT** |  | 2026-06-18 | 2026-06-18 |  |  |  |  |  |  |  |  |  |  |  |  |  |
| MLTX-02-004-EN-12070 |  | Shop DWG Approval for Football Turf Installation | 1d | 2026-06-18 A | 2026-06-18 A | MLTX-02-004-EN-8940 | 100% |  |  | Draftsman [12.71 h]; Consultant Staff [3.39 h] | EN.MB.SD.EL.PR.2170 | MOD-02-EN-3610 | -100 | -38 | -100 | PL | Engi | UDF_G1 |
| MLTX-02-004-EN-12080 |  | Shop DWG Approval for Basketball Court Marking | 1d | 2026-06-18 A | 2026-06-18 A | MLTX-02-004-EN-8950 | 100% |  |  | Draftsman [12.71 h]; Consultant Staff [3.39 h] | EN.MB.SD.EL.PR.2180 | MOD-02-EN-3620 | -100 | -38 | -100 | PL | Engi | UDF_G1 |
| MLTX-02-004-EN-12090 |  | Shop DWG Approval for Padel Court Structure | 1d | 2026-06-18 A | 2026-06-18 A | MLTX-02-004-EN-8960 | 100% |  |  | Draftsman [12.71 h]; Consultant Staff [3.39 h] | EN.MB.SD.EL.PR.2160 | MOD-02-EN-3630 | -100 | -38 | -100 | PL | Engi | UDF_G1 |
|  | 1 | **MECHANCAL WORKS** |  | 2026-05-07 | 2026-05-07 |  |  |  |  |  |  |  |  |  |  |  |  |  |
| MLTX-02-004-EN-11880 |  | Shop DWG Approval for HVAC Plan | 1d | 2026-05-07 A | 2026-05-07 A | MLTX-02-004-EN-8760 | 100% |  |  | Draftsman [12.71 h]; Consultant Staff [3.39 h] | EN.MB.SD.MC.PR.1740 | MOD-02-EN-3650 | 0 | -10 | 0 | PL | Engi |  |
| MLTX-02-004-EN-11890 |  | Shop DWG Approval for Exhaust Air Plan | 1d | 2026-05-07 A | 2026-05-07 A | MLTX-02-004-EN-8770 | 100% |  |  | Draftsman [12.71 h]; Consultant Staff [3.39 h] | EN.MB.SD.MC.PR.1750 | MOD-02-EN-3660 | 0 | -10 | 0 | PL | Engi |  |

| ID | WBS | Activity | Duration | Start | Finish | Predecessors | Complete | Planned start | Planned finish | Resources | New Activity Code | New Activity ID | % Variance | Delay | On Schedule | Shop Drawings | WBS-Project | Flag | Old Activity ID - MK |
| --- | --- | --- | --- | --- | --- | --- | --- | --- | --- | --- | --- | --- | --- | --- | --- | --- | --- | --- | --- |
|  | 2 | **ELECTRICAL WORKS** |  | 2026-04-15 | 2026-08-26 |  |  |  |  |  |  |  |  |  |  |  |  |  |  |
| MLTX-02-004-EN-11800 |  | Shop DWG Approval for Lighting Layout | 10d | 2026-04-15 A | 2026-04-26 A | MLTX-02-004-EN-8650 | 100% |  |  | Draftsman [12.71 h]; Consultant Staff [3.39 h] | EN.MB.SD.EL.PR.1980 | MOD-02-EN-3680 | 0 | 0 | 0 | PL | Engi |  |  |
| MLTX-02-004-EN-11810 |  | Shop DWG Approval for Power Layout | 10d | 2026-04-15 A | 2026-04-26 A | MLTX-02-004-MS-1010 SS | 100% |  |  | Draftsman [12.71 h]; Consultant Staff [3.39 h] | EN.MB.SD.EL.PR.2000 | MOD-02-EN-3690 | 0 | 0 | 0 | PL | Engi |  |  |
| MLTX-02-004-EN-11840 |  | Shop DWG Approval for Power Installation Details | 10d | 2026-04-15 A | 2026-04-26 A | MLTX-02-004-MS-1010 SS | 100% |  |  | Draftsman [12.71 h]; Consultant Staff [3.39 h] | EN.MB.SD.EL.PR.2050 | MOD-02-EN-3700 | 0 | 0 | 0 | PL | Engi |  |  |
| MLTX-02-004-EN-11820 |  | Shop DWG Approval for Power Single Line Diagram | 10d | 2026-07-08 A | 2026-07-08 A | MLTX-02-004-EN-8670 | 100% | 2026-07-08 | 2026-07-19 | Draftsman [12.71 h]; Consultant Staff [3.39 h] | EN.MB.SD.EL.PR.2020 | MOD-02-EN-3730 | -100 | -31 | -100 | PL | Engi | UDF_G1 |  |
| MLTX-02-004-EN-11830 |  | Shop DWG Approval for Panel Board Schedules | 10d | 2026-07-08 A | 2026-07-08 A | MLTX-02-004-EN-8680 | 100% | 2026-07-08 | 2026-07-19 | Draftsman [12.71 h]; Consultant Staff [3.39 h] | EN.MB.SD.EL.PR.2030 | MOD-02-EN-3740 | -100 | -31 | -100 | PL | Engi | UDF_G1 |  |
| MLTX-02-004-EN-11850 |  | Shop DWG Approval for CCTV Details | 10d | 2026-08-26 A | 2026-08-26 A | MLTX-02-004-EN-8710 | 100% | 2026-09-07 | 2026-09-17 | Draftsman [12.71 h]; Consultant Staff [3.39 h] | EN.MB.SD.EL.PR.2140 | MOD-02-EN-3760 | -100 | -31 | -100 | PL | Engi | UDF_G1 |  |
| MLTX-02-004-EN-11860 |  | Shop DWG Approval for CCTV Layout | 10d | 2026-08-26 A | 2026-08-26 A | MLTX-02-004-EN-8740 | 100% | 2026-09-07 | 2026-09-17 | Draftsman [12.71 h]; Consultant Staff [3.39 h] | EN.MB.SD.EL.PR.2150 | MOD-02-EN-3770 | -100 | -31 | -100 | PL | Engi | UDF_G1 |  |
| MLTX-02-004-EN-11870 |  | Shop DWG Approval for CCTV Riser Diagram | 10d | 2026-08-26 A | 2026-08-26 A | MLTX-02-004-EN-8750 | 100% | 2026-09-07 | 2026-09-17 | Draftsman [12.71 h]; Consultant Staff [3.39 h] | EN.MB.SD.EL.PR.2180 | MOD-02-EN-3780 | -100 | -31 | -100 | PL | Engi | UDF_G1 |  |
|  | EAR | **SHOP DRAWINGS APPROVAL FOR LANDSCAPE WORKS** |  | 2026-04-11 | 2026-07-18 |  |  |  |  |  |  |  |  |  |  |  |  |  |  |
|  | 3 | **ARCHITECTURE WORKS** |  | 2026-04-17 | 2026-05-23 |  |  |  |  |  |  |  |  |  |  |  |  |  |  |
| MLTX-02-004-EN-11740 |  | Shop DWG Approval for Landscape Layout | 6d | 2026-04-17 A | 2026-04-24 A | MLTX-02-004-EN-8590 | 100% | 2026-04-18 | 2026-04-23 | Draftsman [12.71 h]; Consultant Staff [3.39 h] |  | MOD-02-EN-3810 | 0 | -5 | 0 | LS | Engi |  | MAK-01-EN-1120 |
| MLTX-02-004-EN-11750 |  | Shop DWG Approval for Hardscape Plan | 1d | 2026-05-23 A | 2026-05-23 A | MLTX-02-004-EN-8600 | 100% |  |  | Draftsman [12.71 h]; Consultant Staff [3.39 h] |  | MOD-02-EN-3820 | -100 | -38 | -100 | LS | Engi | UDF_G1 | MAK-01-EN-1130 |
| MLTX-02-004-EN-11760 |  | Shop DWG Approval for Planting Plan | 1d | 2026-05-23 A | 2026-05-23 A | MLTX-02-004-EN-8610 | 100% |  |  | Draftsman [12.71 h]; Consultant Staff [3.39 h] |  | MOD-02-EN-3830 | -100 | -38 | -100 | LS | Engi | UDF_G1 | MAK-01-EN-1140 |
| MLTX-02-004-EN-11770 |  | Shop DWG Approval for Landscape Details | 1d | 2026-05-23 A | 2026-05-23 A | MLTX-02-004-EN-8620 | 100% |  |  | Draftsman [12.71 h]; Consultant Staff [3.39 h] |  | MOD-02-EN-3840 | -100 | -38 | -100 | LS | Engi | UDF_G1 | MAK-01-EN-1150 |
|  | 1 | **MECHANCAL WORKS** |  | 2026-07-18 | 2026-07-18 |  |  |  |  |  |  |  |  |  |  |  |  |  |  |
| MLTX-02-004-EN-11780 |  | Shop DWG Approval for Irrigation Details | 10d | 2026-07-18 A | 2026-07-18 A | MLTX-02-004-EN-8630 | 100% | 2026-07-18 | 2026-07-28 | Draftsman [12.71 h]; Consultant Staff [3.39 h] |  | MOD-02-EN-3880 | -100 | -38 | -100 | LS | Engi | UDF_G1 | MAK-01-EN-1140 |
| MLTX-02-004-EN-11790 |  | Shop DWG Approval for Irrigation Layout | 10d | 2026-07-18 A | 2026-07-18 A | MLTX-02-004-EN-8640 | 100% | 2026-07-18 | 2026-07-28 | Draftsman [12.71 h]; Consultant Staff [3.39 h] |  | MOD-02-EN-3920 | -100 | -38 | -100 | LS | Engi | UDF_G1 | MAK-01-EN-1140 |
|  | 2 | **ELECTRICAL WORKS** |  | 2026-04-11 | 2026-05-23 |  |  |  |  |  |  |  |  |  |  |  |  |  |  |
| MLTX-02-004-EN-11320 |  | Shop DWG Approval for Lighting General Arrangement | 10d | 2026-04-11 A | 2026-04-21 A | MLTX-02-004-EN-7890 | 100% |  |  | Draftsman [12.71 h]; Consultant Staff [3.39 h] |  | MOD-02-EN-3970 | 0 | 0 | 0 | LS | Engi |  | MAK-01-EN-1120 |
| MLTX-02-004-EN-11330 |  | Shop DWG Approval for Lighting Network Layout | 10d | 2026-04-11 A | 2026-04-21 A | MLTX-02-004-EN-7900 | 100% |  |  | Draftsman [12.71 h]; Consultant Staff [3.39 h] |  | MOD-02-EN-3980 | 0 | 0 | 0 | LS | Engi |  | MAK-01-EN-1130 |
| MLTX-02-004-EN-11340 |  | Shop DWG Approval for Lighting Details | 10d | 2026-04-11 A | 2026-04-21 A | MLTX-02-004-EN-7910 | 100% |  |  | Draftsman [12.71 h]; Consultant Staff [3.39 h] |  | MOD-02-EN-3950 | 0 | 0 | 0 | LS | Engi |  | MAK-01-EN-1140 |
| MLTX-02-004-EN-11350 |  | Shop DWG Approval for Lighting Single Line Diagram | 1d | 2026-05-23 A | 2026-05-23 A | MLTX-02-004-EN-7920 | 100% |  |  | Draftsman [12.71 h]; Consultant Staff [3.39 h] |  | MOD-02-EN-3960 | -100 | -38 | -100 | LS | Engi | UDF_G1 | MAK-01-EN-1150 |
|  | MTS | **METHOD STATEMENTS** |  | 2026-03-31 | 2026-12-05 |  |  |  |  |  |  |  |  |  |  |  |  |  |  |
|  | 1 | **METHOD STATEMENT SUBMITTAL** |  | 2026-03-31 | 2026-11-21 |  |  |  |  |  |  |  |  |  |  |  |  |  |  |
|  | 4 | **CIVIL WORKS** |  | 2026-03-31 | 2026-05-21 |  |  |  |  |  |  |  |  |  |  |  |  |  |  |
| MLTX-02-004-EN-7930 |  | Preparation & Submission of Method Statement for Earthwork | 17d | 2026-03-31 A | 2026-04-19 A | MLTX-02-004-MB-1770 | 100% |  |  | QA/QC Engineer [16.1 h] |  | MOD-02-EN-4020 | 0 | -11 | 0 |  | Engi |  | A1010 |
| MLTX-02-004-EN-7950 |  | Preparation & Submission of Method Statement for Waterproofing | 22d | 2026-03-31 A | 2026-04-25 A | MLTX-02-004-MB-1770 | 100% |  |  | QA/QC Engineer [16.1 h] |  | MOD-02-EN-4040 | 0 | -16 | 0 |  | Engi |  |  |
| MLTX-02-004-EN-7940 |  | Preparation & Submission of Method Statement for Concrete Works | 1d | 2026-05-21 A | 2026-05-21 A | MLTX-02-004-MB-1770 | 100% |  |  | QA/QC Engineer [16.1 h] |  | MOD-02-EN-4030 | -100 | -38 | -100 |  | Engi | UDF_G1 | A1020 |

| ID | WBS | Activity | Duration | Start | Finish | Predecessors | Complete | Planned start | Planned finish | Resources | New Activity ID | % Variance | Delay | Flag | On Schedule | WBS-Project | Old Activity ID - MK |
| --- | --- | --- | --- | --- | --- | --- | --- | --- | --- | --- | --- | --- | --- | --- | --- | --- | --- |
|  | 1 | **ARCHITECTURE WORKS** |  | 2026-05-31 | 2026-11-21 |  |  |  |  |  |  |  |  |  |  |  |  |
| MLTX-02-004-EN-8030 |  | Preparation & Submission of Method Statement for Interlock/Curbstone Works | 1d | 2026-05-31 A | 2026-05-31 A | MLTX-02-004-MB-1770 | 100% |  |  | QA/QC Engineer [16.1 h] | MOD-02-EN-4110 | -100 | -38 | UDF_G1 | -100 | Engi |  |
| MLTX-02-004-EN-8040 |  | Preparation & Submission of Method Statement for Parking Works | 1d | 2026-05-31 A | 2026-05-31 A | MLTX-02-004-MB-1770 | 100% |  |  | QA/QC Engineer [16.1 h] | MOD-02-EN-4120 | -100 | -38 | UDF_G1 | -100 | Engi |  |
| MLTX-02-004-EN-8000 |  | Preparation & Submission of Method Statement for Tilling Works | 1d | 2026-06-06 A | 2026-06-06 A | MLTX-02-004-MB-1770 | 100% |  |  | QA/QC Engineer [16.1 h] | MOD-02-EN-4080 | -100 | -38 | UDF_G1 | -100 | Engi |  |
| MLTX-02-004-EN-8020 |  | Preparation & Submission of Method Statement for Doors/Windows Works | 1d | 2026-06-06 A | 2026-06-06 A | MLTX-02-004-MB-1770 | 100% |  |  | QA/QC Engineer [16.1 h] | MOD-02-EN-4100 | -100 | -38 | UDF_G1 | -100 | Engi | A1020 |
| MLTX-02-004-EN-8100 |  | Preparation & Submission of Method Statement for Gypsum Board Works | 1d | 2026-06-13 A | 2026-06-13 A | MLTX-02-004-MB-1770 | 100% |  |  | QA/QC Engineer [16.1 h] | MOD-02-EN-4180 | -100 | -38 | UDF_G1 | -100 | Engi |  |
| MLTX-02-004-EN-7980 |  | Preparation & Submission of Method Statement for Plastering Works | 1d | 2026-06-16 A | 2026-06-16 A | MLTX-02-004-MB-1770 | 100% |  |  | QA/QC Engineer [16.1 h] | MOD-02-EN-4060 | -100 | -38 | UDF_G1 | -100 | Engi | A1010 |
| MLTX-02-004-EN-7990 |  | Preparation & Submission of Method Statement for Masonary Works | 1d | 2026-06-16 A | 2026-06-16 A | MLTX-02-004-MB-1770 | 100% |  |  | QA/QC Engineer [16.1 h] | MOD-02-EN-4070 | -100 | -38 | UDF_G1 | -100 | Engi | A1020 |
| MLTX-02-004-EN-8010 |  | Preparation & Submission of Method Statement for Seats/Benches Works | 1d | 2026-06-18 A | 2026-06-18 A | MLTX-02-004-MB-1770 | 100% |  |  | QA/QC Engineer [16.1 h] | MOD-02-EN-4090 | -100 | -38 | UDF_G1 | -100 | Engi | A1010 |
| MLTX-02-004-EN-8050 |  | Preparation & Submission of Method Statement for Soft Scape Works | 5d | 2026-07-11 A | 2026-07-11 A | MLTX-02-004-MB-1770 | 100% | 2026-07-11 | 2026-07-15 | QA/QC Engineer [16.1 h] | MOD-02-EN-4130 | -100 | -38 | UDF_G1 | -100 | Engi |  |
| MLTX-02-004-EN-8080 |  | Preparation & Submission of Method Statement for Metal Works | 6d | 2026-07-11 A | 2026-07-11 A | MLTX-02-004-MB-1770 | 100% | 2026-07-11 | 2026-07-16 | QA/QC Engineer [16.1 h] | MOD-02-EN-4160 | -100 | -38 | UDF_G1 | -100 | Engi |  |
| MLTX-02-004-EN-8090 |  | Preparation & Submission of Method Statement for Partitions Works | 5d | 2026-07-15 A | 2026-07-15 A | MLTX-02-004-MB-1770 | 100% | 2026-07-15 | 2026-07-20 | QA/QC Engineer [16.1 h] | MOD-02-EN-4170 | -100 | -38 | UDF_G1 | -100 | Engi |  |
| MLTX-02-004-EN-8070 |  | Preparation & Submission of Method Statement for Air Dome Works | 5d | 2026-08-17 A | 2026-08-17 A | MLTX-02-004-MB-1770 | 100% | 2026-09-29 | 2026-10-04 | QA/QC Engineer [16.1 h] | MOD-02-EN-4150 | -100 | -38 | UDF_G1 | -100 | Engi |  |
| MLTX-02-004-EN-8060 |  | Preparation & Submission of Method Statement for Fence Works | 5d | 2026-11-19 A | 2026-11-21 A | MLTX-02-004-MB-1770 | 100% | 2026-11-23 | 2026-11-28 | QA/QC Engineer [16.1 h] | MOD-02-EN-4140 | -100 | -38 | UDF_G1 | -100 | Engi |  |
|  | 2 | **MECHANICAL WORKS** |  | 2026-04-07 | 2026-06-04 |  |  |  |  |  |  |  |  |  |  |  |  |
| MLTX-02-004-EN-8130 |  | Preparation & Submission of Method Statement for Fire Fighting System | 6d | 2026-04-07 A | 2026-04-14 A | MLTX-02-004-EN-7950 | 100% | 2026-04-07 | 2026-04-13 | QA/QC Engineer [16.1 h] | MOD-02-EN-4220 | 0 | 0 |  | 0 | Engi |  |
| MLTX-02-004-EN-8110 |  | Preparation & Submission of Method Statement for Sewage/Drainage System | 1d | 2026-05-31 A | 2026-05-31 A | MLTX-02-004-EN-7930 | 100% |  |  | QA/QC Engineer [16.1 h] | MOD-02-EN-4200 | -100 | -32 | UDF_G1 | -100 | Engi | A1010 |
| MLTX-02-004-EN-8120 |  | Preparation & Submission of Method Statement for Water Supply System | 1d | 2026-06-04 A | 2026-06-04 A | MLTX-02-004-EN-7940 | 100% |  |  | QA/QC Engineer [16.1 h] | MOD-02-EN-4210 | -100 | -38 | UDF_G1 | -100 | Engi | A1020 |
| MLTX-02-004-EN-8140 |  | Preparation & Submission of Method Statement for Irrigation System | 0d | 2026-06-04 A | 2026-06-04 A | MLTX-02-004-EN-7980 | 100% |  |  | QA/QC Engineer | MOD-02-EN-4230 | -100 | -38 | UDF_G1 | -100 | Engi | A1010 |
| MLTX-02-004-EN-8150 |  | Preparation & Submission of Method Statement for HVAC System | 0d | 2026-06-04 A | 2026-06-04 A | MLTX-02-004-EN-7990 | 100% |  |  | QA/QC Engineer | MOD-02-EN-4240 | -100 | -38 | UDF_G1 | -100 | Engi | A1020 |
|  | 5 | **ELECTRICAL WORKS** |  | 2026-06-18 | 2026-08-12 |  |  |  |  |  |  |  |  |  |  |  |  |
| MLTX-02-004-EN-7960 |  | Preparation & Submission of Method Statement for Electrical Conduits/Pulling Works | 1d | 2026-06-18 A | 2026-06-18 A | MLTX-02-004-EN-8030 | 100% |  |  | QA/QC Engineer [16.1 h] | MOD-02-EN-4310 | -100 | -38 | UDF_G1 | -100 | Engi |  |
| MLTX-02-004-EN-7970 |  | Preparation & Submission of Method Statement for Lighting Poles Installation | 1d | 2026-06-18 A | 2026-06-18 A | MLTX-02-004-MS-1010 SS | 100% |  |  | QA/QC Engineer [16.1 h] | MOD-02-EN-4330 | -100 | -38 | UDF_G1 | -100 | Engi |  |
| MLTX-02-004-EN-8180 |  | Preparation & Submission of Method Statement for Lighting Works | 1d | 2026-06-18 A | 2026-06-18 A | MLTX-02-004-MS-1010 SS | 100% |  |  | QA/QC Engineer [16.1 h] | MOD-02-EN-4280 | -100 | -38 | UDF_G1 | -100 | Engi |  |
| MLTX-02-004-EN-8190 |  | Preparation & Submission of Method Statement for Earthing/Lightning Works | 1d | 2026-06-18 A | 2026-06-18 A | MLTX-02-004-MS-1010 SS | 100% |  |  | QA/QC Engineer [16.1 h] | MOD-02-EN-4290 | -100 | -38 | UDF_G1 | -100 | Engi |  |
| MLTX-02-004-EN-8160 |  | Preparation & Submission of Method Statement for Telecommunication & Data System | 7d | 2026-07-15 A | 2026-07-15 A | MLTX-02-004-EN-7970 | 100% | 2026-07-21 | 2026-07-28 | QA/QC Engineer [16.1 h] | MOD-02-EN-4260 | -100 | -38 | UDF_G1 | -100 | Engi |  |
| MLTX-02-004-EN-8170 |  | Preparation & Submission of Method Statement for CCTV System | 7d | 2026-07-22 A | 2026-07-22 A | MLTX-02-004-EN-8070 | 100% | 2026-07-28 | 2026-08-04 | QA/QC Engineer [16.1 h] | MOD-02-EN-4270 | -100 | -38 | UDF_G1 | -100 | Engi |  |
| MLTX-02-004-EN-8200 |  | Preparation & Submission of Method Statement for Panel Boards Works | 6d | 2026-08-12 A | 2026-08-12 A | MLTX-02-004-EN-8100 | 100% | 2026-08-18 | 2026-08-24 | QA/QC Engineer [16.1 h] | MOD-02-EN-4300 | -100 | -38 | UDF_G1 | -100 | Engi |  |

| ID | WBS | Activity | Duration | Start | Finish | Predecessors | Complete | Planned start | Planned finish | Total float | Free float | Resources | New Activity ID | Old Activity ID - MK | % Variance | Delay | Flag | On Schedule | WBS-Project |
| --- | --- | --- | --- | --- | --- | --- | --- | --- | --- | --- | --- | --- | --- | --- | --- | --- | --- | --- | --- |
|  | 2 | **METHOD STATEMENT APPROVAL** |  | 2026-04-15 | 2026-12-05 |  |  |  |  |  |  |  |  |  |  |  |  |  |  |
|  | 4 | **CIVIL WORKS** |  | 2026-05-31 | 2026-05-31 |  |  |  |  |  |  |  |  |  |  |  |  |  |  |
| MLTX-02-004-EN-10990 |  | Approval of Method Statement for Earthwork | 1d | 2026-05-31 A | 2026-05-31 A | MLTX-02-004-EN-7930 | 100% |  |  |  |  | Consultant Staff [16.1 h] | MOD-02-EN-4360 | A1010 | -100 | -32 | UDF_G1 | -100 | Engi |
| MLTX-02-004-EN-11000 |  | Approval of Method Statement for Concrete Works | 1d | 2026-05-31 A | 2026-05-31 A | MLTX-02-004-EN-7940 | 100% |  |  |  |  | Consultant Staff [16.1 h] | MOD-02-EN-4370 | A1020 | -100 | -38 | UDF_G1 | -100 | Engi |
| MLTX-02-004-EN-11010 |  | Approval of Method Statement for Waterproofing | 1d | 2026-05-31 A | 2026-05-31 A | MLTX-02-004-EN-7950 | 100% |  |  |  |  | Consultant Staff [16.1 h] | MOD-02-EN-4380 |  | -100 | -32 | UDF_G1 | -100 | Engi |
|  | 1 | **ARCHITECTURE WORKS** |  | 2026-05-31 | 2026-12-05 |  |  |  |  |  |  |  |  |  |  |  |  |  |  |
| MLTX-02-004-EN-11090 |  | Approval of Method Statement for Interlock/Curbstone Works | 1d | 2026-05-31 A | 2026-05-31 A | MLTX-02-004-EN-8030 | 100% |  |  |  |  | Consultant Staff [16.1 h] | MOD-02-EN-4450 |  | -100 | -38 | UDF_G1 | -100 | Engi |
| MLTX-02-004-EN-11100 |  | Approval of Method Statement for Parking Works | 1d | 2026-05-31 A | 2026-05-31 A | MLTX-02-004-EN-8040 | 100% |  |  |  |  | Consultant Staff [16.1 h] | MOD-02-EN-4460 |  | -100 | -38 | UDF_G1 | -100 | Engi |
| MLTX-02-004-EN-11060 |  | Approval of Method Statement for Tilling Works | 1d | 2026-06-06 A | 2026-06-06 A | MLTX-02-004-EN-8000 | 100% |  |  |  |  | Consultant Staff [16.1 h] | MOD-02-EN-4420 |  | -100 | -38 | UDF_G1 | -100 | Engi |
| MLTX-02-004-EN-11080 |  | Approval of Method Statement for Doors/Windows Works | 1d | 2026-06-06 A | 2026-06-06 A | MLTX-02-004-EN-8020 | 100% |  |  |  |  | Consultant Staff [16.1 h] | MOD-02-EN-4440 | A1020 | -100 | -38 | UDF_G1 | -100 | Engi |
| MLTX-02-004-EN-11040 |  | Approval of Method Statement for Plastering Works | 1d | 2026-06-18 A | 2026-06-18 A | MLTX-02-004-EN-7980 | 100% |  |  |  |  | Consultant Staff [16.1 h] | MOD-02-EN-4400 | A1010 | -100 | -38 | UDF_G1 | -100 | Engi |
| MLTX-02-004-EN-11050 |  | Approval of Method Statement for Masonary Works | 1d | 2026-06-18 A | 2026-06-18 A | MLTX-02-004-EN-7990 | 100% |  |  |  |  | Consultant Staff [16.1 h] | MOD-02-EN-4410 | A1020 | -100 | -38 | UDF_G1 | -100 | Engi |
| MLTX-02-004-EN-11150 |  | Approval of Method Statement for Gypsum Board Works | 1d | 2026-06-18 A | 2026-06-18 A | MLTX-02-004-EN-8100 | 100% |  |  |  |  | Consultant Staff [16.1 h] | MOD-02-EN-4520 |  | -100 | -38 | UDF_G1 | -100 | Engi |
| MLTX-02-004-EN-11070 |  | Approval of Method Statement for Seats/Benches Works | 5d | 2026-07-11 A | 2026-07-11 A | MLTX-02-004-EN-8010 | 100% | 2026-07-11 | 2026-07-15 |  |  | Consultant Staff [16.1 h] | MOD-02-EN-4430 | A1010 | -100 | -38 | UDF_G1 | -100 | Engi |
| MLTX-02-004-EN-11110 |  | Approval of Method Statement for Soft Scape Works | 10d | 2026-07-11 A | 2026-07-11 A | MLTX-02-004-EN-11070, MLTX-02-004-EN-8050 | 100% | 2026-07-11 | 2026-07-21 |  |  | Consultant Staff [16.1 h] | MOD-02-EN-4470 |  | -100 | -38 | UDF_G1 | -100 | Engi |
| MLTX-02-004-EN-11140 |  | Approval of Method Statement for Partitions Works | 10d | 2026-07-18 A | 2026-07-18 A | MLTX-02-004-EN-11020, MLTX-02-004-EN-8090 | 100% | 2026-07-18 | 2026-07-28 |  |  | Consultant Staff [16.1 h] | MOD-02-EN-4510 |  | -100 | -38 | UDF_G1 | -100 | Engi |
| MLTX-02-004-EN-11130 |  | Approval of Method Statement for Air Dome Works | 10d | 2026-08-27 A | 2026-08-27 A | MLTX-02-004-EN-8070 | 100% | 2026-10-05 | 2026-10-15 |  |  | Consultant Staff [16.1 h] | MOD-02-EN-4490 |  | -100 | -38 | UDF_G1 | -100 | Engi |
| MLTX-02-004-EN-11120 |  | Approval of Method Statement for Fence Works | 10d | 2026-11-24 | 2026-12-05 | MLTX-02-004-EN-8060 |  |  |  | 44d | 0d | Consultant Staff [16.1 h] | MOD-02-EN-4480 |  | -100 | -38 | UDF_G1 | -100 | Engi |
|  | 2 | **MECHANICAL WORKS** |  | 2026-04-15 | 2026-06-11 |  |  |  |  |  |  |  |  |  |  |  |  |  |  |
| MLTX-02-004-EN-11180 |  | Approval of Method Statement for Fire Fighting System | 10d | 2026-04-15 A | 2026-04-26 A | MLTX-02-004-EN-8130 | 100% |  |  |  |  | Consultant Staff [26.1 h] | MOD-02-EN-4560 |  | 0 | 0 |  | 0 | Engi |
| MLTX-02-004-EN-11160 |  | Approval of Method Statement for Sewage/Drainage System | 1d | 2026-06-11 A | 2026-06-11 A | MLTX-02-004-EN-8110 | 100% |  |  |  |  | Consultant Staff [26.1 h] | MOD-02-EN-4540 | A1010 | -100 | -32 | UDF_G1 | -100 | Engi |
| MLTX-02-004-EN-11170 |  | Approval of Method Statement for Water Supply System | 1d | 2026-06-11 A | 2026-06-11 A | MLTX-02-004-EN-8120 | 100% |  |  |  |  | Consultant Staff [26.1 h] | MOD-02-EN-4550 | A1020 | -100 | -38 | UDF_G1 | -100 | Engi |
| MLTX-02-004-EN-11190 |  | Approval of Method Statement for Irrigation System | 1d | 2026-06-11 A | 2026-06-11 A | MLTX-02-004-EN-8140 | 100% |  |  |  |  | Consultant Staff [26.1 h] | MOD-02-EN-4570 | A1010 | -100 | -38 | UDF_G1 | -100 | Engi |
| MLTX-02-004-EN-11200 |  | Approval of Method Statement for HVAC System | 1d | 2026-06-11 A | 2026-06-11 A | MLTX-02-004-EN-8150 | 100% |  |  |  |  | Consultant Staff [26.1 h] | MOD-02-EN-4580 | A1020 | -100 | -38 | UDF_G1 | -100 | Engi |

| ID | WBS | Activity | Duration | Start | Finish | Predecessors | Complete | Planned start | Planned finish | Resources | New Activity ID | % Variance | Delay | Flag | On Schedule | WBS-Project | Old Activity ID - MK |
| --- | --- | --- | --- | --- | --- | --- | --- | --- | --- | --- | --- | --- | --- | --- | --- | --- | --- |
|  | 5 | **ELECTRICAL WORKS** |  | 2026-07-11 | 2026-08-15 |  |  |  |  |  |  |  |  |  |  |  |  |
| MLTX-02-004-EN-11020 |  | Approval of Method Statement for Electrical Conduits/Pulling Works | 5d | 2026-07-11 A | 2026-07-11 A | MLTX-02-004-EN-7960 | 100% | 2026-07-11 | 2026-07-15 | Consultant Staff [26.1 h] | MOD-02-EN-4600 | -100 | -38 | UDF_G1 | -100 | Engi |  |
| MLTX-02-004-EN-11030 |  | Approval of Method Statement for Lighting Poles Installation | 10d | 2026-07-11 A | 2026-07-11 A | MLTX-02-004-EN-7970 | 100% | 2026-07-11 | 2026-07-21 | Consultant Staff [26.1 h] | MOD-02-EN-4620 | -100 | -38 | UDF_G1 | -100 | Engi |  |
| MLTX-02-004-EN-11230 |  | Approval of Method Statement for Lighting Works | 10d | 2026-07-11 A | 2026-07-11 A | MLTX-02-004-EN-8180 | 100% | 2026-07-11 | 2026-07-21 | Consultant Staff [26.1 h] | MOD-02-EN-4650 | -100 | -38 | UDF_G1 | -100 | Engi |  |
| MLTX-02-004-EN-11240 |  | Approval of Method Statement for Earthing/Lightning Works | 10d | 2026-07-11 A | 2026-07-11 A | MLTX-02-004-EN-8190 | 100% | 2026-07-11 | 2026-07-21 | Consultant Staff [36.1 h] | MOD-02-EN-4660 | -100 | -38 | UDF_G1 | -100 | Engi |  |
| MLTX-02-004-EN-11210 |  | Approval of Method Statement for Telecommunication & Data System | 10d | 2026-07-15 A | 2026-07-15 A | MLTX-02-004-EN-11650, MLTX-02-004-EN-11700, MLTX-02-004-EN-11710, MLTX-02-004-EN-11850, MLTX-02-004-EN-11860, MLTX-02-004-EN-11870, MLTX-02-004-EN-11650 FF, MLTX-02-004-EN-11700 FF, MLTX-02-004-EN-11710 FF, MLTX-02-004-EN-11850 FF, MLTX-02-004-EN-11860 FF, MLTX-02-004-EN-11870 FF, MLTX-02-004-EN-11820, MLTX-02-004-EN-11830, MLTX-02-004-EN-11780, MLTX-02-004-EN-11790, MLTX-02-004-EN-8670 FF, MLTX-02-004-EN-8630 FF, MLTX-02-004-EN-8640 FF, MLTX-02-004-EN-11820 FF, MLTX-02-004-EN-11830 FF, MLTX-02-004-EN-11780 FF, MLTX-02-004-EN-11790 FF, MLTX-02-004-EN-8160 | 100% | 2026-08-02 | 2026-08-12 | Consultant Staff [26.1 h] | MOD-02-EN-4630 | -100 | -38 | UDF_G1 | -100 | Engi |  |
| MLTX-02-004-EN-11220 |  | Approval of Method Statement for CCTV System | 10d | 2026-07-22 A | 2026-07-22 A | MLTX-02-004-EN-8170 | 100% | 2026-07-22 | 2026-08-02 | Consultant Staff [26.1 h] | MOD-02-EN-4640 | -100 | -38 | UDF_G1 | -100 | Engi |  |
| MLTX-02-004-EN-11250 |  | Approval of Method Statement for Panel Boards Works | 10d | 2026-08-15 A | 2026-08-15 A | MLTX-02-004-EN-8200 | 100% | 2026-08-25 | 2026-09-05 | Consultant Staff [31.1 h] | MOD-02-EN-4670 | -100 | -38 | UDF_G1 | -100 | Engi |  |
|  | PREQ | **PRE-QUALIFICATION & MATERIAL** |  | 2026-03-31 | 2026-08-24 |  |  |  |  |  |  |  |  |  |  |  |  |
|  | PRE | **PRE-QUALIFICATION** |  | 2026-03-31 | 2026-05-21 |  |  |  |  |  |  |  |  |  |  |  |  |
|  | TOI | **TOILET/SERVICE WORKS** |  | 2026-03-31 | 2026-04-20 |  |  |  |  |  |  |  |  |  |  |  |  |
|  | 1 | **STEEL REINFORCEMENT** |  | 2026-03-31 | 2026-04-13 |  |  |  |  |  |  |  |  |  |  |  |  |
| MLTX-02-004-EN-9990 |  | Pre-Qualification Submittal for Steel Reinforcement | 11d | 2026-03-31 A | 2026-04-12 A | MLTX-02-004-MB-1770 | 100% |  |  | QA/QC Engineer [16.1 h] | MOD-02-EN-4720 | 0 | -5 |  | 0 | Engi | MAK-01-PR-1000 |
| MLTX-02-004-EN-10110 |  | Pre-Qualification Approval for Steel Reinforcement | 2d | 2026-04-12 A | 2026-04-13 A | MLTX-02-004-EN-9990 | 100% |  |  | Consultant Staff [16.1 h] | MOD-02-EN-4730 | 0 | 1 |  | 0 | Engi | MAK-01-PR-1010 |
|  | 2 | **READY MIX CONCRETE** |  | 2026-03-31 | 2026-04-20 |  |  |  |  |  |  |  |  |  |  |  |  |
| MLTX-02-004-EN-10000 |  | Pre-Qualification Submittal for Ready Mixed Concrete | 14d | 2026-03-31 A | 2026-04-15 A | MLTX-02-004-MB-1770, MLTX-02-004-EN-9990 SS | 100% |  |  | QA/QC Engineer [16.1 h] | MOD-02-EN-4750 | 0 | -8 |  | 0 | Engi | MAK-01-PR-1040 |
| MLTX-02-004-EN-10010 |  | Pre-Qualification Approval of Ready Mixed Concrete | 5d | 2026-04-15 A | 2026-04-20 A | MLTX-02-004-EN-10000 | 100% |  |  | Consultant Staff [16.1 h] | MOD-02-EN-4760 | 0 | -5 |  | 0 | Engi | MAK-01-PR-1050 |
|  | 3 | **CONCRETE BLOCKS** |  | 2026-03-31 | 2026-04-20 |  |  |  |  |  |  |  |  |  |  |  |  |
| MLTX-02-004-EN-10210 |  | Pre-Qualification Submittal for Concrete Blocks | 14d | 2026-03-31 A | 2026-04-15 A | MLTX-02-004-MB-1770, MLTX-02-004-EN-10000 SS | 100% |  |  | QA/QC Engineer [16.1 h] | MOD-02-EN-4780 | 0 | -8 |  | 0 | Engi | MAK-01-PR-1000 |
| MLTX-02-004-EN-10220 |  | Pre-Qualification Approval for Concrete Blocks | 5d | 2026-04-15 A | 2026-04-20 A | MLTX-02-004-EN-10210 | 100% |  |  | Consultant Staff [16.1 h] | MOD-02-EN-4790 | 0 | -5 |  | 0 | Engi | MAK-01-PR-1010 |
|  | 4 | **WATER PROOFING** |  | 2026-03-31 | 2026-04-13 |  |  |  |  |  |  |  |  |  |  |  |  |
| MLTX-02-004-EN-10020 |  | Pre-Qualification Submittal for Water Proofing | 10d | 2026-03-31 A | 2026-04-11 A | MLTX-02-004-MB-1770, MLTX-02-004-EN-10210 SS | 100% |  |  | QA/QC Engineer [16.1 h] | MOD-02-EN-4810 | 0 | -4 |  | 0 | Engi | MAK-01-PR-1060 |
| MLTX-02-004-EN-10120 |  | Pre-Qualification Approval for Water Proofing | 3d | 2026-04-11 A | 2026-04-13 A | MLTX-02-004-EN-10020 | 100% |  |  | Consultant Staff [16.1 h] | MOD-02-EN-4820 | 0 | 3 |  | 0 | Engi | MAK-01-PR-1070 |
|  | 6 | **FLOOR/WALL TILES** |  | 2026-03-31 | 2026-04-12 |  |  |  |  |  |  |  |  |  |  |  |  |
| MLTX-02-004-EN-10230 |  | Pre-Qualification Submittal for Tilling Materials | 10d | 2026-03-31 A | 2026-04-11 A | MLTX-02-004-MB-1770, MLTX-02-004-EN-10020 SS | 100% |  |  | QA/QC Engineer [16.1 h] | MOD-02-EN-4840 | 0 | -4 |  | 0 | Engi | MAK-01-PR-1000 |
| MLTX-02-004-EN-10240 |  | Pre-Qualification Approval for Tailling Material | 2d | 2026-04-11 A | 2026-04-12 A | MLTX-02-004-EN-10230 | 100% |  |  | Consultant Staff [16.1 h] | MOD-02-EN-4850 | 0 | 2 |  | 0 | Engi | MAK-01-PR-1010 |

| ID | WBS | Activity | Duration | Start | Finish | Predecessors | Complete | Resources | New Activity ID | Old Activity ID - MK | % Variance | Delay | On Schedule | WBS-Project |
| --- | --- | --- | --- | --- | --- | --- | --- | --- | --- | --- | --- | --- | --- | --- |
|  | 7 | **SUSPENDED CEILING** |  | 2026-03-31 | 2026-04-13 |  |  |  |  |  |  |  |  |  |
| MLTX-02-004-EN-10250 |  | Pre-Qualification Submittal for Suspend Ceiling | 11d | 2026-03-31 A | 2026-04-12 A | MLTX-02-004-MB-1770, MLTX-02-004-EN-10230 SS | 100% | QA/QC Engineer [16.1 h] | MOD-02-EN-4870 | MAK-01-PR-1000 | 0 | -5 | 0 | Engi |
| MLTX-02-004-EN-10260 |  | Pre-Qualification Approval for Suspend Ceiling | 2d | 2026-04-12 A | 2026-04-13 A | MLTX-02-004-EN-10250 | 100% | Consultant Staff [16.1 h] | MOD-02-EN-4880 | MAK-01-PR-1010 | 0 | 1 | 0 | Engi |
|  | 8 | **DOORS/WINDOWS** |  | 2026-03-31 | 2026-04-12 |  |  |  |  |  |  |  |  |  |
| MLTX-02-004-EN-10270 |  | Pre-Qualification Submittal for Doors/Windows | 10d | 2026-03-31 A | 2026-04-11 A | MLTX-02-004-MB-1770, MLTX-02-004-EN-10250 SS | 100% | QA/QC Engineer [16.1 h] | MOD-02-EN-4900 | MAK-01-PR-1000 | 0 | -4 | 0 | Engi |
| MLTX-02-004-EN-10280 |  | Pre-Qualification Approval for Doors/Windows | 2d | 2026-04-11 A | 2026-04-12 A | MLTX-02-004-EN-10270 | 100% | Consultant Staff [16.1 h] | MOD-02-EN-4910 | MAK-01-PR-1010 | 0 | 2 | 0 | Engi |
|  | 9 | **FURNITURES** |  | 2026-03-31 | 2026-04-12 |  |  |  |  |  |  |  |  |  |
| MLTX-02-004-EN-10390 |  | Pre-Qualification Submittal for Furnitures | 10d | 2026-03-31 A | 2026-04-11 A | MLTX-02-004-MB-1770, MLTX-02-004-EN-10270 SS | 100% | QA/QC Engineer [16.1 h] | MOD-02-EN-4930 | MAK-01-PR-1000 | 0 | -4 | 0 | Engi |
| MLTX-02-004-EN-10400 |  | Pre-Qualification Approval for Furnitures | 2d | 2026-04-11 A | 2026-04-12 A | MLTX-02-004-EN-10390 | 100% | Consultant Staff [16.1 h] | MOD-02-EN-4940 | MAK-01-PR-1010 | 0 | 2 | 0 | Engi |
|  | 10 | **SANITARY FIXTURES** |  | 2026-03-31 | 2026-04-12 |  |  |  |  |  |  |  |  |  |
| MLTX-02-004-EN-10290 |  | Pre-Qualification Submittal for Sanitary Fixtures | 10d | 2026-03-31 A | 2026-04-11 A | MLTX-02-004-MB-1770, MLTX-02-004-EN-10390 SS | 100% | QA/QC Engineer [16.1 h] | MOD-02-EN-4960 | MAK-01-PR-1000 | 0 | -4 | 0 | Engi |
| MLTX-02-004-EN-10300 |  | Pre-Qualification Approval for Sanitary Fixtures | 2d | 2026-04-11 A | 2026-04-12 A | MLTX-02-004-EN-10290 | 100% | Consultant Staff [16.1 h] | MOD-02-EN-4970 | MAK-01-PR-1010 | 0 | 2 | 0 | Engi |
|  | 11 | **WATER SUPPLY PIPES** |  | 2026-03-31 | 2026-04-12 |  |  |  |  |  |  |  |  |  |
| MLTX-02-004-EN-10310 |  | Pre-Qualification Submittal for Water Supply Pipes | 10d | 2026-03-31 A | 2026-04-11 A | MLTX-02-004-MB-1770, MLTX-02-004-EN-10290 SS | 100% | QA/QC Engineer [16.1 h] | MOD-02-EN-4990 | MAK-01-PR-1000 | 0 | -4 | 0 | Engi |
| MLTX-02-004-EN-10320 |  | Pre-Qualification Approval for Water Supply Pipes | 2d | 2026-04-11 A | 2026-04-12 A | MLTX-02-004-EN-10310 | 100% | Consultant Staff [16.1 h] | MOD-02-EN-5000 | MAK-01-PR-1010 | 0 | 2 | 0 | Engi |
|  | 12 | **SEWAGE/DRAINAGE PIPES** |  | 2026-03-31 | 2026-04-12 |  |  |  |  |  |  |  |  |  |
| MLTX-02-004-EN-10330 |  | Pre-Qualification Submittal for Sewage/Drainage Pipes | 10d | 2026-03-31 A | 2026-04-11 A | MLTX-02-004-EN-10310 SS | 100% | QA/QC Engineer [16.1 h] | MOD-02-EN-5020 | MAK-01-PR-1000 | 0 | -4 | 0 | Engi |
| MLTX-02-004-EN-10340 |  | Pre-Qualification Approval for Sewage/Drainage Pipes | 2d | 2026-04-11 A | 2026-04-12 A | MLTX-02-004-EN-10330 | 100% | Consultant Staff [16.1 h] | MOD-02-EN-5030 | MAK-01-PR-1010 | 0 | 2 | 0 | Engi |
|  | 16 | **PACKAGE AC UNITS** |  | 2026-04-07 | 2026-04-15 |  |  |  |  |  |  |  |  |  |
| MLTX-02-004-EN-10420 |  | Pre-Qualification Submittal for Package AC Units | 6d | 2026-04-07 A | 2026-04-13 A | MLTX-02-004-EN-9990 | 100% | QA/QC Engineer [16.1 h] | MOD-02-EN-5050 | MAK-01-PR-1000 | 0 | -3 | 0 | Engi |
| MLTX-02-004-EN-10430 |  | Pre-Qualification Approval for Package AC Units | 5d | 2026-04-11 A | 2026-04-15 A | MLTX-02-004-EN-10420 | 100% | Consultant Staff [16.1 h] | MOD-02-EN-5060 | MAK-01-PR-1010 | 0 | 0 | 0 | Engi |
|  | 17 | **AIR DIFUSSERS/GRILLS** |  | 2026-04-07 | 2026-04-15 |  |  |  |  |  |  |  |  |  |
| MLTX-02-004-EN-10440 |  | Pre-Qualification Submittal for Air Diffusers/Grills | 6d | 2026-04-07 A | 2026-04-13 A | MLTX-02-004-EN-10000 | 100% | QA/QC Engineer [16.1 h] | MOD-02-EN-5080 | MAK-01-PR-1000 | 0 | -3 | 0 | Engi |
| MLTX-02-004-EN-10450 |  | Pre-Qualification Approval for Air Diffusers/Grills | 5d | 2026-04-11 A | 2026-04-15 A | MLTX-02-004-EN-10440 | 100% | Consultant Staff [16.1 h] | MOD-02-EN-5090 | MAK-01-PR-1010 | 0 | 0 | 0 | Engi |

| ID | WBS | Activity | Duration | Start | Finish | Predecessors | Complete | Resources | New Activity ID | Old Activity ID - MK | % Variance | Delay | On Schedule | WBS-Project |
| --- | --- | --- | --- | --- | --- | --- | --- | --- | --- | --- | --- | --- | --- | --- |
|  | 18 | **GALVANIZED DUCTS** |  | 2026-04-07 | 2026-04-15 |  |  |  |  |  |  |  |  |  |
| MLTX-02-004-EN-10460 |  | Pre-Qualification Submittal for Galvanized Ducts | 6d | 2026-04-07 A | 2026-04-13 A | MLTX-02-004-EN-10210 | 100% | QA/QC Engineer [16.1 h] | MOD-02-EN-5110 | MAK-01-PR-1000 | 0 | -3 | 0 | Engi |
| MLTX-02-004-EN-10470 |  | Pre-Qualification Approval for Galvanized Ducts | 5d | 2026-04-11 A | 2026-04-15 A | MLTX-02-004-EN-10460 | 100% | Consultant Staff [16.1 h] | MOD-02-EN-5120 | MAK-01-PR-1010 | 0 | 0 | 0 | Engi |
|  | 19 | **EXHAUST FANS** |  | 2026-04-07 | 2026-04-15 |  |  |  |  |  |  |  |  |  |
| MLTX-02-004-EN-10480 |  | Pre-Qualification Submittal for Exhaust Fans | 5d | 2026-04-07 A | 2026-04-12 A | MLTX-02-004-EN-10020 | 100% | QA/QC Engineer [16.1 h] | MOD-02-EN-5140 | MAK-01-PR-1000 | 0 | -2 | 0 | Engi |
| MLTX-02-004-EN-10490 |  | Pre-Qualification Approval for Exhaust Fans | 5d | 2026-04-11 A | 2026-04-15 A | MLTX-02-004-EN-10480 | 100% | Consultant Staff [16.1 h] | MOD-02-EN-5150 | MAK-01-PR-1010 | 0 | 0 | 0 | Engi |
|  | 13 | **LIGHTING FIXTURES** |  | 2026-04-07 | 2026-04-15 |  |  |  |  |  |  |  |  |  |
| MLTX-02-004-EN-10350 |  | Pre-Qualification Submittal for Lighting Fixtures | 3d | 2026-04-07 A | 2026-04-09 A | MLTX-02-004-EN-10230 | 100% | QA/QC Engineer [16.1 h] | MOD-02-EN-5170 | MAK-01-PR-1000 | 0 | 0 | 0 | Engi |
| MLTX-02-004-EN-10360 |  | Pre-Qualification Approval for Lighting Fixtures | 5d | 2026-04-11 A | 2026-04-15 A | MLTX-02-004-EN-10350 | 100% | Consultant Staff [16.1 h] | MOD-02-EN-5180 | MAK-01-PR-1010 | 0 | 0 | 0 | Engi |
|  | 14 | **SWITCHES/SOCKETS** |  | 2026-04-07 | 2026-04-15 |  |  |  |  |  |  |  |  |  |
| MLTX-02-004-EN-10370 |  | Pre-Qualification Submittal for Switches/Sockets | 3d | 2026-04-07 A | 2026-04-09 A | MLTX-02-004-EN-10250 | 100% | QA/QC Engineer [16.1 h] | MOD-02-EN-5200 | MAK-01-PR-1000 | 0 | 0 | 0 | Engi |
| MLTX-02-004-EN-10380 |  | Pre-Qualification Approval for Switches/Sockets | 5d | 2026-04-11 A | 2026-04-15 A | MLTX-02-004-EN-10370 | 100% | Consultant Staff [16.1 h] | MOD-02-EN-5210 | MAK-01-PR-1010 | 0 | 0 | 0 | Engi |
|  | 15 | **EARTHING SYSTEM** |  | 2026-04-07 | 2026-04-15 |  |  |  |  |  |  |  |  |  |
| MLTX-02-004-EN-10170 |  | Pre-Qualification Submittal for Earthing System | 3d | 2026-04-07 A | 2026-04-09 A | MLTX-02-004-EN-10270 | 100% | QA/QC Engineer [16.1 h] | MOD-02-EN-5230 | MAK-01-PR-1290 | 0 | 0 | 0 | Engi |
| MLTX-02-004-EN-10180 |  | Pre-Qualification Approval for Earthing System | 5d | 2026-04-11 A | 2026-04-15 A | MLTX-02-004-EN-10170 | 100% | Consultant Staff [16.1 h] | MOD-02-EN-5240 | MAK-01-PR-1300 | 0 | 0 | 0 | Engi |
|  | 5 | **DISTRIBUTION PANNELS** |  | 2026-04-07 | 2026-04-15 |  |  |  |  |  |  |  |  |  |
| MLTX-02-004-EN-10190 |  | Pre-Qualification Submittal for Distribution Panels | 3d | 2026-04-07 A | 2026-04-09 A | MLTX-02-004-EN-10390 | 100% | QA/QC Engineer [16.1 h] | MOD-02-EN-5260 | MAK-01-PR-LLI-1060 | 0 | 0 | 0 | Engi |
| MLTX-02-004-EN-10200 |  | Pre-Qualification Approval for Distribution Panels | 5d | 2026-04-11 A | 2026-04-15 A | MLTX-02-004-EN-10190 | 100% | Consultant Staff [16.1 h] | MOD-02-EN-5270 | MAK-01-PR-LLI-1070 | 0 | 0 | 0 | Engi |
|  | PLG | **PLAYGROUND WORKS** |  | 2026-03-31 | 2026-04-20 |  |  |  |  |  |  |  |  |  |
|  | 5 | **PVC MEMBRANE** |  | 2026-03-31 | 2026-04-15 |  |  |  |  |  |  |  |  |  |
| MLTX-02-004-EN-10580 |  | Pre-Qualification Submittal for PVC Membrane | 12d | 2026-03-31 A | 2026-04-13 A | MLTX-02-004-EN-10330 SS | 100% | QA/QC Engineer [16.1 h] | MOD-02-EN-5300 | MAK-01-PR-1120 | 0 | -6 | 0 | Engi |
| MLTX-02-004-EN-10590 |  | Pre-Qualification Approval for PVC Membrane | 3d | 2026-04-13 A | 2026-04-15 A | MLTX-02-004-EN-10580 | 100% | Consultant Staff [16.1 h] | MOD-02-EN-5310 | MAK-01-PR-1130 | 0 | -1 | 0 | Engi |
|  | 6 | **STEEL TENSION CABLES** |  | 2026-03-31 | 2026-04-15 |  |  |  |  |  |  |  |  |  |
| MLTX-02-004-EN-10600 |  | Pre-Qualification Submittal for Steel Tension Cables | 12d | 2026-03-31 A | 2026-04-13 A | MLTX-02-004-EN-10580 SS | 100% | QA/QC Engineer [16.1 h] | MOD-02-EN-5330 | MAK-01-PR-1120 | 0 | -6 | 0 | Engi |
| MLTX-02-004-EN-10900 |  | Pre-Qualification Approval for Steel Tension Cables | 3d | 2026-04-13 A | 2026-04-15 A | MLTX-02-004-EN-10600 | 100% | Consultant Staff [16.1 h] | MOD-02-EN-5340 | MAK-01-PR-1120 | 0 | -1 | 0 | Engi |

| ID | WBS | Activity | Duration | Start | Finish | Predecessors | Complete | Resources | New Activity ID | Old Activity ID - MK | % Variance | Delay | On Schedule | WBS-Project |
| --- | --- | --- | --- | --- | --- | --- | --- | --- | --- | --- | --- | --- | --- | --- |
|  | 7 | **EMERGENCY DOORS** |  | 2026-03-31 | 2026-04-15 |  |  |  |  |  |  |  |  |  |
| MLTX-02-004-EN-10610 |  | Pre-Qualification Submittal for Emergency Doors | 12d | 2026-03-31 A | 2026-04-13 A | MLTX-02-004-MB-1770 | 100% | QA/QC Engineer [16.1 h] | MOD-02-EN-5360 | MAK-01-PR-1120 | 0 | -9 | 0 | Engi |
| MLTX-02-004-EN-10910 |  | Pre-Qualification Approval for Emergency Doors | 3d | 2026-04-13 A | 2026-04-15 A | MLTX-02-004-EN-10610 | 100% | Consultant Staff [16.1 h] | MOD-02-EN-5370 | MAK-01-PR-1120 | 0 | -4 | 0 | Engi |
|  | 8 | **PRESSURE UNITS** |  | 2026-03-31 | 2026-04-15 |  |  |  |  |  |  |  |  |  |
| MLTX-02-004-EN-10620 |  | Pre-Qualification Submittal for Pressure Units | 12d | 2026-03-31 A | 2026-04-13 A | MLTX-02-004-MB-1770 | 100% | QA/QC Engineer [16.1 h] | MOD-02-EN-5390 | MAK-01-PR-1120 | 0 | -9 | 0 | Engi |
| MLTX-02-004-EN-10920 |  | Pre-Qualification Approval for Pressure Units | 3d | 2026-04-13 A | 2026-04-15 A | MLTX-02-004-EN-10620 | 100% | Consultant Staff [16.1 h] | MOD-02-EN-5400 | MAK-01-PR-1120 | 0 | -4 | 0 | Engi |
|  | 9 | **AIR LOCK DOORS** |  | 2026-03-31 | 2026-04-15 |  |  |  |  |  |  |  |  |  |
| MLTX-02-004-EN-10630 |  | Pre-Qualification Submittal for Lock Doors | 12d | 2026-03-31 A | 2026-04-13 A | MLTX-02-004-MB-1770 | 100% | QA/QC Engineer [16.1 h] | MOD-02-EN-5420 | MAK-01-PR-1120 | 0 | -9 | 0 | Engi |
| MLTX-02-004-EN-10930 |  | Pre-Qualification Approval for Lock Doors | 3d | 2026-04-13 A | 2026-04-15 A | MLTX-02-004-EN-10630 | 100% | Consultant Staff [16.1 h] | MOD-02-EN-5430 | MAK-01-PR-1120 | 0 | -4 | 0 | Engi |
|  | 15 | **ARTIFICIAL TURF** |  | 2026-03-31 | 2026-04-12 |  |  |  |  |  |  |  |  |  |
| MLTX-02-004-EN-10780 |  | Pre-Qualification Submittal for Artificial TURF | 10d | 2026-03-31 A | 2026-04-11 A | MLTX-02-004-MB-1770 | 100% | QA/QC Engineer [16.1 h] | MOD-02-EN-5450 | MAK-01-PR-1120 | 0 | -7 | 0 | Engi |
| MLTX-02-004-EN-10940 |  | Pre-Qualification Approval for Artificial TURF | 2d | 2026-04-11 A | 2026-04-12 A | MLTX-02-004-EN-10780 | 100% | Consultant Staff [16.1 h] | MOD-02-EN-5460 | MAK-01-PR-1120 | 0 | -1 | 0 | Engi |
|  | 20 | **RUBBER GRANULES** |  | 2026-03-31 | 2026-04-15 |  |  |  |  |  |  |  |  |  |
| MLTX-02-004-EN-10790 |  | Pre-Qualification Submittal for Rubber Granules | 12d | 2026-03-31 A | 2026-04-13 A | MLTX-02-004-MB-1770 | 100% | QA/QC Engineer [16.1 h] | MOD-02-EN-5480 | MAK-01-PR-1120 | 0 | -9 | 0 | Engi |
| MLTX-02-004-EN-10950 |  | Pre-Qualification Approval for Rubber Granules | 3d | 2026-04-13 A | 2026-04-15 A | MLTX-02-004-EN-10790 | 100% | Consultant Staff [16.1 h] | MOD-02-EN-5490 | MAK-01-PR-1120 | 0 | -4 | 0 | Engi |
|  | 21 | **PADEL GLASS** |  | 2026-03-31 | 2026-04-15 |  |  |  |  |  |  |  |  |  |
| MLTX-02-004-EN-10800 |  | Pre-Qualification Submittal for Padel Glass | 12d | 2026-03-31 A | 2026-04-13 A | MLTX-02-004-MB-1770 | 100% | QA/QC Engineer [16.1 h] | MOD-02-EN-5510 | MAK-01-PR-1120 | 0 | -9 | 0 | Engi |
| MLTX-02-004-EN-10960 |  | Pre-Qualification Approval for Padel Glass | 3d | 2026-04-13 A | 2026-04-15 A | MLTX-02-004-EN-10800 | 100% | Consultant Staff [16.1 h] | MOD-02-EN-5520 | MAK-01-PR-1120 | 0 | -4 | 0 | Engi |
|  | 22 | **PADEL WIRE MESH/STEEL SETS** |  | 2026-03-31 | 2026-04-15 |  |  |  |  |  |  |  |  |  |
| MLTX-02-004-EN-10810 |  | Pre-Qualification Submittal for Wire Mesh/Steel Sets | 12d | 2026-03-31 A | 2026-04-13 A | MLTX-02-004-MB-1770 | 100% | QA/QC Engineer [16.1 h] | MOD-02-EN-5540 | MAK-01-PR-1120 | 0 | -9 | 0 | Engi |
| MLTX-02-004-EN-10970 |  | Pre-Qualification Approval for Wire Mesh/Steel Sets | 3d | 2026-04-13 A | 2026-04-15 A | MLTX-02-004-EN-10810 | 100% | Consultant Staff [16.1 h] | MOD-02-EN-5550 | MAK-01-PR-1120 | 0 | -4 | 0 | Engi |
|  | 1 | **AGGREGATE BASE COURSE** |  | 2026-03-31 | 2026-04-20 |  |  |  |  |  |  |  |  |  |
| MLTX-02-004-EN-10030 |  | Pre-Qualification Submittal for Aggregate Base Course | 18d | 2026-03-31 A | 2026-04-20 A | MLTX-02-004-MB-1770 | 100% | QA/QC Engineer [16.1 h] | MOD-02-EN-5570 | MAK-01-PR-1090 | 0 | -15 | 0 | Engi |
| MLTX-02-004-EN-10040 |  | Pre-Qualification Approval for Aggregate Base Course | 3d | 2026-04-18 A | 2026-04-20 A | MLTX-02-004-EN-10030 | 100% | Consultant Staff [16.1 h] | MOD-02-EN-5580 | MAK-01-PR-1100 | 0 | -8 | 0 | Engi |

| ID | WBS | Activity | Duration | Start | Finish | Predecessors | Complete | Resources | New Activity ID | Old Activity ID - MK | % Variance | Delay | On Schedule | WBS-Project |
| --- | --- | --- | --- | --- | --- | --- | --- | --- | --- | --- | --- | --- | --- | --- |
|  | 16 | **PACKAGE AC UNITS** |  | 2026-04-04 | 2026-04-15 |  |  |  |  |  |  |  |  |  |
| MLTX-02-004-EN-10500 |  | Pre-Qualification Submittal for Package AC Units | 9d | 2026-04-04 A | 2026-04-13 A | MLTX-02-004-EN-10620 | 100% | QA/QC Engineer [16.1 h] | MOD-02-EN-5690 | MAK-01-PR-1000 | 0 | -6 | 0 | Engi |
| MLTX-02-004-EN-10510 |  | Pre-Qualification Approval for Package AC Units | 3d | 2026-04-13 A | 2026-04-15 A | MLTX-02-004-EN-10500 | 100% | Consultant Staff [16.1 h] | MOD-02-EN-5700 | MAK-01-PR-1010 | 0 | -3 | 0 | Engi |
|  | 17 | **AIR DIFUSSERS/GRILLS** |  | 2026-04-04 | 2026-04-15 |  |  |  |  |  |  |  |  |  |
| MLTX-02-004-EN-10520 |  | Pre-Qualification Submittal for Air Difussers/Grills | 9d | 2026-04-04 A | 2026-04-13 A | MLTX-02-004-EN-10630 | 100% | QA/QC Engineer [16.1 h] | MOD-02-EN-5720 | MAK-01-PR-1000 | 0 | -6 | 0 | Engi |
| MLTX-02-004-EN-10530 |  | Pre-Qualification Approval for Air Difussers/Grills | 3d | 2026-04-13 A | 2026-04-15 A | MLTX-02-004-EN-10520 | 100% | Consultant Staff [16.1 h] | MOD-02-EN-5730 | MAK-01-PR-1010 | 0 | -3 | 0 | Engi |
|  | 2 | **BITUMINOUS BASE & WEARING COURSE** |  | 2026-04-07 | 2026-04-14 |  |  |  |  |  |  |  |  |  |
| MLTX-02-004-EN-10050 |  | Pre-Qualification Submittal for Bituminous Base & Wearing Cource | 5d | 2026-04-07 A | 2026-04-12 A | MLTX-02-004-EN-10580 | 100% | QA/QC Engineer [16.1 h] | MOD-02-EN-5600 | MAK-01-PR-1120 | 0 | -2 | 0 | Engi |
| MLTX-02-004-EN-10060 |  | Pre-Qualification Approval for the Site | 3d | 2026-04-12 A | 2026-04-14 A | MLTX-02-004-EN-10050 | 100% | Consultant Staff [16.1 h] | MOD-02-EN-5610 | MAK-01-PR-1130 | 0 | 1 | 0 | Engi |
|  | 3 | **INTERLOCKING PAVING** |  | 2026-04-07 | 2026-04-20 |  |  |  |  |  |  |  |  |  |
| MLTX-02-004-EN-10070 |  | Pre-Qualification Submittal for Interlocking Block Pavers | 8d | 2026-04-07 A | 2026-04-15 A | MLTX-02-004-EN-10600 | 100% | QA/QC Engineer [16.1 h] | MOD-02-EN-5630 | MAK-01-PR-1170 | 0 | -5 | 0 | Engi |
| MLTX-02-004-EN-10130 |  | Pre-Qualification Approval for Interlocking Block Pavers | 5d | 2026-04-15 A | 2026-04-20 A | MLTX-02-004-EN-10070 | 100% | Consultant Staff [16.1 h] | MOD-02-EN-5640 | MAK-01-PR-1180 | 0 | -4 | 0 | Engi |
|  | 4 | **MARKING PAINT** |  | 2026-04-04 | 2026-04-12 |  |  |  |  |  |  |  |  |  |
| MLTX-02-004-EN-10410 |  | Pre-Qualification Submittal for Marking Paint | 8d | 2026-04-04 A | 2026-04-12 A | MLTX-02-004-EN-10610 | 100% | QA/QC Engineer [16.1 h] | MOD-02-EN-5660 | MAK-01-PR-1120 | 0 | -5 | 0 | Engi |
| MLTX-02-004-EN-10980 |  | Pre-Qualification Approval for Marking Paint | 1d | 2026-04-12 A | 2026-04-12 A | MLTX-02-004-EN-10410 | 100% | Consultant Staff [16.1 h] | MOD-02-EN-5670 | MAK-01-PR-1120 | 0 | 0 | 0 | Engi |
|  | 18 | **GALVANIZED DUCTS** |  | 2026-04-04 | 2026-04-15 |  |  |  |  |  |  |  |  |  |
| MLTX-02-004-EN-10540 |  | Pre-Qualification Submittal for Galvanized Duct | 9d | 2026-04-04 A | 2026-04-13 A | MLTX-02-004-EN-10520 SS | 100% | QA/QC Engineer [16.1 h] | MOD-02-EN-5750 | MAK-01-PR-1000 | 0 | -6 | 0 | Engi |
| MLTX-02-004-EN-10550 |  | Pre-Qualification Approval for Galvanized Duct | 3d | 2026-04-13 A | 2026-04-15 A | MLTX-02-004-EN-10540 | 100% | Consultant Staff [16.1 h] | MOD-02-EN-5760 | MAK-01-PR-1010 | 0 | -3 | 0 | Engi |
|  | 19 | **EXHAUST FANS** |  | 2026-04-04 | 2026-04-15 |  |  |  |  |  |  |  |  |  |
| MLTX-02-004-EN-10560 |  | Pre-Qualification Submittal for Exhaust Fans | 9d | 2026-04-04 A | 2026-04-13 A | MLTX-02-004-EN-10780 | 100% | QA/QC Engineer [16.1 h] | MOD-02-EN-5780 | MAK-01-PR-1000 | 0 | -6 | 0 | Engi |
| MLTX-02-004-EN-10570 |  | Pre-Qualification Approval for Exhaust Fans | 3d | 2026-04-13 A | 2026-04-15 A | MLTX-02-004-EN-10560 | 100% | Consultant Staff [16.1 h] | MOD-02-EN-5790 | MAK-01-PR-1010 | 0 | -3 | 0 | Engi |
|  | 10 | **DISTRIBUTION BOARDS** |  | 2026-04-04 | 2026-04-15 |  |  |  |  |  |  |  |  |  |
| MLTX-02-004-EN-10640 |  | Pre-Qualification Submittal for Distribution Boards | 9d | 2026-04-04 A | 2026-04-13 A | MLTX-02-004-EN-10630 | 100% | QA/QC Engineer [16.1 h] | MOD-02-EN-5810 | MAK-01-PR-1000 | 0 | -6 | 0 | Engi |
| MLTX-02-004-EN-10650 |  | Pre-Qualification Approval for Distribution Boards | 3d | 2026-04-13 A | 2026-04-15 A | MLTX-02-004-EN-10640 | 100% | Consultant Staff [16.1 h] | MOD-02-EN-5820 | MAK-01-PR-1010 | 0 | -3 | 0 | Engi |

| ID | WBS | Activity | Duration | Start | Finish | Predecessors | Complete | Resources | New Activity ID | Old Activity ID - MK | % Variance | Delay | On Schedule | WBS-Project | Flag |
| --- | --- | --- | --- | --- | --- | --- | --- | --- | --- | --- | --- | --- | --- | --- | --- |
|  | 11 | **POWER CABLES** |  | 2026-04-04 | 2026-04-15 |  |  |  |  |  |  |  |  |  |  |
| MLTX-02-004-EN-10660 |  | Pre-Qualification Submittal for Power Cables | 9d | 2026-04-04 A | 2026-04-13 A | MLTX-02-004-EN-10810 | 100% | QA/QC Engineer [16.1 h] | MOD-02-EN-5840 | MAK-01-PR-1000 | 0 | -6 | 0 | Engi |  |
| MLTX-02-004-EN-10670 |  | Pre-Qualification Approval for Power Cables | 3d | 2026-04-13 A | 2026-04-15 A | MLTX-02-004-EN-10660 | 100% | Consultant Staff [16.1 h] | MOD-02-EN-5850 | MAK-01-PR-1010 | 0 | -3 | 0 | Engi |  |
|  | 12 | **LIGHT FIXTURES** |  | 2026-04-04 | 2026-04-15 |  |  |  |  |  |  |  |  |  |  |
| MLTX-02-004-EN-10680 |  | Pre-Qualification Submittal for Light Fixtures | 9d | 2026-04-04 A | 2026-04-13 A | MLTX-02-004-EN-10790 | 100% | QA/QC Engineer [16.1 h] | MOD-02-EN-5870 | MAK-01-PR-1000 | 0 | -6 | 0 | Engi |  |
| MLTX-02-004-EN-10690 |  | Pre-Qualification Approval for Light Fixtures | 3d | 2026-04-13 A | 2026-04-15 A | MLTX-02-004-EN-10680 | 100% | Consultant Staff [16.1 h] | MOD-02-EN-5880 | MAK-01-PR-1010 | 0 | -3 | 0 | Engi |  |
|  | 13 | **CCTV MATERIALS** |  | 2026-04-04 | 2026-04-15 |  |  |  |  |  |  |  |  |  |  |
| MLTX-02-004-EN-10700 |  | Pre-Qualification Submittal for CCTV | 9d | 2026-04-04 A | 2026-04-13 A | MLTX-02-004-EN-10800 | 100% | QA/QC Engineer [16.1 h] | MOD-02-EN-5900 | MAK-01-PR-1000 | 0 | -6 | 0 | Engi |  |
| MLTX-02-004-EN-10710 |  | Pre-Qualification Approval for CCTV | 3d | 2026-04-13 A | 2026-04-15 A | MLTX-02-004-EN-10700 | 100% | Consultant Staff [16.1 h] | MOD-02-EN-5910 | MAK-01-PR-1010 | 0 | -3 | 0 | Engi |  |
|  | 14 | **POWER OUTLETS/SWITCHES** |  | 2026-04-04 | 2026-04-15 |  |  |  |  |  |  |  |  |  |  |
| MLTX-02-004-EN-10720 |  | Pre-Qualification Submittal for Power Outlets/Switches | 9d | 2026-04-04 A | 2026-04-13 A | MLTX-02-004-EN-10030 | 100% | QA/QC Engineer [16.1 h] | MOD-02-EN-5930 | MAK-01-PR-1000 | 0 | -6 | 0 | Engi |  |
| MLTX-02-004-EN-10730 |  | Pre-Qualification Approval for Power Outlets/Switches | 3d | 2026-04-13 A | 2026-04-15 A | MLTX-02-004-EN-10720 | 100% | Consultant Staff [16.1 h] | MOD-02-EN-5940 | MAK-01-PR-1010 | 0 | -3 | 0 | Engi |  |
|  | LSC | **LANDSCAPE WORKS** |  | 2026-04-04 | 2026-05-21 |  |  |  |  |  |  |  |  |  |  |
|  | 7 | **INTERLOCKING PAVING** |  | 2026-04-04 | 2026-04-20 |  |  |  |  |  |  |  |  |  |  |
| MLTX-02-004-EN-10760 |  | Pre-Qualification Submittal for Interlocking Block Pavers | 11d | 2026-04-04 A | 2026-04-15 A | MLTX-02-004-EN-10030 | 100% | QA/QC Engineer [16.1 h] | MOD-02-EN-5970 | MAK-01-PR-1170 | 0 | -8 | 0 | Engi |  |
| MLTX-02-004-EN-10770 |  | Pre-Qualification Approval for Interlocking Block Pavers | 5d | 2026-04-15 A | 2026-04-20 A | MLTX-02-004-EN-10760 | 100% | Consultant Staff [16.1 h] | MOD-02-EN-5980 | MAK-01-PR-1180 | 0 | -7 | 0 | Engi |  |
|  | 9 | **CURBSTONE** |  | 2026-04-04 | 2026-04-20 |  |  |  |  |  |  |  |  |  |  |
| MLTX-02-004-EN-10860 |  | Pre-Qualification Submittal for Curbstone | 11d | 2026-04-04 A | 2026-04-15 A | MLTX-02-004-EN-10030 | 100% | QA/QC Engineer [16.1 h] | MOD-02-EN-6000 | MAK-01-PR-1260 | 0 | -8 | 0 | Engi |  |
| MLTX-02-004-EN-10870 |  | Pre-Qualification Approval for Curbstone | 5d | 2026-04-15 A | 2026-04-20 A | MLTX-02-004-EN-10860 | 100% | Consultant Staff [16.1 h] | MOD-02-EN-6010 | MAK-01-PR-1270 | 0 | -7 | 0 | Engi |  |
|  | 1 | **PAVEMENT MARKING** |  | 2026-04-04 | 2026-04-12 |  |  |  |  |  |  |  |  |  |  |
| MLTX-02-004-EN-10080 |  | Pre-Qualification Submittal for Pavement Markings | 3d | 2026-04-04 A | 2026-04-06 A | MLTX-02-004-EN-10030 | 100% | QA/QC Engineer [16.1 h] | MOD-02-EN-6030 | MAK-01-PR-1200 | 0 | 0 | 0 | Engi |  |
| MLTX-02-004-EN-10140 |  | Pre-Qualification Approval for Pavement Markings | 5d | 2026-04-07 A | 2026-04-12 A | MLTX-02-004-EN-10080 | 100% | Consultant Staff [16.1 h] | MOD-02-EN-6040 | MAK-01-PR-1210 | 0 | 0 | 0 | Engi |  |
|  | 2 | **TRAFFIC SIGNS** |  | 2026-05-06 | 2026-05-21 |  |  |  |  |  |  |  |  |  |  |
| MLTX-02-004-EN-10090 |  | Pre-Qualification Submittal for Traffic Signs | 1d | 2026-05-06 A | 2026-05-06 A | MLTX-02-004-EN-10030 | 100% | QA/QC Engineer [16.1 h] | MOD-02-EN-6060 | MAK-01-PR-1230 | 0 | -26 | 0 | Engi |  |
| MLTX-02-004-EN-10100 |  | Pre-Qualification Approval for Traffic Signs | 1d | 2026-05-21 A | 2026-05-21 A | MLTX-02-004-EN-10090 | 100% | Consultant Staff [16.1 h] | MOD-02-EN-6070 | MAK-01-PR-1240 | -100 | -32 | -100 | Engi | UDF_G1 |

| ID | WBS | Activity | Duration | Start | Finish | Predecessors | Complete | Resources | New Activity ID | Old Activity ID - MK | % Variance | Delay | On Schedule | WBS-Project | Flag |
| --- | --- | --- | --- | --- | --- | --- | --- | --- | --- | --- | --- | --- | --- | --- | --- |
|  | 3 | **IRRIGATION PIPES/SPRINKLERS** |  | 2026-04-04 | 2026-05-21 |  |  |  |  |  |  |  |  |  |  |
| MLTX-02-004-EN-10150 |  | Pre-Qualification Submittal for Irrigation Pipes/Sprinkles | 20d | 2026-04-04 A | 2026-04-26 A | MLTX-02-004-EN-10030 | 100% | QA/QC Engineer [16.1 h] | MOD-02-EN-6090 | MAK-01-PR-1260 | 0 | -17 | 0 | Engi |  |
| MLTX-02-004-EN-10160 |  | Pre-Qualification Approval for Irrigation Pipes/Sprinkles | 1d | 2026-05-21 A | 2026-05-21 A | MLTX-02-004-EN-10150 | 100% | Consultant Staff [16.1 h] | MOD-02-EN-6100 | MAK-01-PR-1270 | -100 | -32 | -100 | Engi | UDF_G1 |
|  | 5 | **AGRICULTURE SOIL** |  | 2026-04-04 | 2026-05-21 |  |  |  |  |  |  |  |  |  |  |
| MLTX-02-004-EN-10820 |  | Pre-Qualification Submittal for Agriculture Soil | 20d | 2026-04-04 A | 2026-04-26 A | MLTX-02-004-EN-10030 | 100% | QA/QC Engineer [16.1 h] | MOD-02-EN-6120 | MAK-01-PR-1260 | 0 | -17 | 0 | Engi |  |
| MLTX-02-004-EN-10830 |  | Pre-Qualification Approval for Agriculture Soil | 1d | 2026-05-21 A | 2026-05-21 A | MLTX-02-004-EN-10820 | 100% | Consultant Staff [16.1 h] | MOD-02-EN-6130 | MAK-01-PR-1270 | -100 | -32 | -100 | Engi | UDF_G1 |
|  | 8 | **TRACK SURFACE** |  | 2026-04-04 | 2026-04-12 |  |  |  |  |  |  |  |  |  |  |
| MLTX-02-004-EN-10840 |  | Pre-Qualification Submittal for Track Surface | 3d | 2026-04-04 A | 2026-04-06 A | MLTX-02-004-EN-10030 | 100% | QA/QC Engineer [30 h] | MOD-02-EN-6150 | MAK-01-PR-1260 | 0 | 0 | 0 | Engi |  |
| MLTX-02-004-EN-10850 |  | Pre-Qualification Approval for Track Surface | 5d | 2026-04-07 A | 2026-04-12 A | MLTX-02-004-EN-10840 | 100% | Consultant Staff [30 h] | MOD-02-EN-6160 | MAK-01-PR-1270 | 0 | 0 | 0 | Engi |  |
|  | 10 | **GRASS/TREES** |  | 2026-04-04 | 2026-04-19 |  |  |  |  |  |  |  |  |  |  |
| MLTX-02-004-EN-10880 |  | Pre-Qualification Submittal for Grass/Trees | 10d | 2026-04-04 A | 2026-04-14 A | MLTX-02-004-EN-10030 | 100% | QA/QC Engineer [30 h] | MOD-02-EN-6180 | MAK-01-PR-1260 | 0 | -7 | 0 | Engi |  |
| MLTX-02-004-EN-10890 |  | Pre-Qualification Approval for Grass/Trees | 5d | 2026-04-14 A | 2026-04-19 A | MLTX-02-004-EN-10880 | 100% | Consultant Staff [30 h] | MOD-02-EN-6190 | MAK-01-PR-1270 | 0 | -6 | 0 | Engi |  |
|  | 6 | **CABLES** |  | 2026-05-06 | 2026-05-07 |  |  |  |  |  |  |  |  |  |  |
| MLTX-02-004-EN-10740 |  | Pre-Qualification Submittal for Cables | 1d | 2026-05-06 A | 2026-05-06 A | MLTX-02-004-EN-10030 | 100% | QA/QC Engineer [30 h] | MOD-02-EN-6210 | MAK-01-PR-1200 | 0 | -26 | 0 | Engi |  |
| MLTX-02-004-EN-10750 |  | Pre-Qualification Approval for Cables | 1d | 2026-05-07 A | 2026-05-07 A | MLTX-02-004-EN-10740 | 100% | Consultant Staff [30 h] | MOD-02-EN-6220 | MAK-01-PR-1210 | 0 | -22 | 0 | Engi |  |
|  | 4 | **LIGHT POLES** |  | 2026-05-06 | 2026-05-07 |  |  |  |  |  |  |  |  |  |  |
| MLTX-02-004-EN-9970 |  | Pre-Qualification Submittal for Lighting poles | 1d | 2026-05-06 A | 2026-05-06 A | MLTX-02-004-EN-10030 | 100% | QA/QC Engineer [30 h] | MOD-02-EN-6240 | MAK-01-PR-LLI-1120 | 0 | -26 | 0 | Engi |  |
| MLTX-02-004-EN-9980 |  | Pre-Qualification Approval for Lighting poles | 1d | 2026-05-07 A | 2026-05-07 A | MLTX-02-004-EN-9970 | 100% | Consultant Staff [26.8 h] | MOD-02-EN-6250 | MAK-01-PR-LLI-1130 | 0 | -22 | 0 | Engi |  |
|  | MAT | **MATERIAL SUBMITTAL** |  | 2026-04-07 | 2026-08-24 |  |  |  |  |  |  |  |  |  |  |
|  | TOI | **TOILET/SERVICE WORKS** |  | 2026-04-11 | 2026-07-22 |  |  |  |  |  |  |  |  |  |  |
|  | 1 | **STEEL REINFORCEMENT** |  | 2026-04-11 | 2026-04-12 |  |  |  |  |  |  |  |  |  |  |
| MLTX-02-004-EN-8990 |  | Material Submittal for Steel Reinforcement | 1d | 2026-04-11 A | 2026-04-11 A | MLTX-02-004-EN-10110 | 100% | QA/QC Engineer [16.1 h] | MOD-02-EN-6290 | MAK-01-PR-1000 | 0 | 6 | 0 | Engi |  |
| MLTX-02-004-EN-9100 |  | Material Approval for Steel Reinforcement | 2d | 2026-04-11 A | 2026-04-12 A | MLTX-02-004-EN-8990 | 100% | Consultant Staff [16.1 h] | MOD-02-EN-6300 | MAK-01-PR-1010 | 0 | 12 | 0 | Engi |  |
|  | 2 | **READY MIX CONCRETE** |  | 2026-04-15 | 2026-04-26 |  |  |  |  |  |  |  |  |  |  |
| MLTX-02-004-EN-9000 |  | Material Submittal for Ready Mixed Concrete | 3d | 2026-04-15 A | 2026-04-18 A | MLTX-02-004-EN-10010 | 100% | QA/QC Engineer [16.1 h] | MOD-02-EN-6320 | MAK-01-PR-1040 | 0 | 0 | 0 | Engi |  |
| MLTX-02-004-EN-9010 |  | Material Approval of Ready Mixed Concrete | 7d | 2026-04-19 A | 2026-04-26 A | MLTX-02-004-EN-9000 | 100% | Consultant Staff [16.1 h] | MOD-02-EN-6330 | MAK-01-PR-1050 | 0 | 0 | 0 | Engi |  |

| ID | WBS | Activity | Duration | Start | Finish | Predecessors | Complete | Planned start | Planned finish | Resources | New Activity ID | Old Activity ID - MK | % Variance | Delay | On Schedule | WBS-Project | Flag |
| --- | --- | --- | --- | --- | --- | --- | --- | --- | --- | --- | --- | --- | --- | --- | --- | --- | --- |
|  | 3 | **CONCRETE BLOCKS** |  | 2026-04-15 | 2026-04-26 |  |  |  |  |  |  |  |  |  |  |  |  |
| MLTX-02-004-EN-9190 |  | Material Submittal for Concrete Blocks | 3d | 2026-04-15 A | 2026-04-18 A | MLTX-02-004-EN-10220 | 100% |  |  | QA/QC Engineer [16.1 h] | MOD-02-EN-6350 | MAK-01-PR-1000 | 0 | 0 | 0 | Engi |  |
| MLTX-02-004-EN-9200 |  | Material Approval for Concrete Blocks | 7d | 2026-04-19 A | 2026-04-26 A | MLTX-02-004-EN-9190 | 100% |  |  | Consultant Staff [16.1 h] | MOD-02-EN-6360 | MAK-01-PR-1010 | 0 | 0 | 0 | Engi |  |
|  | 6 | **FLOOR/WALL TILES** |  | 2026-04-15 | 2026-07-22 |  |  |  |  |  |  |  |  |  |  |  |  |
| MLTX-02-004-EN-9210 |  | Material Submittal for Tilling Materials | 3d | 2026-04-15 A | 2026-04-18 A | MLTX-02-004-EN-10240 | 100% |  |  | QA/QC Engineer [16.1 h] | MOD-02-EN-6410 | MAK-01-PR-1000 | 0 | 0 | 0 | Engi |  |
| MLTX-02-004-EN-9220 |  | Material Approval for Tilling Material | 7d | 2026-07-22 A | 2026-07-22 A | MLTX-02-004-EN-9210 | 100% | 2026-07-22 | 2026-07-29 | Consultant Staff [16.1 h] | MOD-02-EN-6420 | MAK-01-PR-1010 | -100 | -22 | -100 | Engi | UDF_G1 |
|  | 7 | **SUSPENDED CEILING** |  | 2026-04-15 | 2026-04-20 |  |  |  |  |  |  |  |  |  |  |  |  |
| MLTX-02-004-EN-9230 |  | Material Submittal for Suspend Ceiling | 3d | 2026-04-15 A | 2026-04-18 A | MLTX-02-004-EN-10260 | 100% |  |  | QA/QC Engineer [16.1 h] | MOD-02-EN-6440 | MAK-01-PR-1000 | 0 | 0 | 0 | Engi |  |
| MLTX-02-004-EN-9240 |  | Material Approval for Suspend Ceiling | 2d | 2026-04-19 A | 2026-04-20 A | MLTX-02-004-EN-9230 | 100% |  |  | Consultant Staff [16.1 h] | MOD-02-EN-6450 | MAK-01-PR-1010 | 0 | 5 | 0 | Engi |  |
|  | 8 | **DOORS/WINDOWS** |  | 2026-05-06 | 2026-05-21 |  |  |  |  |  |  |  |  |  |  |  |  |
| MLTX-02-004-EN-9250 |  | Material Submittal for Doors/Windows | 1d | 2026-05-06 A | 2026-05-06 A | MLTX-02-004-EN-10280 | 100% |  |  | QA/QC Engineer [16.1 h] | MOD-02-EN-6470 | MAK-01-PR-1000 | 0 | -16 | 0 | Engi |  |
| MLTX-02-004-EN-9260 |  | Material Approval for Doors/Windows | 1d | 2026-05-21 A | 2026-05-21 A | MLTX-02-004-EN-9250 | 100% |  |  | Consultant Staff [16.1 h] | MOD-02-EN-6480 | MAK-01-PR-1010 | -100 | -22 | -100 | Engi | UDF_G1 |
|  | 9 | **FURNITURES** |  | 2026-05-06 | 2026-05-07 |  |  |  |  |  |  |  |  |  |  |  |  |
| MLTX-02-004-EN-9370 |  | Material Submittal for Furnitures | 1d | 2026-05-06 A | 2026-05-06 A | MLTX-02-004-EN-10400 | 100% |  |  | QA/QC Engineer [16.1 h] | MOD-02-EN-6500 | MAK-01-PR-1000 | 0 | -16 | 0 | Engi |  |
| MLTX-02-004-EN-9380 |  | Material Approval for Furnitures | 1d | 2026-05-07 A | 2026-05-07 A | MLTX-02-004-EN-9370 | 100% |  |  | Consultant Staff [16.1 h] | MOD-02-EN-6510 | MAK-01-PR-1010 | 0 | -10 | 0 | Engi |  |
|  | 10 | **SANITARY FIXTURES** |  | 2026-04-15 | 2026-04-30 |  |  |  |  |  |  |  |  |  |  |  |  |
| MLTX-02-004-EN-9270 |  | Material Submittal for Sanitary Fixtures | 6d | 2026-04-15 A | 2026-04-21 A | MLTX-02-004-EN-10300 | 100% |  |  | QA/QC Engineer [16.1 h] | MOD-02-EN-6530 | MAK-01-PR-1000 | 0 | -3 | 0 | Engi |  |
| MLTX-02-004-EN-9280 |  | Material Approval for Sanitary Fixtures | 11d | 2026-04-19 A | 2026-04-30 A | MLTX-02-004-EN-9270 | 100% |  |  | Consultant Staff [16.1 h] | MOD-02-EN-6540 | MAK-01-PR-1010 | 0 | -4 | 0 | Engi |  |
|  | 11 | **WATER SUPPLY PIPES** |  | 2026-04-15 | 2026-04-16 |  |  |  |  |  |  |  |  |  |  |  |  |
| MLTX-02-004-EN-9290 |  | Material Submittal for Water Supply Pipes | 1d | 2026-04-15 A | 2026-04-15 A | MLTX-02-004-EN-10320 | 100% |  |  | QA/QC Engineer [16.1 h] | MOD-02-EN-6560 | MAK-01-PR-1000 | 0 | 2 | 0 | Engi |  |
| MLTX-02-004-EN-9300 |  | Material Approval for Water Supply Pipes | 2d | 2026-04-15 A | 2026-04-16 A | MLTX-02-004-EN-9290 | 100% |  |  | Consultant Staff [16.1 h] | MOD-02-EN-6570 | MAK-01-PR-1010 | 0 | 8 | 0 | Engi |  |
|  | 12 | **SEWAGE/DRAINAGE PIPES** |  | 2026-04-15 | 2026-04-16 |  |  |  |  |  |  |  |  |  |  |  |  |
| MLTX-02-004-EN-9310 |  | Material Submittal for Sewage/Drainage Pipes | 1d | 2026-04-15 A | 2026-04-15 A | MLTX-02-004-EN-10340 | 100% |  |  | QA/QC Engineer [16.1 h] | MOD-02-EN-6590 | MAK-01-PR-1000 | 0 | 2 | 0 | Engi |  |
| MLTX-02-004-EN-9320 |  | Material Approval for Sewage/Drainage Pipes | 2d | 2026-04-15 A | 2026-04-16 A | MLTX-02-004-EN-9310 | 100% |  |  | Consultant Staff [16.1 h] | MOD-02-EN-6600 | MAK-01-PR-1010 | 0 | 8 | 0 | Engi |  |

| ID | WBS | Activity | Duration | Start | Finish | Predecessors | Complete | Planned start | Planned finish | Resources | New Activity ID | Old Activity ID - MK | % Variance | Delay | On Schedule | WBS-Project | Flag |
| --- | --- | --- | --- | --- | --- | --- | --- | --- | --- | --- | --- | --- | --- | --- | --- | --- | --- |
|  | 16 | **PACKAGE AC UNITS** |  | 2026-05-06 | 2026-05-07 |  |  |  |  |  |  |  |  |  |  |  |  |
| MLTX-02-004-EN-9400 |  | Material Submittal for Package AC Units | 1d | 2026-05-06 A | 2026-05-06 A | MLTX-02-004-EN-10430 | 100% |  |  | QA/QC Engineer [16.1 h] | MOD-02-EN-6620 | MAK-01-PR-1000 | 0 | -15 | 0 | Engi |  |
| MLTX-02-004-EN-9410 |  | Material Approval for Package AC Units | 1d | 2026-05-07 A | 2026-05-07 A | MLTX-02-004-EN-9400 | 100% |  |  | Consultant Staff [16.1 h] | MOD-02-EN-6630 | MAK-01-PR-1010 | 0 | -10 | 0 | Engi |  |
|  | 17 | **AIR DIFUSSERS/GRILLS** |  | 2026-04-16 | 2026-05-06 |  |  |  |  |  |  |  |  |  |  |  |  |
| MLTX-02-004-EN-9420 |  | Material Submittal for Air Diffusers/Grills | 6d | 2026-04-16 A | 2026-04-22 A | MLTX-02-004-EN-10450 | 100% |  |  | QA/QC Engineer [16.1 h] | MOD-02-EN-6650 | MAK-01-PR-1000 | 0 | -3 | 0 | Engi |  |
| MLTX-02-004-EN-9430 |  | Material Approval for Air Diffusers/Grills | 1d | 2026-05-06 A | 2026-05-06 A | MLTX-02-004-EN-9420 | 100% |  |  | Consultant Staff [16.1 h] | MOD-02-EN-6660 | MAK-01-PR-1010 | 0 | -9 | 0 | Engi |  |
|  | 18 | **GALVANIZED DUCTS** |  | 2026-06-13 | 2026-06-17 |  |  |  |  |  |  |  |  |  |  |  |  |
| MLTX-02-004-EN-9440 |  | Material Submittal for Galvanized Ducts | 1d | 2026-06-13 A | 2026-06-13 A | MLTX-02-004-EN-10470 | 100% |  |  | QA/QC Engineer [16.1 h] | MOD-02-EN-6680 | MAK-01-PR-1000 | -100 | -24 | -100 | Engi | UDF_G1 |
| MLTX-02-004-EN-9450 |  | Material Approval for Galvanized Ducts | 6d | 2026-06-17 A | 2026-06-17 A | MLTX-02-004-EN-9440 | 100% | 2026-10-17 | 2026-10-22 | Consultant Staff [16.1 h] | MOD-02-EN-6690 | MAK-01-PR-1010 | -100 | -24 | -100 | Engi | UDF_G1 |
|  | 19 | **EXHAUST FANS** |  | 2026-04-16 | 2026-05-06 |  |  |  |  |  |  |  |  |  |  |  |  |
| MLTX-02-004-EN-9460 |  | Material Submittal for Exhaust Fans | 2d | 2026-04-16 A | 2026-04-18 A | MLTX-02-004-EN-10490 | 100% |  |  | QA/QC Engineer [16.1 h] | MOD-02-EN-6710 | MAK-01-PR-1000 | 0 | 1 | 0 | Engi |  |
| MLTX-02-004-EN-9470 |  | Material Approval for Exhaust Fans | 1d | 2026-05-06 A | 2026-05-06 A | MLTX-02-004-EN-9460 | 100% |  |  | Consultant Staff [16.1 h] | MOD-02-EN-6720 | MAK-01-PR-1010 | 0 | -9 | 0 | Engi |  |
|  | 13 | **LIGHTING FIXTURES** |  | 2026-04-16 | 2026-04-25 |  |  |  |  |  |  |  |  |  |  |  |  |
| MLTX-02-004-EN-9330 |  | Material Submittal for Lighting Fixtures | 3d | 2026-04-16 A | 2026-04-19 A | MLTX-02-004-EN-10360 | 100% |  |  | QA/QC Engineer [16.1 h] | MOD-02-EN-6740 | MAK-01-PR-1000 | 0 | 0 | 0 | Engi |  |
| MLTX-02-004-EN-9340 |  | Material Approval for Lighting Fixtures | 5d | 2026-04-20 A | 2026-04-25 A | MLTX-02-004-EN-9330 | 100% |  |  | Consultant Staff [16.1 h] | MOD-02-EN-6750 | MAK-01-PR-1010 | 0 | 1 | 0 | Engi |  |
|  | 14 | **SWITCHES/SOCKETS** |  | 2026-04-16 | 2026-04-25 |  |  |  |  |  |  |  |  |  |  |  |  |
| MLTX-02-004-EN-9350 |  | Material Submittal for Switches/Sockets | 3d | 2026-04-16 A | 2026-04-19 A | MLTX-02-004-EN-10380 | 100% |  |  | QA/QC Engineer [16.1 h] | MOD-02-EN-6770 | MAK-01-PR-1000 | 0 | 0 | 0 | Engi |  |
| MLTX-02-004-EN-9360 |  | Material Approval for Switches/Sockets | 5d | 2026-04-20 A | 2026-04-25 A | MLTX-02-004-EN-9350 | 100% |  |  | Consultant Staff [16.1 h] | MOD-02-EN-6780 | MAK-01-PR-1010 | 0 | 1 | 0 | Engi |  |
|  | 15 | **EARTHING SYSTEM** |  | 2026-05-06 | 2026-05-07 |  |  |  |  |  |  |  |  |  |  |  |  |
| MLTX-02-004-EN-9150 |  | Material Submittal for Earthing System | 1d | 2026-05-06 A | 2026-05-06 A | MLTX-02-004-EN-10180 | 100% |  |  | QA/QC Engineer [16.1 h] | MOD-02-EN-6800 | MAK-01-PR-1290 | 0 | -15 | 0 | Engi |  |
| MLTX-02-004-EN-9160 |  | Material Approval for Earthing System | 1d | 2026-05-07 A | 2026-05-07 A | MLTX-02-004-EN-9150 | 100% |  |  | Consultant Staff [16.1 h] | MOD-02-EN-6810 | MAK-01-PR-1300 | 0 | -10 | 0 | Engi |  |
|  | 5 | **DISTRIBUTION PANNELS** |  | 2026-04-16 | 2026-04-25 |  |  |  |  |  |  |  |  |  |  |  |  |
| MLTX-02-004-EN-9170 |  | Material Submittal for Distribution Panels | 3d | 2026-04-16 A | 2026-04-19 A | MLTX-02-004-EN-10200 | 100% |  |  | QA/QC Engineer [16.1 h] | MOD-02-EN-6830 | MAK-01-PR-LLI-1060 | 0 | 0 | 0 | Engi |  |
| MLTX-02-004-EN-9180 |  | Material Approval for Distribution Panels | 5d | 2026-04-20 A | 2026-04-25 A | MLTX-02-004-EN-9170 | 100% |  |  | Consultant Staff [16.1 h] | MOD-02-EN-6840 | MAK-01-PR-LLI-1070 | 0 | 1 | 0 | Engi |  |

| ID | WBS | Activity | Duration | Start | Finish | Predecessors | Complete | Planned start | Planned finish | Resources | New Activity ID | Old Activity ID - MK | % Variance | Delay | On Schedule | WBS-Project | Flag |
| --- | --- | --- | --- | --- | --- | --- | --- | --- | --- | --- | --- | --- | --- | --- | --- | --- | --- |
|  | PLG | **PLAYGROUND WORKS** |  | 2026-04-12 | 2026-08-24 |  |  |  |  |  |  |  |  |  |  |  |  |
|  | 5 | **PVC MEMBRANE** |  | 2026-05-06 | 2026-05-25 |  |  |  |  |  |  |  |  |  |  |  |  |
| MLTX-02-004-EN-9560 |  | Material Submittal for PVC Membrane | 1d | 2026-05-06 A | 2026-05-06 A | MLTX-02-004-EN-10590 | 100% |  |  | QA/QC Engineer [16.1 h] | MOD-02-EN-6870 | MAK-01-PR-1120 | 0 | -16 | 0 | Engi |  |
| MLTX-02-004-EN-9570 |  | Material Approval for PVC Membrane | 7d | 2026-05-20 A | 2026-05-25 A | MLTX-02-004-EN-9560 | 100% | 2026-11-23 | 2026-11-30 | Consultant Staff [16.1 h] | MOD-02-EN-6880 | MAK-01-PR-1130 | -100 | -22 | -100 | Engi | UDF_G1 |
|  | 6 | **STEEL TENSION CABLES** |  | 2026-05-06 | 2026-05-10 |  |  |  |  |  |  |  |  |  |  |  |  |
| MLTX-02-004-EN-9580 |  | Material Submittal for Steel Tension Cables | 1d | 2026-05-06 A | 2026-05-06 A | MLTX-02-004-EN-10900 | 100% |  |  | QA/QC Engineer [16.1 h] | MOD-02-EN-6900 | MAK-01-PR-1120 | 0 | -16 | 0 | Engi |  |
| MLTX-02-004-EN-9880 |  | Material Approval for Steel Tension Cables | 7d | 2026-05-09 A | 2026-05-10 A | MLTX-02-004-EN-9580 | 100% | 2026-11-23 | 2026-11-30 | Consultant Staff [16.1 h] | MOD-02-EN-6910 | MAK-01-PR-1120 | -100 | -22 | -100 | Engi | UDF_G1 |
|  | 7 | **EMERGENCY DOORS** |  | 2026-05-06 | 2026-05-10 |  |  |  |  |  |  |  |  |  |  |  |  |
| MLTX-02-004-EN-9590 |  | Material Submittal for Emergency Doors | 1d | 2026-05-06 A | 2026-05-06 A | MLTX-02-004-EN-10910 | 100% |  |  | QA/QC Engineer [16.1 h] | MOD-02-EN-6930 | MAK-01-PR-1120 | 0 | -19 | 0 | Engi |  |
| MLTX-02-004-EN-9890 |  | Material Approval for Emergency Doors | 7d | 2026-05-09 A | 2026-05-10 A | MLTX-02-004-EN-9590 | 100% | 2026-11-23 | 2026-11-30 | Consultant Staff [16.1 h] | MOD-02-EN-6940 | MAK-01-PR-1120 | -100 | -25 | -100 | Engi | UDF_G1 |
|  | 8 | **PRESSURE UNITS** |  | 2026-05-06 | 2026-08-24 |  |  |  |  |  |  |  |  |  |  |  |  |
| MLTX-02-004-EN-9600 |  | Material Submittal for Pressure Units | 1d | 2026-05-06 A | 2026-05-06 A | MLTX-02-004-EN-10920 | 100% |  |  | QA/QC Engineer [16.1 h] | MOD-02-EN-6960 | MAK-01-PR-1120 | 0 | -19 | 0 | Engi |  |
| MLTX-02-004-EN-9900 |  | Material Approval for Pressure Units | 7d | 2026-08-24 A | 2026-08-24 A | MLTX-02-004-EN-9600 | 100% | 2026-10-17 | 2026-10-24 | Consultant Staff [16.1 h] | MOD-02-EN-6970 | MAK-01-PR-1120 | -100 | -25 | -100 | Engi | UDF_G1 |
|  | 9 | **AIR LOCK DOORS** |  | 2026-05-06 | 2026-05-11 |  |  |  |  |  |  |  |  |  |  |  |  |
| MLTX-02-004-EN-9610 |  | Material Submittal for Lock Doors | 5d | 2026-05-06 A | 2026-05-11 A | MLTX-02-004-EN-10930 | 100% |  |  | QA/QC Engineer [16.1 h] | MOD-02-EN-6990 | MAK-01-PR-1120 | 0 | -23 | 0 | Engi |  |
| MLTX-02-004-EN-9910 |  | Material Approval for Lock Doors | 7d | 2026-05-09 A | 2026-05-10 A | MLTX-02-004-EN-9610 | 100% | 2026-11-23 | 2026-11-30 | Consultant Staff [16.1 h] | MOD-02-EN-7000 | MAK-01-PR-1120 | -100 | -25 | -100 | Engi | UDF_G1 |
|  | 15 | **ARTIFICIAL TURF** |  | 2026-04-12 | 2026-04-30 |  |  |  |  |  |  |  |  |  |  |  |  |
| MLTX-02-004-EN-9760 |  | Material Submittal for Artificial TURF | 15d | 2026-04-12 A | 2026-04-28 A | MLTX-02-004-EN-10940 | 100% |  |  | QA/QC Engineer [16.1 h] | MOD-02-EN-7020 | MAK-01-PR-1120 | 0 | -12 | 0 | Engi |  |
| MLTX-02-004-EN-9920 |  | Material Approval for Artificial TURF | 3d | 2026-04-28 A | 2026-04-30 A | MLTX-02-004-EN-9760 | 100% |  |  | Consultant Staff [16.1 h] | MOD-02-EN-7030 | MAK-01-PR-1120 | 0 | -7 | 0 | Engi |  |
|  | 20 | **RUBBER GRANULES** |  | 2026-05-06 | 2026-05-21 |  |  |  |  |  |  |  |  |  |  |  |  |
| MLTX-02-004-EN-9770 |  | Material Submittal for Rubber Granules | 1d | 2026-05-06 A | 2026-05-06 A | MLTX-02-004-EN-10950 | 100% |  |  | QA/QC Engineer [16.1 h] | MOD-02-EN-7050 | MAK-01-PR-1120 | 0 | -19 | 0 | Engi |  |
| MLTX-02-004-EN-9930 |  | Material Approval for Rubber Granules | 1d | 2026-05-21 A | 2026-05-21 A | MLTX-02-004-EN-9770 | 100% |  |  | Consultant Staff [16.1 h] | MOD-02-EN-7060 | MAK-01-PR-1120 | -100 | -25 | -100 | Engi | UDF_G1 |
|  | 21 | **PADEL GLASS** |  | 2026-05-06 | 2026-05-21 |  |  |  |  |  |  |  |  |  |  |  |  |
| MLTX-02-004-EN-9780 |  | Material Submittal for Padel Glass | 1d | 2026-05-06 A | 2026-05-06 A | MLTX-02-004-EN-10960 | 100% |  |  | QA/QC Engineer [16.1 h] | MOD-02-EN-7080 | MAK-01-PR-1120 | 0 | -19 | 0 | Engi |  |
| MLTX-02-004-EN-9940 |  | Material Approval for Padel Glass | 1d | 2026-05-21 A | 2026-05-21 A | MLTX-02-004-EN-9780 | 100% |  |  | Consultant Staff [16.1 h] | MOD-02-EN-7090 | MAK-01-PR-1120 | -100 | -25 | -100 | Engi | UDF_G1 |

| ID | WBS | Activity | Duration | Start | Finish | Predecessors | Complete | Planned start | Planned finish | Resources | New Activity ID | Old Activity ID - MK | % Variance | Delay | Flag | On Schedule | WBS-Project |
| --- | --- | --- | --- | --- | --- | --- | --- | --- | --- | --- | --- | --- | --- | --- | --- | --- | --- |
|  | 22 | **PADEL WIRE MESH/STEEL SETS** |  | 2026-05-25 | 2026-05-27 |  |  |  |  |  |  |  |  |  |  |  |  |
| MLTX-02-004-EN-9790 |  | Material Submittal for Wire Mesh/Steel Sets | 1d | 2026-05-25 A | 2026-05-25 A | MLTX-02-004-EN-10970 | 100% |  |  | QA/QC Engineer [16.1 h] | MOD-02-EN-7110 | MAK-01-PR-1120 | -100 | -28 | UDF_G1 | -100 | Engi |
| MLTX-02-004-EN-9950 |  | Material Approval for Wire Mesh/Steel Sets | 7d | 2026-05-26 A | 2026-05-27 A | MLTX-02-004-EN-9790 | 100% | 2026-11-23 | 2026-11-30 | Consultant Staff [16.1 h] | MOD-02-EN-7120 | MAK-01-PR-1120 | -100 | -28 | UDF_G1 | -100 | Engi |
|  | 1 | **AGGREGATE BASE COURSE** |  | 2026-05-21 | 2026-07-01 |  |  |  |  |  |  |  |  |  |  |  |  |
| MLTX-02-004-EN-9020 |  | Material Submittal for Aggregate Base Course | 1d | 2026-05-21 A | 2026-05-21 A | MLTX-02-004-EN-10040 | 100% |  |  | QA/QC Engineer [16.1 h] | MOD-02-EN-7140 | MAK-01-PR-1090 | -100 | -28 | UDF_G1 | -100 | Engi |
| MLTX-02-004-EN-9030 |  | Material Approval for Aggregate Base Course | 1d | 2026-07-01 A | 2026-07-01 A | MLTX-02-004-EN-9020 | 100% |  |  | Consultant Staff [16.1 h] | MOD-02-EN-7150 | MAK-01-PR-1100 | -100 | -28 | UDF_G1 | -100 | Engi |
|  | 16 | **PACKAGE AC UNITS** |  | 2026-05-21 | 2026-05-21 |  |  |  |  |  |  |  |  |  |  |  |  |
| MLTX-02-004-EN-9480 |  | Material Submittal for Package AC Units | 1d | 2026-05-21 A | 2026-05-21 A | MLTX-02-004-EN-10510 | 100% |  |  | QA/QC Engineer [16.1 h] | MOD-02-EN-7260 | MAK-01-PR-1000 | -100 | -27 | UDF_G1 | -100 | Engi |
| MLTX-02-004-EN-9490 |  | Material Approval for Package AC Units | 1d | 2026-05-21 A | 2026-05-21 A | MLTX-02-004-EN-9480 | 100% |  |  | Consultant Staff [16.1 h] | MOD-02-EN-7270 | MAK-01-PR-1010 | -100 | -27 | UDF_G1 | -100 | Engi |
|  | 17 | **AIR DIFUSSERS/GRILLS** |  | 2026-04-13 | 2026-05-06 |  |  |  |  |  |  |  |  |  |  |  |  |
| MLTX-02-004-EN-9500 |  | Material Submittal for Air Difussers/Grills | 9d | 2026-04-13 A | 2026-04-22 A | MLTX-02-004-EN-10530 | 100% |  |  | QA/QC Engineer [16.1 h] | MOD-02-EN-7290 | MAK-01-PR-1000 | 0 | -6 |  | 0 | Engi |
| MLTX-02-004-EN-9510 |  | Material Approval for Air Difussers/Grills | 1d | 2026-05-06 A | 2026-05-06 A | MLTX-02-004-EN-9500 | 100% |  |  | Consultant Staff [16.1 h] | MOD-02-EN-7300 | MAK-01-PR-1010 | 0 | -12 |  | 0 | Engi |
|  | 2 | **BITUMINOUS BASE & WEARING COURSE** |  | 2026-04-16 | 2026-04-18 |  |  |  |  |  |  |  |  |  |  |  |  |
| MLTX-02-004-EN-9040 |  | Material Submittal for Bituminous Base & Wearing Cource | 2d | 2026-04-16 A | 2026-04-18 A | MLTX-02-004-EN-10060 | 100% |  |  | QA/QC Engineer [16.1 h] | MOD-02-EN-7170 | MAK-01-PR-1120 | 0 | 1 |  | 0 | Engi |
| MLTX-02-004-EN-9050 |  | Material Approval for the Site | 1d | 2026-04-18 A | 2026-04-18 A | MLTX-02-004-EN-9040 | 100% |  |  | Consultant Staff [16.1 h] | MOD-02-EN-7180 | MAK-01-PR-1130 | 0 | 7 |  | 0 | Engi |
|  | 3 | **INTERLOCKING PAVING** |  | 2026-05-21 | 2026-05-21 |  |  |  |  |  |  |  |  |  |  |  |  |
| MLTX-02-004-EN-9060 |  | Material Submittal for Interlocking Block Pavers | 1d | 2026-05-21 A | 2026-05-21 A | MLTX-02-004-EN-10130 | 100% |  |  | QA/QC Engineer [16.1 h] | MOD-02-EN-7200 | MAK-01-PR-1170 | -100 | -24 | UDF_G1 | -100 | Engi |
| MLTX-02-004-EN-9110 |  | Material Approval for Interlocking Block Pavers | 1d | 2026-05-21 A | 2026-05-21 A | MLTX-02-004-EN-9060 | 100% |  |  | Consultant Staff [16.1 h] | MOD-02-EN-7210 | MAK-01-PR-1180 | -100 | -24 | UDF_G1 | -100 | Engi |
|  | 4 | **MARKING PAINT** |  | 2026-04-13 | 2026-04-19 |  |  |  |  |  |  |  |  |  |  |  |  |
| MLTX-02-004-EN-9390 |  | Material Submittal for Marking Paint | 5d | 2026-04-13 A | 2026-04-18 A | MLTX-02-004-EN-10980 | 100% |  |  | QA/QC Engineer [16.1 h] | MOD-02-EN-7230 | MAK-01-PR-1120 | 0 | -2 |  | 0 | Engi |
| MLTX-02-004-EN-9960 |  | Material Approval for Marking Paint | 2d | 2026-04-18 A | 2026-04-19 A | MLTX-02-004-EN-9390 | 100% |  |  | Consultant Staff [16.1 h] | MOD-02-EN-7240 | MAK-01-PR-1120 | 0 | 3 |  | 0 | Engi |
|  | 18 | **GALVANIZED DUCTS** |  | 2026-06-13 | 2026-08-08 |  |  |  |  |  |  |  |  |  |  |  |  |
| MLTX-02-004-EN-9520 |  | Material Submittal for Galvanized Duct | 1d | 2026-06-13 A | 2026-06-13 A | MLTX-02-004-EN-10550 | 100% |  |  | QA/QC Engineer [16.1 h] | MOD-02-EN-7320 | MAK-01-PR-1000 | -100 | -27 | UDF_G1 | -100 | Engi |
| MLTX-02-004-EN-9530 |  | Material Approval for Galvanized Duct | 6d | 2026-08-08 A | 2026-08-08 A | MLTX-02-004-EN-9520 | 100% | 2026-10-17 | 2026-10-22 | Consultant Staff [16.1 h] | MOD-02-EN-7330 | MAK-01-PR-1010 | -100 | -27 | UDF_G1 | -100 | Engi |

| ID | WBS | Activity | Duration | Start | Finish | Predecessors | Complete | Resources | New Activity ID | Old Activity ID - MK | % Variance | Delay | On Schedule | WBS-Project | Flag |
| --- | --- | --- | --- | --- | --- | --- | --- | --- | --- | --- | --- | --- | --- | --- | --- |
|  | 19 | **EXHAUST FANS** |  | 2026-04-13 | 2026-05-06 |  |  |  |  |  |  |  |  |  |  |
| MLTX-02-004-EN-9540 |  | Material Submittal for Exhaust Fans | 5d | 2026-04-13 A | 2026-04-18 A | MLTX-02-004-EN-10570 | 100% | QA/QC Engineer [16.1 h] | MOD-02-EN-7350 | MAK-01-PR-1000 | 0 | -2 | 0 | Engi |  |
| MLTX-02-004-EN-9550 |  | Material Approval for Exhaust Fans | 1d | 2026-05-06 A | 2026-05-06 A | MLTX-02-004-EN-9540 | 100% | Consultant Staff [16.1 h] | MOD-02-EN-7360 | MAK-01-PR-1010 | 0 | -12 | 0 | Engi |  |
|  | 10 | **DISTRIBUTION BOARDS** |  | 2026-04-13 | 2026-04-22 |  |  |  |  |  |  |  |  |  |  |
| MLTX-02-004-EN-9620 |  | Material Submittal for Distribution Boards | 3d | 2026-04-13 A | 2026-04-15 A | MLTX-02-004-EN-10650 | 100% | QA/QC Engineer [16.1 h] | MOD-02-EN-7380 | MAK-01-PR-1000 | 0 | 0 | 0 | Engi |  |
| MLTX-02-004-EN-9630 |  | Material Approval for Distribution Boards | 6d | 2026-04-16 A | 2026-04-22 A | MLTX-02-004-EN-9620 | 100% | Consultant Staff [16.1 h] | MOD-02-EN-7390 | MAK-01-PR-1010 | 0 | 0 | 0 | Engi |  |
|  | 11 | **POWER CABLES** |  | 2026-04-13 | 2026-04-22 |  |  |  |  |  |  |  |  |  |  |
| MLTX-02-004-EN-9640 |  | Material Submittal for Power Cables | 3d | 2026-04-13 A | 2026-04-15 A | MLTX-02-004-EN-10670 | 100% | QA/QC Engineer [16.1 h] | MOD-02-EN-7410 | MAK-01-PR-1000 | 0 | 0 | 0 | Engi |  |
| MLTX-02-004-EN-9650 |  | Material Approval for Power Cables | 6d | 2026-04-16 A | 2026-04-22 A | MLTX-02-004-EN-9640 | 100% | Consultant Staff [16.1 h] | MOD-02-EN-7420 | MAK-01-PR-1010 | 0 | 0 | 0 | Engi |  |
|  | 12 | **LIGHT FIXTURES** |  | 2026-04-13 | 2026-04-22 |  |  |  |  |  |  |  |  |  |  |
| MLTX-02-004-EN-9660 |  | Material Submittal for Light Fixtures | 3d | 2026-04-13 A | 2026-04-15 A | MLTX-02-004-EN-10690 | 100% | QA/QC Engineer [16.1 h] | MOD-02-EN-7440 | MAK-01-PR-1000 | 0 | 0 | 0 | Engi |  |
| MLTX-02-004-EN-9670 |  | Material Approval for Light Fixtures | 6d | 2026-04-16 A | 2026-04-22 A | MLTX-02-004-EN-9660 | 100% | Consultant Staff [16.1 h] | MOD-02-EN-7450 | MAK-01-PR-1010 | 0 | 0 | 0 | Engi |  |
|  | 13 | **CCTV MATERIALS** |  | 2026-04-13 | 2026-04-22 |  |  |  |  |  |  |  |  |  |  |
| MLTX-02-004-EN-9680 |  | Material Submittal for CCTV | 3d | 2026-04-13 A | 2026-04-15 A | MLTX-02-004-EN-10710 | 100% | QA/QC Engineer [16.1 h] | MOD-02-EN-7470 | MAK-01-PR-1000 | 0 | 0 | 0 | Engi |  |
| MLTX-02-004-EN-9690 |  | Material Approval for CCTV | 6d | 2026-04-16 A | 2026-04-22 A | MLTX-02-004-EN-9680 | 100% | Consultant Staff [16.1 h] | MOD-02-EN-7480 | MAK-01-PR-1010 | 0 | 0 | 0 | Engi |  |
|  | 14 | **POWER OUTLETS/SWITCHES** |  | 2026-05-06 | 2026-05-07 |  |  |  |  |  |  |  |  |  |  |
| MLTX-02-004-EN-9700 |  | Material Submittal for Power Outlets/Switches | 1d | 2026-05-06 A | 2026-05-06 A | MLTX-02-004-EN-10730 | 100% | QA/QC Engineer [16.1 h] | MOD-02-EN-7500 | MAK-01-PR-1000 | 0 | -18 | 0 | Engi |  |
| MLTX-02-004-EN-9710 |  | Material Approval for Power Outlets/Switches | 1d | 2026-05-07 A | 2026-05-07 A | MLTX-02-004-EN-9700 | 100% | Consultant Staff [16.1 h] | MOD-02-EN-7510 | MAK-01-PR-1010 | 0 | -13 | 0 | Engi |  |
|  | LSC | **LANDSCAPE WORKS** |  | 2026-04-07 | 2026-07-27 |  |  |  |  |  |  |  |  |  |  |
|  | 7 | **INTERLOCKING PAVING** |  | 2026-05-21 | 2026-05-21 |  |  |  |  |  |  |  |  |  |  |
| MLTX-02-004-EN-9740 |  | Material Submittal for Interlocking Block Pavers | 1d | 2026-05-21 A | 2026-05-21 A | MLTX-02-004-EN-10770 | 100% | QA/QC Engineer [16.1 h] | MOD-02-EN-7540 | MAK-01-PR-1170 | -100 | -27 | -100 | Engi | UDF_G1 |
| MLTX-02-004-EN-9750 |  | Material Approval for Interlocking Block Pavers | 1d | 2026-05-21 A | 2026-05-21 A | MLTX-02-004-EN-9740 | 100% | Consultant Staff [16.1 h] | MOD-02-EN-7550 | MAK-01-PR-1180 | -100 | -27 | -100 | Engi | UDF_G1 |
|  | 9 | **CURBSTONE** |  | 2026-05-21 | 2026-05-21 |  |  |  |  |  |  |  |  |  |  |
| MLTX-02-004-EN-9840 |  | Material Submittal for Curbstone | 1d | 2026-05-21 A | 2026-05-21 A | MLTX-02-004-EN-10870 | 100% | QA/QC Engineer [16.1 h] | MOD-02-EN-7570 | MAK-01-PR-1260 | -100 | -27 | -100 | Engi | UDF_G1 |
| MLTX-02-004-EN-9850 |  | Material Approval for Curbstone | 1d | 2026-05-21 A | 2026-05-21 A | MLTX-02-004-EN-9840 | 100% | Consultant Staff [16.1 h] | MOD-02-EN-7580 | MAK-01-PR-1270 | -100 | -27 | -100 | Engi | UDF_G1 |

| ID | WBS | Activity | Duration | Start | Finish | Predecessors | Complete | Planned start | Planned finish | Resources | New Activity ID | Old Activity ID - MK | % Variance | Delay | On Schedule | WBS-Project | Flag |
| --- | --- | --- | --- | --- | --- | --- | --- | --- | --- | --- | --- | --- | --- | --- | --- | --- | --- |
|  | 1 | **PAVEMENT MARKING** |  | 2026-04-13 | 2026-04-19 |  |  |  |  |  |  |  |  |  |  |  |  |
| MLTX-02-004-EN-9070 |  | Material Submittal for Pavement Markings | 5d | 2026-04-13 A | 2026-04-18 A | MLTX-02-004-EN-10140 | 100% |  |  | QA/QC Engineer [16.1 h] | MOD-02-EN-7600 | MAK-01-PR-1200 | 0 | -2 | 0 | Engi |  |
| MLTX-02-004-EN-9120 |  | Material Approval for Pavement Markings | 2d | 2026-04-18 A | 2026-04-19 A | MLTX-02-004-EN-9070 | 100% |  |  | Consultant Staff [16.1 h] | MOD-02-EN-7610 | MAK-01-PR-1210 | 0 | 3 | 0 | Engi |  |
|  | 2 | **TRAFFIC SIGNS** |  | 2026-05-06 | 2026-07-18 |  |  |  |  |  |  |  |  |  |  |  |  |
| MLTX-02-004-EN-9080 |  | Material Submittal for Traffic Signs | 1d | 2026-05-06 A | 2026-05-06 A | MLTX-02-004-EN-10100 | 100% |  |  | QA/QC Engineer [16.1 h] | MOD-02-EN-7630 | MAK-01-PR-1230 | 0 | -18 | 0 | Engi |  |
| MLTX-02-004-EN-9090 |  | Material Approval for Traffic Signs | 6d | 2026-07-18 A | 2026-07-18 A | MLTX-02-004-EN-9080 | 100% | 2026-07-18 | 2026-07-23 | Consultant Staff [16.1 h] | MOD-02-EN-7640 | MAK-01-PR-1240 | -100 | -24 | -100 | Engi | UDF_G1 |
|  | 3 | **IRRIGATION PIPES/SPRINKLERS** |  | 2026-04-13 | 2026-07-27 |  |  |  |  |  |  |  |  |  |  |  |  |
| MLTX-02-004-EN-9130 |  | Material Submittal for Irrigation Pipes/Sprinkles | 5d | 2026-04-13 A | 2026-04-18 A | MLTX-02-004-EN-10160 | 100% |  |  | QA/QC Engineer [16.1 h] | MOD-02-EN-7660 | MAK-01-PR-1260 | 0 | -2 | 0 | Engi |  |
| MLTX-02-004-EN-9140 |  | Material Approval for Irrigation Pipes/Sprinkles | 6d | 2026-07-27 A | 2026-07-27 A | MLTX-02-004-EN-9090, MLTX-02-004-EN-9090 FF, MLTX-02-004-EN-9130 | 100% | 2026-07-27 | 2026-08-02 | Consultant Staff [16.1 h] | MOD-02-EN-7670 | MAK-01-PR-1270 | -100 | -24 | -100 | Engi | UDF_G1 |
|  | 5 | **AGRICULTURE SOIL** |  | 2026-05-06 | 2026-05-21 |  |  |  |  |  |  |  |  |  |  |  |  |
| MLTX-02-004-EN-9800 |  | Material Submittal for Agriculture Soil | 1d | 2026-05-06 A | 2026-05-06 A | MLTX-02-004-EN-10830 | 100% |  |  | QA/QC Engineer [16.1 h] | MOD-02-EN-7690 | MAK-01-PR-1260 | 0 | -18 | 0 | Engi |  |
| MLTX-02-004-EN-9810 |  | Material Approval for Agriculture Soil | 1d | 2026-05-21 A | 2026-05-21 A | MLTX-02-004-EN-9800 | 100% |  |  | Consultant Staff [16.1 h] | MOD-02-EN-7700 | MAK-01-PR-1270 | -100 | -24 | -100 | Engi | UDF_G1 |
|  | 8 | **TRACK SURFACE** |  | 2026-05-06 | 2026-05-21 |  |  |  |  |  |  |  |  |  |  |  |  |
| MLTX-02-004-EN-9820 |  | Material Submittal for Track Surface | 1d | 2026-05-06 A | 2026-05-06 A | MLTX-02-004-EN-10850 | 100% |  |  | QA/QC Engineer [16.1 h] | MOD-02-EN-7720 | MAK-01-PR-1260 | 0 | -18 | 0 | Engi |  |
| MLTX-02-004-EN-9830 |  | Material Approval for Track Surface | 1d | 2026-05-21 A | 2026-05-21 A | MLTX-02-004-EN-9820 | 100% |  |  | Consultant Staff [16.1 h] | MOD-02-EN-7730 | MAK-01-PR-1270 | -100 | -24 | -100 | Engi | UDF_G1 |
|  | 10 | **GRASS/TREES** |  | 2026-05-06 | 2026-05-21 |  |  |  |  |  |  |  |  |  |  |  |  |
| MLTX-02-004-EN-9860 |  | Material Submittal for Grass/Trees | 1d | 2026-05-06 A | 2026-05-06 A | MLTX-02-004-EN-10890 | 100% |  |  | QA/QC Engineer [16.1 h] | MOD-02-EN-7750 | MAK-01-PR-1260 | 0 | -18 | 0 | Engi |  |
| MLTX-02-004-EN-9870 |  | Material Approval for Grass/Trees | 1d | 2026-05-21 A | 2026-05-21 A | MLTX-02-004-EN-9860 | 100% |  |  | Consultant Staff [16.1 h] | MOD-02-EN-7760 | MAK-01-PR-1270 | -100 | -24 | -100 | Engi | UDF_G1 |
|  | 6 | **CABLES** |  | 2026-04-13 | 2026-04-22 |  |  |  |  |  |  |  |  |  |  |  |  |
| MLTX-02-004-EN-9720 |  | Material Submittal for Cables | 3d | 2026-04-13 A | 2026-04-15 A | MLTX-02-004-EN-10750 | 100% |  |  | QA/QC Engineer [16.1 h] | MOD-02-EN-7780 | MAK-01-PR-1200 | 0 | 0 | 0 | Engi |  |
| MLTX-02-004-EN-9730 |  | Material Approval for Cables | 6d | 2026-04-16 A | 2026-04-22 A | MLTX-02-004-EN-9720 | 100% |  |  | Consultant Staff [16.1 h] | MOD-02-EN-7790 | MAK-01-PR-1210 | 0 | 0 | 0 | Engi |  |
|  | 4 | **LIGHT POLES** |  | 2026-04-07 | 2026-04-15 |  |  |  |  |  |  |  |  |  |  |  |  |
| MLTX-02-004-EN-8980 |  | Material Approval for Lighting poles | 1d | 2026-04-07 A | 2026-04-07 A | MLTX-02-004-EN-8970 | 100% |  |  | Consultant Staff [16.1 h] | MOD-02-EN-7820 | MAK-01-PR-LLI-1130 | 0 | 13 | 0 | Engi |  |
| MLTX-02-004-EN-8970 |  | Material Submittal for Lighting poles | 3d | 2026-04-13 A | 2026-04-15 A | MLTX-02-004-EN-9980 | 100% |  |  | QA/QC Engineer [16.1 h] | MOD-02-EN-7810 | MAK-01-PR-LLI-1120 | 0 | 0 | 0 | Engi |  |

| ID | WBS | Activity | Duration | Start | Finish | Predecessors | Complete | Remaining | Planned start | Planned finish | Total float | Free float | Resources | Cost | Actual cost | New Activity ID | % Variance | Delay | On Schedule | W-Construction | WBS-Project | WBS-Construction Type | Flag |
| --- | --- | --- | --- | --- | --- | --- | --- | --- | --- | --- | --- | --- | --- | --- | --- | --- | --- | --- | --- | --- | --- | --- | --- |
|  | CONST | **CONSTRUCTION PHASE** |  | 2026-05-02 | 2027-05-10 |  |  |  |  |  |  |  |  |  |  |  |  |  |  |  |  |  |  |
|  | SW | **SITE WORKS** |  | 2026-05-02 | 2027-05-10 |  |  |  |  |  |  |  |  |  |  |  |  |  |  |  |  |  |  |
|  | 1 | **EARTH WORKS** |  | 2026-05-02 | 2026-10-10 |  |  |  |  |  |  |  |  |  |  |  |  |  |  |  |  |  |  |
| MLTX-02-004-CN-11880 |  | Excavation (in all types of soil) including Compaction (Playground Area) | 8.25d | 2026-05-02 A | 2026-05-11 A | MLTX-02-004-EN-1840, MLTX-02-004-CN-11890 | 100% |  |  |  |  |  | Labor [300 h]; Driver [380 h]; Excavator [140 h]; Loader [50 h]; Water Tanker [80 h]; Dump Truck [200 h]; Milling machine [40 h]; Excavation in any type of soil from existing level [1600] | 133,098 | 133,098 | MOD-02-CN-9930 | 0 | -4.25 | 0 | ER | Const | Earth |  |
| MLTX-02-004-CN-11900 |  | Excavation (in all types of soil) including Compaction (Landscape Area) | 14.14d | 2026-05-06 A | 2026-05-23 A | MLTX-02-004-CN-11880, MLTX-02-004-EN-11740, MLTX-02-004-EN-11750, MLTX-02-004-EN-11770, MLTX-02-004-EN-11760 | 100% |  |  |  |  |  | Labor [400 h]; Driver [200 h]; Excavator [140 h]; Loader [130 h]; Water Tanker [100 h]; Dump Truck [200 h]; Milling machine [40 h]; Excavation in any type of soil from existing level [3203] | 202,990.12 | 202,990.12 | MOD-02-CN-9950 | -10 | -1.26 | -18 | ER | Const | Earth | UDF_G1 |
| MLTX-02-004-CN-11890 |  | Excavation (in all types of soil) including Compaction (Service/Toilet Building) | 12.03d | 2026-05-07 A | 2026-05-21 A | MLTX-02-004-EN-10990 | 100% |  |  |  |  |  | Labor [300 h]; Driver [80 h]; Excavator [60 h]; Loader [60 h]; Water Tanker [60 h]; Dump Truck [80 h]; Milling machine [20 h]; Excavation in any type of soil from existing level [510] | 32,321.25 | 32,321.25 | MOD-02-CN-9940 | -1 | -14.7 | -90 | ER | Const | Earth | UDF_G1 |
| MLTX-02-004-CN-11910 |  | Backfilling on Layers (Selected Soil) including Compaction (Playground Area) | 32d | 2026-05-25 A | 2026-07-04 A | MLTX-02-004-CN-11880, MLTX-02-004-MS-1050, MLTX-02-004-MS-1060 | 100% |  |  |  |  |  | Labor [550 h]; Driver [300 h]; Loader [130 h]; Water Tanker [100 h]; Compactor [100 h]; Backfilling with selected fill material [650] | 22,181.25 | 22,181.25 | MOD-02-CN-9960 | -100 | -17 | -90 | ER | Const | Earth | UDF_G1 |
| MLTX-02-004-CN-11920 |  | Backfilling on Layers (Selected Soil) including Compaction (Service/Toilet Building) | 14.2d | 2026-05-25 A | 2026-06-14 A | MLTX-02-004-CN-11890 | 100% |  |  |  |  |  | Labor [300 h]; Driver [140 h]; Loader [90 h]; Water Tanker [80 h]; Compactor [60 h]; Backfilling with selected fill material [240] | 8,190 | 8,190 | MOD-02-CN-9970 | -100 | -14.7 | -100 | ER | Const | Earth | UDF_G1 |
| MLTX-02-004-CN-11910R |  | Backfilling on Layers (Selected Soil) including Compaction (Playground Area) Remaining | 8d | 2026-07-05 A | 2026-08-22 A | MLTX-02-004-CN-11930, MLTX-02-004-CN-11910 | 100% |  | 2026-07-20 | 2026-07-29 |  |  | Labor [550 h]; Driver [300 h]; Loader [130 h]; Water Tanker [100 h]; Compactor [100 h]; Backfilling with selected fill material [1660] | 56,647.5 | 56,647.5 |  |  |  |  | ER | Const | Earth |  |
| MLTX-02-004-CN-11930 |  | Backfilling on Layers (Selected Soil) including Compaction (Landscape Area) | 9d | 2026-08-29 A | 2026-10-10 A | MLTX-02-004-CN-11900 | 100% |  | 2026-08-30 | 2026-09-08 |  |  | Labor [600 h]; Driver [300 h]; Loader [60 h]; Water Tanker [100 h]; Compactor [100 h]; Backfilling with selected fill material [2550] | 87,018.75 | 87,018.75 | MOD-02-CN-9980 | -50 | -1.26 | -20 | ER | Const | Earth |  |
|  | 4 | **LANDSCAPE WORKS** |  | 2026-07-15 | 2027-05-10 |  |  |  |  |  |  |  |  |  |  |  |  |  |  |  |  |  |  |
|  | 4 | **PLAYGROUND AREA** |  | 2026-10-01 | 2027-05-01 |  |  |  |  |  |  |  |  |  |  |  |  |  |  |  |  |  |  |
|  | 6 | **FOOTBALL PLAYGROUND** |  | 2026-10-01 | 2027-02-11 |  |  |  |  |  |  |  |  |  |  |  |  |  |  |  |  |  |  |
| MLTX-02-004-CN-12080 |  | Preparation and Proofing for Subgrade (Football Playground) | 17d | 2026-10-01 A | 2026-10-19 A | MLTX-02-004-CN-11910 SS, MLTX-02-004-CN-11930 | 100% |  | 2026-10-24 | 2026-11-11 |  |  | Labor [500 h]; Skilled Labor [200 h]; Driver [300 h]; Forklift [270 h]; Football playground [200] | 57,525 | 57,525 | MOD-02-CN-10020 | -18.1818181818182 | -20 | 0 | PL | Const | Play |  |
| MLTX-02-004-CN-12090 |  | Backfilling and Compaction of Base Layers (Football Playground) | 25d | 2026-10-24 A | 2026-11-04 A | MLTX-02-004-CN-12080, MLTX-02-004-CN-11910R | 100% |  | 2026-10-26 | 2026-11-23 |  |  | Labor [700 h]; Skilled Labor [250 h]; Driver [350 h]; Loader [80 h]; Dump Truck [200 h]; Compactor [100 h]; Football playground [200] | 57,525 | 57,525 | MOD-02-CN-10030 | 0 | -20 | 0 | PL | Const | Play |  |
| MLTX-02-004-CN-12100 |  | Finishing and Surface Finish Works (Football Playground) | 30d | 2026-12-29 | 2027-02-01 | MLTX-02-004-CN-12090, MLTX-02-004-PR-10540, MLTX-02-004-PR-10980 |  |  |  |  | -86d | 0d | Labor [800 h]; Skilled Labor [150 h]; Driver [100 h]; Forklift [90 h]; Football playground [500] | 143,812.5 |  | MOD-02-CN-10040 | 0 | -20 | 0 | PL | Const | Play |  |
| MLTX-02-004-CN-12110 |  | Install Sport Equipments - Goal / Nets - (Football Playground) | 8d | 2027-02-03 | 2027-02-11 | MLTX-02-004-CN-12100, MLTX-02-004-CN-12120 SS, MLTX-02-004-CN-12370, MLTX-02-004-EN-12070 |  |  |  |  | -57d | 0d | Labor [390 h]; Skilled Labor [150 h]; Driver [100 h]; Crane [140 h]; Football playground [250] | 71,906.25 |  | MOD-02-CN-10050 | 0 | -20 | 0 | PL | Const | Play |  |
| MLTX-02-004-CN-12120 |  | Surface Marking and Painting (Football Playground) | 8d | 2027-02-03 | 2027-02-11 | MLTX-02-004-CN-12100, MLTX-02-004-CN-12370 |  |  |  |  | -57d | 0d | Skilled Labor [250 h]; Painter [240 h]; Football playground [50] | 14,381.25 |  | MOD-02-CN-10060 | 0 | -20 | 0 | PL | Const | Play |  |
|  | 7 | **PADEL PLAYGROUND** |  | 2026-10-01 | 2027-04-06 |  |  |  |  |  |  |  |  |  |  |  |  |  |  |  |  |  |  |
| MLTX-02-004-CN-12130 |  | Preparation and Proofing for Subgrade (Padel Playground) | 25d | 2026-10-01 A | 2026-10-19 A | MLTX-02-004-CN-12080 | 100% |  | 2026-11-12 | 2026-12-10 |  |  | Labor [300 h]; Skilled Labor [150 h]; Driver [200 h]; Forklift [90 h]; Padel playgound [70] | 75,075 | 75,075 | MOD-02-CN-10080 | 0 | -20 | 0 | PL | Const | Play |  |
| MLTX-02-004-CN-12140 |  | Backfilling and Compaction of Base Layers (Padel Playground) | 20d | 2026-10-24 A | 2026-12-16 | MLTX-02-004-CN-12130, MLTX-02-004-PR-10010, MLTX-02-004-PR-9990, MLTX-02-004-CN-12090 SS, MLTX-02-004-CN-12090 FF | 50% | 20d | 2026-11-24 | 2026-12-16 | -46d | 40d | Labor [550 h]; Skilled Labor [200 h]; Driver [280 h]; Loader [80 h]; Dump Truck [200 h]; Compactor [100 h]; Padel playgound [40] | 42,900 |  | MOD-02-CN-10090 | 0 | -20 | 0 | PL | Const | Play |  |
| MLTX-02-004-CN-12150 |  | Finishing and Surface Finish Works (Padel Playground) | 30d | 2027-02-02 | 2027-03-09 | MLTX-02-004-CN-12140, MLTX-02-004-CN-12100 SS, MLTX-02-004-CN-12100, MLTX-02-004-PR-10800 |  |  |  |  | -86d | 0d | Labor [720 h]; Skilled Labor [200 h]; Driver [90 h]; Forklift [270 h]; Padel playgound [50] | 53,625 |  | MOD-02-CN-10100 | 0 | -20 | 0 | PL | Const | Play |  |
| MLTX-02-004-CN-12160 |  | Install Sport Equipments - Goal / Nets - (Padel Playground) | 13d | 2027-03-14 | 2027-03-28 | MLTX-02-004-CN-12150, MLTX-02-004-CN-12110 SS, MLTX-02-004-EN-12090 |  |  |  |  | -86d | 0d | Labor [950 h]; Skilled Labor [440 h]; Driver [260 h]; Crane [160 h]; Padel playgound [30] | 32,175 |  | MOD-02-CN-10110 | 0 | -20 | 0 | PL | Const | Play |  |
| MLTX-02-004-CN-12170 |  | Surface Marking and Painting (Padel Playground) | 8d | 2027-03-29 | 2027-04-06 | MLTX-02-004-CN-12160, MLTX-02-004-CN-12120 SS, MLTX-02-004-PR-10360 |  |  |  |  | -86d | 0d | Skilled Labor [500 h]; Painter [240 h]; Padel playgound [10] | 10,725 |  | MOD-02-CN-10120 | 0 | -20 | 0 | PL | Const | Play |  |

| ID | WBS | Activity | Duration | Start | Finish | Predecessors | Complete | Planned start | Planned finish | Total float | Free float | Resources | Cost | Actual cost | New Activity ID | % Variance | Delay | On Schedule | W-Construction | WBS-Project | WBS-Construction Type |
| --- | --- | --- | --- | --- | --- | --- | --- | --- | --- | --- | --- | --- | --- | --- | --- | --- | --- | --- | --- | --- | --- |
|  | 8 | **BASKETBALL PLAYGROUND** |  | 2026-10-01 | 2027-04-06 |  |  |  |  |  |  |  |  |  |  |  |  |  |  |  |  |
| MLTX-02-004-CN-12180 |  | Preparation and Proofing for Subgrade (Padel Playground) | 20d | 2026-10-01 A | 2026-10-19 A | MLTX-02-004-EN-12090, MLTX-02-004-EN-12080, MLTX-02-004-CN-12130 | 100% | 2026-12-12 | 2027-01-03 |  |  | Labor [550 h]; Skilled Labor [200 h]; Driver [280 h]; Forklift [90 h]; Basketball playground [53.33] | 31,200 | 31,200 | MOD-02-CN-10180 | 0 | -20 | 0 | PL | Const | Play |
| MLTX-02-004-CN-12190 |  | Backfilling and Compaction of Base Layers (Basketball Playground) | 30d | 2026-10-24 A | 2026-11-11 A | MLTX-02-004-PR-10180, MLTX-02-004-CN-12180, MLTX-02-004-CN-12140 FF, MLTX-02-004-CN-12140 SS, MLTX-02-004-MS-1120 FF, MLTX-02-004-PR-10360 FF | 100% | 2026-12-17 | 2027-01-20 |  |  | Labor [400 h]; Skilled Labor [200 h]; Driver [300 h]; Loader [80 h]; Dump Truck [200 h]; Compactor [100 h]; Basketball playground [53.33] | 31,200 | 31,200 | MOD-02-CN-10190 | 0 | -20 | 0 | PL | Const | Play |
| MLTX-02-004-CN-12200 |  | Finishing and Surface Finish Works (Basketball Playground) | 30d | 2026-12-27 | 2027-01-30 | MLTX-02-004-CN-12190, MLTX-02-004-CN-12300, MLTX-02-004-PR-10800 |  |  |  | -41d | 0d | Labor [740 h]; Skilled Labor [150 h]; Driver [100 h]; Forklift [90 h]; Basketball playground [266.67] | 156,000 |  | MOD-02-CN-10200 | 0 | -20 | 0 | PL | Const | Play |
| MLTX-02-004-CN-12210 |  | Install Sport Equipments - Goal / Nets - (Basketball Playground) | 10d | 2027-02-13 | 2027-02-24 | MLTX-02-004-CN-12110, MLTX-02-004-CN-12200 |  |  |  | -52d | 34d | Labor [200 h]; Skilled Labor [90 h]; Driver [100 h]; Crane [140 h]; Basketball playground [133.33] | 78,000 |  | MOD-02-CN-10210 | 0 | -20 | 0 | PL | Const | Play |
| MLTX-02-004-CN-12220 |  | Surface Marking and Painting (Basketball Playground) | 8d | 2027-03-29 | 2027-04-06 | MLTX-02-004-CN-12210 SS, MLTX-02-004-CN-12120, MLTX-02-004-CN-12170 SS |  |  |  | -86d | 0d | Skilled Labor [250 h]; Painter [240 h]; Basketball playground [26.67] | 15,600 |  | MOD-02-CN-10220 | 0 | -20 | 0 | PL | Const | Play |
|  | 9 | **PADEL FENCE** |  | 2027-04-07 | 2027-05-01 |  |  |  |  |  |  |  |  |  |  |  |  |  |  |  |  |
| MLTX-02-004-CN-12230 |  | Excavation for Fence | 3d | 2027-04-07 | 2027-04-10 | MLTX-02-004-CN-12190, MLTX-02-004-CN-12170, MLTX-02-004-CN-12220 |  |  |  | -86d | 0d | Labor [250 h]; Driver [160 h]; Excavator [80 h]; Dump Truck [160 h]; Supply and install of padel playground fence [0.1] | 8,287.5 |  | MOD-02-CN-10240 | 0 | -20 | 0 | PL | Const | Play |
| MLTX-02-004-CN-12240 |  | Concrete Foundation for Fence including Posts Fixation | 4d | 2027-04-11 | 2027-04-14 | MLTX-02-004-CN-12230, MLTX-02-004-CN-12210 |  |  |  | -86d | 0d | Skilled Labor [150 h]; Driver [100 h]; Steel Fixer [140 h]; Supply and install of padel playground fence [0.2] | 16,575 |  | MOD-02-CN-10250 | 0 | -20 | 0 | PL | Const | Play |
| MLTX-02-004-CN-12241 |  | Backfilling and Reinstatement for Concrete Foundation | 4d | 2027-04-15 | 2027-04-19 | MLTX-02-004-CN-12240 |  |  |  | -86d | 0d | Skilled Labor [257.14 h]; Driver [342.86 h]; Loader [180 h]; Dump Truck [240 h]; Compactor [120 h]; Supply and install of padel playground fence [0.05] | 4,143.75 |  | MOD-02-CN-10290 | 0 | -20 | 0 | PL | Const | Play |
| MLTX-02-004-CN-12250 |  | Tempered Glass Fenc Installation and Fixation | 5d | 2027-04-20 | 2027-04-25 | MLTX-02-004-CN-12241 |  |  |  | -86d | 0d | Skilled Labor [250 h]; Driver [180 h]; Crane [240 h]; Supply and install of padel playground fence [0.4] | 33,150 |  | MOD-02-CN-10260 | 0 | -20 | 0 | PL | Const | Play |
| MLTX-02-004-CN-12260 |  | Chain Link Fence Installation and Fixation | 5d | 2027-04-20 | 2027-04-25 | MLTX-02-004-CN-12250 SS, MLTX-02-004-CN-12240 |  |  |  | -86d | 0d | Labor [200 h]; Skilled Labor [150 h]; Driver [150 h]; Crane [200 h]; Supply and install of padel playground fence [0.2] | 16,575 |  | MOD-02-CN-10270 | 0 | -20 | 0 | PL | Const | Play |
| MLTX-02-004-CN-12270 |  | Install of Fence Gates | 5d | 2027-04-26 | 2027-05-01 | MLTX-02-004-CN-12260, MLTX-02-004-CN-12250 |  |  |  | -86d | 0d | Labor [380 h]; Skilled Labor [90 h]; Driver [100 h]; Crane [120 h]; Supply and install of padel playground fence [0.05] | 4,143.75 |  | MOD-02-CN-10280 | 0 | -20 | 0 | PL | Const | Play |
|  | 1 | **CURBSTOEN/INTERLOCK** |  | 2026-11-11 | 2026-12-30 |  |  |  |  |  |  |  |  |  |  |  |  |  |  |  |  |
| MLTX-02-004-CN-12020 |  | Concrete Works Under Curbstone | 5d | 2026-11-11 A | 2026-11-18 A | MLTX-02-004-CN-12290, MLTX-02-004-EN-11930, MLTX-02-004-EN-11090 | 100% | 2026-11-23 | 2026-11-28 |  |  | Skilled Labor [200 h]; Kerb type K1A [80]; Kerb type K1B [4]; Kerb type K4 [240] | 15,990 | 15,990 | MOD-02-CN-10150 | 0 | -38 | 0 | PL | Const | Play |
| MLTX-02-004-CN-12030 |  | Curbstone Installation | 4d | 2026-12-09 | 2026-12-13 | MLTX-02-004-CN-12020, MLTX-02-004-CN-12770, MLTX-02-004-CN-13280, MLTX-02-004-CN-12300, MLTX-02-004-PR-10900 |  |  |  | -46d | 0d | Labor [940 h]; Skilled Labor [440 h]; Driver [340 h]; Forklift [240 h]; Kerb type K1A [240]; Kerb type K1B [4]; Kerb type K4 [900] | 54,307.5 |  | MOD-02-CN-10160 | 0 | -38 | 0 | PL | Const | Play |
| MLTX-02-004-CN-11960 |  | Interlock Installation (Grey Scale) for LandScape (Including Finishing Works) | 15d | 2026-12-14 | 2026-12-30 | MLTX-02-004-CN-12030, MLTX-02-004-PR-10760, MLTX-02-004-PR-10030, MLTX-02-004-PR-10050 |  |  |  | -46d | 0d | Labor [1000 h]; Skilled Labor [440 h]; Driver [540 h]; Forklift [330 h]; Interlock tiles grey scale with black marble chips 600*300*60mm zero joint [1466.67] | 185,900 |  | MOD-02-CN-10140 | 0 | -38 | 0 | PL | Const | Play |
|  | 10 | **AIR DOME** |  | 2026-07-15 | 2027-03-01 |  |  |  |  |  |  |  |  |  |  |  |  |  |  |  |  |
|  | 1 | **CIVIL WORKS** |  | 2026-07-15 | 2027-01-07 |  |  |  |  |  |  |  |  |  |  |  |  |  |  |  |  |
| MLTX-02-004-CN-12280 |  | Excavation for Foundation & Playground Area (Air Dome) | 5d | 2026-07-15 A | 2026-08-15 A | MLTX-02-004-EN-11130, MLTX-02-004-EN-11980, MLTX-02-004-EN-11950, MLTX-02-004-EN-11960, MLTX-02-004-EN-11970, MLTX-02-004-EN-11990, MLTX-02-004-EN-12000, MLTX-02-004-EN-12010, MLTX-02-004-EN-12020, MLTX-02-004-EN-12030, MLTX-02-004-EN-12040 | 100% | 2026-09-27 | 2026-10-01 |  |  | Labor [200 h]; Driver [80 h]; Excavator [80 h]; Water Tanker [70 h]; Compactor [80 h]; Design, supply, install, testing and commissioning of air dome [280312] | 280,312.5 | 168,187.5 | MOD-02-CN-10320 | 0 | -20 | 0 | PL | Const | Play |
| MLTX-02-004-CN-12290 |  | Concrete Works for Foundations including Anchor Bolts (Air Dome) | 4d | 2026-07-29 A | 2026-09-22 A | MLTX-02-004-CN-12280, MLTX-02-004-CN-12280 SS | 100% | 2026-08-25 | 2026-08-29 |  |  | Skilled Labor [200 h]; Steel Fixer [180 h]; Design, supply, install, testing and commissioning of air dome [392438] | 392,437.5 | 51,016.88 | MOD-02-CN-10330 | 0 | -20 | 0 | PL | Const | Play |
| MLTX-02-004-CN-12300 |  | Cable System Installation (Air Dome) | 3d | 2026-09-24 A | 2026-10-26 A | MLTX-02-004-CN-12290 | 100% | 2026-11-28 | 2026-11-30 |  |  | Labor [700 h]; Skilled Labor [250 h]; Driver [250 h]; Crane [300 h]; Design, supply, install, testing and commissioning of air dome [0.27] | 560,625 |  | MOD-02-CN-10340 | 0 | -38 | 0 | PL | Const | Play |
| MLTX-02-004-CN-12310 |  | Install of Membrane Covering System (Air Dome) | 4d | 2026-12-31 | 2027-01-04 | MLTX-02-004-CN-12050, MLTX-02-004-CN-11960 |  |  |  | -46d | 0d | Labor [500 h]; Skilled Labor [90 h]; Driver [100 h]; Crane [160 h]; Design, supply, install, testing and commissioning of air dome [0.06] | 560,625 |  | MOD-02-CN-10360 | 0 | -38 | 0 | PL | Const | Play |
| MLTX-02-004-CN-12320 |  | Thermal Insulation Works (Air Dome) | 3d | 2027-01-05 | 2027-01-07 | MLTX-02-004-PR-10720, MLTX-02-004-CN-12310 |  |  |  | -46d | 11d | Labor [500 h]; Skilled Labor [240 h]; Driver [100 h]; Crane [160 h]; Design, supply, install, testing and commissioning of air dome [0.06] | 560,625 |  | MOD-02-CN-10370 | 0 | -38 | 0 | PL | Const | Play |

| ID | WBS | Activity | Duration | Start | Finish | Predecessors | Complete | Remaining | Planned start | Planned finish | Total float | Free float | Resources | Cost | Actual cost | New Activity ID | % Variance | Delay | On Schedule | W-Construction | WBS-Project | WBS-Construction Type | New Activity Code |
| --- | --- | --- | --- | --- | --- | --- | --- | --- | --- | --- | --- | --- | --- | --- | --- | --- | --- | --- | --- | --- | --- | --- | --- |
|  | 3 | **MECHANICAL WORKS** |  | 2027-01-21 | 2027-02-04 |  |  |  |  |  |  |  |  |  |  |  |  |  |  |  |  |  |  |
| MLTX-02-004-CN-12350 |  | Air Ducts and Grills Installation (Air Dome) | 10d | 2027-01-21 | 2027-02-01 | MLTX-02-004-PR-10990, MLTX-02-004-CN-12320, MLTX-02-004-EN-11880, MLTX-02-004-EN-11890, MLTX-02-004-PR-10500 |  |  |  |  | -57d | 0d | Labor [876.9 h]; Skilled Labor [353.8 h]; Mechanical [269.2 h]; Crane [120 h]; Design, supply, install, testing and commissioning of air dome [0.11] | 280,312.5 |  | MOD-02-CN-10410 | 0 | -38 | 0 | PL | Const | Play |  |
| MLTX-02-004-CN-12360 |  | Air Units Installation (Air Dome) | 13d | 2027-01-21 | 2027-02-04 | MLTX-02-004-CN-12350 SS, MLTX-02-004-PR-10460 |  |  |  |  | -57d | 0d | Labor [800 h]; Skilled Labor [440 h]; Driver [420 h]; Mechanical [160 h]; Forklift [240 h]; Design, supply, install, testing and commissioning of air dome [0.06] | 448,500 |  | MOD-02-CN-10420 | 0 | -38 | 0 | PL | Const | Play |  |
| MLTX-02-004-CN-12370 |  | Exhaust Fans and Ducts Installation (Air Dome) | 11d | 2027-01-21 | 2027-02-02 | MLTX-02-004-CN-12360 SS, MLTX-02-004-CN-12350 SS, MLTX-02-004-CN-12310, MLTX-02-004-PR-10520 |  |  |  |  | -57d | 0d | Labor [700 h]; Skilled Labor [300 h]; Driver [370 h]; Mechanical [140 h]; Forklift [210 h]; Design, supply, install, testing and commissioning of air dome [0.02] | 392,437.5 |  | MOD-02-CN-10430 | 0 | -38 | 0 | PL | Const | Play |  |
|  | 4 | **ELECTRICAL WORKS** |  | 2026-11-19 | 2027-03-01 |  |  |  |  |  |  |  |  |  |  |  |  |  |  |  |  |  |  |
| MLTX-02-004-CN-12400 |  | External Electrical Connection Works (Air Dome) | 20d | 2026-11-19 A | 2026-12-16 | MLTX-02-004-CN-12390 SS, MLTX-02-004-CN-12370 | 10% | 20d | 2027-03-25 | 2027-04-17 | 6d | 0d | Skilled Labor [350 h]; Electrician [200 h]; Design, supply, install, testing and commissioning of air dome [0.05] | 280,312.5 |  | MOD-02-CN-10470 | 0 | -38 | 0 | PL | Const | Play |  |
| MLTX-02-004-CN-12410 |  | Emergency Generator Installation (Air Dome) | 20d | 2027-02-03 | 2027-02-27 | MLTX-02-004-CN-12400 SS, MLTX-02-004-CN-12370, MLTX-02-004-EN-8700, MLTX-02-004-EN-8720, MLTX-02-004-EN-8730 |  |  |  |  | -55d | 0d | Skilled Labor [300 h]; Electrician [220 h]; Design, supply, install, testing and commissioning of air dome [0.11] | 560,625 |  | MOD-02-CN-10480 | 0 | -38 | 0 | PL | Const | Play |  |
| MLTX-02-004-CN-12420 |  | Control System Installation (Air Dome) | 22d | 2027-02-03 | 2027-03-01 | MLTX-02-004-CN-12410 SS, MLTX-02-004-EN-11850, MLTX-02-004-EN-11860, MLTX-02-004-EN-11870, MLTX-02-004-PR-10700 |  |  |  |  | -55d | 0d | Skilled Labor [1000 h]; Electrician [500 h]; Design, supply, install, testing and commissioning of air dome [0.09] | 280,312.5 |  | MOD-02-CN-10490 | 0 | -38 | 0 | PL | Const | Play |  |
| MLTX-02-004-CN-12380 |  | Light Fixture Works (Air Dome) | 20d | 2027-02-06 | 2027-03-01 | MLTX-02-004-PR-11000, MLTX-02-004-CN-12350, MLTX-02-004-CN-12360, MLTX-02-004-CN-12370 |  |  |  |  | -44d | 0d | Skilled Labor [440 h]; Electrician [300 h]; Design, supply, install, testing and commissioning of air dome [0.04] | 280,312.5 |  | MOD-02-CN-10450 | 0 | -38 | 0 | PL | Const | Play |  |
| MLTX-02-004-CN-12390 |  | Distribution Board and Electrical Works (Air Dome) | 18d | 2027-02-06 | 2027-02-27 | MLTX-02-004-PR-10640, MLTX-02-004-CN-12380 SS, MLTX-02-004-CN-12320, MLTX-02-004-EN-11800, MLTX-02-004-EN-11810, MLTX-02-004-EN-11840 |  |  |  |  | -44d | 0d | Skilled Labor [300 h]; Electrician [120 h]; Design, supply, install, testing and commissioning of air dome [0.03] | 280,312.5 |  | MOD-02-CN-10460 | 0 | -38 | 0 | PL | Const | Play |  |
|  | 2 | **FINISHES WORKS** |  | 2027-01-25 | 2027-02-23 |  |  |  |  |  |  |  |  |  |  |  |  |  |  |  |  |  |  |
| MLTX-02-004-CN-12330 |  | Doors Installation Including Emergency, Entrance doors (Air Dome) | 10d | 2027-01-25 | 2027-02-04 | MLTX-02-004-CN-12360 FF, MLTX-02-004-CN-12300 |  |  |  |  | -50d | 0d | Labor [400 h]; Skilled Labor [200 h]; Forklift [150 h]; Design, supply, install, testing and commissioning of air dome [0.02] | 224,250 |  | MOD-02-CN-10380 | 0 | -38 | 0 | PL | Const | Play |  |
| MLTX-02-004-CN-12340 |  | Logo and Signs Installation (Air Dome) | 15d | 2027-02-06 | 2027-02-23 | MLTX-02-004-CN-12330, MLTX-02-004-CN-12370, MLTX-02-004-CN-12330 FF |  |  |  |  | -50d | 5d | Labor [1300 h]; Skilled Labor [900 h]; Driver [340 h]; Crane [120 h]; Design, supply, install, testing and commissioning of air dome [0.02] | 224,250 |  | MOD-02-CN-10390 | 0 | -38 | 0 | PL | Const | Play |  |
|  | 1 | **IRRIGATION NETWORK** |  | 2026-10-10 | 2026-12-23 |  |  |  |  |  |  |  |  |  |  |  |  |  |  |  |  |  |  |
| MLTX-02-004-CN-13190 |  | Installing of HDPE Pipes for Irrigation Network (Main Line) | 5d | 2026-10-10 A | 2026-10-15 A | MLTX-02-004-PR-10100 | 100% |  | 2026-12-24 | 2026-12-29 |  |  | Labor [1000 h]; Driver [540 h]; Mechanical [320 h]; Plumber [300 h]; Crane [220 h]; HDPE Pipes pipe line O.D 90 mm PN 10, in depth 0 to 1.5 m [376.67] | 80,795 | 80,795 | MOD-02-CN-11430 | 0 | -38 | 0 | PL | Const | Play | CN.MB.D15.1950 |
| MLTX-02-004-CN-13200 |  | Installing of HDPE Pipes for Irrigation Network (Branch Lines) | 5d | 2026-10-22 A | 2026-10-25 A | MLTX-02-004-CN-13190 | 100% |  | 2026-12-06 | 2026-12-10 |  |  | Labor [800 h]; Driver [240 h]; Mechanical [240 h]; Plumber [240 h]; Crane [140 h]; HDPE Pipes pipe line O.D 50 mm PN 10, in depth 0 to 1.5 m [150]; HDPE Pipes pipe line O.D 32 mm PN 10, in depth 0 to 1.5 m [523.33]; HDPE Pipes pipe line O.D 25 mm PN 10, in depth 0 to 1.5 m [1333.33] | 94,250 | 94,250 | MOD-02-CN-11440 | 0 | -38 | 0 | PL | Const | Play | CN.MB.D15.1960 |
| MLTX-02-004-CN-13210 |  | Installing of Valves and fittings for Irrigation Network | 4d | 2026-12-10 | 2026-12-14 | MLTX-02-004-CN-13200, MLTX-02-004-CN-12730, MLTX-02-004-CN-12950, MLTX-02-004-CN-12960, MLTX-02-004-CN-12970, MLTX-02-004-CN-12810, MLTX-02-004-CN-12870, MLTX-02-004-CN-12890, MLTX-02-004-CN-12910 |  |  |  |  | -45d | 0d | Labor [950 h]; Mechanical [160 h]; Plumber [260 h]; Electrical Solenoid Valve ( 1") inside PVC box [5.33]; Gate valve 100 mm PN16 [1]; Gate valve 50 mm PN16 [5.33]; Gate valve 32 mm PN16 [8]; Flushing Bronze gate valve dia 1.5" inside PVC box [2.67]; Air release valve 1.5" inside PVC box [3.33] | 46,475 |  | MOD-02-CN-11450 | 0 | -38 | 0 | PL | Const | Play | CN.MB.D15.1970 |
| MLTX-02-004-CN-13220 |  | Installing of Bubblers and Spreyers | 3d | 2026-12-21 | 2026-12-23 | MLTX-02-004-CN-11990 |  |  |  |  | -45d | 0d | Labor [1300 h]; Mechanical [240 h]; Plumber [240 h]; Pressureâ€“compensating bubblers 110 Lit/Hr [6.67]; Pressureâ€“ bubblers 60 Lit/Hr [293.33]; Pop up sprayer 90?- 210?, Radius 3.0 mtr [400]; Pop up sprayer 360?,Radius 3.0 mtr. [550] | 46,150 |  | MOD-02-CN-11460 | 0 | -38 | 0 | PL | Const | Play | CN.MB.D15.1980 |
|  | 5 | **NATURAL GROUND** |  | 2026-12-15 | 2026-12-20 |  |  |  |  |  |  |  |  |  |  |  |  |  |  |  |  |  |  |
| MLTX-02-004-CN-11990 |  | Compacted Natural Ground Soil Installation Works for Landscape | 5d | 2026-12-15 | 2026-12-20 | MLTX-02-004-CN-13210, MLTX-02-004-CN-12920, MLTX-02-004-CN-12840 |  |  |  |  | -45d | 0d | Labor [1800 h]; Skilled Labor [1900 h]; Driver [370 h]; Water Tanker [270 h]; Dump Truck [360 h]; Compactor [180 h]; Compacted Natural ground soil [5490] | 80,291.25 |  | MOD-02-CN-10550 | 0 | -38 | 0 | PL | Const | Play |  |
|  | 2 | **PLANTING** |  | 2026-11-16 | 2027-02-04 |  |  |  |  |  |  |  |  |  |  |  |  |  |  |  |  |  |  |
| MLTX-02-004-CN-12060 |  | Placement of Lawn Ground Cover (Rolling and Compaction) | 3d | 2026-11-16 A | 2026-11-26 | MLTX-02-004-CN-12070 | 50% | 3d | 2027-03-23 | 2027-03-25 | 14d | 5d | Labor [2500 h]; Skilled Labor [1550 h]; Driver [540 h]; Water Tanker [250 h]; Lawn [3266.67] | 175,175 |  | MOD-02-CN-10580 | 0 | -38 | 0 | PL | Const | Play |  |
| MLTX-02-004-CN-12050 |  | Placement of Sweet/Agricultural Soil (Including Levelling and Grading) | 5d | 2026-12-24 | 2026-12-29 | MLTX-02-004-CN-13220 |  |  |  |  | -45d | 1d | Labor [1850 h]; Driver [380 h]; Dump Truck [500 h]; Bobcat [280 h]; Cassia Glauca [44]; Plumeria Alba [44]; Neem [1.5]; Lawn [1400] | 186,420 |  | MOD-02-CN-10570 | 0 | -38 | 0 | PL | Const | Play |  |
| MLTX-02-004-CN-12070 |  | Placement and Fixation of Trees | 3d | 2027-02-02 | 2027-02-04 | MLTX-02-004-CN-12350 |  |  |  |  | -9d | 77d | Labor [2250 h]; Skilled Labor [1500 h]; Driver [500 h]; Water Tanker [250 h]; Cassia Glauca [83]; Plumeria Alba [83]; Neem [3.5] | 211,867.5 |  | MOD-02-CN-10590 | 0 | -38 | 0 | PL | Const | Play |  |

| ID | WBS | Activity | Duration | Start | Finish | Predecessors | Complete | Remaining | Planned start | Planned finish | Total float | Free float | Resources | Cost | Actual cost | New Activity ID | % Variance | Delay | On Schedule | W-Construction | WBS-Project | WBS-Construction Type | New Activity Code |
| --- | --- | --- | --- | --- | --- | --- | --- | --- | --- | --- | --- | --- | --- | --- | --- | --- | --- | --- | --- | --- | --- | --- | --- |
|  | 3 | **WALKING/BIKE PATHS** |  | 2026-08-19 | 2026-12-02 |  |  |  |  |  |  |  |  |  |  |  |  |  |  |  |  |  |  |
| MLTX-02-004-CN-12000 |  | Bike Path Preparation and Installation Works | 8d | 2026-08-19 A | 2026-12-02 | MLTX-02-004-PR-10880 FF, MLTX-02-004-CN-12060 FF | 92% | 8d | 2027-01-18 | 2027-01-26 | 9d | 0d | Skilled Labor [850 h]; Driver [460 h]; Bobcat [180 h]; Bike path [832.5] | 142,045.28 | 130,515.3 | MOD-02-CN-10510 | 0 | -38 | 0 | PL | Const | Play |  |
| MLTX-02-004-CN-12010 |  | Walking Path Preparation and Installation Works | 8d | 2026-08-19 A | 2026-10-20 A | MLTX-02-004-CN-12000 SS | 100% |  | 2027-01-18 | 2027-01-26 |  |  | Skilled Labor [850 h]; Driver [460 h]; Bobcat [180 h]; Walking path [787.5] | 134,367.19 | 134,367.19 | MOD-02-CN-10520 | 0 | -38 | 0 | PL | Const | Play |  |
|  | 6 | **GENERAL/FURNITURE** |  | 2026-10-01 | 2027-05-10 |  |  |  |  |  |  |  |  |  |  |  |  |  |  |  |  |  |  |
| MLTX-02-004-CN-12920 |  | Preleminary Works for Site Light Poles Including Cable and Bases Works | 14d | 2026-10-01 A | 2026-12-09 | MLTX-02-004-CN-12030, MLTX-02-004-EN-11910, MLTX-02-004-EN-11320, MLTX-02-004-EN-11330, MLTX-02-004-EN-11340, MLTX-02-004-EN-11350, MLTX-02-004-PR-10740 | 40% | 14d | 2026-12-17 | 2027-01-02 | -41d | 4d | Labor [950 h]; Driver [340 h]; Electrician [460 h]; Forklift [240 h]; Supply, install, testing, and commissioning of ground mounted decorated landscape LED lighting with 6.0m height pole [18] | 113,197.5 |  | MOD-02-CN-11710 | 0 | -38 | 0 | PL | Const | Play | CN.MB.D16.2130 |
| MLTX-02-004-CN-12930 |  | Installing of Site Light Poles | 11d | 2026-10-17 A | 2026-12-16 | MLTX-02-004-CN-12060 FF, MLTX-02-004-CN-11970 FF, MLTX-02-004-CN-12400 FF, MLTX-02-004-PR-11010 FF | 41% | 11d | 2027-03-18 | 2027-03-30 | 17d | 61d | Skilled Labor [700 h]; Electrician [500 h]; Crane [140 h]; Supply, install, testing, and commissioning of ground mounted decorated landscape LED lighting with 6.0m height pole [75.55] | 475,115.06 | 160,959.03 | MOD-02-CN-11800 | 0 | -38 | 0 | PL | Const | Play | CN.MB.D16.2140 |
| MLTX-02-004-CN-11970 |  | Stamped Concrete Works for LandScape (Including Finishing Works) | 8d | 2026-11-24 | 2026-12-02 | MLTX-02-004-CN-12010 |  |  |  |  | 29d | 12d | Skilled Labor [850 h]; Steel Fixer [320 h]; Stamped concrete floor [60] | 14,040 |  | MOD-02-CN-10610 | 0 | -38 | 0 | PL | Const | Play |  |
| MLTX-02-004-CN-12440 |  | Fixation and Installation of Steel Frame for Benches | 12d | 2026-12-03 | 2026-12-16 | MLTX-02-004-CN-12000 |  |  |  |  | 9d | 0d | Skilled Labor [850 h]; Driver [420 h]; Crane [160 h]; Supply and install playground benches consists of 6 seats [1] | 17,276.03 |  | MOD-02-CN-10630 | 0 | -38 | 0 | PL | Const | Play |  |
| MLTX-02-004-CN-12450 |  | Fixation and Installation of Benches | 8d | 2026-12-17 | 2026-12-26 | MLTX-02-004-CN-12440, MLTX-02-004-CN-12010 |  |  |  |  | 9d | 0d | Skilled Labor [700 h]; Driver [420 h]; Crane [160 h]; Supply and install playground benches consists of 6 seats [2.33] | 40,310.72 |  | MOD-02-CN-10640 | 0 | -38 | 0 | PL | Const | Play |  |
| MLTX-02-004-CN-12460 |  | Fixation and Installation of Precast Concrete Seats (Rectangular) | 8d | 2026-12-17 | 2026-12-26 | MLTX-02-004-CN-12450 SS |  |  |  |  | 9d | 0d | Skilled Labor [700 h]; Driver [420 h]; Crane [160 h]; Supply and install recycled precast concrete rectangular seats [37.33] | 43,680 |  | MOD-02-CN-10650 | 0 | -38 | 0 | PL | Const | Play |  |
| MLTX-02-004-CN-12470 |  | Fixation and Installation of Precast Concrete Seats (Circular) | 8d | 2026-12-17 | 2026-12-26 | MLTX-02-004-CN-12460 SS, MLTX-02-004-CN-12460 FF |  |  |  |  | 9d | 53d | Skilled Labor [700 h]; Driver [420 h]; Crane [160 h]; Supply and install recycled precast concrete circular seats [32] | 17,160 |  | MOD-02-CN-10660 | 0 | -38 | 0 | PL | Const | Play |  |
| MLTX-02-004-CN-12040 |  | Traffic Signs Posts and Poles Installation | 7d | 2027-02-28 | 2027-03-07 | MLTX-02-004-CN-12470, MLTX-02-004-CN-11940, MLTX-02-004-CN-12930, MLTX-02-004-CN-12390, MLTX-02-004-CN-12410 |  |  |  |  | -44d | 0d | Skilled Labor [240 h]; Driver [160 h]; Excavator [240 h]; Traffic signs aluminum sheet, (breakaway) Single post I.P.E. [2] | 9,750 |  | MOD-02-CN-10620 | 0 | -38 | 0 | PL | Const | Play |  |
| MLTX-02-004-CN-12480 |  | Fixation and Installation of Precast Concrete Trash Bins | 8d | 2027-05-02 | 2027-05-10 | MLTX-02-004-CN-12470, MLTX-02-004-CN-11940, MLTX-02-004-CN-12270, MLTX-02-004-CN-12380, MLTX-02-004-CN-12450 |  |  |  |  | -86d | 0d | Skilled Labor [400 h]; Driver [320 h]; Crane [160 h]; Supply and install recycled precast concrete trash bins [10] | 14,625 |  | MOD-02-CN-10670 | 0 | -38 | 0 | PL | Const | Play |  |
|  | 2 | **PARKING** |  | 2026-10-31 | 2026-12-01 |  |  |  |  |  |  |  |  |  |  |  |  |  |  |  |  |  |  |
| MLTX-02-004-CN-11950 |  | Site Preparation & Compaction Under Interlock for Parking Area | 5d | 2026-10-31 A | 2026-11-16 A | MLTX-02-004-CN-11970, MLTX-02-004-EN-11100 | 100% |  | 2026-11-22 | 2026-11-26 |  |  | Labor [1000 h]; Driver [120 h]; Water Tanker [90 h]; Compactor [60 h]; Supply and install interlock tiles for parking 8cm [200.01] | 29,251.46 | 29,251.46 | MOD-02-CN-10700 | 0 | -38 | 0 | PL | Const | Parking |  |
| MLTX-02-004-CN-11940 |  | Interlock Installation (8 Cm) for Parking Area (Including Finishing Works) | 7d | 2026-11-24 | 2026-12-01 | MLTX-02-004-CN-11950 |  |  |  |  | 30d | 74d | Labor [2000 h]; Skilled Labor [700 h]; Driver [400 h]; Forklift [300 h]; Supply and install interlock tiles for parking 8cm [466.66] | 68,249.02 |  | MOD-02-CN-10690 | 0 | -38 | 0 | PL | Const | Parking |  |
|  | TO | **TOILET/SERVICE BUILDING** |  | 2026-06-14 | 2026-12-24 |  |  |  |  |  |  |  |  |  |  |  |  |  |  |  |  |  |  |
|  | 13 | **STRUCTURE WORKS** |  | 2026-06-14 | 2026-08-09 |  |  |  |  |  |  |  |  |  |  |  |  |  |  |  |  |  |  |
|  | 2 | **CONCRETE WORKS** |  | 2026-06-14 | 2026-07-23 |  |  |  |  |  |  |  |  |  |  |  |  |  |  |  |  |  |  |
|  | 1 | **SUB-STRUCTURE** |  | 2026-06-14 | 2026-07-02 |  |  |  |  |  |  |  |  |  |  |  |  |  |  |  |  |  |  |
| MLTX-02-004-CN-12490 |  | Plain Concrete Under Footing | 1d | 2026-06-14 A | 2026-06-15 A | MLTX-02-004-CN-12550, MLTX-02-004-EN-11430, MLTX-02-004-EN-11440, MLTX-02-004-EN-11450, MLTX-02-004-EN-11000, MLTX-02-004-EN-9010 | 100% |  |  |  |  |  | Labor [100 h]; Skilled Labor [60 h]; lean concrete under foundation [1.5] | 1,170 | 1,170 | MOD-02-CN-10750 | -50 | -17 | 0 | TO | Const | Toilet | CN.MB.D01.1500 |
| MLTX-02-004-CN-12520 |  | Reinforced Concrete Works for Slab on Grade Including Steel Fixing | 15.6d | 2026-06-15 A | 2026-07-02 A | MLTX-02-004-CN-12490, MLTX-02-004-PR-10070 | 100% |  |  |  |  |  | Labor [300 h]; Skilled Labor [100 h]; Steel Fixer [120 h]; Provide and cast 35 Mpa concrete floor slab on grade [15] | 32,175 | 32,175 | MOD-02-CN-10800 | 0 | -17 | 0 | TO | Const | Toilet | CN.MB.D01.1590 |
|  | 2 | **SUPER-STRUCTURE** |  | 2026-07-18 | 2026-07-23 |  |  |  |  |  |  |  |  |  |  |  |  |  |  |  |  |  |  |
| MLTX-02-004-CN-12500 |  | AAC Panels Works for Walls | 11d | 2026-07-18 A | 2026-07-21 A | MLTX-02-004-CN-12600, MLTX-02-004-EN-11360, MLTX-02-004-EN-11370, MLTX-02-004-EN-11380, MLTX-02-004-EN-11390, MLTX-02-004-EN-11400, MLTX-02-004-EN-11410, MLTX-02-004-EN-11420 | 100% |  | 2026-07-30 | 2026-08-11 |  |  | Labor [500 h]; Skilled Labor [200 h]; Driver [280 h]; Crane [100 h]; The autoclaved aerated panel for slabs, external and internal walls and parapet [150] | 48,262.5 | 48,262.5 | MOD-02-CN-10820 | 0 | -17 | 0 | TO | Const | Toilet | CN.MB.D01.1550 |
| MLTX-02-004-CN-12530 |  | AAC Panels Works for Slabs | 10d | 2026-07-21 A | 2026-07-22 A | MLTX-02-004-CN-12500 | 100% |  | 2026-07-21 | 2026-08-01 |  |  | Labor [250 h]; Skilled Labor [100 h]; Driver [200 h]; Crane [100 h]; The autoclaved aerated panel for slabs, external and internal walls and parapet [50] | 16,087.5 | 16,087.5 | MOD-02-CN-10830 | 0 | -17 | 0 | TO | Const | Toilet | CN.MB.D01.1600 |
| MLTX-02-004-CN-12510 |  | Parpet Works and Lintels | 8d | 2026-07-23 A | 2026-07-23 A | MLTX-02-004-CN-12530, MLTX-02-004-CN-13090 | 100% |  | 2026-07-23 | 2026-08-01 |  |  | Labor [200 h]; Skilled Labor [60 h]; Driver [100 h]; Crane [50 h]; The autoclaved aerated panel for slabs, external and internal walls and parapet [50] | 16,087.5 | 16,087.5 | MOD-02-CN-10840 | 0 | -17 | 0 | TO | Const | Toilet | CN.MB.D01.1570 |

| ID | WBS | Activity | Duration | Start | Finish | Predecessors | Complete | Planned start | Planned finish | Total float | Free float | Resources | Cost | Actual cost | New Activity Code | New Activity ID | % Variance | Delay | Flag | On Schedule | W-Construction | WBS-Project | WBS-Construction Type |
| --- | --- | --- | --- | --- | --- | --- | --- | --- | --- | --- | --- | --- | --- | --- | --- | --- | --- | --- | --- | --- | --- | --- | --- |
|  | 1 | **UNDER GROUND SEPTIC TANK** |  | 2026-06-15 | 2026-07-15 |  |  |  |  |  |  |  |  |  |  |  |  |  |  |  |  |  |  |
| MLTX-02-004-CN-13080 |  | Plain Concrete Under Footing | 1d | 2026-06-15 A | 2026-06-16 A | MLTX-02-004-CN-12540 | 100% |  |  |  |  | Labor [100 h]; Skilled Labor [40 h]; lean concrete under foundation [1.5] | 1,170 | 1,170 | CN.MB.D01.1500 | MOD-02-CN-10860 | -100 | -17 | UDF_G1 | -100 | TO | Const | Toilet |
| MLTX-02-004-CN-13100 |  | Reinforced Concrete Works for Tank Foundation Including Shuttering and Steel Fixing | 13.3d | 2026-06-16 A | 2026-07-01 A | MLTX-02-004-CN-13080 | 100% |  |  |  |  | Labor [350 h]; Skilled Labor [100 h]; Steel Fixer [120 h]; Tank foundation [3] | 7,605 | 7,605 | CN.MB.D01.1530 | MOD-02-CN-10870 | -100 | -17 | UDF_G1 | -100 | TO | Const | Toilet |
| MLTX-02-004-CN-13110 |  | Reinforced Concrete Works for Tank Walls Including Steel Fixing | 16d | 2026-07-05 A | 2026-07-07 A | MLTX-02-004-CN-13100 | 100% | 2026-07-05 | 2026-07-22 |  |  | Labor [600 h]; Skilled Labor [200 h]; Steel Fixer [200 h]; Tank Walls [6] | 16,380 | 16,380 | CN.MB.D01.1590 | MOD-02-CN-10880 | -30 | -17 |  | 0 | TO | Const | Toilet |
| MLTX-02-004-CN-13090 |  | Reinforced Concrete Works for Tank Slab Including Shuttering and Steel Fixing | 16d | 2026-07-11 A | 2026-07-15 A | MLTX-02-004-CN-13110, MLTX-02-004-CN-13110 FF | 100% | 2026-07-12 | 2026-07-29 |  |  | Labor [700 h]; Skilled Labor [250 h]; Steel Fixer [240 h]; Tank Slab [3] | 8,775 | 8,775 | CN.MB.D01.1520 | MOD-02-CN-10890 | 0 | -17 |  | 0 | TO | Const | Toilet |
|  | 3 | **THERMAL & MOISTER PROTECTION** |  | 2026-06-14 | 2026-08-09 |  |  |  |  |  |  |  |  |  |  |  |  |  |  |  |  |  |  |
|  | 1 | **ANTI TERMIT CONTROL** |  | 2026-06-14 | 2026-06-30 |  |  |  |  |  |  |  |  |  |  |  |  |  |  |  |  |  |  |
| MLTX-02-004-CN-12560 |  | Anti Termite Works Under Foundation | 1.1d | 2026-06-14 A | 2026-06-15 A | MLTX-02-004-CN-11920 | 100% |  |  |  |  | Labor [40 h]; Skilled Labor [20 h]; Supply and apply anti termite under all concrete in contact with soil. [36] | 1,755 | 1,755 | CN.MB.D01.1640 | MOD-02-CN-10920 | -100 | -14.7 | UDF_G1 | -100 | TO | Const | Toilet |
| MLTX-02-004-CN-12570 |  | Anti Termite Works Under Slab on Grade and Grade Beams | 4d | 2026-06-27 A | 2026-06-30 A | MLTX-02-004-CN-13100 | 100% |  |  |  |  | Labor [50 h]; Skilled Labor [30 h]; Supply and apply anti termite under all concrete in contact with soil. [54] | 2,632.5 | 2,632.5 | CN.MB.D01.1650 | MOD-02-CN-10930 | -100 | -17 |  | 0 | TO | Const | Toilet |
|  | 2 | **POLYETHYLENE SHEET** |  | 2026-06-14 | 2026-06-30 |  |  |  |  |  |  |  |  |  |  |  |  |  |  |  |  |  |  |
| MLTX-02-004-CN-12540 |  | Water Proofing Under Blinding Concrete (Polythelen Sheet) | 1.1d | 2026-06-14 A | 2026-06-15 A | MLTX-02-004-CN-12560, MLTX-02-004-EN-11010, MLTX-02-004-EN-10120 | 100% |  |  |  |  | Labor [40 h]; Skilled Labor [20 h]; Supply and lay 250 micron thk polyethylene sheet under grade slab [36] | 877.5 | 877.5 | CN.MB.D01.1620 | MOD-02-CN-10950 | -100 | -17 | UDF_G1 | -100 | TO | Const | Toilet |
| MLTX-02-004-CN-12550 |  | Water Proofing Under Slab on Grade (Polythelen Sheet) | 2d | 2026-06-29 A | 2026-06-30 A | MLTX-02-004-CN-12570 | 100% |  |  |  |  | Labor [50 h]; Skilled Labor [30 h]; Supply and lay 250 micron thk polyethylene sheet under grade slab [54] | 1,316.25 | 1,316.25 | CN.MB.D01.1630 | MOD-02-CN-10960 | -100 | -17 |  | 0 | TO | Const | Toilet |
|  | 4 | **EPOXY** |  | 2026-08-08 | 2026-08-09 |  |  |  |  |  |  |  |  |  |  |  |  |  |  |  |  |  |  |
| MLTX-02-004-CN-12580 |  | Surface Preparation for Epoxy Coating | 3d | 2026-08-08 A | 2026-08-08 A | MLTX-02-004-CN-13090 | 100% | 2026-08-10 | 2026-08-12 |  |  | Labor [200 h]; Skilled Labor [90 h]; Provide and lay epoxy 2 coating for inner surfaces for RC walls, RC footings and bottom of the roof [7.5] | 1,096.88 | 1,096.88 | CN.MB.D01.1660 | MOD-02-CN-11000 | 0 | -17 |  | 0 | TO | Const | Toilet |
| MLTX-02-004-CN-12590 |  | Epoxy Coating for Walls and Slab of Tank | 5d | 2026-08-09 A | 2026-08-09 A | MLTX-02-004-CN-12580 | 100% | 2026-08-13 | 2026-08-18 |  |  | Labor [300 h]; Skilled Labor [150 h]; Provide and lay epoxy 2 coating for inner surfaces for RC walls, RC footings and bottom of the roof [17.5] | 2,559.38 | 2,559.38 | CN.MB.D01.1670 | MOD-02-CN-11010 | 0 | -17 |  | 0 | TO | Const | Toilet |
|  | 5 | **MASONARY WORK** |  | 2026-07-26 | 2026-08-05 |  |  |  |  |  |  |  |  |  |  |  |  |  |  |  |  |  |  |
| MLTX-02-004-CN-12600 |  | CMU Masonary Works Including all Accessories | 5d | 2026-07-26 A | 2026-08-05 A | MLTX-02-004-CN-12520, MLTX-02-004-EN-11050, MLTX-02-004-PR-10160 | 100% | 2026-08-02 | 2026-08-06 |  |  | Labor [300 h]; Mason [150 h]; Concrete masonry unit, 100 mm thick wall [45] | 12,285 | 12,285 | CN.MB.D04.1690 | MOD-02-CN-11030 | 0 | -17 |  | 0 | TO | Const | Toilet |
|  | 3 | **THERMAL & MOISTER PROTECTION** |  | 2026-09-29 | 2026-10-20 |  |  |  |  |  |  |  |  |  |  |  |  |  |  |  |  |  |  |
| MLTX-02-004-CN-12640 |  | Preparing Surface and Preliminary Works for Roofing and Wet Areas Insulation | 6d | 2026-09-29 A | 2026-09-29 A | MLTX-02-004-CN-12590 | 100% | 2026-10-08 | 2026-10-14 |  |  | Labor [250 h]; Skilled Labor [150 h]; Plumber [60 h]; Supply and cast in place foam concrete screed 50mm thk minimum laid to fall and cross fall [28]; Supply and install 4mm thick APP modified bituminous membrane for roof insulation [28]; Supply and install 300 micron polyethylene sheet [28]; Supply and install 50mm thk rigid insulation (extruded polystyrene) with density of 35 kg./m3 [28]; Supply and install 50mm thk loose gravel toppings [28]; Supplying and fixing 3mm thk extruded aluminum flashing [13.6]; Provide and lay 2 layers of waterproofing membrane 4mm [8] | 11,072.1 | 11,072.1 | CN.MB.D07.1790 | MOD-02-CN-11060 | 0 | -17 |  | 0 | TO | Const | Toilet |
| MLTX-02-004-CN-12650 |  | Finalize Water Proofing Works for Roofing and Wet Areas | 8d | 2026-09-29 A | 2026-10-20 A | MLTX-02-004-CN-12640 | 100% | 2026-10-15 | 2026-10-24 |  |  | Labor [300 h]; Skilled Labor [200 h]; Supply and cast in place foam concrete screed 50mm thk minimum laid to fall and cross fall [42]; Supply and install 4mm thick APP modified bituminous membrane for roof insulation [42]; Supply and install 300 micron polyethylene sheet [42]; Supply and install 50mm thk rigid insulation (extruded polystyrene) with density of 35 kg./m3 [42]; Supply and install 50mm thk loose gravel toppings [42]; Supplying and fixing 3mm thk extruded aluminum flashing [20.4]; Provide and lay 2 layers of waterproofing membrane 4mm [12] | 16,608.15 | 16,608.15 | CN.MB.D07.1800 | MOD-02-CN-11080 | 0 | -17 |  | 0 | TO | Const | Toilet |
| MLTX-02-004-CN-12620 |  | Preparing Surface and Preliminary Works for Toilets Waterproofing | 2d | 2026-10-10 A | 2026-10-15 A | MLTX-02-004-CN-12510, MLTX-02-004-CN-12590 | 100% | 2026-10-18 | 2026-10-19 |  |  | Labor [120 h]; Skilled Labor [60 h]; Plumber [20 h]; Supply and install liquid applied waterproofing membrane for toilets according to drawings and specifications. [14.4] | 2,106 | 2,106 | CN.MB.D07.1770 | MOD-02-CN-11050 | 0 | -17 |  | 0 | TO | Const | Toilet |
| MLTX-02-004-CN-12630 |  | Finalize Water Proofing Works for Toilets | 5d | 2026-10-10 A | 2026-10-15 A | MLTX-02-004-CN-12620 | 100% | 2026-10-20 | 2026-10-25 |  |  | Labor [280 h]; Skilled Labor [150 h]; Supply and install liquid applied waterproofing membrane for toilets according to drawings and specifications. [33.6] | 4,914 | 4,914 | CN.MB.D07.1780 | MOD-02-CN-11070 | 0 | -17 |  | 0 | TO | Const | Toilet |
|  | 11 | **MECHANICAL WORK** |  | 2026-07-04 | 2026-12-09 |  |  |  |  |  |  |  |  |  |  |  |  |  |  |  |  |  |  |
|  | 4 | **HVAC SYSTEM** |  | 2026-10-06 | 2026-12-09 |  |  |  |  |  |  |  |  |  |  |  |  |  |  |  |  |  |  |
| MLTX-02-004-CN-12720 |  | Preliminary HVAC and Ventilation Works | 4d | 2026-10-06 A | 2026-10-08 A | MLTX-02-004-CN-13020, MLTX-02-004-EN-12050, MLTX-02-004-EN-12060, MLTX-02-004-EN-11460, MLTX-02-004-EN-11480, MLTX-02-004-EN-11470, MLTX-02-004-EN-11200 | 100% | 2026-11-28 | 2026-12-01 |  |  | Labor [240 h]; Skilled Labor [90 h]; Mechanical [60 h]; Square Exhaust Diffuser 6"X6 " [6]; Supply, install, test and commission indoor ductwork [100]; Door Grilles 18"X6 " [1] | 9,360 | 9,360 | CN.MB.D15.1920 | MOD-02-CN-11480 | 0 | -17 |  | 0 | TO | Const | Toilet |
| MLTX-02-004-CN-12740 |  | Exhaust, Air Ducts Installation with all Accessories | 8d | 2026-10-10 A | 2026-10-12 A | MLTX-02-004-CN-12720 | 100% | 2026-11-16 | 2026-11-24 |  |  | Labor [200 h]; Skilled Labor [180 h]; Driver [60 h]; Mechanical [120 h]; Crane [120 h]; Supply, install, test and commission inline exhaust fans duct [1] | 3,900 | 3,900 | CN.MB.D15.1940 | MOD-02-CN-11490 | 0 | -17 |  | 0 | TO | Const | Toilet |
| MLTX-02-004-CN-12730 |  | Install and Finish HVAC and Ventilation Works Including Split Air Units | 9d | 2026-11-30 | 2026-12-09 | MLTX-02-004-PR-10400, MLTX-02-004-CN-13140, MLTX-02-004-CN-12740 FF |  |  |  | -45d | 0d | Labor [150 h]; Skilled Labor [90 h]; Driver [60 h]; Mechanical [60 h]; Crane [60 h]; Supply and install split air conditioning unit (DX-MINI SPLIT UNIT) [1] | 14,625 |  | CN.MB.D15.1930 | MOD-02-CN-11500 | 0 | -17 |  | 0 | TO | Const | Toilet |

| ID | WBS | Activity | Duration | Start | Finish | Predecessors | Complete | Remaining | Planned start | Planned finish | Total float | Free float | Resources | Cost | Actual cost | New Activity Code | New Activity ID | % Variance | Delay | On Schedule | W-Construction | WBS-Project | WBS-Construction Type |
| --- | --- | --- | --- | --- | --- | --- | --- | --- | --- | --- | --- | --- | --- | --- | --- | --- | --- | --- | --- | --- | --- | --- | --- |
|  | 2 | **WATER SUPPLY SYSTEM** |  | 2026-08-04 | 2026-12-08 |  |  |  |  |  |  |  |  |  |  |  |  |  |  |  |  |  |  |
| MLTX-02-004-CN-12750 |  | Installing of PPR Pipes and Fittings for Water Network | 3d | 2026-08-04 A | 2026-08-08 A | MLTX-02-004-CN-12790, MLTX-02-004-EN-11500, MLTX-02-004-EN-11510, MLTX-02-004-EN-11170, MLTX-02-004-PR-10260 | 100% |  | 2026-09-02 | 2026-09-05 |  |  | Labor [100 h]; Plumber [60 h]; PPR Pipe with 65 mm ? Cold water [6]; PPR Pipe with 50 mm ? Cold water [4]; PPR Pipe with 40 mm ? Cold water [1]; PPR Pipe with 32 mm ? Cold water [2]; PPR Pipe with 25 mm ? Cold water [4]; PPR Pipe with 20 mm ? Cold water [7]; PPR Pipe with 20 mm ? Hot water [22] | 6,922.5 | 6,922.5 | CN.MB.D15.1950 | MOD-02-CN-11540 | 0 | -17 | 0 | TO | Const | Toilet |
| MLTX-02-004-CN-12780 |  | Installing of GRP Tanks | 8d | 2026-09-15 A | 2026-12-02 | MLTX-02-004-CN-13150 FF | 60% | 8d | 2026-10-14 | 2026-10-22 | -46d | 0d | Skilled Labor [120 h]; Driver [100 h]; Plumber [140 h]; Crane [160 h]; Hot Press GRP Sectional Panel Water Tanks (4x3x3m) [0.67] | 104,000 |  | CN.MB.D15.1980 | MOD-02-CN-11560 | 0 | -17 | 0 | TO | Const | Toilet |
| MLTX-02-004-CN-12760 |  | Installing of HDPE Pipes and Valves for Water Supply Network | 3d | 2026-10-05 A | 2026-10-10 A | MLTX-02-004-CN-12720 | 100% |  | 2026-10-19 | 2026-10-21 |  |  | Labor [250 h]; Plumber [100 h]; SERVICE CONNECTIONS 50 mm [80] | 39,000 | 39,000 | CN.MB.D15.1960 | MOD-02-CN-11530 | 0 | -17 | 0 | TO | Const | Toilet |
| MLTX-02-004-CN-13170 |  | Installing of Valves and Fittings | 6d | 2026-11-01 A | 2026-11-05 A | MLTX-02-004-CN-12630, MLTX-02-004-CN-12750 | 100% |  | 2026-11-15 | 2026-11-21 |  |  | Labor [100 h]; Plumber [40 h]; SERVICE CONNECTIONS 50 mm [20] | 9,750 | 9,750 | CN.MB.D15.1950 | MOD-02-CN-11520 | 0 | -17 | 0 | TO | Const | Toilet |
| MLTX-02-004-CN-13260 |  | Installing of Water Heater | 7d | 2026-11-01 A | 2026-11-05 A | MLTX-02-004-CN-13030 | 100% |  | 2026-11-23 | 2026-11-30 |  |  | Labor [100 h]; Plumber [20 h]; 50 Liter Capacity [1] | 1,755 | 1,755 | CN.MB.D15.1980 | MOD-02-CN-11560 | 0 | -17 | 0 | TO | Const | Toilet |
| MLTX-02-004-CN-12770 |  | Installing of Booster Pump Units Including fittings and accessories | 5d | 2026-12-03 | 2026-12-08 | MLTX-02-004-CN-12780, MLTX-02-004-CN-12740, MLTX-02-004-CN-13170 |  |  |  |  | -46d | 0d | Labor [200 h]; Plumber [80 h]; (2W+1S Pumps) - flow of each pump 5 L/S @ 30 Meters [0.67] | 91,000 |  | CN.MB.D15.1970 | MOD-02-CN-11550 | 0 | -17 | 0 | TO | Const | Toilet |
|  | 1 | **SEWER/DRAINAGE SYSTEM** |  | 2026-07-04 | 2026-12-02 |  |  |  |  |  |  |  |  |  |  |  |  |  |  |  |  |  |  |
| MLTX-02-004-CN-12790 |  | Installing UPVC Pipes for Sewage Network | 2d | 2026-07-04 A | 2026-08-08 A | MLTX-02-004-EN-11520, MLTX-02-004-EN-11530, MLTX-02-004-EN-11160, MLTX-02-004-PR-10280 | 100% |  | 2026-08-31 | 2026-09-01 |  |  | Skilled Labor [150 h]; Plumber [60 h]; uPVC Sewer pipes Pipe with ? 4" (110mm) [21]; uPVC Sewer pipes Pipe Pipe with ? 3" (75mm) [13]; uPVC Sewer pipes Pipe Pipe with ? 2" (50mm) [20]; uPVC Sewer pipes Pipe Pipe with ? 1" (25mm) [5] | 11,768.25 | 11,768.25 | CN.MB.D15.1990 | MOD-02-CN-11590 | 0 | -17 | 0 | TO | Const | Toilet |
| MLTX-02-004-CN-13180 |  | Installing UPVC Pipes for External Connection for Sewage Network | 7d | 2026-11-01 A | 2026-11-12 A | MLTX-02-004-CN-13250 | 100% |  | 2026-11-25 | 2026-12-02 |  |  | Skilled Labor [90 h]; Plumber [30 h]; Supply and install 150 mm uPVC pipes to external wastewater network [100] | 85,312.5 | 85,312.5 | CN.MB.D15.1990 | MOD-02-CN-11580 | 0 | -17 | 0 | TO | Const | Toilet |
| MLTX-02-004-CN-13270 |  | Installing of Toilet Fixtures and Accessories Such as Closets and Basins | 9d | 2026-11-03 A | 2026-11-12 A | MLTX-02-004-CN-13030 | 100% |  | 2026-11-16 | 2026-11-25 |  |  | Skilled Labor [120 h]; Plumber [80 h]; Supply and installation of western water closet [3]; Supply and installation of western water closet [1]; Supply and installation of Bib tap with Perenial Hose (BPH) [4]; Supply, installation, testing and commissioning of Lavatory / wash basin [1]; Supply, installation, testing and commissioning of wall hung Lavatory / wash basin [1]; Supply and install Complete stainless steel 316 Handicap Rails Grab Bars [1]; Supply and install roof drain (RD) dome typ [1]; Supply and install shower mixer [4] | 31,395 | 31,395 | CN.MB.D15.2000 | MOD-02-CN-11600 | 0 | -17 | 0 | TO | Const | Toilet |
| MLTX-02-004-CN-12800 |  | Installing of Plumping Fixtures and Accessories | 2d | 2026-11-24 | 2026-11-25 | MLTX-02-004-CN-13070, MLTX-02-004-CN-13180 |  |  |  |  | 49d | 0d | Skilled Labor [120 h]; Plumber [80 h]; galvanized iron vent stack Vent Cap with 3" ? [1]; Supply and installation of Floor drain [9]; FCO 4" ? (110mm) [1]; FCO 3" ? (75mm) [1]; Supply, installation,testing and commissioning of Gully Traps [1] | 10,359.38 |  | CN.MB.D15.2000 | MOD-02-CN-11600 | 0 | -17 | 0 | TO | Const | Toilet |
| MLTX-02-004-CN-13250 |  | Installing Inspection Chamber for Sewage Network | 8d | 2026-11-24 | 2026-12-02 | MLTX-02-004-CN-12790 |  |  |  |  | 46d | 132d | Driver [80 h]; Plumber [80 h]; Crane [80 h]; Supply, installation, testing and commissioning of Inspection chamber [1] | 12,187.5 |  | CN.MB.D15.1990 | MOD-02-CN-11590 | 0 | -17 | 0 | TO | Const | Toilet |
|  | 3 | **FIRE PROTECTION** |  | 2026-11-24 | 2026-12-01 |  |  |  |  |  |  |  |  |  |  |  |  |  |  |  |  |  |  |
| MLTX-02-004-CN-12810 |  | Installing of Fire Fighting Extinguisher and accessories (PFE-1, PFE-2) | 7d | 2026-11-24 | 2026-12-01 | MLTX-02-004-CN-13240, MLTX-02-004-CN-13280, MLTX-02-004-EN-11490, MLTX-02-004-EN-11180 |  |  |  |  | -38d | 7d | Labor [100 h]; Mechanical [40 h]; Supply and install, PFE-1, Portable dry powder fire extinguisher 4.5 Kg capacity [1]; Supply and install, PFE-2, Portable Carbon Dioxide fire extinguisher. [1] | 1,950 |  | CN.MB.D15.2010 | MOD-02-CN-11620 | 0 | -17 | 0 | TO | Const | Toilet |
|  | 12 | **ELECTRICAL WORKS** |  | 2026-08-11 | 2026-12-24 |  |  |  |  |  |  |  |  |  |  |  |  |  |  |  |  |  |  |
|  | 1 | **ROUGH-IN WORKS** |  | 2026-08-11 | 2026-08-26 |  |  |  |  |  |  |  |  |  |  |  |  |  |  |  |  |  |  |
| MLTX-02-004-CN-12830 |  | Preleminary Works for Panel Boards | 9d | 2026-08-11 A | 2026-08-26 A | MLTX-02-004-EN-11250, MLTX-02-004-CN-12510, MLTX-02-004-EN-11550, MLTX-02-004-EN-11560, MLTX-02-004-EN-11570, MLTX-02-004-EN-11590, MLTX-02-004-EN-11600 | 100% |  | 2026-08-31 | 2026-09-09 |  |  | Labor [140 h]; Electrician [40 h]; Main Distribution Board including all related works to install power meter (power meter is excluded) [0.4]; Power Panel for pump room [0.4]; Power Panel for street lighting [0.4] | 76,050 | 76,050 | CN.MB.D16.2030 | MOD-02-CN-11660 | 0 | -17 | 0 | TO | Const | Toilet |
| MLTX-02-004-CN-12850 |  | Preleminary Works for Cable Works | 9d | 2026-08-11 A | 2026-08-26 A | MLTX-02-004-EN-11610, MLTX-02-004-CN-12510, MLTX-02-004-EN-11540, MLTX-02-004-EN-11580, MLTX-02-004-EN-11020, MLTX-02-004-EN-11230 | 100% |  | 2026-08-12 | 2026-08-22 |  |  | Labor [210 h]; Electrician [60 h]; Recessed mounted LED downlight luminaire 40 watt with reflector; IP44 ,230V , 4000k, 4200 LUMEN ,CRI > 80; Low glare [12]; LED flood light outdoor type 96 watt, 4000k, 12720 LUMEN [0.4]; Wall mounted emergency LED luminaire, 230V, 60 Hz., 3 hour back up time 1800 lumen,CRI>80, 2*18 watt, IP 65 [1.6]; LED Exit light fixture 4.5 watt with battery for 3 hours, and a visibility of 30 meters [0.4]; Wall mounted outdoor LED luminaire, 17 watt, 2000 lumens, with light emission from two sides [0.4]; Wall mounted outdoor LED luminaire, 13 watt, 1000 LUMEN, CR>80, for roof lighting [2.4] | 10,700.04 | 10,700.04 | CN.MB.D16.2050 | MOD-02-CN-11670 | 0 | -17 | 0 | TO | Const | Toilet |
| MLTX-02-004-CN-12860 |  | Preleminary Works for Sockets and Power Points | 9d | 2026-08-11 A | 2026-08-26 A | MLTX-02-004-CN-12510 | 100% |  | 2026-08-12 | 2026-08-22 |  |  | Labor [140 h]; Electrician [40 h]; 1 way, One Gang Switch [0.8]; 1 way, Two Gang Switch [1.6]; 1 way, One Gang Switch, weatherproof [0.4]; Exaust fan DP switch weatherproof [0.4]; Indoor AC DP switch weatherproof [0.4]; High level Single Receptacle outlet [1.6]; Duplex Receptacle outlet [2.8]; Hand Dryer switch weatherproof [0.4]; Water heater switch [0.4]; Outdoor Disconnect Switch for air conditioiner [0.4]; Outdoor Disconnect Switch for exhaust fans [0.4] | 9,230.91 | 9,230.91 | CN.MB.D16.2070 | MOD-02-CN-11680 | 0 | -17 | 0 | TO | Const | Toilet |
| MLTX-02-004-CN-12880 |  | Preleminary Works for Lightning Works | 9d | 2026-08-11 A | 2026-08-26 A | MLTX-02-004-CN-12510, MLTX-02-004-EN-11630, MLTX-02-004-EN-11670, MLTX-02-004-EN-11240 | 100% |  | 2026-08-12 | 2026-08-22 |  |  | Labor [140 h]; Electrician [40 h]; For Building [0.4] | 9,750 | 9,750 | CN.MB.D16.2090 | MOD-02-CN-11690 | 0 | -17 | 0 | TO | Const | Toilet |
| MLTX-02-004-CN-12900 |  | Preleminary Works for Data & Telecommunication System | 9d | 2026-08-11 A | 2026-08-26 A | MLTX-02-004-CN-12510, MLTX-02-004-EN-11720, MLTX-02-004-EN-11730, MLTX-02-004-EN-11210 | 100% |  | 2026-08-30 | 2026-09-08 |  |  | Labor [140 h]; Electrician [40 h]; Wall telephone outlet [1.2]; Wall mounted data outlet [1.2]; Telecom/IT rack complete with switch, router and patch Panel [0.4]; AV floor box outlet (1 HDMI) [0.4]; AV wall outlet (1 HDMI) [0.4] | 12,285 | 12,285 | CN.MB.D16.2110 | MOD-02-CN-11700 | 0 | -17 | 0 | TO | Const | Toilet |
| MLTX-02-004-CN-12940 |  | Preleminary Works for Security and Access Control System | 9d | 2026-08-11 A | 2026-08-26 A | MLTX-02-004-EN-11650, MLTX-02-004-EN-11700, MLTX-02-004-EN-11710, MLTX-02-004-CN-12510, MLTX-02-004-EN-11220 | 100% |  | 2026-08-30 | 2026-09-08 |  |  | Labor [210 h]; Electrician [60 h]; 1 CCTV cabinet (Rack) [0.4]; NVR [0.4]; 21" LED monitor [0.4]; Indoor dome type Camera IP-20 ,IK-10, POE type with infra red feature, minimum coverage 20 meters, ONVIF supported [2.4]; Outdoor fixed camera weahter proof IP-65, POE type [1.6]; Pull box for fiber optic cable pulling from provider [0.4] | 15,266.55 | 15,266.55 | CN.MB.D16.2150 | MOD-02-CN-11720 | 0 | -17 | 0 | TO | Const | Toilet |
| MLTX-02-004-CN-13230 |  | Preleminary Works for Earthing Works | 9d | 2026-08-11 A | 2026-08-26 A | MLTX-02-004-CN-12510, MLTX-02-004-EN-11620, MLTX-02-004-EN-11660, MLTX-02-004-EN-11240, MLTX-02-004-PR-10120 | 100% |  | 2026-08-12 | 2026-08-22 |  |  | Labor [210 h]; Electrician [60 h]; Distribution boards, panelboards, lighting installations and wiring accessories [0.4]; Telecom equipment [0.4]; KWHM [0.8] | 15,600 | 15,600 | CN.MB.D16.2090 | MOD-02-CN-11650 | 0 | -17 | 0 | TO | Const | Toilet |

| ID | WBS | Activity | Duration | Start | Finish | Predecessors | Complete | Planned start | Planned finish | Total float | Free float | Resources | Cost | Actual cost | New Activity Code | New Activity ID | % Variance | Delay | On Schedule | W-Construction | WBS-Project | WBS-Construction Type |
| --- | --- | --- | --- | --- | --- | --- | --- | --- | --- | --- | --- | --- | --- | --- | --- | --- | --- | --- | --- | --- | --- | --- |
|  | 2 | **FIXTURE WORKS** |  | 2026-10-06 | 2026-12-24 |  |  |  |  |  |  |  |  |  |  |  |  |  |  |  |  |  |
| MLTX-02-004-CN-12960 |  | Installing and Finalize Works of Earthing Works | 9d | 2026-10-06 A | 2026-10-10 A | MLTX-02-004-CN-12870 | 100% | 2026-12-17 | 2026-12-27 |  |  | Labor [60 h]; Electrician [60 h]; Distribution boards, panelboards, lighting installations and wiring accessories [0.6]; Telecom equipment [0.6]; KWHM [1.2] | 23,400 | 23,400 | CN.MB.D16.2190 | MOD-02-CN-11770 | 0 | -17 | 0 | TO | Const | Toilet |
| MLTX-02-004-CN-12870 |  | Installing and Finalize Works of Sockets and Power Points | 7d | 2026-10-08 A | 2026-10-10 A | MLTX-02-004-PR-10320 | 100% | 2026-12-19 | 2026-12-26 |  |  | Labor [60 h]; Electrician [60 h]; 1 way, One Gang Switch [1.2]; 1 way, Two Gang Switch [2.4]; 1 way, One Gang Switch, weatherproof [0.6]; Exaust fan DP switch weatherproof [0.6]; Indoor AC DP switch weatherproof [0.6]; High level Single Receptacle outlet [2.4]; Duplex Receptacle outlet [4.2]; Hand Dryer switch weatherproof [0.6]; Water heater switch [0.6]; Outdoor Disconnect Switch for air conditioiner [0.6]; Outdoor Disconnect Switch for exhaust fans [0.6] | 13,846.36 | 13,846.36 | CN.MB.D16.2080 | MOD-02-CN-11760 | 0 | -17 | 0 | TO | Const | Toilet |
| MLTX-02-004-CN-12890 |  | Installing and Finalize Works of Lighting Works including Light Fixtures | 7d | 2026-11-24 | 2026-12-01 | MLTX-02-004-CN-13240, MLTX-02-004-PR-10300 |  |  |  | -38d | 7d | Labor [80 h]; Electrician [80 h]; Recessed mounted LED downlight luminaire 40 watt with reflector; IP44 ,230V , 4000k, 4200 LUMEN ,CRI > 80; Low glare [18]; LED flood light outdoor type 96 watt, 4000k, 12720 LUMEN [0.6]; Wall mounted emergency LED luminaire, 230V, 60 Hz., 3 hour back up time 1800 lumen,CRI>80, 2*18 watt, IP 65 [2.4]; LED Exit light fixture 4.5 watt with battery for 3 hours, and a visibility of 30 meters [0.6]; Wall mounted outdoor LED luminaire, 17 watt, 2000 lumens, with light emission from two sides [0.6]; Wall mounted outdoor LED luminaire, 13 watt, 1000 LUMEN, CR>80, for roof lighting [3.6] | 16,050.06 |  | CN.MB.D16.2100 | MOD-02-CN-11790 | 0 | -17 | 0 | TO | Const | Toilet |
| MLTX-02-004-CN-12910 |  | Installing Data and Telecommunication System with all Accessories | 7d | 2026-11-24 | 2026-12-01 | MLTX-02-004-CN-13240, MLTX-02-004-CN-13260 |  |  |  | -38d | 7d | Labor [80 h]; Electrician [80 h]; Wall telephone outlet [1.8]; Wall mounted data outlet [1.8]; Telecom/IT rack complete with switch, router and patch Panel [0.6]; AV floor box outlet (1 HDMI) [0.6]; AV wall outlet (1 HDMI) [0.6] | 18,427.5 |  | CN.MB.D16.2120 | MOD-02-CN-11750 | 0 | -17 | 0 | TO | Const | Toilet |
| MLTX-02-004-CN-12840 |  | Installing and Finish Works of Panel Boards | 10d | 2026-11-30 | 2026-12-10 | MLTX-02-004-CN-13140 |  |  |  | -42d | 3d | Labor [350 h]; Electrician [100 h]; Main Distribution Board including all related works to install power meter (power meter is excluded) [0.6]; Power Panel for pump room [0.6]; Power Panel for street lighting [0.6] | 84,075 |  | CN.MB.D16.2040 | MOD-02-CN-11740 | 0 | -17 | 0 | TO | Const | Toilet |
| MLTX-02-004-CN-12950 |  | Installing and Finalize Works of Security and Access Control System | 9d | 2026-11-30 | 2026-12-09 | MLTX-02-004-CN-13140 |  |  |  | -45d | 0d | Labor [80 h]; Electrician [80 h]; 1 CCTV cabinet (Rack) [0.6]; NVR [0.6]; 21" LED monitor [0.6]; Indoor dome type Camera IP-20 ,IK-10, POE type with infra red feature, minimum coverage 20 meters, ONVIF supported [3.6]; Outdoor fixed camera weahter proof IP-65, POE type [2.4]; Pull box for fiber optic cable pulling from provider [0.6] | 22,899.83 |  | CN.MB.D16.2170 | MOD-02-CN-11830 | 0 | -17 | 0 | TO | Const | Toilet |
| MLTX-02-004-CN-12970 |  | Installing and Finalize Works of Lightning Protection System | 9d | 2026-11-30 | 2026-12-09 | MLTX-02-004-CN-13140 |  |  |  | -45d | 0d | Labor [100 h]; Electrician [100 h]; For Building [0.6] | 14,625 |  | CN.MB.D16.2200 | MOD-02-CN-11820 | 0 | -17 | 0 | TO | Const | Toilet |
| MLTX-02-004-CN-12820 |  | Installing of Fire automation and Fire Alarm System | 5d | 2026-12-20 | 2026-12-24 | MLTX-02-004-CN-12730, MLTX-02-004-CN-13040, MLTX-02-004-EN-11640, MLTX-02-004-EN-11680, MLTX-02-004-EN-11690 |  |  |  | 27d | 0d | Labor [200 h]; Electrician [80 h]; Analog addressable fire alarm control panel [1]; Intelligent Photoelectric smoke and heat detector with base [12]; Addressable Manual Pull Station, wall mounted [2]; Addressable Fire Alarm Strobe with Sounder, wall mounted [1]; Addressable Fire Alarm Strobe with Sounder, wall mounted water proof IP66 [1] | 34,320 |  | CN.MB.D15.2020 | MOD-02-CN-11780 | 0 | -17 | 0 | TO | Const | Toilet |
|  | 7 | **DOORS/WINDOWS** |  | 2026-10-18 | 2026-12-19 |  |  |  |  |  |  |  |  |  |  |  |  |  |  |  |  |  |
| MLTX-02-004-CN-12660 |  | Preliminary Works For Doors | 10d | 2026-10-18 A | 2026-10-20 A | MLTX-02-004-CN-12510, MLTX-02-004-EN-11080, MLTX-02-004-PR-10220 | 100% | 2026-10-25 | 2026-11-04 |  |  | Labor [180 h]; Skilled Labor [60 h]; Metal Door D2 : [0.4] | 3,900 | 3,900 | CN.MB.D08.1810 | MOD-02-CN-11110 | 0 | -17 | 0 | TO | Const | Toilet |
| MLTX-02-004-CN-12670 |  | Finalize Metal Doors for Toilets Building | 5d | 2026-10-20 A | 2026-10-22 A | MLTX-02-004-CN-12660 | 100% | 2026-12-01 | 2026-12-06 |  |  | Labor [240 h]; Skilled Labor [90 h]; Metal Door D2 : [0.6] | 5,850 | 5,850 | CN.MB.D08.1820 | MOD-02-CN-11120 | 0 | -17 | 0 | TO | Const | Toilet |
| MLTX-02-004-CN-13120 |  | Preliminary Works For Windows/Curtain Wall | 12d | 2026-11-24 | 2026-12-07 | MLTX-02-004-CN-12510, MLTX-02-004-PR-10220 |  |  |  | 42d | 128d | Labor [120 h]; Skilled Labor [40 h]; Supply and install curtain wall with structural glass [0.4] | 23,400 |  | CN.MB.D08.1810 | MOD-02-CN-11100 | 0 | -17 | 0 | TO | Const | Toilet |
| MLTX-02-004-CN-13040 |  | Finalize Glazzed Curtain Wall Works | 5d | 2026-12-14 | 2026-12-19 | MLTX-02-004-CN-13140, MLTX-02-004-CN-12990 |  |  |  | 27d | 0d | Labor [320 h]; Skilled Labor [120 h]; Supply and install curtain wall with structural glass [0.6] | 35,100 |  | CN.MB.D08.1840 | MOD-02-CN-11130 | 0 | -17 | 0 | TO | Const | Toilet |
|  | 4 | **METAL WORKS** |  | 2026-11-24 | 2026-12-13 |  |  |  |  |  |  |  |  |  |  |  |  |  |  |  |  |  |
| MLTX-02-004-CN-12980 |  | Installation of DI Cover for Tank | 4d | 2026-11-24 | 2026-11-28 | MLTX-02-004-CN-12590, MLTX-02-004-EN-8080 |  |  |  | 50d | 136d | Skilled Labor [120 h]; Driver [80 h]; Crane [50 h]; Supply and install heavy duty ductile iron steel cover [1] | 3,900 |  | CN.MB.D05.1770 | MOD-02-CN-11160 | 0 | -17 | 0 | TO | Const | Toilet |
| MLTX-02-004-CN-12610 |  | Installation of Galvanized Steel Ladder | 5d | 2026-11-26 | 2026-12-01 | MLTX-02-004-CN-13150 |  |  |  | 27d | 0d | Skilled Labor [120 h]; Driver [80 h]; Crane [80 h]; Supply and install Galvanized steel ladder [1] | 5,850 |  | CN.MB.D05.1760 | MOD-02-CN-11150 | 0 | -17 | 0 | TO | Const | Toilet |
| MLTX-02-004-CN-12990 |  | Installation of Galvanized Steel Roof Scupper | 10d | 2026-12-02 | 2026-12-13 | MLTX-02-004-CN-12610 |  |  |  | 27d | 0d | Labor [200 h]; Skilled Labor [120 h]; Plumber [80 h]; Supply and install and testing of overflow galvanized steel roof scupper [1] | 3,900 |  | CN.MB.D05.1810 | MOD-02-CN-11170 | 0 | -17 | 0 | TO | Const | Toilet |
|  | 6 | **FINISHING WORKS** |  | 2026-09-05 | 2026-11-29 |  |  |  |  |  |  |  |  |  |  |  |  |  |  |  |  |  |
|  | 1 | **FLOOR FINISHES** |  | 2026-10-08 | 2026-11-08 |  |  |  |  |  |  |  |  |  |  |  |  |  |  |  |  |  |
| MLTX-02-004-CN-12680 |  | Creamic Tiles Floor Finish Works | 2d | 2026-10-08 A | 2026-10-12 A | MLTX-02-004-CN-12690, MLTX-02-004-CN-12750, MLTX-02-004-EN-11060 | 100% | 2026-11-15 | 2026-11-16 |  |  | Labor [200 h]; Tile Fixer [80 h]; Floor Finishes Anti-slip glazed grey ceramic tiles, 600*600 mm [13]; Floor Finishes Light grey Ceramic tiles, 300*300 mm [48] | 11,895 | 11,895 | CN.MB.D09.1840 | MOD-02-CN-11200 | 0 | -17 | 0 | TO | Const | Toilet |
| MLTX-02-004-CN-13060 |  | Epoxy Coat on Concrete Floor | 20d | 2026-11-01 A | 2026-11-03 A | MLTX-02-004-CN-12660, MLTX-02-004-CN-12980, MLTX-02-004-CN-13120, MLTX-02-004-CN-12670, MLTX-02-004-CN-12820, MLTX-02-004-CN-13270 | 100% | 2027-01-07 | 2027-01-30 |  |  | Labor [160 h]; Skilled Labor [60 h]; Floor Finishes Epoxy paint on concrete slab on grade [6] | 1,170 | 1,170 | CN.MB.D09.1970 | MOD-02-CN-11220 | 0 | -17 | 0 | TO | Const | Toilet |
| MLTX-02-004-CN-13070 |  | Ceramic Skirting Tiles Finish Works | 4d | 2026-11-01 A | 2026-11-05 A | MLTX-02-004-CN-13050 | 100% | 2026-11-22 | 2026-11-25 |  |  | Labor [300 h]; Tile Fixer [40 h]; Floor Finishes Anti-slip glazed ceramic skirting tiles 600*100*10 mm [12] | 1,170 | 1,170 | CN.MB.D09.1980 | MOD-02-CN-11230 | 0 | -17 | 0 | TO | Const | Toilet |
| MLTX-02-004-CN-13050 |  | Granite Tiles Floor Finish Works | 6d | 2026-11-03 A | 2026-11-08 A | MLTX-02-004-CN-12680 | 100% | 2026-11-15 | 2026-11-21 |  |  | Labor [200 h]; Tile Fixer [80 h]; Floor Finishes Anti-slip granite tiles for entrance [6] | 2,925 | 2,925 | CN.MB.D09.1960 | MOD-02-CN-11210 | 0 | -17 | 0 | TO | Const | Toilet |

| ID | WBS | Activity | Duration | Start | Finish | Predecessors | Complete | Planned start | Planned finish | Total float | Free float | Resources | Cost | Actual cost | New Activity Code | New Activity ID | % Variance | Delay | On Schedule | W-Construction | WBS-Project | WBS-Construction Type | Old Activity ID - MK | Flag | Procurement |
| --- | --- | --- | --- | --- | --- | --- | --- | --- | --- | --- | --- | --- | --- | --- | --- | --- | --- | --- | --- | --- | --- | --- | --- | --- | --- |
|  | 2 | **WALL FINISHES** |  | 2026-09-05 | 2026-11-29 |  |  |  |  |  |  |  |  |  |  |  |  |  |  |  |  |  |  |  |  |
| MLTX-02-004-CN-12690 |  | Preliminary Works for Wall Finish Works including Plastering (Internal) | 3d | 2026-09-05 A | 2026-09-12 A | MLTX-02-004-CN-12830, MLTX-02-004-CN-12850, MLTX-02-004-CN-12860, MLTX-02-004-CN-12880, MLTX-02-004-CN-12900, MLTX-02-004-CN-12940, MLTX-02-004-CN-13230, MLTX-02-004-EN-11040 | 100% | 2026-09-14 | 2026-09-16 |  |  | Labor [100 h]; Skilled Labor [60 h]; Wall Finishes Supply and install plastering to walls [157] | 18,369 | 18,369 | CN.MB.D09.1870 | MOD-02-CN-11280 | 0 | -17 | 0 | TO | Const | Toilet |  |  |  |
| MLTX-02-004-CN-13000 |  | Preliminary Works for Wall Finish Works (External) | 14d | 2026-09-20 A | 2026-09-30 A | MLTX-02-004-CN-12940 | 100% | 2026-09-30 | 2026-10-15 |  |  | Labor [200 h]; Skilled Labor [80 h]; Wall Finishes Supply and install acrylic paint for external elevations [37.33] | 6,552 | 6,552 | CN.MB.D09.1900 | MOD-02-CN-11290 | 0 | -17 | 0 | TO | Const | Toilet |  |  |  |
| MLTX-02-004-CN-13020 |  | Ceramic Finish Works for Walls | 5d | 2026-10-04 A | 2026-10-06 A | MLTX-02-004-CN-13000 | 100% | 2026-11-09 | 2026-11-14 |  |  | Labor [200 h]; Driver [100 h]; Tile Fixer [120 h]; Forklift [180 h]; Wall Finishes Supply and install 300*300 mm ceramic [115] | 15,697.5 | 15,697.5 | CN.MB.D09.1920 | MOD-02-CN-11310 | 0 | -17 | 0 | TO | Const | Toilet |  |  |  |
| MLTX-02-004-CN-13130 |  | Stone Cladding Finish Works for External Walls | 5d | 2026-10-10 A | 2026-10-15 A | MLTX-02-004-CN-13020 | 100% | 2026-10-21 | 2026-10-26 |  |  | Labor [300 h]; Driver [80 h]; Tile Fixer [100 h]; Forklift [150 h]; Wall Finishes Supply and install Riyadh stone cladding (300x600mm) [46.67] | 9,100 | 9,100 | CN.MB.D09.1920 | MOD-02-CN-11250 | 0 | -17 | 0 | TO | Const | Toilet |  |  |  |
| MLTX-02-004-CN-13010 |  | Painting Finish Works for External Walls | 3d | 2026-11-01 A | 2026-11-05 A | MLTX-02-004-CN-12760, MLTX-02-004-CN-13000 | 100% | 2026-11-15 | 2026-11-17 |  |  | Labor [200 h]; Skilled Labor [60 h]; Wall Finishes Supply and install acrylic paint for external elevations [56]; Wall Finishes Supply and spray decorative paint ( profile ) for external elevations [0.33] | 10,478 | 10,478 | CN.MB.D09.1910 | MOD-02-CN-11300 | 0 | -17 | 0 | TO | Const | Toilet |  |  |  |
| MLTX-02-004-CN-13030 |  | Phenolic Partitions for Toilets | 7d | 2026-11-01 A | 2026-11-05 A | MLTX-02-004-CN-13130, MLTX-02-004-CN-12700, MLTX-02-004-CN-13290 | 100% | 2026-12-08 | 2026-12-15 |  |  | Labor [700 h]; Driver [340 h]; Tile Fixer [220 h]; Forklift [330 h]; Wall Finishes Supply and install solid phenolic toilets partition board [40] | 31,200 | 31,200 | CN.MB.D09.1930 | MOD-02-CN-11320 | 0 | -17 | 0 | TO | Const | Toilet |  |  |  |
| MLTX-02-004-CN-13240 |  | Painting Finish Works for Internal Walls | 2d | 2026-11-03 A | 2026-11-08 A | MLTX-02-004-CN-13140 | 100% | 2026-12-22 | 2026-12-23 |  |  | Labor [160 h]; Skilled Labor [40 h]; Wall Finishes Supply and install 2 coats of acrylic paint at internal walls and columns [120] | 2,340 | 2,340 | CN.MB.D09.1910 | MOD-02-CN-11300 | 0 | -17 | 0 | TO | Const | Toilet |  |  |  |
| MLTX-02-004-CN-13140 |  | Glass Partitions including all accessories and doors | 5d | 2026-11-24 | 2026-11-29 | MLTX-02-004-CN-13030 |  |  |  | -45d | 0d | Labor [350 h]; Skilled Labor [120 h]; Wall Finishes Supply and install 12 mm glass partition [7] | 12,285 |  | CN.MB.D09.1930 | MOD-02-CN-11260 | 0 | -17 | 0 | TO | Const | Toilet |  |  |  |
| MLTX-02-004-CN-13150 |  | Granite Capping for Parpet | 2d | 2026-11-24 | 2026-11-25 | MLTX-02-004-CN-12650 |  |  |  | -40d | 0d | Labor [160 h]; Driver [40 h]; Tile Fixer [40 h]; Forklift [60 h]; Wall Finishes Supply and install granite capping for parapet [38] | 8,151 |  | CN.MB.D09.1930 | MOD-02-CN-11270 | 0 | -17 | 0 | TO | Const | Toilet |  |  |  |
|  | 3 | **CELLING FINISHES** |  | 2026-10-19 | 2026-11-12 |  |  |  |  |  |  |  |  |  |  |  |  |  |  |  |  |  |  |  |  |
| MLTX-02-004-CN-13290 |  | Gypsum Board Suspended Ceiling Finish Works For Ceiling | 4d | 2026-10-19 A | 2026-10-21 A | MLTX-02-004-CN-12720 | 100% | 2026-10-21 | 2026-10-25 |  |  | Labor [400 h]; Skilled Labor [120 h]; CEILING FINISHES Supply and install 12.5mm thk, moisture resistant gypsum board suspended ceiling [25.2]; CEILING FINISHES Supply and install 12.5mm thk, gypsum board suspended ceiling [7.8] | 6,926.4 | 6,926.4 | CN.MB.D09.1950 | MOD-02-CN-11360 | 0 | -17 | 0 | TO | Const | Toilet |  |  |  |
| MLTX-02-004-CN-13300 |  | Preliminary Works for Ceiling Painting Works | 15d | 2026-11-05 A | 2026-11-12 A | MLTX-02-004-EN-11150, MLTX-02-004-PR-10200, MLTX-02-004-CN-12690 | 100% | 2026-11-16 | 2026-12-02 |  |  | Labor [200 h]; Skilled Labor [90 h]; CEILING FINISHES Supply and install 12.5mm thk, moisture resistant gypsum board suspended ceiling [16.8]; CEILING FINISHES Supply and install 12.5mm thk, gypsum board suspended ceiling [5.2] | 4,617.6 | 4,617.6 | CN.MB.D09.1890 | MOD-02-CN-11340 | 0 | -7 | 0 | TO | Const | Toilet |  |  |  |
| MLTX-02-004-CN-13280 |  | Painting Finish Works for Ceiling | 9d | 2026-11-07 A | 2026-11-11 A | MLTX-02-004-CN-13290, MLTX-02-004-CN-13300 | 100% | 2026-12-03 | 2026-12-13 |  |  | Labor [200 h]; Skilled Labor [60 h]; CEILING FINISHES Supply and install 2 coats of acrylic paint at under side slab [14] | 1,638 | 1,638 | CN.MB.D09.1940 | MOD-02-CN-11350 | 0 | -17 | 0 | TO | Const | Toilet |  |  |  |
|  | 8 | **SPECIALTIES WORK** |  | 2026-11-24 | 2026-11-29 |  |  |  |  |  |  |  |  |  |  |  |  |  |  |  |  |  |  |  |  |
| MLTX-02-004-CN-13160 |  | Installation of Phenolic Locker | 2d | 2026-11-24 | 2026-11-25 | MLTX-02-004-CN-13010, MLTX-02-004-CN-13030 |  |  |  | 42d | 86d | Labor [100 h]; Skilled Labor [60 h]; phenolic locker Size 2400*550*2200 mm [1]; phenolic locker Size 3500*550*2200 mm [1] | 24,375 |  | CN.MB.D10.1900 | MOD-02-CN-11380 | 0 | -17 | 0 | TO | Const | Toilet |  |  |  |
| MLTX-02-004-CN-12700 |  | Sanitary Fixtures and Accessories Works | 3d | 2026-11-26 | 2026-11-29 | MLTX-02-004-CN-12800, MLTX-02-004-PR-10240 |  |  |  | 49d | 135d | Plumber [100 h]; Supply and install toilet Accessories [1] | 14,625 |  | CN.MB.D10.1890 | MOD-02-CN-11390 | 0 | -17 | 0 | TO | Const | Toilet |  |  |  |
|  | PRO | **PROCUREMENT** |  | 2026-05-06 | 2027-02-02 |  |  |  |  |  |  |  |  |  |  |  |  |  |  |  |  |  |  |  |  |
|  | SLI | **SHORT LEAD ITEM** |  | 2026-05-06 | 2027-02-02 |  |  |  |  |  |  |  |  |  |  |  |  |  |  |  |  |  |  |  |  |
|  | TOI | **TOILET/SERVICE WORKS** |  | 2026-05-06 | 2026-12-16 |  |  |  |  |  |  |  |  |  |  |  |  |  |  |  |  |  |  |  |  |
|  | 1 | **STEEL REINFORCEMENT** |  | 2026-05-13 | 2026-05-31 |  |  |  |  |  |  |  |  |  |  |  |  |  |  |  |  |  |  |  |  |
| MLTX-02-004-PR-9970 |  | PO for Steel Reinforcement | 2d | 2026-05-13 A | 2026-05-14 A | MLTX-02-004-EN-9100 | 100% |  |  |  |  | Purchaser [150 h] |  |  |  | MOD-02-PR-7880 | 0 | -15 | 0 |  | Procu |  | MAK-01-PR-1000 | UDF_G1 | TO |
| MLTX-02-004-PR-10070 |  | Material Delivery of Steel Reinforcement | 1d | 2026-05-31 A | 2026-05-31 A | MLTX-02-004-PR-9970 | 100% |  |  |  |  | Purchaser [156.8 h] |  |  |  | MOD-02-PR-7900 | -100 | -15 | -100 |  | Procu |  | MAK-01-PR-1020 | UDF_G1 | TO |
|  | 3 | **CONCRETE BLOCKS** |  | 2026-05-06 | 2026-07-27 |  |  |  |  |  |  |  |  |  |  |  |  |  |  |  |  |  |  |  |  |
| MLTX-02-004-PR-10150 |  | PO for Concrete Blocks | 1d | 2026-05-06 A | 2026-05-06 A | MLTX-02-004-EN-9200, MLTX-02-004-EN-9010, MLTX-02-004-PR-9970 | 100% |  |  |  |  | Purchaser [150 h] |  |  |  | MOD-02-PR-7950 | 0 | 1 | 0 |  | Procu |  | MAK-01-PR-1000 |  | TO |
| MLTX-02-004-PR-10160 |  | Material Delivery of Concrete Blocks | 5d | 2026-07-27 A | 2026-07-27 A | MLTX-02-004-PR-10150 | 100% | 2026-07-27 | 2026-08-01 |  |  | Purchaser [150 h] |  |  |  | MOD-02-PR-7970 | -100 | -5 | -87.5 |  | Procu |  | MAK-01-PR-1020 | UDF_G1 | TO |

| ID | WBS | Activity | Duration | Start | Finish | Predecessors | Complete | Planned start | Planned finish | Resources | New Activity ID | Old Activity ID - MK | % Variance | Delay | Flag | On Schedule | Procurement | WBS-Project |
| --- | --- | --- | --- | --- | --- | --- | --- | --- | --- | --- | --- | --- | --- | --- | --- | --- | --- | --- |
|  | 6 | **FLOOR/WALL TILES** |  | 2026-08-08 | 2026-08-12 |  |  |  |  |  |  |  |  |  |  |  |  |  |
| MLTX-02-004-PR-10170 |  | PO for Tilling Materials | 5d | 2026-08-08 A | 2026-08-08 A | MLTX-02-004-EN-9140, MLTX-02-004-EN-9220, MLTX-02-004-PR-10150 | 100% | 2026-10-17 | 2026-10-21 | Purchaser [150 h] | MOD-02-PR-8030 | MAK-01-PR-1000 | -100 | -12 | UDF_G1 | -100 | TO | Procu |
| MLTX-02-004-PR-10180 |  | Material Delivery of Tailling Material | 13d | 2026-08-12 A | 2026-08-12 A | MLTX-02-004-EN-11650, MLTX-02-004-EN-11700, MLTX-02-004-EN-11710, MLTX-02-004-EN-11820, MLTX-02-004-EN-11830, MLTX-02-004-EN-11850, MLTX-02-004-EN-11860, MLTX-02-004-EN-11870, MLTX-02-004-EN-11780, MLTX-02-004-EN-11790, MLTX-02-004-EN-8080, MLTX-02-004-EN-8200, MLTX-02-004-EN-8160, MLTX-02-004-EN-8170, MLTX-02-004-EN-11110, MLTX-02-004-EN-11130, MLTX-02-004-EN-11140, MLTX-02-004-EN-11030, MLTX-02-004-EN-11230, MLTX-02-004-EN-11240, MLTX-02-004-PR-10170 | 100% | 2026-11-03 | 2026-11-17 | Purchaser [150 h] | MOD-02-PR-8050 | MAK-01-PR-1020 | -38.4615384615385 | -12 |  | -15.3846153846154 | TO | Procu |
|  | 7 | **SUSPENDED CEILING** |  | 2026-08-08 | 2026-10-10 |  |  |  |  |  |  |  |  |  |  |  |  |  |
| MLTX-02-004-PR-10190 |  | PO for Suspend Ceiling | 5d | 2026-08-08 A | 2026-08-08 A | MLTX-02-004-PR-10020 | 100% | 2026-10-17 | 2026-10-21 | Purchaser [150 h] | MOD-02-PR-8070 | MAK-01-PR-1000 | 0 | 23 |  | 0 | TO | Procu |
| MLTX-02-004-PR-10200 |  | Material Delivery of Suspend Ceiling | 13d | 2026-10-10 A | 2026-10-10 A | MLTX-02-004-PR-10190 | 100% | 2026-10-22 | 2026-11-05 | Purchaser [150 h] | MOD-02-PR-8090 | MAK-01-PR-1020 | 0 | 23 |  | 0 | TO | Procu |
|  | 8 | **DOORS/WINDOWS** |  | 2026-06-24 | 2026-10-10 |  |  |  |  |  |  |  |  |  |  |  |  |  |
| MLTX-02-004-PR-10210 |  | PO for Doors/Windows | 1d | 2026-06-24 A | 2026-06-24 A | MLTX-02-004-EN-9240, MLTX-02-004-EN-9380, MLTX-02-004-EN-9300, MLTX-02-004-EN-9430, MLTX-02-004-EN-9340, MLTX-02-004-EN-9360, MLTX-02-004-EN-9110, MLTX-02-004-EN-9490, MLTX-02-004-EN-9510, MLTX-02-004-EN-9550, MLTX-02-004-EN-9630, MLTX-02-004-EN-9650, MLTX-02-004-EN-9670, MLTX-02-004-EN-9690, MLTX-02-004-EN-9710, MLTX-02-004-EN-9750, MLTX-02-004-EN-9850, MLTX-02-004-EN-9120, MLTX-02-004-EN-9810, MLTX-02-004-EN-9830, MLTX-02-004-EN-9870, MLTX-02-004-EN-9730, MLTX-02-004-EN-8980, MLTX-02-004-EN-9260 | 100% |  |  | Purchaser [150 h] | MOD-02-PR-8110 | MAK-01-PR-1000 | -100 | -12 |  | -40 | TO | Procu |
| MLTX-02-004-PR-10220 |  | Material Delivery for Doors/Windows | 10d | 2026-10-10 A | 2026-10-10 A | MLTX-02-004-PR-10210 | 100% | 2026-10-17 | 2026-10-27 | Purchaser [150 h] | MOD-02-PR-8130 | MAK-01-PR-1020 | 0 | -12 |  | 0 | TO | Procu |
|  | 11 | **WATER SUPPLY PIPES** |  | 2026-06-13 | 2026-06-13 |  |  |  |  |  |  |  |  |  |  |  |  |  |
| MLTX-02-004-PR-10250 |  | PO for Water Supply Pipes | 1d | 2026-06-13 A | 2026-06-13 A | MLTX-02-004-PR-10210 | 100% |  |  | Purchaser [150 h] | MOD-02-PR-8230 | MAK-01-PR-1000 | 0 | -12 |  | 0 | TO | Procu |
| MLTX-02-004-PR-10260 |  | Material Delivery for Water Supply Pipes | 1d | 2026-06-13 A | 2026-06-13 A | MLTX-02-004-PR-10250 | 100% |  |  | Purchaser [150 h] | MOD-02-PR-8250 | MAK-01-PR-1020 | 0 | -12 |  | 0 | TO | Procu |
|  | 12 | **SEWAGE/DRAINAGE PIPES** |  | 2026-06-13 | 2026-06-13 |  |  |  |  |  |  |  |  |  |  |  |  |  |
| MLTX-02-004-PR-10270 |  | PO for Sewage/Drainage Pipes | 1d | 2026-06-13 A | 2026-06-13 A | MLTX-02-004-EN-9320, MLTX-02-004-PR-10210 | 100% |  |  | Purchaser [150 h] | MOD-02-PR-8270 | MAK-01-PR-1000 | 0 | -12 |  | 0 | TO | Procu |
| MLTX-02-004-PR-10280 |  | Material Delivery for Sewage/Drainage Pipes | 1d | 2026-06-13 A | 2026-06-13 A | MLTX-02-004-PR-10270 | 100% |  |  | Purchaser [150 h] | MOD-02-PR-8290 | MAK-01-PR-1020 | 0 | -12 |  | 0 | TO | Procu |
|  | 10 | **SANITARY FIXTURES** |  | 2026-06-16 | 2026-08-03 |  |  |  |  |  |  |  |  |  |  |  |  |  |
| MLTX-02-004-PR-10230 |  | PO for Sanitary Fixtures | 1d | 2026-06-16 A | 2026-06-16 A | MLTX-02-004-EN-9280, MLTX-02-004-PR-10270 | 100% |  |  | Purchaser [150 h] | MOD-02-PR-8190 | MAK-01-PR-1000 | 0 | -12 |  | 0 | TO | Procu |
| MLTX-02-004-PR-10240 |  | Material Delivery for Sanitary Fixtures | 12d | 2026-08-03 A | 2026-08-03 A | MLTX-02-004-PR-10220, MLTX-02-004-PR-10230 | 100% | 2026-10-28 | 2026-11-10 | Purchaser [150 h] | MOD-02-PR-8210 | MAK-01-PR-1020 | 0 | -12 |  | 0 | TO | Procu |
|  | 16 | **PACKAGE AC UNITS** |  | 2026-06-16 | 2026-11-03 |  |  |  |  |  |  |  |  |  |  |  |  |  |
| MLTX-02-004-PR-10370 |  | PO for Package AC Units | 1d | 2026-06-16 A | 2026-06-16 A | MLTX-02-004-EN-9410, MLTX-02-004-PR-10230 | 100% |  |  | Purchaser [150 h] | MOD-02-PR-8310 | MAK-01-PR-1000 | 0 | -12 |  | 0 | TO | Procu |
| MLTX-02-004-PR-10380 |  | Material Delivery for Package AC Units | 10d | 2026-11-01 A | 2026-11-03 A | MLTX-02-004-PR-10240, MLTX-02-004-PR-10370 | 100% | 2026-11-23 | 2026-12-03 | Purchaser [150 h] | MOD-02-PR-8330 | MAK-01-PR-1020 | 0 | -12 |  | 0 | TO | Procu |
|  | 17 | **AIR DIFUSSERS/GRILLS** |  | 2026-06-16 | 2026-08-08 |  |  |  |  |  |  |  |  |  |  |  |  |  |
| MLTX-02-004-PR-10390 |  | PO for Air Diffusers/Grills | 1d | 2026-06-16 A | 2026-06-16 A | MLTX-02-004-PR-10230 | 100% |  |  | Purchaser [150 h] | MOD-02-PR-8350 | MAK-01-PR-1000 | 0 | -12 |  | 0 | TO | Procu |
| MLTX-02-004-PR-10400 |  | Material Delivery for Air Diffusers/Grills | 10d | 2026-08-08 A | 2026-08-08 A | MLTX-02-004-PR-10390 | 100% | 2026-11-23 | 2026-12-03 | Purchaser [150 h] | MOD-02-PR-8370 | MAK-01-PR-1020 | 0 | -12 |  | 0 | TO | Procu |

| ID | WBS | Activity | Duration | Start | Finish | Predecessors | Complete | Planned start | Planned finish | Total float | Free float | Resources | New Activity ID | Old Activity ID - MK | % Variance | Delay | On Schedule | Procurement | WBS-Project | Flag |
| --- | --- | --- | --- | --- | --- | --- | --- | --- | --- | --- | --- | --- | --- | --- | --- | --- | --- | --- | --- | --- |
|  | 18 | **GALVANIZED DUCTS** |  | 2026-06-16 | 2026-08-08 |  |  |  |  |  |  |  |  |  |  |  |  |  |  |  |
| MLTX-02-004-PR-10410 |  | PO for Galvanized Ducts | 1d | 2026-06-16 A | 2026-06-16 A | MLTX-02-004-PR-10230 | 100% |  |  |  |  | Purchaser [150 h] | MOD-02-PR-8390 | MAK-01-PR-1000 | 0 | -12 | 0 | TO | Procu |  |
| MLTX-02-004-PR-10420 |  | Material Delivery for Galvanized Ducts | 13d | 2026-08-08 A | 2026-08-08 A | MLTX-02-004-PR-10410 | 100% | 2026-10-17 | 2026-10-31 |  |  | Purchaser [150 h] | MOD-02-PR-8410 | MAK-01-PR-1020 | 0 | -12 | 0 | TO | Procu |  |
|  | 19 | **EXHAUST FANS** |  | 2026-06-16 | 2026-08-17 |  |  |  |  |  |  |  |  |  |  |  |  |  |  |  |
| MLTX-02-004-PR-10430 |  | PO for Exhaust Fans | 1d | 2026-06-16 A | 2026-06-16 A | MLTX-02-004-EN-9470, MLTX-02-004-PR-10230 | 100% |  |  |  |  | Purchaser [150 h] | MOD-02-PR-8430 | MAK-01-PR-1000 | 0 | -12 | 0 | TO | Procu |  |
| MLTX-02-004-PR-10440 |  | Material Delivery for Exhaust Fans | 15d | 2026-08-17 A | 2026-08-17 A | MLTX-02-004-PR-10420, MLTX-02-004-PR-10430 | 100% | 2026-11-01 | 2026-11-17 |  |  | Purchaser [150 h] | MOD-02-PR-8450 | MAK-01-PR-1020 | 0 | -12 | 0 | TO | Procu |  |
|  | 13 | **LIGHTING FIXTURES** |  | 2026-06-16 | 2026-11-12 |  |  |  |  |  |  |  |  |  |  |  |  |  |  |  |
| MLTX-02-004-PR-10290 |  | PO for Lighting Fixtures | 1d | 2026-06-16 A | 2026-06-16 A | MLTX-02-004-PR-10430 | 100% |  |  |  |  | Purchaser [150 h] | MOD-02-PR-8470 | MAK-01-PR-1000 | 0 | -12 | 0 | TO | Procu |  |
| MLTX-02-004-PR-10300 |  | Material Delivery for Lighting Fixtures | 15d | 2026-11-11 A | 2026-11-12 A | MLTX-02-004-PR-10440, MLTX-02-004-PR-10290 | 100% | 2026-11-23 | 2026-12-09 |  |  | Purchaser [150 h] | MOD-02-PR-8490 | MAK-01-PR-1020 | 0 | -12 | 0 | TO | Procu |  |
|  | 14 | **SWITCHES/SOCKETS** |  | 2026-06-24 | 2026-10-10 |  |  |  |  |  |  |  |  |  |  |  |  |  |  |  |
| MLTX-02-004-PR-10310 |  | PO for Switches/Sockets | 1d | 2026-06-24 A | 2026-06-24 A | MLTX-02-004-PR-10290 | 100% |  |  |  |  | Purchaser [150 h] | MOD-02-PR-8510 | MAK-01-PR-1000 | 0 | -12 | 0 | TO | Procu |  |
| MLTX-02-004-PR-10320 |  | Material Delivery for Switches/Sockets | 7d | 2026-10-05 A | 2026-10-10 A | MLTX-02-004-PR-10310 | 100% | 2026-12-01 | 2026-12-08 |  |  | Purchaser [150 h] | MOD-02-PR-8530 | MAK-01-PR-1020 | 0 | -12 | 0 | TO | Procu |  |
|  | 15 | **EARTHING SYSTEM** |  | 2026-05-21 | 2026-05-21 |  |  |  |  |  |  |  |  |  |  |  |  |  |  |  |
| MLTX-02-004-PR-10110 |  | PO for Earthing System | 1d | 2026-05-21 A | 2026-05-21 A | MLTX-02-004-EN-9160 | 100% |  |  |  |  | Purchaser [150 h] | MOD-02-PR-8550 | MAK-01-PR-1290 | -100 | -15 | -100 | TO | Procu | UDF_G1 |
| MLTX-02-004-PR-10120 |  | Material Delivery for Earthing System | 1d | 2026-05-21 A | 2026-05-21 A | MLTX-02-004-PR-10010, MLTX-02-004-PR-10110 | 100% |  |  |  |  | Purchaser [150 h] | MOD-02-PR-8570 | MAK-01-PR-1310 | -53.3333333333333 | -15 | -33.3333333333333 | TO | Procu | UDF_G1 |
|  | 5 | **DISTRIBUTION PANNELS** |  | 2026-07-22 | 2026-11-10 |  |  |  |  |  |  |  |  |  |  |  |  |  |  |  |
| MLTX-02-004-PR-10130 |  | PO for Distribution Panels | 5d | 2026-07-22 A | 2026-07-22 A | MLTX-02-004-EN-9180 | 100% | 2026-07-22 | 2026-07-27 |  |  | Purchaser [150 h] | MOD-02-PR-8590 | MAK-01-PR-LLI-1060 | -100 | -15 | -100 | TO | Procu | UDF_G1 |
| MLTX-02-004-PR-10140 |  | Material Delivery for Distribution Panels | 15d | 2026-11-09 A | 2026-11-10 A | MLTX-02-004-PR-10130 FF, MLTX-02-004-PR-10130 | 100% | 2026-11-23 | 2026-12-09 |  |  | Purchaser [150 h] | MOD-02-PR-8610 | MAK-01-PR-LLI-1100 | -100 | -15 | -80 | TO | Procu | UDF_G1 |
|  | 9 | **FURNITURES** |  | 2026-06-16 | 2026-12-16 |  |  |  |  |  |  |  |  |  |  |  |  |  |  |  |
| MLTX-02-004-PR-10330 |  | PO for Furnitures | 1d | 2026-06-16 A | 2026-06-16 A | MLTX-02-004-PR-10430 | 100% |  |  |  |  | Purchaser [150 h] | MOD-02-PR-8150 | MAK-01-PR-1000 | 0 | -12 | 0 | TO | Procu |  |
| MLTX-02-004-PR-10340 |  | Material Delivery for Furnitures | 20d | 2026-11-24 | 2026-12-16 | MLTX-02-004-PR-10320, MLTX-02-004-PR-10330 |  |  |  | 34d | 7d | Purchaser [150 h] | MOD-02-PR-8170 | MAK-01-PR-1020 | 0 | -12 | 0 | TO | Procu |  |
|  | PLG | **PLAYGROUND WORKS** |  | 2026-05-07 | 2027-02-02 |  |  |  |  |  |  |  |  |  |  |  |  |  |  |  |
|  | 5 | **PVC MEMBRANE** |  | 2026-06-16 | 2026-11-28 |  |  |  |  |  |  |  |  |  |  |  |  |  |  |  |
| MLTX-02-004-PR-10530 |  | PO for PVC Membrane | 1d | 2026-06-16 A | 2026-06-16 A | MLTX-02-004-MS-1010 SS | 100% |  |  |  |  | Purchaser [150 h] | MOD-02-PR-8640 | MAK-01-PR-1120 | -100 | -22 | -100 | PL | Procu | UDF_G1 |
| MLTX-02-004-PR-10540 |  | Material Delivery for PVC Membrane | 4d | 2026-11-24 | 2026-11-28 | MLTX-02-004-PR-10530 |  |  |  | -60d | 0d | Purchaser [150 h] | MOD-02-PR-8650 | MAK-01-PR-1130 | -100 | -22 | -100 | PL | Procu | UDF_G1 |

| ID | WBS | Activity | Duration | Start | Finish | Predecessors | Complete | Planned start | Planned finish | Total float | Free float | Resources | New Activity ID | Old Activity ID - MK | % Variance | Delay | Flag | On Schedule | Procurement | WBS-Project |
| --- | --- | --- | --- | --- | --- | --- | --- | --- | --- | --- | --- | --- | --- | --- | --- | --- | --- | --- | --- | --- |
|  | 15 | **ARTIFICIAL TURF** |  | 2026-06-16 | 2026-12-12 |  |  |  |  |  |  |  |  |  |  |  |  |  |  |  |
| MLTX-02-004-PR-10770 |  | PO for Artificial TURF | 1d | 2026-06-16 A | 2026-06-16 A | MLTX-02-004-EN-9920 | 100% |  |  |  |  | Purchaser [150 h] | MOD-02-PR-8830 | MAK-01-PR-1120 | -100 | -18 | UDF_G1 | -100 | PL | Procu |
| MLTX-02-004-PR-10780 |  | Material Delivery for Artificial TURF | 12d | 2026-11-29 | 2026-12-12 | MLTX-02-004-PR-10540, MLTX-02-004-PR-10770 |  |  |  | -54d | 0d | Purchaser [150 h] | MOD-02-PR-8850 | MAK-01-PR-1130 | -100 | -18 | UDF_G1 | -100 | PL | Procu |
|  | 20 | **RUBBER GRANULES** |  | 2026-06-16 | 2026-12-26 |  |  |  |  |  |  |  |  |  |  |  |  |  |  |  |
| MLTX-02-004-PR-10790 |  | PO for Rubber Granules | 1d | 2026-06-16 A | 2026-06-16 A | MLTX-02-004-EN-9930 | 100% |  |  |  |  | Purchaser [150 h] | MOD-02-PR-8870 | MAK-01-PR-1120 | -100 | -25 | UDF_G1 | -100 | PL | Procu |
| MLTX-02-004-PR-10800 |  | Material Delivery for Rubber Granules | 12d | 2026-12-13 | 2026-12-26 | MLTX-02-004-PR-10140, MLTX-02-004-PR-10780, MLTX-02-004-PR-10790 |  |  |  | -54d | 0d | Purchaser [150 h] | MOD-02-PR-8890 | MAK-01-PR-1130 | -100 | -25 | UDF_G1 | -100 | PL | Procu |
|  | 21 | **PADEL GLASS** |  | 2026-06-16 | 2027-01-16 |  |  |  |  |  |  |  |  |  |  |  |  |  |  |  |
| MLTX-02-004-PR-10810 |  | PO for Padel Glass | 1d | 2026-06-16 A | 2026-06-16 A | MLTX-02-004-EN-9940 | 100% |  |  |  |  | Purchaser [150 h] | MOD-02-PR-8910 | MAK-01-PR-1120 | -100 | -25 | UDF_G1 | -100 | PL | Procu |
| MLTX-02-004-PR-10820 |  | Material Delivery for Padel Glass | 18d | 2026-12-27 | 2027-01-16 | MLTX-02-004-PR-10380, MLTX-02-004-PR-10800, MLTX-02-004-PR-10810 |  |  |  | -7d | 0d | Purchaser [150 h] | MOD-02-PR-8930 | MAK-01-PR-1130 | -100 | -25 | UDF_G1 | -83.3333333333333 | PL | Procu |
|  | 22 | **PADEL WIRE MESH/STEEL SETS** |  | 2026-06-16 | 2027-02-02 |  |  |  |  |  |  |  |  |  |  |  |  |  |  |  |
| MLTX-02-004-PR-10830 |  | PO for Wire Mesh/Steel Sets | 1d | 2026-06-16 A | 2026-06-16 A | MLTX-02-004-PR-10810 | 100% |  |  |  |  | Purchaser [150 h] | MOD-02-PR-8950 | MAK-01-PR-1120 | -100 | -25 | UDF_G1 | -100 | PL | Procu |
| MLTX-02-004-PR-10840 |  | Material Delivery for Wire Mesh/Steel Sets | 15d | 2027-01-17 | 2027-02-02 | MLTX-02-004-PR-10820, MLTX-02-004-PR-10830 |  |  |  | -7d | 79d | Purchaser [150 h] | MOD-02-PR-8970 | MAK-01-PR-1130 | -86.6666666666667 | -25 | UDF_G1 | -66.6666666666667 | PL | Procu |
|  | 1 | **AGGREGATE BASE COURSE** |  | 2026-05-21 | 2026-05-21 |  |  |  |  |  |  |  |  |  |  |  |  |  |  |  |
| MLTX-02-004-PR-9980 |  | PO for Aggregate Base Course | 1d | 2026-05-21 A | 2026-05-21 A | MLTX-02-004-EN-9030 | 100% |  |  |  |  | Purchaser [150 h] | MOD-02-PR-8990 | MAK-01-PR-1090 | -100 | -28 | UDF_G1 | -100 | PL | Procu |
| MLTX-02-004-PR-9990 |  | Material Delivery for Aggregate Base Course | 1d | 2026-05-21 A | 2026-05-21 A | MLTX-02-004-PR-9980 | 100% |  |  |  |  | Purchaser [150 h] | MOD-02-PR-9000 | MAK-01-PR-1100 | -100 | -28 | UDF_G1 | -100 | PL | Procu |
|  | 16 | **PACKAGE AC UNITS** |  | 2026-06-16 | 2026-12-03 |  |  |  |  |  |  |  |  |  |  |  |  |  |  |  |
| MLTX-02-004-PR-10450 |  | PO for Package AC Units | 1d | 2026-06-16 A | 2026-06-16 A | MLTX-02-004-PR-10370 | 100% |  |  |  |  | Purchaser [200 h] | MOD-02-PR-9130 | MAK-01-PR-1000 | 0 | -12 |  | 0 | PL | Procu |
| MLTX-02-004-PR-10460 |  | Material Delivery for Package AC Units | 15d | 2026-11-01 A | 2026-12-03 A | MLTX-02-004-PR-10360, MLTX-02-004-PR-10450 | 100% | 2026-12-01 | 2026-12-17 |  |  | Purchaser [200 h] | MOD-02-PR-9150 | MAK-01-PR-1020 | 0 | -12 |  | 0 | PL | Procu |
|  | 17 | **AIR DIFUSSERS/GRILLS** |  | 2026-06-16 | 2026-08-08 |  |  |  |  |  |  |  |  |  |  |  |  |  |  |  |
| MLTX-02-004-PR-10470 |  | PO for Air Difussers/Grills | 1d | 2026-06-16 A | 2026-06-16 A | MLTX-02-004-PR-10370 | 100% |  |  |  |  | Purchaser [200 h] | MOD-02-PR-9170 | MAK-01-PR-1000 | 0 | -12 |  | 0 | PL | Procu |
| MLTX-02-004-PR-10480 |  | Material Delivery for Air Difussers/Grills | 15d | 2026-08-08 A | 2026-08-08 A | MLTX-02-004-PR-10470 | 100% | 2026-11-11 | 2026-11-28 |  |  | Purchaser [200 h] | MOD-02-PR-9190 | MAK-01-PR-1020 | 0 | -12 |  | 0 | PL | Procu |
|  | 2 | **BITUMINOUS BASE & WEARING COURSE** |  | 2026-06-16 | 2026-06-23 |  |  |  |  |  |  |  |  |  |  |  |  |  |  |  |
| MLTX-02-004-PR-10000 |  | PO for Bituminous Base & Wearing Course | 1d | 2026-06-16 A | 2026-06-16 A | MLTX-02-004-EN-9050 | 100% |  |  |  |  | Purchaser [150 h] | MOD-02-PR-9020 | MAK-01-PR-1120 | -100 | -15 | UDF_G1 | -100 | PL | Procu |
| MLTX-02-004-PR-10010 |  | Material Delivery for the Site | 1d | 2026-06-23 A | 2026-06-23 A | MLTX-02-004-PR-10000 | 100% |  |  |  |  | Purchaser [150 h] | MOD-02-PR-9030 | MAK-01-PR-1130 | -100 | -15 | UDF_G1 | -100 | PL | Procu |

| ID | WBS | Activity | Duration | Start | Finish | Predecessors | Complete | Planned start | Planned finish | Total float | Free float | Resources | New Activity ID | Old Activity ID - MK | % Variance | Delay | On Schedule | Procurement | WBS-Project | Flag |
| --- | --- | --- | --- | --- | --- | --- | --- | --- | --- | --- | --- | --- | --- | --- | --- | --- | --- | --- | --- | --- |
|  | 3 | **INTERLOCKING PAVING** |  | 2026-05-07 | 2026-11-18 |  |  |  |  |  |  |  |  |  |  |  |  |  |  |  |
| MLTX-02-004-PR-10020 |  | PO for Interlocking Block Pavers | 1d | 2026-05-07 A | 2026-05-07 A | MLTX-02-004-PR-10310 | 100% |  |  |  |  | Purchaser [200 h] | MOD-02-PR-9050 | MAK-01-PR-1170 | 100 | 40 | 100 | PL | Procu |  |
| MLTX-02-004-PR-10030 |  | Material Delivery for Interlocking Block Pavers | 7d | 2026-11-16 A | 2026-11-18 A | MLTX-02-004-PR-10840, MLTX-02-004-PR-10010, MLTX-02-004-PR-10020 | 100% | 2027-02-02 | 2027-02-09 |  |  | Purchaser [200 h] | MOD-02-PR-9070 | MAK-01-PR-1190 | 0 | 23 | 0 | PL | Procu |  |
|  | 4 | **MARKING PAINT** |  | 2026-07-18 | 2026-12-01 |  |  |  |  |  |  |  |  |  |  |  |  |  |  |  |
| MLTX-02-004-PR-10350 |  | PO for Marking Paint | 6d | 2026-07-18 A | 2026-07-18 A | MLTX-02-004-EN-9960, MLTX-02-004-PR-10000 | 100% | 2026-07-18 | 2026-07-23 |  |  | Purchaser [150 h] | MOD-02-PR-9090 | MAK-01-PR-1120 | -100 | -15 | -100 | PL | Procu | UDF_G1 |
| MLTX-02-004-PR-10360 |  | Material Delivery for Marking Paint | 7d | 2026-11-24 | 2026-12-01 | MLTX-02-004-PR-10350 |  |  |  | 10d | 96d | Purchaser [150 h] | MOD-02-PR-9110 | MAK-01-PR-1130 | -100 | -15 | -85.7142857142857 | PL | Procu | UDF_G1 |
|  | 18 | **GALVANIZED DUCTS** |  | 2026-06-16 | 2026-08-08 |  |  |  |  |  |  |  |  |  |  |  |  |  |  |  |
| MLTX-02-004-PR-10490 |  | PO for Galvanized Duct | 1d | 2026-06-16 A | 2026-06-16 A | MLTX-02-004-PR-10370 | 100% |  |  |  |  | Purchaser [150 h] | MOD-02-PR-9210 | MAK-01-PR-1000 | 0 | -12 | 0 | PL | Procu |  |
| MLTX-02-004-PR-10500 |  | Material Delivery for Galvanized Duct | 15d | 2026-08-08 A | 2026-08-08 A | MLTX-02-004-PR-10480, MLTX-02-004-PR-10490 | 100% | 2026-11-29 | 2026-12-15 |  |  | Purchaser [150 h] | MOD-02-PR-9230 | MAK-01-PR-1020 | 0 | -12 | 0 | PL | Procu |  |
|  | 19 | **EXHAUST FANS** |  | 2026-06-16 | 2026-08-17 |  |  |  |  |  |  |  |  |  |  |  |  |  |  |  |
| MLTX-02-004-PR-10510 |  | PO for Exhaust Fans | 1d | 2026-06-16 A | 2026-06-16 A | MLTX-02-004-PR-10370 | 100% |  |  |  |  | Purchaser [150 h] | MOD-02-PR-9250 | MAK-01-PR-1000 | 0 | -12 | 0 | PL | Procu |  |
| MLTX-02-004-PR-10520 |  | Material Delivery for Exhaust Fans | 15d | 2026-08-17 A | 2026-08-17 A | MLTX-02-004-PR-10500, MLTX-02-004-PR-10510 | 100% | 2026-12-16 | 2027-01-02 |  |  | Purchaser [150 h] | MOD-02-PR-9270 | MAK-01-PR-1020 | 0 | -12 | 0 | PL | Procu |  |
|  | 10 | **DISTRIBUTION BOARDS** |  | 2026-07-22 | 2026-11-10 |  |  |  |  |  |  |  |  |  |  |  |  |  |  |  |
| MLTX-02-004-PR-10630 |  | PO for Distribution Boards | 5d | 2026-07-22 A | 2026-07-22 A | MLTX-02-004-PR-10370 | 100% | 2026-07-22 | 2026-07-27 |  |  | Purchaser [150 h] | MOD-02-PR-9290 | MAK-01-PR-1000 | 0 | -12 | 0 | PL | Procu |  |
| MLTX-02-004-PR-10640 |  | Material Delivery for Distribution Boards | 15d | 2026-11-09 A | 2026-11-10 A | MLTX-02-004-PR-10630 | 100% | 2026-11-23 | 2026-12-09 |  |  | Purchaser [150 h] | MOD-02-PR-9310 | MAK-01-PR-1020 | 0 | -12 | 0 | PL | Procu |  |
|  | 11 | **POWER CABLES** |  | 2026-07-22 | 2026-09-15 |  |  |  |  |  |  |  |  |  |  |  |  |  |  |  |
| MLTX-02-004-PR-10650 |  | PO for Power Cables | 5d | 2026-07-22 A | 2026-07-22 A | MLTX-02-004-PR-10630 | 100% | 2026-08-09 | 2026-08-13 |  |  | Purchaser [150 h] | MOD-02-PR-9330 | MAK-01-PR-1000 | 0 | -12 | 0 | PL | Procu |  |
| MLTX-02-004-PR-10660 |  | Material Delivery for Power Cables | 10d | 2026-09-14 A | 2026-09-15 A | MLTX-02-004-PR-10650 | 100% | 2026-11-23 | 2026-12-03 |  |  | Purchaser [150 h] | MOD-02-PR-9350 | MAK-01-PR-1020 | 0 | -12 | 0 | PL | Procu |  |
|  | 12 | **LIGHT FIXTURES** |  | 2026-10-07 | 2026-11-12 |  |  |  |  |  |  |  |  |  |  |  |  |  |  |  |
| MLTX-02-004-PR-10670 |  | PO for Light Fixtures | 5d | 2026-10-07 A | 2026-10-08 A | MLTX-02-004-PR-10440, MLTX-02-004-PR-10660 | 100% | 2026-12-05 | 2026-12-09 |  |  | Purchaser [150 h] | MOD-02-PR-9370 | MAK-01-PR-1000 | 0 | -12 | 0 | PL | Procu |  |
| MLTX-02-004-PR-10680 |  | Material Delivery for Light Fixtures | 16d | 2026-11-11 A | 2026-11-12 A | MLTX-02-004-PR-10670 | 100% | 2026-12-10 | 2026-12-28 |  |  | Purchaser [150 h] | MOD-02-PR-9390 | MAK-01-PR-1020 | 0 | -12 | 0 | PL | Procu |  |
|  | 13 | **CCTV MATERIALS** |  | 2026-11-14 | 2026-12-16 |  |  |  |  |  |  |  |  |  |  |  |  |  |  |  |
| MLTX-02-004-PR-10690 |  | PO for CCTV | 10d | 2026-11-14 A | 2026-11-15 A | MLTX-02-004-PR-10680 | 100% | 2026-12-29 | 2027-01-09 |  |  | Purchaser [150 h] | MOD-02-PR-9410 | MAK-01-PR-1000 | 0 | -12 | 0 | PL | Procu |  |
| MLTX-02-004-PR-10700 |  | Material Delivery for CCTV | 20d | 2026-11-24 | 2026-12-16 | MLTX-02-004-PR-10690, MLTX-02-004-PR-10520 |  |  |  | -14d | 41d | Purchaser [150 h] | MOD-02-PR-9430 | MAK-01-PR-1020 | 0 | -12 | 0 | PL | Procu |  |

| ID | WBS | Activity | Duration | Start | Finish | Predecessors | Complete | Planned start | Planned finish | Total float | Free float | Resources | New Activity ID | Old Activity ID - MK | % Variance | Delay | On Schedule | Procurement | WBS-Project |
| --- | --- | --- | --- | --- | --- | --- | --- | --- | --- | --- | --- | --- | --- | --- | --- | --- | --- | --- | --- |
|  | 14 | **POWER OUTLETS/SWITCHES** |  | 2026-10-28 | 2026-11-09 |  |  |  |  |  |  |  |  |  |  |  |  |  |  |
| MLTX-02-004-PR-10710 |  | PO for Power Outlets/Switches | 6d | 2026-10-28 A | 2026-10-31 A | MLTX-02-004-PR-10320, MLTX-02-004-PR-10690 | 100% | 2027-01-10 | 2027-01-16 |  |  | Purchaser [150 h] | MOD-02-PR-9450 | MAK-01-PR-1000 | 0 | -12 | 0 | PL | Procu |
| MLTX-02-004-PR-10720 |  | Material Delivery for Power Outlets/Switches | 15d | 2026-11-08 A | 2026-11-09 A | MLTX-02-004-PR-10710 | 100% | 2027-01-17 | 2027-02-02 |  |  | Purchaser [150 h] | MOD-02-PR-9470 | MAK-01-PR-1020 | 0 | -12 | 0 | PL | Procu |
|  | LSC | **LANDSCAPE WORKS** |  | 2026-05-07 | 2026-12-10 |  |  |  |  |  |  |  |  |  |  |  |  |  |  |
|  | 7 | **INTERLOCKING PAVING** |  | 2026-05-07 | 2026-11-10 |  |  |  |  |  |  |  |  |  |  |  |  |  |  |
| MLTX-02-004-PR-10750 |  | PO for Interlocking Block Pavers | 1d | 2026-05-07 A | 2026-05-07 A | MLTX-02-004-EN-9750 | 100% |  |  |  |  | Purchaser [150 h] | MOD-02-PR-9500 | MAK-01-PR-1170 | 100 | 56 | 100 | LS | Procu |
| MLTX-02-004-PR-10760 |  | Material Delivery for Interlocking Block Pavers | 10d | 2026-11-05 A | 2026-11-10 A | MLTX-02-004-PR-10750 | 100% | 2026-11-23 | 2026-12-03 |  |  | Purchaser [150 h] | MOD-02-PR-9520 | MAK-01-PR-1190 | 0 | -1 | 0 | LS | Procu |
|  | 9 | **CURBSTONE** |  | 2026-05-07 | 2026-08-19 |  |  |  |  |  |  |  |  |  |  |  |  |  |  |
| MLTX-02-004-PR-10890 |  | PO for Curbstone | 1d | 2026-05-07 A | 2026-05-07 A | MLTX-02-004-EN-9850 | 100% |  |  |  |  | Purchaser [150 h] | MOD-02-PR-9540 | MAK-01-PR-1260 | 100 | 56 | 100 | LS | Procu |
| MLTX-02-004-PR-10900 |  | Material Delivery for Curbstone | 10d | 2026-08-18 A | 2026-08-19 A | MLTX-02-004-PR-10890 | 100% | 2026-11-23 | 2026-12-03 |  |  | Purchaser [150 h] | MOD-02-PR-9560 | MAK-01-PR-1280 | 0 | -12 | 0 | LS | Procu |
|  | 1 | **PAVEMENT MARKING** |  | 2026-07-18 | 2026-12-05 |  |  |  |  |  |  |  |  |  |  |  |  |  |  |
| MLTX-02-004-PR-10040 |  | PO for Pavement Markings | 5d | 2026-07-18 A | 2026-07-18 A | MLTX-02-004-EN-9120 | 100% | 2026-07-29 | 2026-08-03 |  |  | Purchaser [150 h] | MOD-02-PR-9580 | MAK-01-PR-1200 | 0 | -12 | 0 | LS | Procu |
| MLTX-02-004-PR-10050 |  | Material Delivery for Pavement Markings | 10d | 2026-11-24 | 2026-12-05 | MLTX-02-004-PR-10040 |  |  |  | -39d | 7d | Purchaser [150 h] | MOD-02-PR-9600 | MAK-01-PR-1220 | 0 | -12 | 0 | LS | Procu |
|  | 2 | **TRAFFIC SIGNS** |  | 2026-07-18 | 2026-12-03 |  |  |  |  |  |  |  |  |  |  |  |  |  |  |
| MLTX-02-004-PR-10060 |  | PO for Traffic Signs | 5d | 2026-07-18 A | 2026-07-18 A | MLTX-02-004-EN-9090 | 100% | 2026-07-29 | 2026-08-03 |  |  | Purchaser [150 h] | MOD-02-PR-9620 | MAK-01-PR-1230 | 0 | -38 | 0 | LS | Procu |
| MLTX-02-004-PR-10080 |  | Material Delivery for Traffic Signs | 9d | 2026-11-24 | 2026-12-03 | MLTX-02-004-PR-10060 |  |  |  | 45d | 131d | Purchaser [150 h] | MOD-02-PR-9640 | MAK-01-PR-1250 | 0 | -38 | 0 | LS | Procu |
|  | 3 | **IRRIGATION PIPES/SPRINKLERS** |  | 2026-07-18 | 2026-08-19 |  |  |  |  |  |  |  |  |  |  |  |  |  |  |
| MLTX-02-004-PR-10090 |  | PO for Irrigation Pipes/Sprinkles | 5d | 2026-07-18 A | 2026-07-18 A | MLTX-02-004-EN-9140 | 100% | 2026-07-28 | 2026-08-02 |  |  | Purchaser [150 h] | MOD-02-PR-9660 | MAK-01-PR-1260 | 0 | -12 | 0 | LS | Procu |
| MLTX-02-004-PR-10100 |  | Material Delivery for Irrigation Pipes/Sprinkles | 8d | 2026-08-19 A | 2026-08-19 A | MLTX-02-004-PR-10090 | 100% | 2026-11-09 | 2026-11-17 |  |  | Purchaser [150 h] | MOD-02-PR-9680 | MAK-01-PR-1280 | 0 | -12 | 0 | LS | Procu |
|  | 5 | **AGRICULTURE SOIL** |  | 2026-07-18 | 2026-11-10 |  |  |  |  |  |  |  |  |  |  |  |  |  |  |
| MLTX-02-004-PR-10850 |  | PO for Agriculture Soil | 5d | 2026-07-18 A | 2026-07-18 A | MLTX-02-004-EN-9810, MLTX-02-004-PR-10870 | 100% | 2026-07-18 | 2026-07-22 |  |  | Purchaser [150 h] | MOD-02-PR-9700 | MAK-01-PR-1260 | 0 | -38 | 0 | LS | Procu |
| MLTX-02-004-PR-10860 |  | Material Delivery for Agriculture Soil | 12d | 2026-11-05 A | 2026-11-10 A | MLTX-02-004-PR-10850 | 100% | 2026-11-23 | 2026-12-06 |  |  | Purchaser [150 h] | MOD-02-PR-9720 | MAK-01-PR-1280 | 0 | -38 | 0 | LS | Procu |
|  | 8 | **TRACK SURFACE** |  | 2026-06-24 | 2026-11-10 |  |  |  |  |  |  |  |  |  |  |  |  |  |  |
| MLTX-02-004-PR-10870 |  | PO for Track Surface | 1d | 2026-06-24 A | 2026-06-24 A | MLTX-02-004-EN-9830 | 100% |  |  |  |  | Purchaser [150 h] | MOD-02-PR-9740 | MAK-01-PR-1260 | 0 | -38 | 0 | LS | Procu |
| MLTX-02-004-PR-10880 |  | Material Delivery for Track Surface | 10d | 2026-11-05 A | 2026-11-10 A | MLTX-02-004-PR-10860 | 100% | 2026-12-07 | 2026-12-17 |  |  | Purchaser [150 h] | MOD-02-PR-9760 | MAK-01-PR-1280 | 0 | -38 | 0 | LS | Procu |

| ID | WBS | Activity | Duration | Start | Finish | Predecessors | Complete | Planned start | Planned finish | Total float | Free float | Resources | New Activity ID | Old Activity ID - MK | % Variance | Delay | On Schedule | Procurement | WBS-Project | Flag |
| --- | --- | --- | --- | --- | --- | --- | --- | --- | --- | --- | --- | --- | --- | --- | --- | --- | --- | --- | --- | --- |
|  | 10 | **GRASS/TREES** |  | 2026-07-18 | 2026-12-10 |  |  |  |  |  |  |  |  |  |  |  |  |  |  |  |
| MLTX-02-004-PR-10910 |  | PO for Grass/Trees | 5d | 2026-07-18 A | 2026-07-18 A | MLTX-02-004-EN-9870 | 100% | 2026-08-12 | 2026-08-17 |  |  | Purchaser [150 h] | MOD-02-PR-9780 | MAK-01-PR-1260 | 0 | -38 | 0 | LS | Procu |  |
| MLTX-02-004-PR-10920 |  | Material Delivery for Grass/Trees | 15d | 2026-11-24 | 2026-12-10 | MLTX-02-004-PR-10910 |  |  |  | 39d | 125d | Purchaser [150 h] | MOD-02-PR-9800 | MAK-01-PR-1280 | 0 | -38 | 0 | LS | Procu |  |
|  | 6 | **CABLES** |  | 2026-07-22 | 2026-09-14 |  |  |  |  |  |  |  |  |  |  |  |  |  |  |  |
| MLTX-02-004-PR-10730 |  | PO for Cables | 5d | 2026-07-22 A | 2026-07-22 A | MLTX-02-004-EN-9730, MLTX-02-004-PR-10040 | 100% | 2026-07-22 | 2026-07-27 |  |  | Purchaser [150 h] | MOD-02-PR-9820 | MAK-01-PR-1200 | 0 | -12 | 0 | LS | Procu |  |
| MLTX-02-004-PR-10740 |  | Material Delivery for Cables | 15d | 2026-09-13 A | 2026-09-14 A | MLTX-02-004-PR-10080, MLTX-02-004-PR-10920, MLTX-02-004-PR-10730 | 100% | 2026-12-10 | 2026-12-27 |  |  | Purchaser [150 h] | MOD-02-PR-9840 | MAK-01-PR-1220 | 0 | -12 | 0 | LS | Procu |  |
|  | LLI | **LONG LEAD ITEM** |  | 2026-06-13 | 2027-01-20 |  |  |  |  |  |  |  |  |  |  |  |  |  |  |  |
|  | PLG | **PLAYGROUND WORKS** |  | 2026-06-13 | 2027-01-20 |  |  |  |  |  |  |  |  |  |  |  |  |  |  |  |
|  | 6 | **STEEL TENSION CABLES** |  | 2026-06-13 | 2026-06-24 |  |  |  |  |  |  |  |  |  |  |  |  |  |  |  |
| MLTX-02-004-PR-10550 |  | PO for Steel Tension Cables | 1d | 2026-06-13 A | 2026-06-13 A | MLTX-02-004-EN-11190 | 100% |  |  |  |  | Purchaser [300 h] | MOD-02-PR-8670 | MAK-01-PR-1120 | -100 | -38 | -100 | PL | Procu | UDF_G1 |
| MLTX-02-004-PR-10930 |  | Material Fabrication for Steel Tension Cables | 10d | 2026-06-15 A | 2026-06-18 A | MLTX-02-004-EN-9450, MLTX-02-004-EN-9570, MLTX-02-004-EN-9880, MLTX-02-004-EN-9890, MLTX-02-004-EN-9900, MLTX-02-004-EN-9910, MLTX-02-004-EN-9950, MLTX-02-004-EN-9530, MLTX-02-004-PR-10550 | 100% | 2026-12-01 | 2026-12-12 |  |  | Purchaser [300 h] | MOD-02-PR-8680 | MAK-01-PR-1120 | -60 | -38 | -45 | PL | Procu | UDF_G1 |
| MLTX-02-004-PR-10560 |  | Material Delivery for Steel Tension Cables | 30d | 2026-06-18 A | 2026-06-20 A | MLTX-02-004-PR-10930 | 100% | 2026-12-13 | 2027-01-16 |  |  | Purchaser [294.3 h] | MOD-02-PR-8690 | MAK-01-PR-1130 | 0 | -38 | 0 | PL | Procu |  |
| MLTX-02-004-PR-10970 |  | Staging time | 7d | 2026-06-21 A | 2026-06-24 A | MLTX-02-004-PR-10560 | 100% | 2027-01-17 | 2027-01-24 |  |  | Purchaser [290 h] | MOD-02-PR-8690 | MAK-01-PR-1130 | 0 | -38 | 0 | PL | Procu |  |
|  | 7 | **EMERGENCY DOORS** |  | 2026-07-18 | 2026-12-28 |  |  |  |  |  |  |  |  |  |  |  |  |  |  |  |
| MLTX-02-004-PR-10570 |  | PO for Emergency Doors | 5d | 2026-07-18 A | 2026-07-18 A | MLTX-02-004-PR-10730 | 100% | 2026-07-23 | 2026-07-28 |  |  | Purchaser [150 h] | MOD-02-PR-8710 | MAK-01-PR-1120 | 0 | -38 | 0 | PL | Procu |  |
| MLTX-02-004-PR-10940 |  | Material Fabrication for Emergency Doors | 10d | 2026-11-24 | 2026-12-05 | MLTX-02-004-PR-10570 |  |  |  | -86d | 0d | Purchaser [150 h] | MOD-02-PR-8720 | MAK-01-PR-1120 | 0 | -38 | 0 | PL | Procu |  |
| MLTX-02-004-PR-10580 |  | Material Delivery for Emergency Doors | 15d | 2026-12-06 | 2026-12-22 | MLTX-02-004-PR-10940 |  |  |  | -86d | 0d | Purchaser [150 h] | MOD-02-PR-8730 | MAK-01-PR-1130 | 0 | -38 | 0 | PL | Procu |  |
| MLTX-02-004-PR-10980 |  | Staging time | 5d | 2026-12-23 | 2026-12-28 | MLTX-02-004-PR-10580, MLTX-02-004-PR-10970 |  |  |  | -86d | 0d | Purchaser [150 h] | MOD-02-PR-8730 | MAK-01-PR-1130 | 0 | -38 | 0 | PL | Procu |  |
|  | 8 | **PRESSURE UNITS** |  | 2026-06-16 | 2027-01-20 |  |  |  |  |  |  |  |  |  |  |  |  |  |  |  |
| MLTX-02-004-PR-10590 |  | PO for Pressure Units | 10d | 2026-06-16 A | 2026-06-16 A | MLTX-02-004-PR-10730 | 100% | 2026-11-23 | 2026-12-03 |  |  | Purchaser [150 h] | MOD-02-PR-8750 | MAK-01-PR-1120 | 0 | -38 | 0 | PL | Procu |  |
| MLTX-02-004-PR-10950 |  | Material Fabrication for Pressure Units | 20d | 2026-11-24 | 2026-12-16 | MLTX-02-004-PR-10590 |  |  |  | -57d | 0d | Purchaser [150 h] | MOD-02-PR-8760 | MAK-01-PR-1120 | 0 | -38 | 0 | PL | Procu |  |
| MLTX-02-004-PR-10600 |  | Material Delivery for Pressure Units | 25d | 2026-12-17 | 2027-01-14 | MLTX-02-004-PR-10950 |  |  |  | -57d | 0d | Purchaser [150 h] | MOD-02-PR-8770 | MAK-01-PR-1130 | 0 | -38 | 0 | PL | Procu |  |
| MLTX-02-004-PR-10990 |  | Staging time | 5d | 2027-01-16 | 2027-01-20 | MLTX-02-004-PR-10600, MLTX-02-004-PR-10560 |  |  |  | -57d | 0d | Purchaser [150 h] | MOD-02-PR-8770 | MAK-01-PR-1130 | 0 | -38 | 0 | PL | Procu |  |
|  | 9 | **AIR LOCK DOORS** |  | 2026-06-16 | 2027-01-20 |  |  |  |  |  |  |  |  |  |  |  |  |  |  |  |
| MLTX-02-004-PR-10610 |  | PO for Lock Doors | 10d | 2026-06-16 A | 2026-06-16 A | MLTX-02-004-PR-10930 | 100% | 2026-12-13 | 2026-12-23 |  |  | Purchaser [150 h] | MOD-02-PR-8790 | MAK-01-PR-1120 | 0 | -38 | 0 | PL | Procu |  |
| MLTX-02-004-PR-10960 |  | Material Fabrication for Lock Doors | 20d | 2026-11-24 | 2026-12-16 | MLTX-02-004-PR-10610 |  |  |  | -31d | 0d | Purchaser [150 h] | MOD-02-PR-8800 | MAK-01-PR-1120 | 0 | -38 | 0 | PL | Procu |  |
| MLTX-02-004-PR-10620 |  | Material Delivery for Lock Doors | 25d | 2026-12-17 | 2027-01-14 | MLTX-02-004-PR-10960 |  |  |  | -31d | 0d | Purchaser [150 h] | MOD-02-PR-8810 | MAK-01-PR-1130 | 0 | -38 | 0 | PL | Procu |  |
| MLTX-02-004-PR-11000 |  | Staging time | 5d | 2027-01-16 | 2027-01-20 | MLTX-02-004-PR-10620, MLTX-02-004-PR-10560 |  |  |  | -31d | 13d | Purchaser [150 h] | MOD-02-PR-8810 | MAK-01-PR-1130 | 0 | -38 | 0 | PL | Procu |  |

| ID | WBS | Activity | Duration | Start | Finish | Predecessors | Complete | Planned start | Planned finish | Total float | Free float | Resources | New Activity ID | Old Activity ID - MK | % Variance | Delay | On Schedule | Procurement | WBS-Project | Testing & Commissioning | Close-Out |
| --- | --- | --- | --- | --- | --- | --- | --- | --- | --- | --- | --- | --- | --- | --- | --- | --- | --- | --- | --- | --- | --- |
|  | LSC | **LANDSCAPE WORKS** |  | 2026-06-18 | 2026-10-07 |  |  |  |  |  |  |  |  |  |  |  |  |  |  |  |  |
|  | 4 | **LIGHT POLES** |  | 2026-06-18 | 2026-10-07 |  |  |  |  |  |  |  |  |  |  |  |  |  |  |  |  |
| MLTX-02-004-PR-9940 |  | PO for Lighting poles | 1d | 2026-06-18 A | 2026-06-18 A | MLTX-02-004-EN-8980 | 100% |  |  |  |  | Purchaser [150 h] | MOD-02-PR-9860 | MAK-01-PR-LLI-1120 | 0 | -12 | 0 | LS | Procu |  |  |
| MLTX-02-004-PR-9950 |  | Material Fabrication for Lighting poles | 30d | 2026-09-29 A | 2026-09-29 A | MLTX-02-004-PR-10960, MLTX-02-004-PR-11720, MLTX-02-004-PR-9940, MLTX-02-004-PR-10760 | 100% | 2027-01-17 | 2027-02-20 |  |  | Purchaser [150 h] | MOD-02-PR-9870 | MAK-01-PR-LLI-1130 | 0 | -12 | 0 | LS | Procu |  |  |
| MLTX-02-004-PR-9960 |  | Material Delivery for Lighting poles | 25d | 2026-09-30 A | 2026-10-05 A | MLTX-02-004-PR-9950 | 100% | 2027-02-21 | 2027-03-25 |  |  | Purchaser [150 h] | MOD-02-PR-9880 | MAK-01-PR-LLI-1160 | 0 | -12 | 0 | LS | Procu |  |  |
| MLTX-02-004-PR-11010 |  | Staging time | 5d | 2026-10-05 A | 2026-10-07 A | MLTX-02-004-PR-9960 | 100% | 2027-03-27 | 2027-03-31 |  |  | Purchaser [150 h] | MOD-02-PR-9880 | MAK-01-PR-LLI-1160 | 0 | -12 | 0 | LS | Procu |  |  |
|  | T & C | **TESTING & COMMISSIONING** |  | 2026-12-24 | 2027-03-23 |  |  |  |  |  |  |  |  |  |  |  |  |  |  |  |  |
| MLTX-02-004-TC-11900 |  | Testing and Commissioning for MEP Works for Toilet/Service Building | 25d | 2026-12-24 | 2027-01-21 | MLTX-02-004-CN-13220, MLTX-02-004-CN-11380, MLTX-02-004-CN-13060 |  |  |  | -7d | 9d | QA/QC Engineer [1420 h] | MOD-02-TC-11870 | T&C-1030 | 0 | -38 | 0 |  | Test | JAZ |  |
| MLTX-02-004-TC-11890 |  | Testing and Commissioning for MEP Works for Playground Area | 16d | 2027-03-02 | 2027-03-23 | MLTX-02-004-CN-12420, MLTX-02-004-TC-11880, MLTX-02-004-CN-12340 |  |  |  | -55d | 25d | QA/QC Engineer [1420 h] | MOD-02-TC-11860 | T&C-1020 | 0 | -38 | 0 |  | Test | JAZ |  |
| MLTX-02-004-TC-11910 |  | Testing and Commissioning for MEP Works for Landscape Works | 5d | 2027-03-08 | 2027-03-16 | MLTX-02-004-CN-12040, MLTX-02-004-CN-13160 |  |  |  | -44d | 0d | QA/QC Engineer [1432.8 h] | MOD-02-TC-11880 | T&C-1050 | 0 | -38 | 0 |  | Test | JAZ |  |
|  | PRO C & DEM | **PROJECT CLOSEOUT & DEMOBILIZATION** |  | 2027-02-02 | 2027-05-03 |  |  |  |  |  |  |  |  |  |  |  |  |  |  |  |  |
|  | 1 | **As-Built DWGs** |  | 2027-02-02 | 2027-05-01 |  |  |  |  |  |  |  |  |  |  |  |  |  |  |  |  |
|  | 1 | **As-Built DWGs Submittals** |  | 2027-02-02 | 2027-04-26 |  |  |  |  |  |  |  |  |  |  |  |  |  |  |  |  |
| MLTX-02-004-CO-12010 |  | As-Built DWGs Submittal for Toilet/Service Building Works | 4d | 2027-02-02 | 2027-02-06 | MLTX-02-004-TC-11930, MLTX-02-004-TC-11940 SS, MLTX-02-004-TC-11870, MLTX-02-004-TC-11900 |  |  |  | -16d | 0d | Draftsman [300 h] | MOD-02-CO-12010 | T&C-1070 | 0 | -38 | 0 |  | Close |  | Colse |
| MLTX-02-004-CO-12020 |  | As-Built DWGs Submittal for Landscape Works | 4d | 2027-03-08 | 2027-03-15 | MLTX-02-004-TC-11940 SS, MLTX-02-004-TC-11880, MLTX-02-004-TC-11910 SS |  |  |  | -44d | 0d | Draftsman [300 h] | MOD-02-CO-12020 | T&C-1090 | 0 | -38 | 0 |  | Close |  | Colse |
| MLTX-02-004-CO-12000 |  | As-Built DWGs Submittal for Playground Area Works | 4d | 2027-04-22 | 2027-04-26 | MLTX-02-004-TC-11920, MLTX-02-004-TC-11940 SS, MLTX-02-004-TC-11860, MLTX-02-004-TC-11890 |  |  |  | -80d | 0d | Draftsman [300 h] | MOD-02-CO-12000 | T&C-1060 | 0 | -38 | 0 |  | Close |  | Colse |
|  | 2 | **As-Built DWGs Approvals** |  | 2027-02-07 | 2027-05-01 |  |  |  |  |  |  |  |  |  |  |  |  |  |  |  |  |
| MLTX-02-004-CO-12050 |  | As-Built DWGs Approval for Toilet/Service Building Works | 4d | 2027-02-07 | 2027-02-10 | MLTX-02-004-CO-12010 |  |  |  | -16d | 64d | Consultant Staff [1200 h] | MOD-02-CO-12050 | T&C-1110 | 0 | -38 | 0 |  | Close |  | Colse |
| MLTX-02-004-CO-12060 |  | As-Built DWGs Approval for Landscape Works | 4d | 2027-03-16 | 2027-03-20 | MLTX-02-004-CO-12020 |  |  |  | -44d | 36d | Consultant Staff [1200 h] | MOD-02-CO-12060 | T&C-1130 | 0 | -38 | 0 |  | Close |  | Colse |
| MLTX-02-004-CO-12040 |  | As-Built DWGs Approval for Playground Area Works | 4d | 2027-04-27 | 2027-05-01 | MLTX-02-004-CO-12000 |  |  |  | -80d | 0d | Consultant Staff [800 h] | MOD-02-CO-12040 | T&C-1100 | 0 | -38 | 0 |  | Close |  | Colse |
|  | 2 | **Demobilization** |  | 2027-04-27 | 2027-05-03 |  |  |  |  |  |  |  |  |  |  |  |  |  |  |  |  |
| MLTX-02-004-CO-12080 |  | Demobilization of Manpower | 2d | 2027-04-27 | 2027-04-28 | MLTX-02-004-TC-11940, MLTX-02-004-CO-12020, MLTX-02-004-CO-12010, MLTX-02-004-CO-12000 |  |  |  | -80d | 0d | Labor [1200 h] | MOD-02-CO-12080 | A1090 | 0 | -38 | 0 |  | Close |  | Colse |
| MLTX-02-004-CO-12090 |  | Removal of Equipment from Site | 2d | 2027-04-27 | 2027-04-28 | MLTX-02-004-CO-12080 SS, MLTX-02-004-CO-12080 FF |  |  |  | -80d | 0d | Labor [900 h] | MOD-02-CO-12090 | A1100 | 0 | -38 | 0 |  | Close |  | Colse |
| MLTX-02-004-CO-12100 |  | Site Clean Up | 2d | 2027-04-29 | 2027-05-01 | MLTX-02-004-CO-12090 |  |  |  | -80d | 0d | Labor [930.95 h]; Driver [64.65 h]; Forklift [50 h]; Bobcat [160 h] | MOD-02-CO-12100 | A1110 | 0 | -38 | 0 |  | Close |  | Colse |
| MLTX-02-004-CO-12110 |  | Restoration of Ground Surfaces | 2d | 2027-05-02 | 2027-05-03 | MLTX-02-004-CO-12100, MLTX-02-004-CO-12060, MLTX-02-004-CO-12040, MLTX-02-004-CO-12050 |  |  |  | -80d | 6d | Labor [1200 h]; Driver [150 h]; Loader [30 h]; Water Tanker [30 h]; Bobcat [90 h] | MOD-02-CO-12110 | A1120 | 0 | -38 | 0 |  | Close |  | Colse |

## Activity codes

| Code | Value | Meaning |
| --- | --- | --- |
| Close-Out | Colse | Close-Out |
| Engineering | Eng-AS | Asir Region |
| Engineering | JEDENG | Jeddah Region |
| Moblization | AS | Asir |
| Moblization | JAD | Jaddeh |
| Moblization | JAZ | Jazan |
| Procurement | LS | Landscape Materials |
| Procurement | PL | Playground Materials |
| Procurement | TO | Toilet/Service Materials |
| Shop Drawings | ER | Shop Dwgs For Earthing Works |
| Shop Drawings | LS | Shop Dwgs For Landscape Works |
| Shop Drawings | PL | Shop Dwgs For Playground Works |
| Shop Drawings | TO | Shop Dwgs For Service/Toilet Works |
| Testing & Commissioning | AS | Asir |
| Testing & Commissioning | JAD | Jaddeh |
| Testing & Commissioning | JAZ | Jazan |
| W-Construction | ER | Earth Works |
| W-Construction | LS | Landscape Works |
| W-Construction | PL | Playground Works |
| W-Construction | TO | Toilet/Service Works |
| WBS-Construction Type | Earth | Earth Works |
| WBS-Construction Type | Parking | Parking Works |
| WBS-Construction Type | Play | Landscape Works |
| WBS-Construction Type | Toilet | Toilet Works |
| WBS-Project | Close | Close-Out |
| WBS-Project | Const | Construction |
| WBS-Project | Engi | Engineering |
| WBS-Project | Mob | Moblization |
| WBS-Project | Procu | Procurment |
| WBS-Project | Test | Testing & Commissioning |
