# MLTX-02-005 Playground Initiative for Eastern Region (Arar - Hasa Oasis - Dammam) -R Rev05 UP 19-10

Schedule from Primavera P6, 2026-03-03 to 2027-04-20, data date 2026-10-19, costs in USD, A marks actual dates.
Must finish by 2027-01-02

## Calendars

- MLTX-02-005 - Playground Initiative for Easter Region (Arar - Hasa Oasis - Dammam): Mon-Thu 07:00-17:00; Fri off; Sat-Sun 07:00-17:00. Exceptions (off unless hours are given): 2026-03-21 to 2026-03-23, 2026-04-03, 2026-04-10, 2026-04-17, 2026-04-24, 2026-05-01, 2026-05-08, 2026-05-15, 2026-05-22, 2026-05-26 to 2026-05-29, 2026-06-05, 2026-06-12, 2026-06-19, 2026-06-26, 2026-07-03, 2026-07-10, 2026-07-17, 2026-07-24, 2026-07-31, 2026-09-23, 2027-02-22, 2027-03-10 to 2027-03-11, 2027-03-13.

## Resources

| Resource | Group | Rate |
| --- | --- | --- |
| Labor | labor |  |
| QA/QC Engineer | labor |  |
| Consultant Staff | labor |  |
| Draftsman | labor |  |
| Driver | labor |  |
| Forklift | equipment |  |
| Bobcat | equipment |  |
| Loader | equipment |  |
| Water Tanker | equipment |  |
| Purchaser | labor |  |
| Excavator | equipment |  |
| Dump Truck | equipment |  |
| Milling machine | equipment |  |
| Excavation in any type of soil from existing level | material | 68.25 |
| Compactor | equipment |  |
| Backfilling with selected fill material | material | 34.12 |
| Skilled Labor | labor |  |
| Supply and install interlock tiles for parking 8cm | material | 87.74 |
| Interlock tiles grey scale with black marble chips 600*300*60mm zero joint | material | 107.24 |
| Steel Fixer | labor |  |
| Stamped concrete floor | material | 155.99 |
| Tartan floor | material | 633.7 |
| Compacted Natural ground soil | material | 19.5 |
| Bike path | material | 224.23 |
| Walking path | material | 224.23 |
| Kerb type K1A | material | 77.99 |
| Kerb type K1B | material | 194.99 |
| Kerb type K4 | material | 43.87 |
| Traffic signs aluminum sheet, (breakaway) Single post I.P.E. | material | 4874.65 |
| Cassia Glauca | material | 779.94 |
| Plumeria Alba | material | 779.94 |
| Neem | material | 2437.33 |
| Lawn | material | 68.25 |
| Football playground | material | 316.85 |
| Crane | equipment |  |
| Painter | labor |  |
| Padel playgound | material | 1169.92 |
| Basketball playground | material | 633.7 |
| Supply and install of padel playground fence | material | 82869.1 |
| Design, supply, install, testing and commissioning of air dome | material | 5605895 |
| Mechanical | labor |  |
| Electrician | labor |  |
| Supply and install playground benches consists of 6 seats | material | 17274.8 |
| Supply and install recycled precast concrete rectangular seats | material | 1169.92 |
| Supply and install recycled precast concrete circular seats | material | 536.21 |
| Supply and install recycled precast concrete trash bins | material | 1462.4 |
| lean concrete under foundation | material | 974.93 |
| The autoclaved aerated panel for slabs, external and internal walls and parapet | material | 321.73 |
| Provide and cast 35 Mpa concrete floor slab on grade | material | 2437.33 |
| Supply and lay 250 micron thk polyethylene sheet under grade slab | material | 24.37 |
| Supply and apply anti termite under all concrete in contact with soil. | material | 48.75 |
| Provide and lay epoxy 2 coating for inner surfaces for RC walls, RC footings and bottom of the roof | material | 146.24 |
| Mason | labor |  |
| Concrete masonry unit, 100 mm thick wall | material | 272.98 |
| Supply and install Galvanized steel ladder | material | 5849.58 |
| Plumber | labor |  |
| Supply and install liquid applied waterproofing membrane for toilets according to drawings and specifications. | material | 146.24 |
| Supply and cast in place foam concrete screed 50mm thk minimum laid to fall and cross fall | material | 29.25 |
| Supply and install 4mm thick APP modified bituminous membrane for roof insulation | material | 146.24 |
| Supply and install 300 micron polyethylene sheet | material | 29.25 |
| Supply and install 50mm thk rigid insulation (extruded polystyrene) with density of 35 kg./m3 | material | 53.62 |
| Supply and install 50mm thk loose gravel toppings | material | 39 |
| Supplying and fixing 3mm thk extruded aluminum flashing | material | 58.5 |
| Provide and lay 2 layers of waterproofing membrane 4mm | material | 243.73 |
| Metal Door D2 : | material | 9749.3 |
| Tile Fixer | labor |  |
| Floor Finishes Anti-slip glazed grey ceramic tiles, 600*600 mm | material | 194.99 |
| Floor Finishes Light grey Ceramic tiles, 300*300 mm | material | 194.99 |
| Wall Finishes Supply and install plastering to walls | material | 116.66 |
| Supply and install toilet Accessories | material | 14624 |
| Supply and install MODON logo | material | 19498.6 |
| Square Exhaust Diffuser 6"X6 " | material | 584.96 |
| Supply, install, test and commission indoor ductwork | material | 48.75 |
| Door Grilles 18"X6 " | material | 974.93 |
| Supply and install split air conditioning unit (DX-MINI SPLIT UNIT) | material | 14624 |
| Supply, install, test and commission inline exhaust fans duct | material | 3899.72 |
| PPR Pipe with 65 mm ? Cold water | material | 243.73 |
| PPR Pipe with 50 mm ? Cold water | material | 224.23 |
| PPR Pipe with 40 mm ? Cold water | material | 185.24 |
| PPR Pipe with 32 mm ? Cold water | material | 165.74 |
| PPR Pipe with 25 mm ? Cold water | material | 126.74 |
| PPR Pipe with 20 mm ? Cold water | material | 107.24 |
| PPR Pipe with 20 mm ? Hot water | material | 126.74 |
| SERVICE CONNECTIONS 50 mm ? | material | 487.47 |
| (2W+1S Pumps) - flow of each pump 5 L/S @ 30 Meters | material | 146240 |
| Hot Press GRP Sectional Panel Water Tanks (4x3x3m) | material | 194986 |
| uPVC Sewer pipes Pipe with ? 4" (110mm) | material | 243.73 |
| uPVC Sewer pipes Pipe Pipe with ? 3" (75mm) | material | 185.24 |
| uPVC Sewer pipes Pipe Pipe with ? 2" (50mm) | material | 126.74 |
| uPVC Sewer pipes Pipe Pipe with ? 1" (25mm) | material | 341.23 |
| galvanized iron vent stack Vent Cap with 3" ? | material | 3412.26 |
| Supply and installation of Floor drain | material | 487.47 |
| FCO 4" ? (110mm) | material | 853.06 |
| FCO 3" ? (75mm) | material | 609.33 |
| Supply, installation,testing and commissioning of Gully Traps | material | 1096.8 |
| Supply and install, PFE-1, Portable dry powder fire extinguisher 4.5 Kg capacity | material | 487.47 |
| Supply and install, PFE-2, Portable Carbon Dioxide fire extinguisher. | material | 1462.4 |
| Analog addressable fire alarm control panel | material | 24373.3 |
| Intelligent Photoelectric smoke and heat detector with base | material | 536.21 |
| Addressable Manual Pull Station, wall mounted | material | 536.21 |
| Addressable Fire Alarm Strobe with Sounder, wall mounted | material | 974.93 |
| Addressable Fire Alarm Strobe with Sounder, wall mounted water proof IP66 | material | 1462.4 |
| Main Distribution Board including all related works to install power meter (power meter is excluded) | material | 136490 |
| Power Panel for pump room | material | 29247.9 |
| Power Panel for street lighting | material | 24373.3 |
| Recessed mounted LED downlight luminaire 40 watt with reflector; IP44 ,230V , 4000k, 4200 LUMEN ,CRI > 80; Low glare | material | 487.47 |
| LED flood light outdoor type 96 watt, 4000k, 12720 LUMEN | material | 1169.92 |
| Wall mounted emergency LED luminaire, 230V, 60 Hz., 3 hour back up time 1800 lumen,CRI>80, 2*18 watt, IP 65 | material | 1169.92 |
| LED Exit light fixture 4.5 watt with battery for 3 hours, and a visibility of 30 meters | material | 974.93 |
| Wall mounted outdoor LED luminaire, 17 watt, 2000 lumens, with light emission from two sides | material | 1169.92 |
| Wall mounted outdoor LED luminaire, 13 watt, 1000 LUMEN, CR>80, for roof lighting | material | 688.3 |
| 1 way, One Gang Switch | material | 487.47 |
| 1 way, Two Gang Switch | material | 487.47 |
| 1 way, One Gang Switch, weatherproof | material | 487.47 |
| Exaust fan DP switch weatherproof | material | 487.47 |
| Indoor AC DP switch weatherproof | material | 487.47 |
| High level Single Receptacle outlet | material | 812.12 |
| Duplex Receptacle outlet | material | 1137.74 |
| Hand Dryer switch weatherproof | material | 1137.74 |
| Water heater switch | material | 1137.74 |
| Outdoor Disconnect Switch for air conditioiner | material | 2600.14 |
| Outdoor Disconnect Switch for exhaust fans | material | 2600.14 |
| For Building | material | 24373.3 |
| Wall telephone outlet | material | 487.47 |
| Wall mounted data outlet | material | 487.47 |
| Telecom/IT rack complete with switch, router and patch Panel | material | 24373.3 |
| AV floor box outlet (1 HDMI) | material | 1949.86 |
| AV wall outlet (1 HDMI) | material | 1462.4 |
| Supply, install, testing, and commissioning of ground mounted decorated landscape LED lighting with 6.0m height pole | material | 6288.3 |
| 1 CCTV cabinet (Rack) | material | 4431.06 |
| NVR | material | 13294.1 |
| 21" LED monitor | material | 1329.82 |
| Indoor dome type Camera IP-20 ,IK-10, POE type with infra red feature, minimum coverage 20 meters, ONVIF supported | material | 1559.89 |
| Outdoor fixed camera weahter proof IP-65, POE type | material | 1949.86 |
| Pull box for fiber optic cable pulling from provider | material | 1949.86 |
| Distribution boards, panelboards, lighting installations and wiring accessories | material | 9749.3 |
| Telecom equipment | material | 9749.3 |
| KWHM | material | 9749.3 |
| Supply and install heavy duty ductile iron steel cover | material | 3899.72 |
| Supply and install and testing of overflow galvanized steel roof scupper | material | 3899.72 |
| Wall Finishes Supply and install acrylic paint for external elevations | material | 175.49 |
| Wall Finishes Supply and spray decorative paint ( profile ) for external elevations | material | 38997.2 |
| Wall Finishes Supply and install 300*300 mm ceramic | material | 136.49 |
| Wall Finishes Supply and install solid phenolic toilets partition board | material | 779.94 |
| Supply and install curtain wall with structural glass | material | 58495.8 |
| Floor Finishes Anti-slip granite tiles for entrance | material | 487.47 |
| Floor Finishes Epoxy paint on concrete slab on grade | material | 194.99 |
| Floor Finishes Anti-slip glazed ceramic skirting tiles 600*100*10 mm | material | 97.49 |
| Tank Slab | material | 2924.79 |
| Tank foundation | material | 2534.82 |
| Tank Walls | material | 2727.81 |
| Wall Finishes Supply and install Riyadh stone cladding (300x600mm) | material | 48.75 |
| Wall Finishes Supply and install 12 mm glass partition | material | 1949.86 |
| Wall Finishes Supply and install granite capping for parapet | material | 214.48 |
| phenolic locker Size 2400*550*2200 mm | material | 9749.3 |
| phenolic locker Size 3500*550*2200 mm | material | 14624 |
| Supply and install 150 mm uPVC pipes to external wastewater network | material | 853.06 |
| HDPE Pipes pipe line O.D 90 mm PN 10, in depth 0 to 1.5 m | material | 214.48 |
| HDPE Pipes pipe line O.D 50 mm PN 10, in depth 0 to 1.5 m | material | 68.25 |
| HDPE Pipes pipe line O.D 32 mm PN 10, in depth 0 to 1.5 m | material | 48.75 |
| HDPE Pipes pipe line O.D 25 mm PN 10, in depth 0 to 1.5 m | material | 43.87 |
| Gate valve 100 mm PN16 | material | 4874.65 |
| Gate valve 50 mm PN16 | material | 2437.33 |
| Gate valve 32 mm PN16 | material | 974.93 |
| Flushing Bronze gate valve dia 1.5" inside PVC box | material | 1462.4 |
| Air release valve 1.5" inside PVC box | material | 1949.86 |
| Pressure�compensating bubblers 110 Lit/Hr | material | 77.99 |
| Pressure� bubblers 60 Lit/Hr | material | 29.25 |
| Pop up sprayer 90?- 210?, Radius 3.0 mtr | material | 39 |
| Pop up sprayer 360?,Radius 3.0 mtr. | material | 39 |
| Wall Finishes Supply and install 2 coats of acrylic paint at internal walls and columns | material | 19.5 |
| Supply, installation, testing and commissioning of Inspection chamber | material | 12186.6 |
| 50 Liter Capacity | material | 1754.87 |
| Supply and installation of western water closet | material | 2437.33 |
| Supply and installation of western water closet | material | 3412.26 |
| Supply and installation of Bib tap with Perenial Hose (BPH) | material | 146.24 |
| Supply, installation, testing and commissioning of Lavatory / wash basin | material | 6337.05 |
| Supply, installation, testing and commissioning of wall hung Lavatory / wash basin | material | 3899.72 |
| Supply and install Complete stainless steel 316 Handicap Rails Grab Bars | material | 4874.65 |
| Supply and install roof drain (RD) dome typ | material | 1462.4 |
| Supply and install shower mixer | material | 877.44 |
| CEILING FINISHES Supply and install 2 coats of acrylic paint at under side slab | material | 146.24 |
| CEILING FINISHES Supply and install 12.5mm thk, moisture resistant gypsum board suspended ceiling | material | 214.48 |
| CEILING FINISHES Supply and install 12.5mm thk, gypsum board suspended ceiling | material | 194.99 |

## Schedule

| ID | WBS | Activity | Type | Duration | Start | Finish | Predecessors | Complete | Planned start | Planned finish | Total float | Free float | Resources | New Activity ID | Old Activity ID - MK |
| --- | --- | --- | --- | --- | --- | --- | --- | --- | --- | --- | --- | --- | --- | --- | --- |
|  | KEY | **KEY MILESTONES** |  |  | 2026-03-03 | 2027-04-20 |  |  |  |  |  |  |  |  |  |
|  | GEN | **GENERAL MILESTONES** |  |  | 2026-03-03 | 2027-04-20 |  |  |  |  |  |  |  |  |  |
| MLTX-02-005-MS-1010 |  | Project Commencement Date | milestone | 0d | 2026-03-03 A | 2026-03-03 A |  | 100% |  |  |  |  |  | MOD-02-MS-1010 | MAK-01-MS-1000 |
| MLTX-02-005-MS-1030 |  | Project Completion | milestone | 0d | 2027-04-20 | 2027-04-20 | MLTX-02-005-MS-1160, MLTX-02-005-MS-1140, MLTX-02-005-MS-1150, MLTX-02-005-CN-13470, MLTX-02-005-CN-10670, MLTX-02-005-CN-13910, MLTX-02-005-MS-1170, MLTX-02-005-MS-1180, MLTX-02-005-MS-1130, MLTX-02-005-CN-10620, MLTX-02-005-CN-13671, MLTX-02-005-CO-12110, MLTX-02-005-MS-1070, MLTX-02-005-CN-12040, MLTX-02-005-TC-11930 |  |  |  | -89d | 0d |  | MOD-02-MS-1030 | MAK-01-MS-1020 |
|  | OVER ALL | **CONTRACTUAL MILESTONE** |  |  | 2026-04-02 | 2027-04-19 |  |  |  |  |  |  |  |  |  |
| MLTX-02-005-MS-1050 |  | Completion of Mobilization | milestone | 0d | 2026-04-02 A | 2026-04-02 A | MLTX-02-005-MB-1750, MLTX-02-005-MB-1440, MLTX-02-005-MB-1720, MLTX-02-005-MB-2200, MLTX-02-005-MB-1770, MLTX-02-005-MB-1420, MLTX-02-005-MB-1970, MLTX-02-005-MB-1940, MLTX-02-005-MB-2180, MLTX-02-005-MB-1710, MLTX-02-005-MB-1960, MLTX-02-005-MB-1380, MLTX-02-005-MB-2080, MLTX-02-005-MB-1430, MLTX-02-005-MB-1950, MLTX-02-005-MB-2050, MLTX-02-005-MB-2190, MLTX-02-005-MB-1690, MLTX-02-005-MB-1990, MLTX-02-005-MB-1730, MLTX-02-005-MB-1980, MLTX-02-005-MB-1740, MLTX-02-005-MB-2010, MLTX-02-005-MB-1840, MLTX-02-005-MB-2090, MLTX-02-005-MB-1810, MLTX-02-005-MB-1930, MLTX-02-005-MB-1700, MLTX-02-005-MB-1410, MLTX-02-005-MB-1850, MLTX-02-005-MB-2210, MLTX-02-005-MB-2170, MLTX-02-005-MB-1340, MLTX-02-005-MB-1320, MLTX-02-005-MB-1680, MLTX-02-005-MB-1860, MLTX-02-005-MB-1920, MLTX-02-005-MB-2100, MLTX-02-005-MB-2160 | 100% | 2026-04-14 | 2026-04-14 |  |  |  | MOD-02-MS-1050 | A1130 |
| MLTX-02-005-MS-1060 |  | Baseline Programme Approval | milestone | 0d | 2026-04-04 A | 2026-04-04 A | MLTX-02-005-MB-1920, MLTX-02-005-MB-2160, MLTX-02-005-MB-1680 | 100% | 2026-04-11 | 2026-04-11 |  |  |  | MOD-02-MS-1060 | A1140 |
| MLTX-02-005-MS-1120 |  | Completion of Levelling Works | milestone | 0d | 2026-05-02 A | 2026-05-02 A | MLTX-02-005-CN-9930, MLTX-02-005-CN-13310, MLTX-02-005-CN-11880, MLTX-02-005-CN-11910, MLTX-02-005-CN-11920, MLTX-02-005-CN-11930, MLTX-02-005-CN-13340, MLTX-02-005-CN-13350, MLTX-02-005-CN-13360, MLTX-02-005-CN-9960, MLTX-02-005-CN-9970, MLTX-02-005-CN-9980 | 100% | 2026-07-06 | 2026-07-06 |  |  |  | MOD-02-MS-1120 | A1180 |
| MLTX-02-005-MS-1100 |  | Completion of Engineering | milestone | 0d | 2027-01-09 | 2027-01-09 | MLTX-02-005-EN-16340, MLTX-02-005-EN-16310, MLTX-02-005-EN-1840, MLTX-02-005-EN-10120, MLTX-02-005-EN-10990, MLTX-02-005-EN-11000, MLTX-02-005-EN-11010, MLTX-02-005-EN-11020, MLTX-02-005-EN-11030, MLTX-02-005-EN-11040, MLTX-02-005-EN-11050, MLTX-02-005-EN-11060, MLTX-02-005-EN-11070, MLTX-02-005-EN-11080, MLTX-02-005-EN-11090, MLTX-02-005-EN-11100, MLTX-02-005-EN-11110, MLTX-02-005-EN-11120, MLTX-02-005-EN-11130, MLTX-02-005-EN-11140, MLTX-02-005-EN-11150, MLTX-02-005-EN-11160, MLTX-02-005-EN-11170, MLTX-02-005-EN-11180, MLTX-02-005-EN-11190, MLTX-02-005-EN-11200, MLTX-02-005-EN-11210, MLTX-02-005-EN-11220, MLTX-02-005-EN-11240, MLTX-02-005-EN-11250, MLTX-02-005-EN-11320, MLTX-02-005-EN-11330, MLTX-02-005-EN-11340, MLTX-02-005-EN-11350, MLTX-02-005-EN-11360, MLTX-02-005-EN-11370, MLTX-02-005-EN-11380, MLTX-02-005-EN-11390, MLTX-02-005-EN-11400, MLTX-02-005-EN-11410, MLTX-02-005-EN-11420, MLTX-02-005-EN-11430, MLTX-02-005-EN-11440, MLTX-02-005-EN-11450, MLTX-02-005-EN-11460, MLTX-02-005-EN-11470, MLTX-02-005-EN-11480, MLTX-02-005-EN-11490, MLTX-02-005-EN-11500, MLTX-02-005-EN-11510, MLTX-02-005-EN-11520, MLTX-02-005-EN-11530, MLTX-02-005-EN-11540, MLTX-02-005-EN-11550, MLTX-02-005-EN-11580, MLTX-02-005-EN-11590, MLTX-02-005-EN-11620, MLTX-02-005-EN-11630, MLTX-02-005-EN-11640, MLTX-02-005-EN-11650, MLTX-02-005-EN-11660, MLTX-02-005-EN-11670, MLTX-02-005-EN-11680, MLTX-02-005-EN-11690, MLTX-02-005-EN-11700, MLTX-02-005-EN-11710, MLTX-02-005-EN-11720, MLTX-02-005-EN-11730, MLTX-02-005-EN-11740, MLTX-02-005-EN-11750, MLTX-02-005-EN-11760, MLTX-02-005-EN-11770, MLTX-02-005-EN-11780, MLTX-02-005-EN-11790, MLTX-02-005-EN-11800, MLTX-02-005-EN-11810, MLTX-02-005-EN-11820, MLTX-02-005-EN-11830, MLTX-02-005-EN-11840, MLTX-02-005-EN-11850, MLTX-02-005-EN-11860, MLTX-02-005-EN-11870, MLTX-02-005-EN-11880, MLTX-02-005-EN-11890, MLTX-02-005-EN-11910, MLTX-02-005-EN-11930, MLTX-02-005-EN-11950, MLTX-02-005-EN-11970, MLTX-02-005-EN-11980, MLTX-02-005-EN-11990, MLTX-02-005-EN-12000, MLTX-02-005-EN-12020, MLTX-02-005-EN-12030, MLTX-02-005-EN-12040, MLTX-02-005-EN-12050, MLTX-02-005-EN-12060, MLTX-02-005-EN-12070, MLTX-02-005-EN-12080, MLTX-02-005-EN-12090, MLTX-02-005-EN-12990, MLTX-02-005-EN-13250, MLTX-02-005-EN-13280, MLTX-02-005-EN-13300, MLTX-02-005-EN-13320, MLTX-02-005-EN-13360, MLTX-02-005-EN-13370, MLTX-02-005-EN-13380, MLTX-02-005-EN-13390, MLTX-02-005-EN-13410, MLTX-02-005-EN-13430, MLTX-02-005-EN-13450, MLTX-02-005-EN-13470, MLTX-02-005-EN-13490, MLTX-02-005-EN-13510, MLTX-02-005-EN-13530, MLTX-02-005-EN-13550, MLTX-02-005-EN-13570, MLTX-02-005-EN-13590, MLTX-02-005-EN-13610, MLTX-02-005-EN-13630, MLTX-02-005-EN-13650, MLTX-02-005-EN-13680, MLTX-02-005-EN-13700, MLTX-02-005-EN-13720, MLTX-02-005-EN-13740, MLTX-02-005-EN-13760, MLTX-02-005-EN-13780, MLTX-02-005-EN-13800, MLTX-02-005-EN-13820, MLTX-02-005-EN-13840, MLTX-02-005-EN-13900, MLTX-02-005-EN-13920, MLTX-02-005-EN-13940, MLTX-02-005-EN-13960, MLTX-02-005-EN-13980, MLTX-02-005-EN-14000, MLTX-02-005-EN-14020, MLTX-02-005-EN-14080, MLTX-02-005-EN-14100, MLTX-02-005-EN-14120, MLTX-02-005-EN-14140, MLTX-02-005-EN-14150, MLTX-02-005-EN-14160, MLTX-02-005-EN-14170, MLTX-02-005-EN-14180, MLTX-02-005-EN-14190, MLTX-02-005-EN-14200, MLTX-02-005-EN-14210, MLTX-02-005-EN-14220, MLTX-02-005-EN-14230, MLTX-02-005-EN-14390, MLTX-02-005-EN-15260, MLTX-02-005-EN-15270, MLTX-02-005-EN-15280, MLTX-02-005-EN-15290, MLTX-02-005-EN-15300, MLTX-02-005-EN-15310, MLTX-02-005-EN-15320, MLTX-02-005-EN-15330, MLTX-02-005-EN-15340, MLTX-02-005-EN-15350, MLTX-02-005-EN-15360, MLTX-02-005-EN-15370, MLTX-02-005-EN-15380, MLTX-02-005-EN-15390, MLTX-02-005-EN-15400, MLTX-02-005-EN-15410, MLTX-02-005-EN-15420, MLTX-02-005-EN-15430, MLTX-02-005-EN-15440, MLTX-02-005-EN-15450, MLTX-02-005-EN-15460, MLTX-02-005-EN-15470, MLTX-02-005-EN-15480, MLTX-02-005-EN-15490, MLTX-02-005-EN-15500, MLTX-02-005-EN-15510, MLTX-02-005-EN-15520, MLTX-02-005-EN-15590, MLTX-02-005-EN-15600, MLTX-02-005-EN-15610, MLTX-02-005-EN-15620, MLTX-02-005-EN-15630, MLTX-02-005-EN-15640, MLTX-02-005-EN-15650, MLTX-02-005-EN-15660, MLTX-02-005-EN-15670, MLTX-02-005-EN-15680, MLTX-02-005-EN-15690, MLTX-02-005-EN-15700, MLTX-02-005-EN-15710, MLTX-02-005-EN-15720, MLTX-02-005-EN-15730, MLTX-02-005-EN-15740, MLTX-02-005-EN-15750, MLTX-02-005-EN-15760, MLTX-02-005-EN-15770, MLTX-02-005-EN-15780, MLTX-02-005-EN-15790, MLTX-02-005-EN-15800, MLTX-02-005-EN-15810, MLTX-02-005-EN-15820, MLTX-02-005-EN-15830, MLTX-02-005-EN-15840, MLTX-02-005-EN-15850, MLTX-02-005-EN-15860, MLTX-02-005-EN-15870, MLTX-02-005-EN-15880, MLTX-02-005-EN-15890, MLTX-02-005-EN-15900, MLTX-02-005-EN-15910, MLTX-02-005-EN-15920, MLTX-02-005-EN-15930, MLTX-02-005-EN-15940, MLTX-02-005-EN-15950, MLTX-02-005-EN-15960, MLTX-02-005-EN-15970, MLTX-02-005-EN-15980, MLTX-02-005-EN-15990, MLTX-02-005-EN-16000, MLTX-02-005-EN-16010, MLTX-02-005-EN-16020, MLTX-02-005-EN-16030, MLTX-02-005-EN-16040, MLTX-02-005-EN-16050, MLTX-02-005-EN-16060, MLTX-02-005-EN-16070, MLTX-02-005-EN-16080, MLTX-02-005-EN-16090, MLTX-02-005-EN-16100, MLTX-02-005-EN-16110, MLTX-02-005-EN-16120, MLTX-02-005-EN-16130, MLTX-02-005-EN-16140, MLTX-02-005-EN-16150, MLTX-02-005-EN-16170, MLTX-02-005-EN-16180, MLTX-02-005-EN-16190, MLTX-02-005-EN-16200, MLTX-02-005-EN-16210, MLTX-02-005-EN-16220, MLTX-02-005-EN-16240, MLTX-02-005-EN-16260, MLTX-02-005-EN-16320, MLTX-02-005-EN-16330, MLTX-02-005-EN-16350, MLTX-02-005-EN-16360, MLTX-02-005-EN-2950, MLTX-02-005-EN-2980, MLTX-02-005-EN-2990, MLTX-02-005-EN-3000, MLTX-02-005-EN-3010, MLTX-02-005-EN-3020, MLTX-02-005-EN-3030, MLTX-02-005-EN-3040, MLTX-02-005-EN-3060, MLTX-02-005-EN-3070, MLTX-02-005-EN-3080, MLTX-02-005-EN-3100, MLTX-02-005-EN-3110, MLTX-02-005-EN-3120, MLTX-02-005-EN-3130, MLTX-02-005-EN-3140, MLTX-02-005-EN-3150, MLTX-02-005-EN-3160, MLTX-02-005-EN-3170, MLTX-02-005-EN-3180, MLTX-02-005-EN-3190, MLTX-02-005-EN-3210, MLTX-02-005-EN-3220, MLTX-02-005-EN-3230, MLTX-02-005-EN-3240, MLTX-02-005-EN-3250, MLTX-02-005-EN-3260, MLTX-02-005-EN-3270, MLTX-02-005-EN-3280, MLTX-02-005-EN-3290, MLTX-02-005-EN-3300, MLTX-02-005-EN-3310, MLTX-02-005-EN-3320, MLTX-02-005-EN-3330, MLTX-02-005-EN-3340, MLTX-02-005-EN-3370, MLTX-02-005-EN-3380, MLTX-02-005-EN-3400, MLTX-02-005-EN-3460, MLTX-02-005-EN-3500, MLTX-02-005-EN-3520, MLTX-02-005-EN-3530, MLTX-02-005-EN-3550, MLTX-02-005-EN-3610, MLTX-02-005-EN-3630, MLTX-02-005-EN-3700, MLTX-02-005-EN-3770, MLTX-02-005-EN-3780, MLTX-02-005-EN-3810, MLTX-02-005-EN-3820, MLTX-02-005-EN-3830, MLTX-02-005-EN-3840, MLTX-02-005-EN-3880, MLTX-02-005-EN-3920, MLTX-02-005-EN-3950, MLTX-02-005-EN-3960, MLTX-02-005-EN-3970, MLTX-02-005-EN-3980, MLTX-02-005-EN-4370, MLTX-02-005-EN-4380, MLTX-02-005-EN-4400, MLTX-02-005-EN-4410, MLTX-02-005-EN-4420, MLTX-02-005-EN-4430, MLTX-02-005-EN-4440, MLTX-02-005-EN-4450, MLTX-02-005-EN-4460, MLTX-02-005-EN-4470, MLTX-02-005-EN-4490, MLTX-02-005-EN-4510, MLTX-02-005-EN-4520, MLTX-02-005-EN-4540, MLTX-02-005-EN-4550, MLTX-02-005-EN-4560, MLTX-02-005-EN-4570, MLTX-02-005-EN-4580, MLTX-02-005-EN-4600, MLTX-02-005-EN-4620, MLTX-02-005-EN-4630, MLTX-02-005-EN-4640, MLTX-02-005-EN-4650, MLTX-02-005-EN-4660, MLTX-02-005-EN-4670, MLTX-02-005-EN-4820, MLTX-02-005-EN-6300, MLTX-02-005-EN-6330, MLTX-02-005-EN-6360, MLTX-02-005-EN-6420, MLTX-02-005-EN-6450, MLTX-02-005-EN-6480, MLTX-02-005-EN-6510, MLTX-02-005-EN-6540, MLTX-02-005-EN-6570, MLTX-02-005-EN-6600, MLTX-02-005-EN-6630, MLTX-02-005-EN-6660, MLTX-02-005-EN-6690, MLTX-02-005-EN-6720, MLTX-02-005-EN-6750, MLTX-02-005-EN-6780, MLTX-02-005-EN-6810, MLTX-02-005-EN-6840, MLTX-02-005-EN-6880, MLTX-02-005-EN-6910, MLTX-02-005-EN-6940, MLTX-02-005-EN-6970, MLTX-02-005-EN-7000, MLTX-02-005-EN-7030, MLTX-02-005-EN-7060, MLTX-02-005-EN-7090, MLTX-02-005-EN-7120, MLTX-02-005-EN-7150, MLTX-02-005-EN-7180, MLTX-02-005-EN-7210, MLTX-02-005-EN-7240, MLTX-02-005-EN-7270, MLTX-02-005-EN-7300, MLTX-02-005-EN-7330, MLTX-02-005-EN-7360, MLTX-02-005-EN-7390, MLTX-02-005-EN-7420, MLTX-02-005-EN-7450, MLTX-02-005-EN-7480, MLTX-02-005-EN-7510, MLTX-02-005-EN-7550, MLTX-02-005-EN-7580, MLTX-02-005-EN-7610, MLTX-02-005-EN-7640, MLTX-02-005-EN-7670, MLTX-02-005-EN-7700, MLTX-02-005-EN-7730, MLTX-02-005-EN-7760, MLTX-02-005-EN-7790, MLTX-02-005-EN-7820, MLTX-02-005-EN-8720, MLTX-02-005-EN-8730, MLTX-02-005-EN-8980, MLTX-02-005-EN-9010, MLTX-02-005-EN-9030, MLTX-02-005-EN-9050, MLTX-02-005-EN-9090, MLTX-02-005-EN-9100, MLTX-02-005-EN-9110, MLTX-02-005-EN-9120, MLTX-02-005-EN-9140, MLTX-02-005-EN-9160, MLTX-02-005-EN-9180, MLTX-02-005-EN-9200, MLTX-02-005-EN-9220, MLTX-02-005-EN-9240, MLTX-02-005-EN-9260, MLTX-02-005-EN-9280, MLTX-02-005-EN-9300, MLTX-02-005-EN-9320, MLTX-02-005-EN-9340, MLTX-02-005-EN-9360, MLTX-02-005-EN-9380, MLTX-02-005-EN-9410, MLTX-02-005-EN-9430, MLTX-02-005-EN-9450, MLTX-02-005-EN-9470, MLTX-02-005-EN-9490, MLTX-02-005-EN-9510, MLTX-02-005-EN-9530, MLTX-02-005-EN-9550, MLTX-02-005-EN-9570, MLTX-02-005-EN-9630, MLTX-02-005-EN-9650, MLTX-02-005-EN-9670, MLTX-02-005-EN-9690, MLTX-02-005-EN-9710, MLTX-02-005-EN-9730, MLTX-02-005-EN-9750, MLTX-02-005-EN-9810, MLTX-02-005-EN-9830, MLTX-02-005-EN-9850, MLTX-02-005-EN-9870, MLTX-02-005-EN-9880, MLTX-02-005-EN-9890, MLTX-02-005-EN-9900, MLTX-02-005-EN-9910, MLTX-02-005-EN-9920, MLTX-02-005-EN-9930, MLTX-02-005-EN-9940, MLTX-02-005-EN-9950, MLTX-02-005-EN-9960, MLTX-02-005-EN-12010, MLTX-02-005-EN-13000, MLTX-02-005-EN-13110, MLTX-02-005-EN-16230, MLTX-02-005-EN-2400, MLTX-02-005-EN-3510, MLTX-02-005-EN-8700, MLTX-02-005-EN-8880 |  |  |  | -10d | 52d |  | MOD-02-MS-1100 | A1150 |
| MLTX-02-005-MS-1180 |  | Completion of Dammam Works | milestone | 0d | 2027-03-15 | 2027-03-15 | MLTX-02-005-CN-13640, MLTX-02-005-TC-11940, MLTX-02-005-CN-13770, MLTX-02-005-CN-13550, MLTX-02-005-MS-1100, MLTX-02-005-CN-13390, MLTX-02-005-CN-13490, MLTX-02-005-CN-13671, MLTX-02-005-CN-13850, MLTX-02-005-CN-13910, MLTX-02-005-CN-14100, MLTX-02-005-CN-14140, MLTX-02-005-CN-14200, MLTX-02-005-CN-14240, MLTX-02-005-CN-14250, MLTX-02-005-CN-14270, MLTX-02-005-CN-14300, MLTX-02-005-CN-14320, MLTX-02-005-CN-14340, MLTX-02-005-CN-14380, MLTX-02-005-CN-14390, MLTX-02-005-CN-14400, MLTX-02-005-CN-14410, MLTX-02-005-CN-14420, MLTX-02-005-CN-14470, MLTX-02-005-CN-14490, MLTX-02-005-CN-14700, MLTX-02-005-CN-13600, MLTX-02-005-CN-13650, MLTX-02-005-CN-13660, MLTX-02-005-CN-13670, MLTX-02-005-CN-13680, MLTX-02-005-CN-13690, MLTX-02-005-CN-13700, MLTX-02-005-CN-14120, MLTX-02-005-CN-14480, MLTX-02-005-PR-11520, MLTX-02-005-PR-11500, MLTX-02-005-PR-11480, MLTX-02-005-EN-15470, MLTX-02-005-CN-14590, MLTX-02-005-CN-14460, MLTX-02-005-CN-14570, MLTX-02-005-CN-14430 |  |  |  | -58d | 31d |  | MOD-02-MS-1070 | A1200 |
| MLTX-02-005-MS-1160 |  | Completion of Arar Works | milestone | 0d | 2027-03-21 | 2027-03-21 | MLTX-02-005-CN-12060, MLTX-02-005-MS-1100, MLTX-02-005-TC-11880, MLTX-02-005-CN-10390, MLTX-02-005-CN-10140, MLTX-02-005-CN-10220, MLTX-02-005-CN-10380, MLTX-02-005-CN-10580, MLTX-02-005-CN-10620, MLTX-02-005-CN-10670, MLTX-02-005-CN-11120, MLTX-02-005-CN-11130, MLTX-02-005-CN-11170, MLTX-02-005-CN-11220, MLTX-02-005-CN-11380, MLTX-02-005-CN-11400, MLTX-02-005-CN-11460, MLTX-02-005-CN-11550, MLTX-02-005-CN-11620, MLTX-02-005-CN-11750, MLTX-02-005-CN-11760, MLTX-02-005-CN-11770, MLTX-02-005-CN-11780, MLTX-02-005-CN-11790, MLTX-02-005-CN-11820, MLTX-02-005-CN-11830, MLTX-02-005-CN-11870, MLTX-02-005-CN-11500 |  |  |  | -63d | 26d |  | MOD-02-MS-1070 | A1200 |
| MLTX-02-005-MS-1130 |  | Completion of Toilet Building | milestone | 0d | 2027-04-17 | 2027-04-17 | MLTX-02-005-CN-12990, MLTX-02-005-CN-13040, MLTX-02-005-CN-12670, MLTX-02-005-CN-11220, MLTX-02-005-CN-12890, MLTX-02-005-CN-14420, MLTX-02-005-CN-14270, MLTX-02-005-CN-14100, MLTX-02-005-CN-11170, MLTX-02-005-CN-11130, MLTX-02-005-CN-14250, MLTX-02-005-MS-1100, MLTX-02-005-CN-12710, MLTX-02-005-CN-11780, MLTX-02-005-CN-14470, MLTX-02-005-CN-11400, MLTX-02-005-CN-14490, MLTX-02-005-CN-13060, MLTX-02-005-CN-14140, MLTX-02-005-CN-11120, MLTX-02-005-CN-11380, MLTX-02-005-CN-11550, MLTX-02-005-CN-11620, MLTX-02-005-CN-11740, MLTX-02-005-CN-11750, MLTX-02-005-CN-11760, MLTX-02-005-CN-11770, MLTX-02-005-CN-11790, MLTX-02-005-CN-11820, MLTX-02-005-CN-11830, MLTX-02-005-CN-11870, MLTX-02-005-CN-12770, MLTX-02-005-CN-12810, MLTX-02-005-CN-12820, MLTX-02-005-CN-12840, MLTX-02-005-CN-12870, MLTX-02-005-CN-12910, MLTX-02-005-CN-12950, MLTX-02-005-CN-12960, MLTX-02-005-CN-12970, MLTX-02-005-CN-12980, MLTX-02-005-CN-13160, MLTX-02-005-CN-13270, MLTX-02-005-CN-14200, MLTX-02-005-CN-14240, MLTX-02-005-CN-14300, MLTX-02-005-CN-14320, MLTX-02-005-CN-14340, MLTX-02-005-CN-14380, MLTX-02-005-CN-14390, MLTX-02-005-CN-14400, MLTX-02-005-CN-14410, MLTX-02-005-CN-14590, MLTX-02-005-CN-14700, MLTX-02-005-MS-1140, MLTX-02-005-CN-14430, MLTX-02-005-CN-14090, MLTX-02-005-CN-14210, MLTX-02-005-CN-11500, MLTX-02-005-CN-14740, MLTX-02-005-CN-12190, MLTX-02-005-CN-13030, MLTX-02-005-PR-10220, MLTX-02-005-EN-11080, MLTX-02-005-CN-13120, MLTX-02-005-CN-13140, MLTX-02-005-CN-14120, MLTX-02-005-CN-14480, MLTX-02-005-EN-15350, MLTX-02-005-CN-14460, MLTX-02-005-PR-11520, MLTX-02-005-PR-11500, MLTX-02-005-PR-11480, MLTX-02-005-EN-15470, MLTX-02-005-CN-14180, MLTX-02-005-CN-14570 |  |  |  | -87d | 0d |  | MOD-02-MS-1130 |  |
| MLTX-02-005-MS-1140 |  | Completion of Playground Area | milestone | 0d | 2027-04-17 | 2027-04-17 | MLTX-02-005-CN-12220, MLTX-02-005-CN-12170, MLTX-02-005-CN-13390, MLTX-02-005-CN-11960, MLTX-02-005-CN-12210, MLTX-02-005-CN-10220, MLTX-02-005-CN-13600, MLTX-02-005-MS-1100, MLTX-02-005-CN-10140, MLTX-02-005-CN-13640, MLTX-02-005-CN-12270, MLTX-02-005-CN-13671, MLTX-02-005-CN-13700, MLTX-02-005-CN-13650, MLTX-02-005-PR-10050, MLTX-02-005-CN-12120 |  |  |  | -87d | 0d |  | MOD-02-MS-1140 |  |
| MLTX-02-005-MS-1150 |  | Completion of Natural Landscape Works | milestone | 0d | 2027-04-17 | 2027-04-17 | MLTX-02-005-CN-13490, MLTX-02-005-CN-10550, MLTX-02-005-CN-12060, MLTX-02-005-CN-13640, MLTX-02-005-CN-10390, MLTX-02-005-MS-1100, MLTX-02-005-CN-10580, MLTX-02-005-CN-10620, MLTX-02-005-CN-10670, MLTX-02-005-CN-11460, MLTX-02-005-CN-12040, MLTX-02-005-CN-12480, MLTX-02-005-CN-13220, MLTX-02-005-CN-13470, MLTX-02-005-CN-13910, MLTX-02-005-MS-1130 |  |  |  | -86d | 3d |  | MOD-02-MS-1150 |  |
| MLTX-02-005-MS-1170 |  | Completion of Hasa Oasis Works | milestone | 0d | 2027-04-17 | 2027-04-17 | MLTX-02-005-CN-12220, MLTX-02-005-CN-12270, MLTX-02-005-CN-12340, MLTX-02-005-CN-12210, MLTX-02-005-CN-11960, MLTX-02-005-CN-12040, MLTX-02-005-CN-12480, MLTX-02-005-CN-12670, MLTX-02-005-CN-12710, MLTX-02-005-CN-12770, MLTX-02-005-CN-12810, MLTX-02-005-CN-12820, MLTX-02-005-CN-12870, MLTX-02-005-CN-12890, MLTX-02-005-CN-12910, MLTX-02-005-CN-12950, MLTX-02-005-CN-12960, MLTX-02-005-CN-12970, MLTX-02-005-CN-12980, MLTX-02-005-CN-12990, MLTX-02-005-CN-13040, MLTX-02-005-CN-13060, MLTX-02-005-CN-13160, MLTX-02-005-CN-13220, MLTX-02-005-CN-13270, MLTX-02-005-CN-12100, MLTX-02-005-CN-12110, MLTX-02-005-CN-12150, MLTX-02-005-CN-12160, MLTX-02-005-CN-12170, MLTX-02-005-CN-12320, MLTX-02-005-MS-1140, MLTX-02-005-CN-14740, MLTX-02-005-CN-12190, MLTX-02-005-CN-13030, MLTX-02-005-PR-10220, MLTX-02-005-EN-11080, MLTX-02-005-CN-13120, MLTX-02-005-CN-13140, MLTX-02-005-PR-10050, MLTX-02-005-CN-12120 |  |  |  | -86d | 3d |  | MOD-02-MS-1070 | A1200 |
| MLTX-02-005-MS-1070 |  | Completion of Testing & Commissioning | milestone | 0d | 2027-04-19 | 2027-04-19 | MLTX-02-005-TC-11890, MLTX-02-005-TC-11860, MLTX-02-005-TC-11870, MLTX-02-005-TC-11880, MLTX-02-005-TC-11900, MLTX-02-005-TC-11910, MLTX-02-005-TC-11920, MLTX-02-005-TC-11930, MLTX-02-005-TC-11940 |  |  |  | -88d | 1d |  | MOD-02-MS-1070 | A1200 |
|  | 1 | **ARAR** |  |  | 2026-03-04 | 2027-03-21 |  |  |  |  |  |  |  |  |  |
|  | MOB | **MOBILIZATION** |  |  | 2026-03-04 | 2026-04-04 |  |  |  |  |  |  |  |  |  |
|  | SURV | **TOPOGRAPHIC SURVEY** |  |  | 2026-03-04 | 2026-03-08 |  |  |  |  |  |  |  |  |  |
| MLTX-02-005-MB-1320 |  | Site Survey Works |  | 4d | 2026-03-04 A | 2026-03-08 A | MLTX-02-005-MS-1010 | 100% | 2026-03-03 | 2026-03-07 |  |  | QA/QC Engineer [60 h] | MOD-02-MB-1320 | MAK-01-TPS-1000 |
|  | OFFICE | **SITE FACILITIES & OFFICES** |  |  | 2026-03-04 | 2026-04-02 |  |  |  |  |  |  |  |  |  |
| MLTX-02-005-MB-1340 |  | Site Layout Plan |  | 3d | 2026-03-04 A | 2026-03-08 A | MLTX-02-005-MS-1010 | 100% | 2026-03-03 | 2026-03-05 |  |  | Labor [230 h] | MOD-02-MB-1340 | MAK-01-MOB-1000 |
| MLTX-02-005-MB-1350 |  | Clear & Grub for Offices & Access Road |  | 3d | 2026-03-09 A | 2026-03-11 A | MLTX-02-005-MB-1340, MLTX-02-005-MB-1390 | 100% | 2026-03-19 | 2026-03-25 |  |  | Labor [200 h] | MOD-02-MB-1350 | MAK-01-MOB-1010 |
| MLTX-02-005-MB-1360 |  | Construct Site Access Roads |  | 3d | 2026-03-09 A | 2026-03-12 A | MLTX-02-005-MB-1340 | 100% | 2026-03-07 | 2026-03-09 |  |  | Labor [200 h] | MOD-02-MB-1360 | MAK-01-MOB-1020 |
| MLTX-02-005-MB-1370 |  | Construct Temporary Fence |  | 5d | 2026-03-12 A | 2026-03-19 A | MLTX-02-005-MB-1350, MLTX-02-005-MB-1390 | 100% | 2026-03-26 | 2026-03-31 |  |  | Labor [200 h] | MOD-02-MB-1370 | MAK-01-MOB-1030 |
| MLTX-02-005-MB-1380 |  | Construct Site Offices & Storage |  | 10d | 2026-03-14 A | 2026-04-01 A | MLTX-02-005-MB-1360, MLTX-02-005-MB-1350 | 100% | 2026-03-26 | 2026-04-06 |  |  | Labor [200 h] | MOD-02-MB-1380 | MAK-01-MOB-1040 |
| MLTX-02-005-MB-1390 |  | Install Project Signs |  | 8d | 2026-03-14 A | 2026-03-25 A | MLTX-02-005-MB-1360 | 100% | 2026-03-10 | 2026-03-18 |  |  | Labor [200 h] | MOD-02-MB-1390 | MAK-01-MOB-1050 |
| MLTX-02-005-MB-1400 |  | Install Site Facilities |  | 4d | 2026-03-16 A | 2026-03-28 A | MLTX-02-005-MB-1370, MLTX-02-005-MB-1430 | 100% | 2026-04-01 | 2026-04-05 |  |  | Labor [300 h] | MOD-02-MB-1400 | MAK-01-MOB-1060 |
| MLTX-02-005-MB-1410 |  | Electrical Works & Connections |  | 6d | 2026-03-24 A | 2026-03-30 A | MLTX-02-005-MB-1370, MLTX-02-005-MB-1430 | 100% | 2026-04-01 | 2026-04-07 |  |  | Labor [300 h] | MOD-02-MB-1410 | MAK-01-MOB-1070 |
| MLTX-02-005-MB-1420 |  | Construct Parking Sheds |  | 6d | 2026-03-24 A | 2026-03-30 A | MLTX-02-005-MB-1370, MLTX-02-005-MB-1430 | 100% | 2026-04-01 | 2026-04-07 |  |  | Labor [300 h] | MOD-02-MB-1420 | MAK-01-MOB-1080 |
| MLTX-02-005-MB-1440 |  | Manpower Mobalization |  | 3d | 2026-03-24 A | 2026-04-02 A | MLTX-02-005-MB-1400, MLTX-02-005-MB-1680 | 100% | 2026-04-12 | 2026-04-14 |  |  | Labor [250 h] | MOD-02-MB-1440 | MAK-01-MOB-1090 |
| MLTX-02-005-MB-1430 |  | Equipment Mobalization |  | 5d | 2026-03-26 A | 2026-04-02 A | MLTX-02-005-MB-1390 | 100% | 2026-03-19 | 2026-03-28 |  |  | Labor [282.9 h] | MOD-02-MB-1430 | MAK-01-MOB-1100 |

| ID | WBS | Activity | Duration | Start | Finish | Predecessors | Complete | Planned start | Planned finish | Resources | New Activity ID | Old Activity ID - MK | Shop Drawings |
| --- | --- | --- | --- | --- | --- | --- | --- | --- | --- | --- | --- | --- | --- |
|  | PRELI | **PRELIMINARY SUBMITTALS** |  | 2026-03-09 | 2026-04-04 |  |  |  |  |  |  |  |  |
|  | P&S | **PREPARATIONS & SUBMITTAL BY CONTRACTORS** |  | 2026-03-09 | 2026-03-19 |  |  |  |  |  |  |  |  |
| MLTX-02-005-MB-1540 |  | Preparation and Submittal of Detailed Work Order Programme (Baseline) | 10d | 2026-03-09 A | 2026-03-19 A | MLTX-02-005-MB-1340, MLTX-02-005-MB-1550 | 100% | 2026-03-16 | 2026-03-30 | QA/QC Engineer [150 h] | MOD-02-MB-1540 | MAK-01-PS-1070 |  |
| MLTX-02-005-MB-1550 |  | Preparation and Submittal of Project Execution Plan | 8d | 2026-03-09 A | 2026-03-17 A | MLTX-02-005-MB-1340 | 100% | 2026-03-07 | 2026-03-15 | QA/QC Engineer [120 h] | MOD-02-MB-1550 | MAK-01-PS-1080 |  |
| MLTX-02-005-MB-1560 |  | Submission of Contractor Project Quality Plan | 8d | 2026-03-09 A | 2026-03-17 A | MLTX-02-005-MB-1340, MLTX-02-005-MB-1550 | 100% | 2026-03-16 | 2026-03-28 | QA/QC Engineer [120 h] | MOD-02-MB-1560 | MAK-01-PS-1090 |  |
| MLTX-02-005-MB-1570 |  | Submission of Construction Safety & Environmental Management Plan | 8d | 2026-03-09 A | 2026-03-17 A | MLTX-02-005-MB-1340, MLTX-02-005-MB-1550 | 100% | 2026-03-16 | 2026-03-28 | QA/QC Engineer [120 h] | MOD-02-MB-1570 | MAK-01-PS-1100 |  |
| MLTX-02-005-MB-1580 |  | Preparation and Submittal of Organization Chart | 8d | 2026-03-09 A | 2026-03-17 A | MLTX-02-005-MB-1340, MLTX-02-005-MB-1550 | 100% | 2026-03-16 | 2026-03-28 | QA/QC Engineer [120 h] | MOD-02-MB-1580 | MAK-01-PS-1110 |  |
| MLTX-02-005-MB-1590 |  | Preparation and Submittal of Communication Plan | 8d | 2026-03-09 A | 2026-03-17 A | MLTX-02-005-MB-1340, MLTX-02-005-MB-1550 | 100% | 2026-03-16 | 2026-03-28 | QA/QC Engineer [120 h] | MOD-02-MB-1590 | MAK-01-PS-1120 |  |
|  | APP | **APPROVALS BY EMPLOYERS** |  | 2026-03-18 | 2026-04-04 |  |  |  |  |  |  |  |  |
| MLTX-02-005-MB-1690 |  | Approval of Project Execution Plan | 10d | 2026-03-18 A | 2026-04-01 A | MLTX-02-005-MB-1550 | 100% | 2026-03-16 | 2026-03-30 | Consultant Staff [120 h] | MOD-02-MB-1690 | MAK-01-PS-1210 |  |
| MLTX-02-005-MB-1700 |  | Approval of Contractor Project Quality Plan | 10d | 2026-03-18 A | 2026-04-01 A | MLTX-02-005-MB-1560, MLTX-02-005-MB-1690 | 100% | 2026-03-31 | 2026-04-11 | Consultant Staff [120 h] | MOD-02-MB-1700 | MAK-01-PS-1220 |  |
| MLTX-02-005-MB-1710 |  | Approval of Construction Safety & Environmental Management Plan | 10d | 2026-03-18 A | 2026-04-01 A | MLTX-02-005-MB-1570, MLTX-02-005-MB-1690 | 100% | 2026-03-31 | 2026-04-11 | Consultant Staff [120 h] | MOD-02-MB-1710 | MAK-01-PS-1230 |  |
| MLTX-02-005-MB-1720 |  | Approval of Organization Chart | 10d | 2026-03-18 A | 2026-04-01 A | MLTX-02-005-MB-1580, MLTX-02-005-MB-1690 | 100% | 2026-03-31 | 2026-04-11 | Consultant Staff [120 h] | MOD-02-MB-1720 | MAK-01-PS-1240 |  |
| MLTX-02-005-MB-1730 |  | Approval of Communication Plan | 10d | 2026-03-18 A | 2026-04-01 A | MLTX-02-005-MB-1590, MLTX-02-005-MB-1690 | 100% | 2026-03-31 | 2026-04-11 | Consultant Staff [120 h] | MOD-02-MB-1730 | MAK-01-PS-1250 |  |
| MLTX-02-005-MB-1680 |  | Approval of Detailed Work Order Programme (Baseline) | 10d | 2026-03-24 A | 2026-04-04 A | MLTX-02-005-MB-1540, MLTX-02-005-MB-1690 | 100% | 2026-03-31 | 2026-04-11 | Consultant Staff [120 h] | MOD-02-MB-1680 | MAK-01-PS-1200 |  |
|  | ENGG | **ENGINEERING** |  | 2026-03-07 | 2027-01-06 |  |  |  |  |  |  |  |  |
|  | SD | **SHOP DRAWINGS** |  | 2026-03-07 | 2027-01-06 |  |  |  |  |  |  |  |  |
|  | SUB | **SHOP DRAWINGS SUBMISSION** |  | 2026-03-07 | 2026-12-07 |  |  |  |  |  |  |  |  |
|  | 2 | **SHOP DRAWING SUBMITTALS FOR EARTHING WORKS** |  | 2026-03-09 | 2026-03-14 |  |  |  |  |  |  |  |  |
| MLTX-02-005-EN-1790 |  | Shop DWG Submittal for Layout Plan | 15d | 2026-03-09 A | 2026-03-14 A | MLTX-02-005-MB-1320 | 100% | 2026-03-08 | 2026-03-28 | Draftsman [18 h] | MOD-02-EN-1790 | MAK-01-EN-1010 | ER |
| MLTX-02-005-EN-1800 |  | Shop DWG Submittal for Setting Out | 16d | 2026-03-09 A | 2026-03-14 A | MLTX-02-005-MB-1320 | 100% | 2026-03-08 | 2026-03-29 | Draftsman [17.8 h] | MOD-02-EN-1800 | MAK-01-EN-1030 | ER |
| MLTX-02-005-EN-1810 |  | Shop DWG Submittal for Grading Layout Plan | 15d | 2026-03-09 A | 2026-03-14 A | MLTX-02-005-MB-1320, MLTX-02-005-EN-2910 | 100% | 2026-04-16 | 2026-05-03 | Draftsman [16.1 h] | MOD-02-EN-1810 | MAK-01-EN-1050 | ER |
| MLTX-02-005-EN-1820 |  | Shop DWG Submittal for Curb Setting Out Points | 15d | 2026-03-09 A | 2026-03-14 A | MLTX-02-005-MB-1320 | 100% | 2026-03-08 | 2026-03-28 | Draftsman [16.1 h] | MOD-02-EN-1820 | MAK-01-EN-1060 | ER |
| MLTX-02-005-EN-1830 |  | Shop DWG Submittal for Signing & Marking Layout Plan | 15d | 2026-03-09 A | 2026-03-14 A | MLTX-02-005-MB-1320, MLTX-02-005-EN-1790 | 100% | 2026-03-29 | 2026-04-14 | Draftsman [16.1 h] | MOD-02-EN-1830 | MAK-01-EN-1070 | ER |
| MLTX-02-005-EN-1840 |  | Shop DWG Submittal for Standards Details | 15d | 2026-03-09 A | 2026-03-14 A | MLTX-02-005-MB-1320 | 100% | 2026-03-08 | 2026-03-28 | Draftsman [16.1 h] | MOD-02-EN-1840 | MAK-01-EN-1080 | ER |

| ID | WBS | Activity | Duration | Start | Finish | Predecessors | Complete | Planned start | Planned finish | Resources | New Activity Code | New Activity ID | Shop Drawings |
| --- | --- | --- | --- | --- | --- | --- | --- | --- | --- | --- | --- | --- | --- |
|  | ROAD | **SHOP DRAWING SUBMITTALS FOR SERVICE/TOILET WORKS** |  | 2026-03-07 | 2026-07-30 |  |  |  |  |  |  |  |  |
|  | 2 | **ARCHITECTURE WORKS** |  | 2026-03-09 | 2026-03-14 |  |  |  |  |  |  |  |  |
| MLTX-02-005-EN-1870 |  | Shop DWG Submittal for Floor Plan | 15d | 2026-03-09 A | 2026-03-14 A | MLTX-02-005-EN-1800 SS, MLTX-02-005-EN-1790 SS, MLTX-02-005-EN-1820 | 100% | 2026-03-29 | 2026-04-14 | Draftsman [16.1 h] | EN.MB.SD.AR.PR.1110 | MOD-02-EN-1870 | TO |
| MLTX-02-005-EN-1880 |  | Shop DWG Submittal for Elevations | 15d | 2026-03-09 A | 2026-03-14 A | MLTX-02-005-EN-1870 SS, MLTX-02-005-EN-1790 | 100% | 2026-03-29 | 2026-04-14 | Draftsman [16.1 h] | EN.MB.SD.AR.PR.1140 | MOD-02-EN-1880 | TO |
| MLTX-02-005-EN-1890 |  | Shop DWG Submittal for Sections | 15d | 2026-03-09 A | 2026-03-14 A | MLTX-02-005-EN-1810 SS, MLTX-02-005-EN-1880 SS | 100% | 2026-04-16 | 2026-05-03 | Draftsman [16.1 h] | EN.MB.SD.AR.PR.1150 | MOD-02-EN-1890 | TO |
| MLTX-02-005-EN-1900 |  | Shop DWG Submittal for Ceiling Plan | 15d | 2026-03-09 A | 2026-03-14 A | MLTX-02-005-EN-1890 SS | 100% | 2026-04-16 | 2026-05-03 | Draftsman [16.1 h] | EN.MB.SD.AR.PR.1160 | MOD-02-EN-1900 | TO |
| MLTX-02-005-EN-1910 |  | Shop DWG Submittal for Finishes Plan | 15d | 2026-03-09 A | 2026-03-14 A | MLTX-02-005-EN-1900 SS | 100% | 2026-04-16 | 2026-05-03 | Draftsman [16.1 h] | EN.MB.SD.AR.PR.1190 | MOD-02-EN-1910 | TO |
| MLTX-02-005-EN-1920 |  | Shop DWG Submittal for Toilet Details | 15d | 2026-03-09 A | 2026-03-14 A | MLTX-02-005-EN-1910 SS | 100% | 2026-04-16 | 2026-05-03 | Draftsman [16.1 h] | EN.MB.SD.AR.PR.1210 | MOD-02-EN-1920 | TO |
| MLTX-02-005-EN-1930 |  | Shop DWG Submittal for Doors/Windows Schedule | 15d | 2026-03-09 A | 2026-03-14 A | MLTX-02-005-EN-1920 SS | 100% | 2026-04-16 | 2026-05-03 | Draftsman [16.1 h] | EN.MB.SD.AR.PR.1220 | MOD-02-EN-1930 | TO |
|  | 1 | **STRUCTURE WORKS** |  | 2026-03-15 | 2026-03-19 |  |  |  |  |  |  |  |  |
| MLTX-02-005-EN-1950 |  | Shop DWG Submittal for Foundation Plan | 15d | 2026-03-15 A | 2026-03-19 A | MLTX-02-005-EN-1930 | 100% | 2026-05-04 | 2026-05-20 | Draftsman [16.1 h] | EN.MB.SD.CV.PR.1460 | MOD-02-EN-1950 | TO |
| MLTX-02-005-EN-1960 |  | Shop DWG Submittal for Ground Floor Framing Plan | 21d | 2026-03-15 A | 2026-03-19 A | MLTX-02-005-EN-1950 SS | 100% | 2026-05-04 | 2026-05-31 | Draftsman [16.1 h] | EN.MB.SD.CV.PR.1480 | MOD-02-EN-1960 | TO |
| MLTX-02-005-EN-1970 |  | Shop DWG Submittal for Sections/Details | 21d | 2026-03-15 A | 2026-03-19 A | MLTX-02-005-EN-1930, MLTX-02-005-EN-2100 | 100% | 2026-06-30 | 2026-07-23 | Draftsman [16.1 h] | EN.MB.SD.CV.PR.1530 | MOD-02-EN-1970 | TO |
|  | 3 | **MECHANCAL WORKS** |  | 2026-03-07 | 2026-05-07 |  |  |  |  |  |  |  |  |
| MLTX-02-005-EN-2020 |  | Shop DWG Submittal for Drainage Layout | 30d | 2026-03-07 A | 2026-05-07 A | MLTX-02-005-EN-1930 | 100% | 2026-05-04 | 2026-06-10 | Draftsman [16.1 h] | EN.MB.SD.MC.PR.1710 | MOD-02-EN-2020 | TO |
| MLTX-02-005-EN-2030 |  | Shop DWG Submittal for Drainage Details | 30d | 2026-03-12 A | 2026-05-06 A | MLTX-02-005-EN-1930 | 100% | 2026-05-04 | 2026-06-10 | Draftsman [16.1 h] | EN.MB.SD.MC.PR.1720 | MOD-02-EN-2030 | TO |
| MLTX-02-005-EN-2040 |  | Shop DWG Submittal for Dut Routing Layout | 30d | 2026-03-12 A | 2026-05-04 A | MLTX-02-005-EN-1930, MLTX-02-005-EN-2100 | 100% | 2026-06-30 | 2026-08-03 | Draftsman [16.1 h] | EN.MB.SD.MC.PR.1770 | MOD-02-EN-2040 | TO |
| MLTX-02-005-EN-2050 |  | Shop DWG Submittal for Diffusers Layout | 30d | 2026-03-12 A | 2026-05-06 A | MLTX-02-005-EN-1930, MLTX-02-005-EN-2270 | 100% | 2026-07-16 | 2026-08-19 | Draftsman [16.1 h] | EN.MB.SD.MC.PR.1770 | MOD-02-EN-2050 | TO |
| MLTX-02-005-EN-1990 |  | Shop DWG Submittal for HVAC Plan | 30d | 2026-03-15 A | 2026-03-19 A | MLTX-02-005-EN-1930, MLTX-02-005-EN-2100 | 100% | 2026-06-30 | 2026-08-03 | Draftsman [16.1 h] | EN.MB.SD.MC.PR.1740 | MOD-02-EN-1990 | TO |
| MLTX-02-005-EN-2000 |  | Shop DWG Submittal for Exhaust Air Plan | 30d | 2026-03-15 A | 2026-03-19 A | MLTX-02-005-EN-1930, MLTX-02-005-EN-2100 | 100% | 2026-06-30 | 2026-08-03 | Draftsman [16.1 h] | EN.MB.SD.MC.PR.1750 | MOD-02-EN-2000 | TO |
| MLTX-02-005-EN-2010 |  | Shop DWG Submittal for HVAC Equipment Schedule | 30d | 2026-03-15 A | 2026-03-19 A | MLTX-02-005-EN-1930, MLTX-02-005-EN-2100 | 100% | 2026-06-30 | 2026-08-03 | Draftsman [16.1 h] | EN.MB.SD.MC.PR.1770 | MOD-02-EN-2010 | TO |
| MLTX-02-005-EN-2060 |  | Shop DWG Submittal for Fire Fighting Layout | 30d | 2026-03-15 A | 2026-03-19 A | MLTX-02-005-EN-1930, MLTX-02-005-EN-2590 | 100% | 2026-10-05 | 2026-11-08 | Draftsman [16.1 h] | EN.MB.SD.MC.PR.1780 | MOD-02-EN-2060 | TO |
| MLTX-02-005-EN-2070 |  | Shop DWG Submittal for Water Supply Layout | 30d | 2026-03-15 A | 2026-03-19 A | MLTX-02-005-EN-1930, MLTX-02-005-EN-2100 | 100% | 2026-06-30 | 2026-08-03 | Draftsman [16.1 h] | EN.MB.SD.MC.PR.1790 | MOD-02-EN-2070 | TO |
| MLTX-02-005-EN-2080 |  | Shop DWG Submittal for Water Supply Details | 30d | 2026-03-15 A | 2026-03-19 A | MLTX-02-005-EN-1930, MLTX-02-005-EN-2100 | 100% | 2026-06-30 | 2026-08-03 | Draftsman [16.1 h] | EN.MB.SD.MC.PR.1800 | MOD-02-EN-2080 | TO |

| ID | WBS | Activity | Duration | Start | Finish | Predecessors | Complete | Planned start | Planned finish | Resources | New Activity Code | New Activity ID | Shop Drawings |
| --- | --- | --- | --- | --- | --- | --- | --- | --- | --- | --- | --- | --- | --- |
|  | 4 | **ELECTRICAL WORKS** |  | 2026-03-12 | 2026-07-30 |  |  |  |  |  |  |  |  |
| MLTX-02-005-EN-2120 |  | Shop DWG Submittal for Power Single Line Diagram | 30d | 2026-03-12 A | 2026-05-05 A | MLTX-02-005-EN-1930, MLTX-02-005-EN-2100 | 100% | 2026-06-30 | 2026-08-03 | Draftsman [16.1 h] | EN.MB.SD.EL.PR.2020 | MOD-02-EN-2120 | TO |
| MLTX-02-005-EN-2130 |  | Shop DWG Submittal for Panel Board Schedules | 30d | 2026-03-12 A | 2026-05-09 A | MLTX-02-005-EN-1930 | 100% | 2026-05-04 | 2026-06-10 | Draftsman [16.1 h] | EN.MB.SD.EL.PR.2030 | MOD-02-EN-2130 | TO |
| MLTX-02-005-EN-2160 |  | Shop DWG Submittal for Cable Tray Installation Details | 30d | 2026-03-12 A | 2026-05-05 A | MLTX-02-005-EN-2150 SS | 100% | 2026-05-04 | 2026-06-10 | Draftsman [16.1 h] | EN.MB.SD.EL.PR.2060 | MOD-02-EN-2160 | TO |
| MLTX-02-005-EN-2170 |  | Shop DWG Submittal for Manhole & Ductbank Details | 30d | 2026-03-12 A | 2026-05-07 A | MLTX-02-005-EN-2160 SS | 100% | 2026-05-04 | 2026-06-10 | Draftsman [16.1 h] | EN.MB.SD.EL.PR.2070 | MOD-02-EN-2170 | TO |
| MLTX-02-005-EN-2100 |  | Shop DWG Submittal for Lighting Layout | 30d | 2026-03-15 A | 2026-03-19 A | MLTX-02-005-EN-1930, MLTX-02-005-EN-2920 | 100% | 2026-05-23 | 2026-06-29 | Draftsman [16.1 h] | EN.MB.SD.EL.PR.1980 | MOD-02-EN-2100 | TO |
| MLTX-02-005-EN-2110 |  | Shop DWG Submittal for Power Layout | 30d | 2026-03-15 A | 2026-03-19 A | MLTX-02-005-EN-1930, MLTX-02-005-EN-2100 | 100% | 2026-06-30 | 2026-08-03 | Draftsman [16.1 h] | EN.MB.SD.EL.PR.2000 | MOD-02-EN-2110 | TO |
| MLTX-02-005-EN-2140 |  | Shop DWG Submittal for Lighting Installation Details | 30d | 2026-03-15 A | 2026-03-19 A | MLTX-02-005-EN-2150 SS, MLTX-02-005-EN-2100 | 100% | 2026-06-30 | 2026-08-03 | Draftsman [16.1 h] | EN.MB.SD.EL.PR.2040 | MOD-02-EN-2140 | TO |
| MLTX-02-005-EN-2150 |  | Shop DWG Submittal for Power Installation Details | 30d | 2026-03-15 A | 2026-03-19 A | MLTX-02-005-EN-2130 SS | 100% | 2026-05-04 | 2026-06-10 | Draftsman [16.1 h] | EN.MB.SD.EL.PR.2050 | MOD-02-EN-2150 | TO |
| MLTX-02-005-EN-2180 |  | Shop DWG Submittal for Grounding Details | 30d | 2026-03-15 A | 2026-03-19 A | MLTX-02-005-EN-2170 SS | 100% | 2026-05-04 | 2026-06-10 | Draftsman [16.1 h] | EN.MB.SD.EL.PR.2080 | MOD-02-EN-2180 | TO |
| MLTX-02-005-EN-2190 |  | Shop DWG Submittal for Fire Alarm Installation Details | 30d | 2026-03-15 A | 2026-03-19 A | MLTX-02-005-EN-2210 SS | 100% | 2026-05-04 | 2026-06-10 | Draftsman [16.1 h] | EN.MB.SD.EL.PR.2090 | MOD-02-EN-2190 | TO |
| MLTX-02-005-EN-2200 |  | Shop DWG Submittal for Fire Alarm Layout | 30d | 2026-03-15 A | 2026-03-19 A | MLTX-02-005-EN-2220 SS | 100% | 2026-06-11 | 2026-07-15 | Draftsman [16.1 h] | EN.MB.SD.EL.PR.2100 | MOD-02-EN-2200 | TO |
| MLTX-02-005-EN-2210 |  | Shop DWG Submittal for Lightning Protection Details | 30d | 2026-03-15 A | 2026-03-19 A | MLTX-02-005-EN-2180 SS | 100% | 2026-05-04 | 2026-06-10 | Draftsman [16.1 h] | EN.MB.SD.EL.PR.2110 | MOD-02-EN-2210 | TO |
| MLTX-02-005-EN-2220 |  | Shop DWG Submittal for Lightning Protection System Layout | 30d | 2026-03-15 A | 2026-03-19 A | MLTX-02-005-EN-2270 SS | 100% | 2026-06-11 | 2026-07-15 | Draftsman [16.1 h] | EN.MB.SD.EL.PR.2120 | MOD-02-EN-2220 | TO |
| MLTX-02-005-EN-2230 |  | Shop DWG Submittal for Fire Alarm Riser Diagram | 30d | 2026-03-15 A | 2026-03-19 A | MLTX-02-005-EN-2200 SS | 100% | 2026-06-11 | 2026-07-15 | Draftsman [16.1 h] | EN.MB.SD.EL.PR.2130 | MOD-02-EN-2230 | TO |
| MLTX-02-005-EN-2260 |  | Shop DWG Submittal for Telephone & Data Layout | 30d | 2026-03-15 A | 2026-03-19 A | MLTX-02-005-EN-2230 | 100% | 2026-07-16 | 2026-08-19 | Draftsman [16.1 h] | EN.MB.SD.EL.PR.2160 | MOD-02-EN-2260 | TO |
| MLTX-02-005-EN-2270 |  | Shop DWG Submittal for Grounding Layout | 30d | 2026-03-15 A | 2026-03-19 A | MLTX-02-005-EN-2190 | 100% | 2026-06-11 | 2026-07-15 | Draftsman [16.1 h] | EN.MB.SD.EL.PR.2170 | MOD-02-EN-2270 | TO |
| MLTX-02-005-EN-2290 |  | Shop DWG Submittal for Telephone & Data Riser Diagram | 30d | 2026-03-15 A | 2026-03-19 A | MLTX-02-005-EN-2260 SS, MLTX-02-005-EN-1930 | 100% | 2026-07-16 | 2026-08-19 | Draftsman [16.1 h] | EN.MB.SD.EL.PR.2190 | MOD-02-EN-2290 | TO |
| MLTX-02-005-EN-2250 |  | Shop DWG Submittal for CCTV Layout | 30d | 2026-07-12 A | 2026-07-12 A | MLTX-02-005-EN-2230 SS | 100% | 2026-06-11 | 2026-07-15 | Draftsman [16.1 h] | EN.MB.SD.EL.PR.2150 | MOD-02-EN-2250 | TO |
| MLTX-02-005-EN-2280 |  | Shop DWG Submittal for CCTV Riser Diagram | 30d | 2026-07-12 A | 2026-07-12 A | MLTX-02-005-EN-2250 SS, MLTX-02-005-EN-2100 | 100% | 2026-06-30 | 2026-08-03 | Draftsman [16.1 h] | EN.MB.SD.EL.PR.2180 | MOD-02-EN-2280 | TO |
| MLTX-02-005-EN-2240 |  | Shop DWG Submittal for CCTV Details | 30d | 2026-07-30 A | 2026-07-30 A | MLTX-02-005-EN-2190 SS | 100% | 2026-05-04 | 2026-06-10 | Draftsman [16.1 h] | EN.MB.SD.EL.PR.2140 | MOD-02-EN-2240 | TO |
|  | ELE | **SHOP DRAWINGS SUBMITTALS FOR PLAYGROUND WORKS** |  | 2026-03-08 | 2026-12-07 |  |  |  |  |  |  |  |  |
|  | 3 | **ARCHITECTURE WORKS** |  | 2026-03-08 | 2026-05-25 |  |  |  |  |  |  |  |  |
| MLTX-02-005-EN-2330 |  | Shop DWG Submittal for Furniture & Marking | 15d | 2026-03-08 A | 2026-05-12 A | MLTX-02-005-EN-2320 SS | 100% | 2026-03-08 | 2026-03-28 | Draftsman [16.1 h] | EN.MB.SD.AR.PR.1140 | MOD-02-EN-2330 | PL |
| MLTX-02-005-EN-2370 |  | Shop DWG Submittal for Dome Internal Layout | 30d | 2026-03-08 A | 2026-05-25 A | MLTX-02-005-EN-2360 SS | 100% | 2026-03-08 | 2026-04-14 | Draftsman [16.1 h] | EN.MB.SD.AR.PR.1110 | MOD-02-EN-2370 | PL |
| MLTX-02-005-EN-2320 |  | Shop DWG Submittal for Playground Plan/Layout | 15d | 2026-03-09 A | 2026-03-14 A | MLTX-02-005-MB-1320 | 100% | 2026-03-08 | 2026-03-28 | Draftsman [16.1 h] | EN.MB.SD.AR.PR.1110 | MOD-02-EN-2320 | PL |
| MLTX-02-005-EN-2340 |  | Shop DWG Submittal for Sections | 15d | 2026-03-09 A | 2026-03-14 A | MLTX-02-005-EN-2330 SS | 100% | 2026-03-08 | 2026-03-28 | Draftsman [16.1 h] | EN.MB.SD.AR.PR.1150 | MOD-02-EN-2340 | PL |
| MLTX-02-005-EN-2350 |  | Shop DWG Submittal for Interlock Pattern Plan | 30d | 2026-03-09 A | 2026-03-14 A | MLTX-02-005-EN-2340 SS | 100% | 2026-03-08 | 2026-04-14 | Draftsman [16.1 h] | EN.MB.SD.AR.PR.1190 | MOD-02-EN-2350 | PL |
| MLTX-02-005-EN-2360 |  | Shop DWG Submittal for Doors/Windows Schedule | 30d | 2026-03-09 A | 2026-03-14 A | MLTX-02-005-EN-2350 SS | 100% | 2026-03-08 | 2026-04-14 | Draftsman [16.1 h] | EN.MB.SD.AR.PR.1220 | MOD-02-EN-2360 | PL |

| ID | WBS | Activity | Duration | Start | Finish | Predecessors | Complete | Planned start | Planned finish | Total float | Free float | Resources | New Activity Code | New Activity ID | Shop Drawings |
| --- | --- | --- | --- | --- | --- | --- | --- | --- | --- | --- | --- | --- | --- | --- | --- |
|  | 4 | **STRUCTURE WORKS** |  | 2026-03-14 | 2026-07-14 |  |  |  |  |  |  |  |  |  |  |
| MLTX-02-005-EN-2390 |  | Shop DWG Submittal for Air Dome System | 30d | 2026-03-14 A | 2026-05-07 A | MLTX-02-005-EN-2370, MLTX-02-005-EN-2900, MLTX-02-005-EN-2930 | 100% | 2026-04-15 | 2026-05-19 |  |  | Draftsman [16.1 h] | EN.MB.SD.AR.PR.1110 | MOD-02-EN-2390 | PL |
| MLTX-02-005-EN-2400 |  | Shop DWG Submittal for Foundation of Air Dome | 30d | 2026-07-14 A | 2026-07-14 A | MLTX-02-005-EN-2390 SS, MLTX-02-005-EN-2940, MLTX-02-005-EN-1810 | 100% | 2026-05-04 | 2026-06-10 |  |  | Draftsman [16.1 h] | EN.MB.SD.AR.PR.1140 | MOD-02-EN-2400 | PL |
| MLTX-02-005-EN-2420 |  | Shop DWG Submittal for Anchor Bolt Layout of Air Dome | 30d | 2026-07-14 A | 2026-07-14 A | MLTX-02-005-EN-2400 SS, MLTX-02-005-EN-2390 | 100% | 2026-05-20 | 2026-06-27 |  |  | Draftsman [16.1 h] | EN.MB.SD.AR.PR.1140 | MOD-02-EN-2420 | PL |
|  | 5 | **AIR DOME SYSTEM** |  | 2026-03-14 | 2026-05-24 |  |  |  |  |  |  |  |  |  |  |
| MLTX-02-005-EN-2440 |  | Shop DWG Submittal for Air Dome Structural Layout | 30d | 2026-03-14 A | 2026-05-07 A | MLTX-02-005-EN-2390 | 100% | 2026-05-20 | 2026-06-27 |  |  | Draftsman [16.1 h] | EN.MB.SD.AR.PR.1110 | MOD-02-EN-2440 | PL |
| MLTX-02-005-EN-2450 |  | Shop DWG Submittal for Membrane Panel Layout | 30d | 2026-03-14 A | 2026-05-24 A | MLTX-02-005-EN-2440 SS | 100% | 2026-05-20 | 2026-06-27 |  |  | Draftsman [16.1 h] | EN.MB.SD.AR.PR.1140 | MOD-02-EN-2450 | PL |
| MLTX-02-005-EN-2460 |  | Shop DWG Submittal for Cable Tension Layout | 30d | 2026-03-14 A | 2026-05-24 A | MLTX-02-005-EN-2450 SS | 100% | 2026-05-20 | 2026-06-27 |  |  | Draftsman [16.1 h] | EN.MB.SD.AR.PR.1150 | MOD-02-EN-2460 | PL |
| MLTX-02-005-EN-2470 |  | Shop DWG Submittal for Airlock Door Details | 30d | 2026-03-14 A | 2026-05-24 A | MLTX-02-005-EN-2460 SS | 100% | 2026-05-20 | 2026-06-27 |  |  | Draftsman [16.1 h] | EN.MB.SD.AR.PR.1140 | MOD-02-EN-2470 | PL |
| MLTX-02-005-EN-2480 |  | Shop DWG Submittal for Emergency Exit Details | 30d | 2026-03-14 A | 2026-05-24 A | MLTX-02-005-EN-2470 SS | 100% | 2026-05-20 | 2026-06-27 |  |  | Draftsman [16.1 h] | EN.MB.SD.AR.PR.1140 | MOD-02-EN-2480 | PL |
|  | 6 | **SPORTS EQUIPMENT** |  | 2026-03-14 | 2026-05-25 |  |  |  |  |  |  |  |  |  |  |
| MLTX-02-005-EN-2500 |  | Shop DWG Submittal for Football Turf Installation | 30d | 2026-03-14 A | 2026-05-25 A | MLTX-02-005-EN-2480 SS | 100% | 2026-05-20 | 2026-06-27 |  |  | Draftsman [16.1 h] | EN.MB.SD.EL.PR.2170 | MOD-02-EN-2500 | PL |
| MLTX-02-005-EN-2510 |  | Shop DWG Submittal for Basketball Court Marking | 30d | 2026-03-14 A | 2026-05-25 A | MLTX-02-005-EN-2500 SS | 100% | 2026-05-20 | 2026-06-27 |  |  | Draftsman [16.1 h] | EN.MB.SD.EL.PR.2180 | MOD-02-EN-2510 | PL |
| MLTX-02-005-EN-2520 |  | Shop DWG Submittal for Padel Court Structure | 30d | 2026-03-14 A | 2026-05-25 A | MLTX-02-005-EN-2510 SS | 100% | 2026-05-20 | 2026-06-27 |  |  | Draftsman [16.1 h] | EN.MB.SD.EL.PR.2160 | MOD-02-EN-2520 | PL |
|  | 1 | **MECHANCAL WORKS** |  | 2026-03-14 | 2026-05-03 |  |  |  |  |  |  |  |  |  |  |
| MLTX-02-005-EN-2540 |  | Shop DWG Submittal for HVAC Plan | 30d | 2026-03-14 A | 2026-05-03 A | MLTX-02-005-EN-2520 SS | 100% | 2026-05-20 | 2026-06-27 |  |  | Draftsman [16.1 h] | EN.MB.SD.MC.PR.1740 | MOD-02-EN-2540 | PL |
| MLTX-02-005-EN-2550 |  | Shop DWG Submittal for Exhaust Air Plan | 30d | 2026-03-14 A | 2026-05-03 A | MLTX-02-005-EN-2540 SS | 100% | 2026-05-20 | 2026-06-27 |  |  | Draftsman [16.1 h] | EN.MB.SD.MC.PR.1750 | MOD-02-EN-2550 | PL |
|  | 2 | **ELECTRICAL WORKS** |  | 2026-03-14 | 2026-12-07 |  |  |  |  |  |  |  |  |  |  |
| MLTX-02-005-EN-2570 |  | Shop DWG Submittal for Lighting Layout | 30d | 2026-03-14 A | 2026-04-19 A | MLTX-02-005-EN-2550 SS | 100% | 2026-05-20 | 2026-06-27 |  |  | Draftsman [16.1 h] | EN.MB.SD.EL.PR.1980 | MOD-02-EN-2570 | PL |
| MLTX-02-005-EN-2590 |  | Shop DWG Submittal for Power Installation Details | 30d | 2026-06-10 A | 2026-06-10 A | MLTX-02-005-EN-2630 SS, MLTX-02-005-EN-2850 | 100% | 2026-08-30 | 2026-10-04 |  |  | Draftsman [16.1 h] | EN.MB.SD.EL.PR.2050 | MOD-02-EN-2590 | PL |
| MLTX-02-005-EN-2620 |  | Shop DWG Submittal for Power Single Line Diagram | 30d | 2026-06-10 A | 2026-06-10 A | MLTX-02-005-EN-2650 SS | 100% | 2026-05-20 | 2026-06-27 |  |  | Draftsman [16.1 h] | EN.MB.SD.EL.PR.2020 | MOD-02-EN-2620 | PL |
| MLTX-02-005-EN-2630 |  | Shop DWG Submittal for Panel Board Schedules | 30d | 2026-06-10 A | 2026-06-10 A | MLTX-02-005-EN-2620 SS | 100% | 2026-05-20 | 2026-06-27 |  |  | Draftsman [16.1 h] | EN.MB.SD.EL.PR.2030 | MOD-02-EN-2630 | PL |
| MLTX-02-005-EN-2650 |  | Shop DWG Submittal for CCTV Details | 30d | 2026-06-10 A | 2026-06-10 A | MLTX-02-005-EN-2570 SS | 100% | 2026-05-20 | 2026-06-27 |  |  | Draftsman [16.1 h] | EN.MB.SD.EL.PR.2140 | MOD-02-EN-2650 | PL |
| MLTX-02-005-EN-2600 |  | Shop DWG Submittal for Fire Alarm Installation Details | 30d | 2026-07-07 A | 2026-07-07 A | MLTX-02-005-EN-2590 SS | 100% | 2026-08-30 | 2026-10-04 |  |  | Draftsman [16.1 h] | EN.MB.SD.EL.PR.2090 | MOD-02-EN-2600 | PL |
| MLTX-02-005-EN-2660 |  | Shop DWG Submittal for CCTV Layout | 30d | 2026-08-20 A | 2026-08-20 A | MLTX-02-005-EN-2250 | 100% | 2026-07-16 | 2026-08-19 |  |  | Draftsman [16.1 h] | EN.MB.SD.EL.PR.2150 | MOD-02-EN-2660 | PL |
| MLTX-02-005-EN-2670 |  | Shop DWG Submittal for CCTV Riser Diagram | 30d | 2026-08-20 A | 2026-08-20 A | MLTX-02-005-EN-2660 SS | 100% | 2026-07-16 | 2026-08-19 |  |  | Draftsman [16.1 h] | EN.MB.SD.EL.PR.2180 | MOD-02-EN-2670 | PL |
| MLTX-02-005-EN-2580 |  | Shop DWG Submittal for Power Layout | 27d | 2026-10-20 | 2026-11-19 | MLTX-02-005-EN-2650 SS, MLTX-02-005-EN-3500 |  |  |  | -22d | 0d | Draftsman [16.1 h] | EN.MB.SD.EL.PR.2000 | MOD-02-EN-2580 | PL |
| MLTX-02-005-EN-2610 |  | Shop DWG Submittal for Fire Alarm Layout | 15d | 2026-10-20 | 2026-11-05 | MLTX-02-005-EN-2600 SS, MLTX-02-005-EN-2600 FF, MLTX-02-005-EN-3500 |  |  |  | -10d | 12d | Draftsman [16.1 h] | EN.MB.SD.EL.PR.2100 | MOD-02-EN-2610 | PL |
| MLTX-02-005-EN-2640 |  | Shop DWG Submittal for Fire Alarm Riser Diagram | 15d | 2026-11-21 | 2026-12-07 | MLTX-02-005-EN-2610, MLTX-02-005-EN-2600 SS, MLTX-02-005-EN-2580 |  |  |  | -22d | 0d | Draftsman [16.1 h] | EN.MB.SD.EL.PR.2130 | MOD-02-EN-2640 | PL |

| ID | WBS | Activity | Duration | Start | Finish | Predecessors | Complete | Planned start | Planned finish | Resources | New Activity ID | Old Activity ID - MK | Shop Drawings | New Activity Code |
| --- | --- | --- | --- | --- | --- | --- | --- | --- | --- | --- | --- | --- | --- | --- |
|  | EAR | **SHOP DRAWINGS SUBMITTALS FOR LANDSCAPE WORKS** |  | 2026-03-08 | 2026-07-13 |  |  |  |  |  |  |  |  |  |
|  | 3 | **ARCHITECTURE WORKS** |  | 2026-03-09 | 2026-05-05 |  |  |  |  |  |  |  |  |  |
| MLTX-02-005-EN-2700 |  | Shop DWG Submittal for Landscape Layout | 21d | 2026-03-09 A | 2026-03-14 A | MLTX-02-005-MB-1320, MLTX-02-005-EN-1810 | 100% | 2026-05-04 | 2026-05-31 | Draftsman [16.1 h] | MOD-02-EN-2700 | MAK-01-EN-1120 | LS |  |
| MLTX-02-005-EN-2710 |  | Shop DWG Submittal for Hardscape Plan | 21d | 2026-03-09 A | 2026-03-14 A | MLTX-02-005-MB-1320, MLTX-02-005-EN-1810 | 100% | 2026-05-04 | 2026-05-31 | Draftsman [16.1 h] | MOD-02-EN-2710 | MAK-01-EN-1130 | LS |  |
| MLTX-02-005-EN-2730 |  | Shop DWG Submittal for Landscape Details | 15d | 2026-03-09 A | 2026-03-14 A | MLTX-02-005-MB-1320, MLTX-02-005-EN-2860 | 100% | 2026-04-15 | 2026-05-02 | Draftsman [16.1 h] | MOD-02-EN-2730 | MAK-01-EN-1150 | LS |  |
| MLTX-02-005-EN-2720 |  | Shop DWG Submittal for Planting Plan | 15d | 2026-03-14 A | 2026-05-05 A | MLTX-02-005-EN-2730, MLTX-02-005-EN-2810 | 100% | 2026-05-20 | 2026-06-09 | Draftsman [16.1 h] | MOD-02-EN-2720 | MAK-01-EN-1140 | LS |  |
|  | 1 | **MECHANCAL WORKS** |  | 2026-03-08 | 2026-06-03 |  |  |  |  |  |  |  |  |  |
| MLTX-02-005-EN-2770 |  | Shop DWG Submittal for Irrigation Details | 30d | 2026-03-08 A | 2026-06-03 A | MLTX-02-005-MB-1320 | 100% | 2026-03-08 | 2026-04-14 | Draftsman [16.1 h] | MOD-02-EN-2770 | MAK-01-EN-1140 | LS |  |
| MLTX-02-005-EN-2810 |  | Shop DWG Submittal for Irrigation Layout | 30d | 2026-03-08 A | 2026-06-03 A | MLTX-02-005-MB-1320, MLTX-02-005-EN-2770 | 100% | 2026-04-15 | 2026-05-19 | Draftsman [16.1 h] | MOD-02-EN-2810 | MAK-01-EN-1140 | LS |  |
|  | 2 | **ELECTRICAL WORKS** |  | 2026-07-12 | 2026-07-13 |  |  |  |  |  |  |  |  |  |
| MLTX-02-005-EN-2860 |  | Shop DWG Submittal for Lighting General Arrangement | 30d | 2026-07-12 A | 2026-07-12 A | MLTX-02-005-MB-1320 | 100% | 2026-03-08 | 2026-04-14 | Draftsman [16.1 h] | MOD-02-EN-2860 | MAK-01-EN-1120 | LS |  |
| MLTX-02-005-EN-2870 |  | Shop DWG Submittal for Lighting Network Layout | 30d | 2026-07-12 A | 2026-07-12 A | MLTX-02-005-MB-1320, MLTX-02-005-EN-2270 | 100% | 2026-07-16 | 2026-08-19 | Draftsman [16.1 h] | MOD-02-EN-2870 | MAK-01-EN-1130 | LS |  |
| MLTX-02-005-EN-2840 |  | Shop DWG Submittal for Lighting Details | 30d | 2026-07-13 A | 2026-07-13 A | MLTX-02-005-MB-1320, MLTX-02-005-EN-2270 | 100% | 2026-07-16 | 2026-08-19 | Draftsman [16.1 h] | MOD-02-EN-2840 | MAK-01-EN-1140 | LS |  |
| MLTX-02-005-EN-2850 |  | Shop DWG Submittal for Lighting Single Line Diagram | 30d | 2026-07-13 A | 2026-07-13 A | MLTX-02-005-MB-1320, MLTX-02-005-EN-2270 | 100% | 2026-07-16 | 2026-08-19 | Draftsman [16.1 h] | MOD-02-EN-2850 | MAK-01-EN-1150 | LS |  |
|  | APP | **SHOP DRAWINGS APPROVALS** |  | 2026-03-14 | 2027-01-06 |  |  |  |  |  |  |  |  |  |
|  | 2 | **SHOP DRAWING APPROVAL FOR EARTHING WORKS** |  | 2026-03-15 | 2026-03-29 |  |  |  |  |  |  |  |  |  |
| MLTX-02-005-EN-2900 |  | Shop DWG Approval for Layout Plan | 15d | 2026-03-15 A | 2026-03-29 A | MLTX-02-005-EN-1790 | 100% | 2026-03-29 | 2026-04-14 | Draftsman [12.71 h]; Consultant Staff [3.39 h] | MOD-02-EN-2900 | MAK-01-EN-1010 | ER |  |
| MLTX-02-005-EN-2910 |  | Shop DWG Approval for Setting Out | 15d | 2026-03-15 A | 2026-03-29 A | MLTX-02-005-EN-1800 | 100% | 2026-03-30 | 2026-04-15 | Draftsman [12.71 h]; Consultant Staff [3.39 h] | MOD-02-EN-2910 | MAK-01-EN-1030 | ER |  |
| MLTX-02-005-EN-2920 |  | Shop DWG Approval for Grading Layout Plan | 16d | 2026-03-15 A | 2026-03-29 A | MLTX-02-005-EN-1810 | 100% | 2026-05-04 | 2026-05-21 | Draftsman [12.71 h]; Consultant Staff [3.39 h] | MOD-02-EN-2920 | MAK-01-EN-1050 | ER |  |
| MLTX-02-005-EN-2930 |  | Shop DWG Approval for Curb Setting Out Points | 15d | 2026-03-15 A | 2026-03-29 A | MLTX-02-005-EN-1820 | 100% | 2026-03-29 | 2026-04-14 | Draftsman [12.71 h]; Consultant Staff [3.39 h] | MOD-02-EN-2930 | MAK-01-EN-1060 | ER |  |
| MLTX-02-005-EN-2940 |  | Shop DWG Approval for Signing & Marking Layout Plan | 15d | 2026-03-15 A | 2026-03-29 A | MLTX-02-005-EN-1830, MLTX-02-005-EN-2900 | 100% | 2026-04-15 | 2026-05-02 | Draftsman [12.71 h]; Consultant Staff [3.39 h] | MOD-02-EN-2940 | MAK-01-EN-1070 | ER |  |
| MLTX-02-005-EN-2950 |  | Shop DWG Approval for Standards Details | 15d | 2026-03-15 A | 2026-03-29 A | MLTX-02-005-EN-1840 | 100% | 2026-03-29 | 2026-04-14 | Draftsman [12.71 h]; Consultant Staff [3.39 h] | MOD-02-EN-2950 | MAK-01-EN-1080 | ER |  |
|  | ROAD | **SHOP DRAWING APPROVAL FOR SERVICE/TOILET WORKS** |  | 2026-03-15 | 2026-07-30 |  |  |  |  |  |  |  |  |  |
|  | 2 | **ARCHITECTURE WORKS** |  | 2026-03-15 | 2026-03-29 |  |  |  |  |  |  |  |  |  |
| MLTX-02-005-EN-2980 |  | Shop DWG Approval for Floor Plan | 30d | 2026-03-15 A | 2026-03-29 A | MLTX-02-005-EN-1870, MLTX-02-005-EN-3070 | 100% | 2026-06-25 | 2026-07-29 | Draftsman [12.71 h]; Consultant Staff [3.39 h] | MOD-02-EN-2980 |  | TO | EN.MB.SD.AR.PR.1110 |
| MLTX-02-005-EN-2990 |  | Shop DWG Approval for Elevations | 30d | 2026-03-15 A | 2026-03-29 A | MLTX-02-005-EN-1880, MLTX-02-005-EN-3070 | 100% | 2026-06-25 | 2026-07-29 | Draftsman [12.71 h]; Consultant Staff [3.39 h] | MOD-02-EN-2990 |  | TO | EN.MB.SD.AR.PR.1140 |
| MLTX-02-005-EN-3000 |  | Shop DWG Approval for Sections | 30d | 2026-03-15 A | 2026-03-29 A | MLTX-02-005-EN-1890 | 100% | 2026-05-04 | 2026-06-10 | Draftsman [12.71 h]; Consultant Staff [3.39 h] | MOD-02-EN-3000 |  | TO | EN.MB.SD.AR.PR.1150 |
| MLTX-02-005-EN-3010 |  | Shop DWG Approval for Ceiling Plan | 30d | 2026-03-15 A | 2026-03-29 A | MLTX-02-005-EN-1900, MLTX-02-005-EN-2570 | 100% | 2026-06-28 | 2026-08-01 | Draftsman [12.71 h]; Consultant Staff [3.39 h] | MOD-02-EN-3010 |  | TO | EN.MB.SD.AR.PR.1160 |
| MLTX-02-005-EN-3020 |  | Shop DWG Approval for Finishes Plan | 30d | 2026-03-15 A | 2026-03-29 A | MLTX-02-005-EN-1910, MLTX-02-005-EN-3070 | 100% | 2026-06-25 | 2026-07-29 | Draftsman [12.71 h]; Consultant Staff [3.39 h] | MOD-02-EN-3020 |  | TO | EN.MB.SD.AR.PR.1190 |
| MLTX-02-005-EN-3030 |  | Shop DWG Approval for Toilet Details | 30d | 2026-03-15 A | 2026-03-29 A | MLTX-02-005-EN-1920, MLTX-02-005-EN-3070 | 100% | 2026-06-25 | 2026-07-29 | Draftsman [12.71 h]; Consultant Staff [3.39 h] | MOD-02-EN-3030 |  | TO | EN.MB.SD.AR.PR.1210 |
| MLTX-02-005-EN-3040 |  | Shop DWG Approval for Doors/Windows Schedule | 30d | 2026-03-15 A | 2026-03-29 A | MLTX-02-005-EN-1930, MLTX-02-005-EN-3070 | 100% | 2026-06-25 | 2026-07-29 | Draftsman [12.71 h]; Consultant Staff [3.39 h] | MOD-02-EN-3040 |  | TO | EN.MB.SD.AR.PR.1220 |

| ID | WBS | Activity | Duration | Start | Finish | Predecessors | Complete | Planned start | Planned finish | Resources | New Activity Code | New Activity ID | Shop Drawings |
| --- | --- | --- | --- | --- | --- | --- | --- | --- | --- | --- | --- | --- | --- |
|  | 1 | **STRUCTURE WORKS** |  | 2026-03-24 | 2026-04-04 |  |  |  |  |  |  |  |  |
| MLTX-02-005-EN-3060 |  | Shop DWG Approval for Foundation Plan | 4d | 2026-03-24 A | 2026-04-04 A | MLTX-02-005-EN-1950, MLTX-02-005-EN-3080 | 100% | 2026-08-24 | 2026-08-27 | Draftsman [12.71 h]; Consultant Staff [3.39 h] | EN.MB.SD.CV.PR.1460 | MOD-02-EN-3060 | TO |
| MLTX-02-005-EN-3070 |  | Shop DWG Approval for Ground Floor Framing Plan | 21d | 2026-03-24 A | 2026-04-04 A | MLTX-02-005-EN-1960 | 100% | 2026-06-01 | 2026-06-24 | Draftsman [12.71 h]; Consultant Staff [3.39 h] | EN.MB.SD.CV.PR.1480 | MOD-02-EN-3070 | TO |
| MLTX-02-005-EN-3080 |  | Shop DWG Approval for Sections/Details | 21d | 2026-03-24 A | 2026-04-04 A | MLTX-02-005-EN-1970, MLTX-02-005-EN-3020 | 100% | 2026-07-30 | 2026-08-23 | Draftsman [12.71 h]; Consultant Staff [3.39 h] | EN.MB.SD.CV.PR.1530 | MOD-02-EN-3080 | TO |
|  | 3 | **MECHANCAL WORKS** |  | 2026-03-18 | 2026-05-10 |  |  |  |  |  |  |  |  |
| MLTX-02-005-EN-3130 |  | Shop DWG Approval for Drainage Layout | 30d | 2026-03-18 A | 2026-05-09 A | MLTX-02-005-EN-2020 | 100% | 2026-06-11 | 2026-07-15 | Draftsman [12.71 h]; Consultant Staff [3.39 h] | EN.MB.SD.MC.PR.1710 | MOD-02-EN-3130 | TO |
| MLTX-02-005-EN-3140 |  | Shop DWG Approval for Drainage Details | 30d | 2026-03-18 A | 2026-05-09 A | MLTX-02-005-EN-2030 | 100% | 2026-06-11 | 2026-07-15 | Draftsman [12.71 h]; Consultant Staff [3.39 h] | EN.MB.SD.MC.PR.1720 | MOD-02-EN-3140 | TO |
| MLTX-02-005-EN-3150 |  | Shop DWG Approval for Duct Routing Layout | 30d | 2026-03-18 A | 2026-05-10 A | MLTX-02-005-EN-2040, MLTX-02-005-EN-3010 | 100% | 2026-08-04 | 2026-09-07 | Draftsman [12.71 h]; Consultant Staff [3.39 h] | EN.MB.SD.MC.PR.1770 | MOD-02-EN-3150 | TO |
| MLTX-02-005-EN-3160 |  | Shop DWG Approval for Diffusers Layout | 30d | 2026-03-18 A | 2026-05-10 A | MLTX-02-005-EN-2050, MLTX-02-005-EN-3380 | 100% | 2026-08-20 | 2026-09-24 | Draftsman [12.71 h]; Consultant Staff [3.39 h] | EN.MB.SD.MC.PR.1770 | MOD-02-EN-3160 | TO |
| MLTX-02-005-EN-3100 |  | Shop DWG Approval for HVAC Plan | 30d | 2026-03-24 A | 2026-04-04 A | MLTX-02-005-EN-1990, MLTX-02-005-EN-3010 | 100% | 2026-08-04 | 2026-09-07 | Draftsman [12.71 h]; Consultant Staff [3.39 h] | EN.MB.SD.MC.PR.1740 | MOD-02-EN-3100 | TO |
| MLTX-02-005-EN-3110 |  | Shop DWG Approval for Exhaust Air Plan | 30d | 2026-03-24 A | 2026-04-04 A | MLTX-02-005-EN-2000, MLTX-02-005-EN-3010 | 100% | 2026-08-04 | 2026-09-07 | Draftsman [12.71 h]; Consultant Staff [3.39 h] | EN.MB.SD.MC.PR.1750 | MOD-02-EN-3110 | TO |
| MLTX-02-005-EN-3120 |  | Shop DWG Approval for HVAC Equipment Schedule | 30d | 2026-03-24 A | 2026-04-04 A | MLTX-02-005-EN-2010, MLTX-02-005-EN-3010 | 100% | 2026-08-04 | 2026-09-07 | Draftsman [12.71 h]; Consultant Staff [3.39 h] | EN.MB.SD.MC.PR.1770 | MOD-02-EN-3120 | TO |
| MLTX-02-005-EN-3170 |  | Shop DWG Approval for Fire Fighting Layout | 30d | 2026-03-24 A | 2026-04-04 A | MLTX-02-005-EN-2060 | 100% | 2026-11-09 | 2026-12-13 | Draftsman [12.71 h]; Consultant Staff [3.39 h] | EN.MB.SD.MC.PR.1780 | MOD-02-EN-3170 | TO |
| MLTX-02-005-EN-3180 |  | Shop DWG Approval for Water Supply Layout | 30d | 2026-03-24 A | 2026-04-04 A | MLTX-02-005-EN-2070, MLTX-02-005-EN-3010 | 100% | 2026-08-04 | 2026-09-07 | Draftsman [12.71 h]; Consultant Staff [3.39 h] | EN.MB.SD.MC.PR.1790 | MOD-02-EN-3180 | TO |
| MLTX-02-005-EN-3190 |  | Shop DWG Approval for Water Supply Details | 30d | 2026-03-24 A | 2026-04-04 A | MLTX-02-005-EN-2080, MLTX-02-005-EN-3010 | 100% | 2026-08-04 | 2026-09-07 | Draftsman [12.71 h]; Consultant Staff [3.39 h] | EN.MB.SD.MC.PR.1800 | MOD-02-EN-3190 | TO |
|  | 4 | **ELECTRICAL WORKS** |  | 2026-03-18 | 2026-07-30 |  |  |  |  |  |  |  |  |
| MLTX-02-005-EN-3230 |  | Shop DWG Approval for Power Single Line Diagram | 30d | 2026-03-18 A | 2026-05-05 A | MLTX-02-005-EN-2120, MLTX-02-005-EN-3210 | 100% | 2026-08-04 | 2026-09-07 | Draftsman [12.71 h]; Consultant Staff [3.39 h] | EN.MB.SD.EL.PR.2020 | MOD-02-EN-3230 | TO |
| MLTX-02-005-EN-3270 |  | Shop DWG Approval for Cable Tray Installation Details | 30d | 2026-03-18 A | 2026-05-05 A | MLTX-02-005-EN-2160, MLTX-02-005-EN-3210 | 100% | 2026-08-04 | 2026-09-07 | Draftsman [12.71 h]; Consultant Staff [3.39 h] | EN.MB.SD.EL.PR.2060 | MOD-02-EN-3270 | TO |
| MLTX-02-005-EN-3280 |  | Shop DWG Approval for Manhole & Ductbank Details | 30d | 2026-03-18 A | 2026-05-05 A | MLTX-02-005-EN-2170, MLTX-02-005-EN-3210 | 100% | 2026-08-04 | 2026-09-07 | Draftsman [12.71 h]; Consultant Staff [3.39 h] | EN.MB.SD.EL.PR.2070 | MOD-02-EN-3280 | TO |
| MLTX-02-005-EN-3210 |  | Shop DWG Approval for Lighting Layout | 30d | 2026-03-24 A | 2026-04-04 A | MLTX-02-005-EN-2100 | 100% | 2026-06-30 | 2026-08-03 | Draftsman [12.71 h]; Consultant Staff [3.39 h] | EN.MB.SD.EL.PR.1980 | MOD-02-EN-3210 | TO |
| MLTX-02-005-EN-3220 |  | Shop DWG Approval for Power Layout | 30d | 2026-03-24 A | 2026-04-04 A | MLTX-02-005-EN-2110, MLTX-02-005-EN-3210 | 100% | 2026-08-04 | 2026-09-07 | Draftsman [12.71 h]; Consultant Staff [3.39 h] | EN.MB.SD.EL.PR.2000 | MOD-02-EN-3220 | TO |
| MLTX-02-005-EN-3250 |  | Shop DWG Approval for Lighting Installation Details | 30d | 2026-03-24 A | 2026-04-04 A | MLTX-02-005-EN-2140, MLTX-02-005-EN-3210 | 100% | 2026-08-04 | 2026-09-07 | Draftsman [12.71 h]; Consultant Staff [3.39 h] | EN.MB.SD.EL.PR.2040 | MOD-02-EN-3250 | TO |
| MLTX-02-005-EN-3260 |  | Shop DWG Approval for Power Installation Details | 30d | 2026-03-24 A | 2026-04-04 A | MLTX-02-005-EN-2150, MLTX-02-005-EN-3210 | 100% | 2026-08-04 | 2026-09-07 | Draftsman [12.71 h]; Consultant Staff [3.39 h] | EN.MB.SD.EL.PR.2050 | MOD-02-EN-3260 | TO |
| MLTX-02-005-EN-3290 |  | Shop DWG Approval for Grounding Details | 30d | 2026-03-24 A | 2026-04-04 A | MLTX-02-005-EN-2180, MLTX-02-005-EN-3210 | 100% | 2026-08-04 | 2026-09-07 | Draftsman [12.71 h]; Consultant Staff [3.39 h] | EN.MB.SD.EL.PR.2080 | MOD-02-EN-3290 | TO |
| MLTX-02-005-EN-3300 |  | Shop DWG Approval for Fire Alarm Installation Details | 30d | 2026-03-24 A | 2026-04-04 A | MLTX-02-005-EN-2190 | 100% | 2026-10-22 | 2026-11-25 | Draftsman [12.71 h]; Consultant Staff [3.39 h] | EN.MB.SD.EL.PR.2090 | MOD-02-EN-3300 | TO |
| MLTX-02-005-EN-3310 |  | Shop DWG Approval for Fire Alarm Layout | 30d | 2026-03-24 A | 2026-04-04 A | MLTX-02-005-EN-2200 | 100% | 2026-10-22 | 2026-11-25 | Draftsman [12.71 h]; Consultant Staff [3.39 h] | EN.MB.SD.EL.PR.2100 | MOD-02-EN-3310 | TO |
| MLTX-02-005-EN-3320 |  | Shop DWG Approval for Lightning Protection Details | 30d | 2026-03-24 A | 2026-04-04 A | MLTX-02-005-EN-2210, MLTX-02-005-EN-3210 | 100% | 2026-08-04 | 2026-09-07 | Draftsman [12.71 h]; Consultant Staff [3.39 h] | EN.MB.SD.EL.PR.2110 | MOD-02-EN-3320 | TO |
| MLTX-02-005-EN-3330 |  | Shop DWG Approval for Lightning Protection System Layout | 30d | 2026-03-24 A | 2026-04-04 A | MLTX-02-005-EN-2220, MLTX-02-005-EN-3210 | 100% | 2026-08-04 | 2026-09-07 | Draftsman [12.71 h]; Consultant Staff [3.39 h] | EN.MB.SD.EL.PR.2120 | MOD-02-EN-3330 | TO |
| MLTX-02-005-EN-3340 |  | Shop DWG Approval for Fire Alarm Riser Diagram | 30d | 2026-03-24 A | 2026-04-04 A | MLTX-02-005-EN-2230 | 100% | 2026-10-22 | 2026-11-25 | Draftsman [12.71 h]; Consultant Staff [3.39 h] | EN.MB.SD.EL.PR.2130 | MOD-02-EN-3340 | TO |
| MLTX-02-005-EN-3370 |  | Shop DWG Approval for Telephone & Data Layout | 30d | 2026-03-24 A | 2026-04-04 A | MLTX-02-005-EN-2260 | 100% | 2026-08-20 | 2026-09-24 | Draftsman [12.71 h]; Consultant Staff [3.39 h] | EN.MB.SD.EL.PR.2160 | MOD-02-EN-3370 | TO |
| MLTX-02-005-EN-3380 |  | Shop DWG Approval for Grounding Layout | 30d | 2026-03-24 A | 2026-04-04 A | MLTX-02-005-EN-2270 | 100% | 2026-07-16 | 2026-08-19 | Draftsman [12.71 h]; Consultant Staff [3.39 h] | EN.MB.SD.EL.PR.2170 | MOD-02-EN-3380 | TO |
| MLTX-02-005-EN-3400 |  | Shop DWG Approval for Telephone & Data Riser Diagram | 30d | 2026-03-24 A | 2026-04-04 A | MLTX-02-005-EN-2290 | 100% | 2026-08-20 | 2026-09-24 | Draftsman [12.71 h]; Consultant Staff [3.39 h] | EN.MB.SD.EL.PR.2190 | MOD-02-EN-3400 | TO |
| MLTX-02-005-EN-3240 |  | Shop DWG Approval for Panel Board Schedules | 30d | 2026-07-16 A | 2026-07-16 A | MLTX-02-005-EN-2130, MLTX-02-005-EN-3210 | 100% | 2026-08-04 | 2026-09-07 | Draftsman [12.71 h]; Consultant Staff [3.39 h] | EN.MB.SD.EL.PR.2030 | MOD-02-EN-3240 | TO |
| MLTX-02-005-EN-3350 |  | Shop DWG Approval for CCTV Details | 30d | 2026-07-30 A | 2026-07-30 A | MLTX-02-005-EN-2240 | 100% | 2026-06-11 | 2026-07-15 | Draftsman [12.71 h]; Consultant Staff [3.39 h] | EN.MB.SD.EL.PR.2140 | MOD-02-EN-3350 | TO |
| MLTX-02-005-EN-3360 |  | Shop DWG Approval for CCTV Layout | 30d | 2026-07-30 A | 2026-07-30 A | MLTX-02-005-EN-3350, MLTX-02-005-EN-2250 | 100% | 2026-07-16 | 2026-08-19 | Draftsman [12.71 h]; Consultant Staff [3.39 h] | EN.MB.SD.EL.PR.2150 | MOD-02-EN-3360 | TO |
| MLTX-02-005-EN-3390 |  | Shop DWG Approval for CCTV Riser Diagram | 30d | 2026-07-30 A | 2026-07-30 A | MLTX-02-005-EN-2280, MLTX-02-005-EN-3360 | 100% | 2026-08-20 | 2026-09-24 | Draftsman [12.71 h]; Consultant Staff [3.39 h] | EN.MB.SD.EL.PR.2180 | MOD-02-EN-3390 | TO |

| ID | WBS | Activity | Duration | Start | Finish | Predecessors | Complete | Planned start | Planned finish | Total float | Free float | Resources | New Activity Code | New Activity ID | Shop Drawings |
| --- | --- | --- | --- | --- | --- | --- | --- | --- | --- | --- | --- | --- | --- | --- | --- |
|  | ELE | **SHOP DRAWINGS APPROVAL FOR PLAYGROUND WORKS** |  | 2026-03-14 | 2027-01-06 |  |  |  |  |  |  |  |  |  |  |
|  | 3 | **ARCHITECTURE WORKS** |  | 2026-03-14 | 2026-12-06 |  |  |  |  |  |  |  |  |  |  |
| MLTX-02-005-EN-3440 |  | Shop DWG Approval for Furniture & Marking | 30d | 2026-03-14 A | 2026-05-12 A | MLTX-02-005-EN-2330, MLTX-02-005-EN-3970 | 100% | 2026-05-20 | 2026-06-27 |  |  | Draftsman [12.71 h]; Consultant Staff [3.39 h] | EN.MB.SD.AR.PR.1140 | MOD-02-EN-3440 | PL |
| MLTX-02-005-EN-3430 |  | Shop DWG Approval for Playground Plan/Layout | 15d | 2026-03-15 A | 2026-03-29 A | MLTX-02-005-EN-2320, MLTX-02-005-EN-2940 | 100% | 2026-05-03 | 2026-05-19 |  |  | Draftsman [12.71 h]; Consultant Staff [3.39 h] | EN.MB.SD.AR.PR.1110 | MOD-02-EN-3430 | PL |
| MLTX-02-005-EN-3450 |  | Shop DWG Approval for Sections | 15d | 2026-03-15 A | 2026-03-29 A | MLTX-02-005-EN-2340, MLTX-02-005-EN-3000 | 100% | 2026-06-11 | 2026-06-28 |  |  | Draftsman [12.71 h]; Consultant Staff [3.39 h] | EN.MB.SD.AR.PR.1150 | MOD-02-EN-3450 | PL |
| MLTX-02-005-EN-3460 |  | Shop DWG Approval for Interlock Pattern Plan | 30d | 2026-03-15 A | 2026-03-29 A | MLTX-02-005-EN-2350 | 100% | 2026-08-15 | 2026-09-17 |  |  | Draftsman [12.71 h]; Consultant Staff [3.39 h] | EN.MB.SD.AR.PR.1190 | MOD-02-EN-3460 | PL |
| MLTX-02-005-EN-3470 |  | Shop DWG Approval for Doors/Windows Schedule | 30d | 2026-03-15 A | 2026-03-29 A | MLTX-02-005-EN-2360 | 100% | 2026-07-15 | 2026-08-18 |  |  | Draftsman [12.71 h]; Consultant Staff [3.39 h] | EN.MB.SD.AR.PR.1220 | MOD-02-EN-3470 | PL |
| MLTX-02-005-EN-3480 |  | Shop DWG Approval for Dome Internal Layout | 26d | 2026-11-07 | 2026-12-06 | MLTX-02-005-EN-2370, MLTX-02-005-EN-3450, MLTX-02-005-EN-3440, MLTX-02-005-EN-3560 |  |  |  | -1d | 0d | Draftsman [12.71 h]; Consultant Staff [3.39 h] | EN.MB.SD.AR.PR.1110 | MOD-02-EN-3480 | PL |
|  | 4 | **STRUCTURE WORKS** |  | 2026-03-19 | 2026-07-16 |  |  |  |  |  |  |  |  |  |  |
| MLTX-02-005-EN-3500 |  | Shop DWG Approval for Air Dome System | 30d | 2026-03-19 A | 2026-05-09 A | MLTX-02-005-EN-2390 | 100% | 2026-08-15 | 2026-09-17 |  |  | Draftsman [12.71 h]; Consultant Staff [3.39 h] | EN.MB.SD.AR.PR.1110 | MOD-02-EN-3500 | PL |
| MLTX-02-005-EN-3510 |  | Shop DWG Approval for Foundation of Air Dome | 30d | 2026-07-16 A | 2026-07-16 A | MLTX-02-005-EN-2400, MLTX-02-005-EN-3770 | 100% | 2026-08-24 | 2026-09-28 |  |  | Draftsman [12.71 h]; Consultant Staff [3.39 h] | EN.MB.SD.AR.PR.1140 | MOD-02-EN-3510 | PL |
| MLTX-02-005-EN-3520 |  | Shop DWG Approval for Foundation of Air Dome | 30d | 2026-07-16 A | 2026-07-16 A | MLTX-02-005-EN-3510 SS, MLTX-02-005-EN-3770 | 100% | 2026-08-24 | 2026-09-28 |  |  | Draftsman [12.71 h]; Consultant Staff [3.39 h] | EN.MB.SD.AR.PR.1150 | MOD-02-EN-3520 | PL |
| MLTX-02-005-EN-3530 |  | Shop DWG Approval for Anchor Bolt Layout of Air Dome | 30d | 2026-07-16 A | 2026-07-16 A | MLTX-02-005-EN-2420, MLTX-02-005-EN-3470, MLTX-02-005-EN-3770 | 100% | 2026-08-24 | 2026-09-28 |  |  | Draftsman [12.71 h]; Consultant Staff [3.39 h] | EN.MB.SD.AR.PR.1140 | MOD-02-EN-3530 | PL |
|  | 5 | **AIR DOME SYSTEM** |  | 2026-03-19 | 2026-12-06 |  |  |  |  |  |  |  |  |  |  |
| MLTX-02-005-EN-3550 |  | Shop DWG Approval for Air Dome Structural Layout | 30d | 2026-03-19 A | 2026-05-09 A | MLTX-02-005-EN-2440 | 100% | 2026-08-15 | 2026-09-17 |  |  | Draftsman [12.71 h]; Consultant Staff [3.39 h] | EN.MB.SD.AR.PR.1110 | MOD-02-EN-3550 | PL |
| MLTX-02-005-EN-3560 |  | Shop DWG Approval for Membrane Panel Layout | 15d | 2026-10-20 | 2026-11-05 | MLTX-02-005-EN-2450, MLTX-02-005-EN-2420 |  |  |  | -1d | 0d | Draftsman [12.71 h]; Consultant Staff [3.39 h] | EN.MB.SD.AR.PR.1140 | MOD-02-EN-3560 | PL |
| MLTX-02-005-EN-3570 |  | Shop DWG Approval for Cable Tension Layout | 13d | 2026-10-22 | 2026-11-05 | MLTX-02-005-EN-2460, MLTX-02-005-EN-3560 FF, MLTX-02-005-EN-3560 SS |  |  |  | -1d | 0d | Draftsman [12.71 h]; Consultant Staff [3.39 h] | EN.MB.SD.AR.PR.1150 | MOD-02-EN-3570 | PL |
| MLTX-02-005-EN-3580 |  | Shop DWG Approval for Airlock Door Details | 13d | 2026-11-07 | 2026-11-21 | MLTX-02-005-EN-3570, MLTX-02-005-EN-2470 |  |  |  | -1d | 0d | Draftsman [12.71 h]; Consultant Staff [3.39 h] | EN.MB.SD.AR.PR.1140 | MOD-02-EN-3580 | PL |
| MLTX-02-005-EN-3590 |  | Shop DWG Approval for Emergency Exit Details | 13d | 2026-11-22 | 2026-12-06 | MLTX-02-005-EN-3580, MLTX-02-005-EN-2480 |  |  |  | -1d | 0d | Draftsman [12.71 h]; Consultant Staff [3.39 h] | EN.MB.SD.AR.PR.1140 | MOD-02-EN-3590 | PL |
|  | 6 | **SPORTS EQUIPMENT** |  | 2026-07-20 | 2026-12-21 |  |  |  |  |  |  |  |  |  |  |
| MLTX-02-005-EN-3630 |  | Shop DWG Approval for Padel Court Structure | 30d | 2026-07-20 A | 2026-07-20 A | MLTX-02-005-EN-2520, MLTX-02-005-EN-3620, MLTX-02-005-EN-3660 | 100% | 2026-11-09 | 2026-12-13 |  |  | Draftsman [12.71 h]; Consultant Staff [3.39 h] | EN.MB.SD.EL.PR.2160 | MOD-02-EN-3630 | PL |
| MLTX-02-005-EN-3620 |  | Shop DWG Approval for Basketball Court Marking | 30d | 2026-08-25 A | 2026-08-25 A | MLTX-02-005-EN-2510, MLTX-02-005-EN-3500 | 100% | 2026-09-19 | 2026-10-24 |  |  | Draftsman [12.71 h]; Consultant Staff [3.39 h] | EN.MB.SD.EL.PR.2180 | MOD-02-EN-3620 | PL |
| MLTX-02-005-EN-3610 |  | Shop DWG Approval for Football Turf Installation | 13d | 2026-12-07 | 2026-12-21 | MLTX-02-005-EN-3480, MLTX-02-005-EN-3590, MLTX-02-005-EN-2500 |  |  |  | -1d | 16d | Draftsman [12.71 h]; Consultant Staff [3.39 h] | EN.MB.SD.EL.PR.2170 | MOD-02-EN-3610 | PL |
|  | 1 | **MECHANCAL WORKS** |  | 2026-03-19 | 2026-05-04 |  |  |  |  |  |  |  |  |  |  |
| MLTX-02-005-EN-3650 |  | Shop DWG Approval for HVAC Plan | 30d | 2026-03-19 A | 2026-05-04 A | MLTX-02-005-EN-2540 | 100% | 2026-08-30 | 2026-10-04 |  |  | Draftsman [12.71 h]; Consultant Staff [3.39 h] | EN.MB.SD.MC.PR.1740 | MOD-02-EN-3650 | PL |
| MLTX-02-005-EN-3660 |  | Shop DWG Approval for Exhaust Air Plan | 30d | 2026-03-19 A | 2026-05-04 A | MLTX-02-005-EN-2550, MLTX-02-005-EN-3650, MLTX-02-005-EN-3950, MLTX-02-005-EN-3980 | 100% | 2026-10-05 | 2026-11-08 |  |  | Draftsman [12.71 h]; Consultant Staff [3.39 h] | EN.MB.SD.MC.PR.1750 | MOD-02-EN-3660 | PL |

| ID | WBS | Activity | Duration | Start | Finish | Predecessors | Complete | Planned start | Planned finish | Total float | Free float | Resources | New Activity Code | New Activity ID | Shop Drawings | Old Activity ID - MK |
| --- | --- | --- | --- | --- | --- | --- | --- | --- | --- | --- | --- | --- | --- | --- | --- | --- |
|  | 2 | **ELECTRICAL WORKS** |  | 2026-06-13 | 2027-01-06 |  |  |  |  |  |  |  |  |  |  |  |
| MLTX-02-005-EN-3740 |  | Shop DWG Approval for Panel Board Schedules | 20d | 2026-06-13 A | 2026-06-13 A | MLTX-02-005-EN-2630 | 100% | 2026-06-28 | 2026-07-20 |  |  | Draftsman [12.71 h]; Consultant Staff [3.39 h] | EN.MB.SD.EL.PR.2030 | MOD-02-EN-3740 | PL |  |
| MLTX-02-005-EN-3730 |  | Shop DWG Approval for Power Single Line Diagram | 30d | 2026-07-16 A | 2026-07-16 A | MLTX-02-005-EN-2620, MLTX-02-005-EN-3740 | 100% | 2026-07-21 | 2026-08-24 |  |  | Draftsman [12.71 h]; Consultant Staff [3.39 h] | EN.MB.SD.EL.PR.2020 | MOD-02-EN-3730 | PL |  |
| MLTX-02-005-EN-3760 |  | Shop DWG Approval for CCTV Details | 25d | 2026-08-25 A | 2026-08-25 A | MLTX-02-005-EN-2650, MLTX-02-005-EN-3740 | 100% | 2026-07-21 | 2026-08-18 |  |  | Draftsman [12.71 h]; Consultant Staff [3.39 h] | EN.MB.SD.EL.PR.2140 | MOD-02-EN-3760 | PL |  |
| MLTX-02-005-EN-3770 |  | Shop DWG Approval for CCTV Layout | 3d | 2026-08-25 A | 2026-08-25 A | MLTX-02-005-EN-3760, MLTX-02-005-EN-2660 | 100% | 2026-08-20 | 2026-08-23 |  |  | Draftsman [12.71 h]; Consultant Staff [3.39 h] | EN.MB.SD.EL.PR.2150 | MOD-02-EN-3770 | PL |  |
| MLTX-02-005-EN-3780 |  | Shop DWG Approval for CCTV Riser Diagram | 30d | 2026-08-25 A | 2026-08-25 A | MLTX-02-005-EN-2670, MLTX-02-005-EN-3390 FF, MLTX-02-005-EN-3470 | 100% | 2026-08-20 | 2026-09-24 |  |  | Draftsman [12.71 h]; Consultant Staff [3.39 h] | EN.MB.SD.EL.PR.2180 | MOD-02-EN-3780 | PL |  |
| MLTX-02-005-EN-3680 |  | Shop DWG Approval for Lighting Layout | 23d | 2026-10-20 | 2026-11-15 | MLTX-02-005-EN-2570, MLTX-02-005-EN-3780 |  |  |  | -3d | 19d | Draftsman [12.71 h]; Consultant Staff [3.39 h] | EN.MB.SD.EL.PR.1980 | MOD-02-EN-3680 | PL |  |
| MLTX-02-005-EN-3690 |  | Shop DWG Approval for Power Layout | 13d | 2026-12-08 | 2026-12-22 | MLTX-02-005-EN-3680, MLTX-02-005-EN-2580, MLTX-02-005-EN-3660, MLTX-02-005-EN-2640 |  |  |  | -22d | 0d | Draftsman [12.71 h]; Consultant Staff [3.39 h] | EN.MB.SD.EL.PR.2000 | MOD-02-EN-3690 | PL |  |
| MLTX-02-005-EN-3700 |  | Shop DWG Approval for Power Installation Details | 13d | 2026-12-23 | 2027-01-06 | MLTX-02-005-EN-3690, MLTX-02-005-EN-2590 |  |  |  | -22d | 2d | Draftsman [12.71 h]; Consultant Staff [3.39 h] | EN.MB.SD.EL.PR.2050 | MOD-02-EN-3700 | PL |  |
|  | EAR | **SHOP DRAWINGS APPROVAL FOR LANDSCAPE WORKS** |  | 2026-03-15 | 2026-07-16 |  |  |  |  |  |  |  |  |  |  |  |
|  | 3 | **ARCHITECTURE WORKS** |  | 2026-03-15 | 2026-05-19 |  |  |  |  |  |  |  |  |  |  |  |
| MLTX-02-005-EN-3810 |  | Shop DWG Approval for Landscape Layout | 21d | 2026-03-15 A | 2026-03-29 A | MLTX-02-005-EN-2700, MLTX-02-005-EN-3430, MLTX-02-005-EN-3970 | 100% | 2026-06-01 | 2026-06-24 |  |  | Draftsman [12.71 h]; Consultant Staff [3.39 h] |  | MOD-02-EN-3810 | LS | MAK-01-EN-1120 |
| MLTX-02-005-EN-3820 |  | Shop DWG Approval for Hardscape Plan | 21d | 2026-03-15 A | 2026-03-29 A | MLTX-02-005-EN-2710, MLTX-02-005-EN-3970 | 100% | 2026-06-01 | 2026-06-24 |  |  | Draftsman [12.71 h]; Consultant Staff [3.39 h] |  | MOD-02-EN-3820 | LS | MAK-01-EN-1130 |
| MLTX-02-005-EN-3840 |  | Shop DWG Approval for Landscape Details | 21d | 2026-03-15 A | 2026-03-29 A | MLTX-02-005-EN-2730, MLTX-02-005-EN-3970 | 100% | 2026-05-20 | 2026-06-16 |  |  | Draftsman [12.71 h]; Consultant Staff [3.39 h] |  | MOD-02-EN-3840 | LS | MAK-01-EN-1150 |
| MLTX-02-005-EN-3830 |  | Shop DWG Approval for Planting Plan | 15d | 2026-03-19 A | 2026-05-19 A | MLTX-02-005-EN-2720, MLTX-02-005-EN-3970 | 100% | 2026-06-10 | 2026-06-27 |  |  | Draftsman [12.71 h]; Consultant Staff [3.39 h] |  | MOD-02-EN-3830 | LS | MAK-01-EN-1140 |
|  | 1 | **MECHANCAL WORKS** |  | 2026-07-07 | 2026-07-07 |  |  |  |  |  |  |  |  |  |  |  |
| MLTX-02-005-EN-3880 |  | Shop DWG Approval for Irrigation Details | 30d | 2026-07-07 A | 2026-07-07 A | MLTX-02-005-EN-2770 | 100% | 2026-04-15 | 2026-05-19 |  |  | Draftsman [12.71 h]; Consultant Staff [3.39 h] |  | MOD-02-EN-3880 | LS | MAK-01-EN-1140 |
| MLTX-02-005-EN-3920 |  | Shop DWG Approval for Irrigation Layout | 30d | 2026-07-07 A | 2026-07-07 A | MLTX-02-005-EN-2810, MLTX-02-005-EN-3880 | 100% | 2026-05-20 | 2026-06-27 |  |  | Draftsman [12.71 h]; Consultant Staff [3.39 h] |  | MOD-02-EN-3920 | LS | MAK-01-EN-1140 |
|  | 2 | **ELECTRICAL WORKS** |  | 2026-07-16 | 2026-07-16 |  |  |  |  |  |  |  |  |  |  |  |
| MLTX-02-005-EN-3950 |  | Shop DWG Approval for Lighting Details | 30d | 2026-07-16 A | 2026-07-16 A | MLTX-02-005-EN-2840, MLTX-02-005-EN-3760 | 100% | 2026-08-20 | 2026-09-24 |  |  | Draftsman [12.71 h]; Consultant Staff [3.39 h] |  | MOD-02-EN-3950 | LS | MAK-01-EN-1140 |
| MLTX-02-005-EN-3960 |  | Shop DWG Approval for Lighting Single Line Diagram | 30d | 2026-07-16 A | 2026-07-16 A | MLTX-02-005-EN-3730, MLTX-02-005-EN-2850, MLTX-02-005-EN-3760 | 100% | 2026-08-25 | 2026-09-29 |  |  | Draftsman [12.71 h]; Consultant Staff [3.39 h] |  | MOD-02-EN-3960 | LS | MAK-01-EN-1150 |
| MLTX-02-005-EN-3970 |  | Shop DWG Approval for Lighting General Arrangement | 30d | 2026-07-16 A | 2026-07-16 A | MLTX-02-005-EN-2860 | 100% | 2026-04-15 | 2026-05-19 |  |  | Draftsman [12.71 h]; Consultant Staff [3.39 h] |  | MOD-02-EN-3970 | LS | MAK-01-EN-1120 |
| MLTX-02-005-EN-3980 |  | Shop DWG Approval for Lighting Network Layout | 30d | 2026-07-16 A | 2026-07-16 A | MLTX-02-005-EN-2870, MLTX-02-005-EN-3760 | 100% | 2026-08-20 | 2026-09-24 |  |  | Draftsman [12.71 h]; Consultant Staff [3.39 h] |  | MOD-02-EN-3980 | LS | MAK-01-EN-1130 |
|  | MTS | **METHOD STATEMENTS** |  | 2026-03-07 | 2026-09-12 |  |  |  |  |  |  |  |  |  |  |  |
|  | 1 | **METHOD STATEMENT SUBMITTAL** |  | 2026-03-07 | 2026-06-04 |  |  |  |  |  |  |  |  |  |  |  |
|  | 4 | **CIVIL WORKS** |  | 2026-03-09 | 2026-03-14 |  |  |  |  |  |  |  |  |  |  |  |
| MLTX-02-005-EN-4020 |  | Preparation & Submission of Method Statement for Earthwork | 15d | 2026-03-09 A | 2026-03-14 A | MLTX-02-005-MB-1340 | 100% | 2026-03-07 | 2026-03-26 |  |  | QA/QC Engineer [16.1 h] |  | MOD-02-EN-4020 |  | A1010 |
| MLTX-02-005-EN-4030 |  | Preparation & Submission of Method Statement for Concrete Works | 30d | 2026-03-09 A | 2026-03-14 A | MLTX-02-005-MB-1340 | 100% | 2026-03-07 | 2026-04-13 |  |  | QA/QC Engineer [16.1 h] |  | MOD-02-EN-4030 |  | A1020 |
| MLTX-02-005-EN-4040 |  | Preparation & Submission of Method Statement for Waterproofing | 21d | 2026-03-09 A | 2026-03-14 A | MLTX-02-005-MB-1340 | 100% | 2026-03-07 | 2026-04-02 |  |  | QA/QC Engineer [16.1 h] |  | MOD-02-EN-4040 |  |  |

| ID | WBS | Activity | Duration | Start | Finish | Predecessors | Complete | Planned start | Planned finish | Resources | New Activity ID | Old Activity ID - MK |
| --- | --- | --- | --- | --- | --- | --- | --- | --- | --- | --- | --- | --- |
|  | 1 | **ARCHITECTURE WORKS** |  | 2026-03-07 | 2026-06-02 |  |  |  |  |  |  |  |
| MLTX-02-005-EN-4070 |  | Preparation & Submission of Method Statement for Masonary Works | 30d | 2026-03-07 A | 2026-05-11 A | MLTX-02-005-MB-1340, MLTX-02-005-EN-4060 | 100% | 2026-05-19 | 2026-06-25 | QA/QC Engineer [16.1 h] | MOD-02-EN-4070 | A1020 |
| MLTX-02-005-EN-4080 |  | Preparation & Submission of Method Statement for Tilling Works | 30d | 2026-03-07 A | 2026-05-17 A | MLTX-02-005-MB-1340, MLTX-02-005-EN-4130 | 100% | 2026-07-21 | 2026-08-24 | QA/QC Engineer [16.1 h] | MOD-02-EN-4080 |  |
| MLTX-02-005-EN-4090 |  | Preparation & Submission of Method Statement for Seats/Benches Works | 30d | 2026-03-07 A | 2026-06-02 A | MLTX-02-005-MB-1340, MLTX-02-005-EN-4130 | 100% | 2026-07-21 | 2026-08-24 | QA/QC Engineer [16.1 h] | MOD-02-EN-4090 | A1010 |
| MLTX-02-005-EN-4100 |  | Preparation & Submission of Method Statement for Doors/Windows Works | 30d | 2026-03-07 A | 2026-06-02 A | MLTX-02-005-MB-1340, MLTX-02-005-EN-4380 | 100% | 2026-07-04 | 2026-08-06 | QA/QC Engineer [16.1 h] | MOD-02-EN-4100 | A1020 |
| MLTX-02-005-EN-4110 |  | Preparation & Submission of Method Statement for Interlock/Curbstone Works | 30d | 2026-03-07 A | 2026-05-02 A | MLTX-02-005-MB-1340 | 100% | 2026-03-07 | 2026-04-13 | QA/QC Engineer [16.1 h] | MOD-02-EN-4110 |  |
| MLTX-02-005-EN-4120 |  | Preparation & Submission of Method Statement for Parking Works | 30d | 2026-03-07 A | 2026-05-24 A | MLTX-02-005-MB-1340, MLTX-02-005-EN-4100 | 100% | 2026-08-08 | 2026-09-10 | QA/QC Engineer [16.1 h] | MOD-02-EN-4120 |  |
| MLTX-02-005-EN-4130 |  | Preparation & Submission of Method Statement for Soft Scape Works | 30d | 2026-03-07 A | 2026-06-02 A | MLTX-02-005-MB-1340, MLTX-02-005-EN-4180 | 100% | 2026-06-16 | 2026-07-20 | QA/QC Engineer [16.1 h] | MOD-02-EN-4130 |  |
| MLTX-02-005-EN-4140 |  | Preparation & Submission of Method Statement for Fence Works | 30d | 2026-03-07 A | 2026-06-02 A | MLTX-02-005-MB-1340, MLTX-02-005-EN-4310 | 100% | 2026-05-19 | 2026-06-25 | QA/QC Engineer [16.1 h] | MOD-02-EN-4140 |  |
| MLTX-02-005-EN-4150 |  | Preparation & Submission of Method Statement for Air Dome Works | 30d | 2026-03-07 A | 2026-06-02 A | MLTX-02-005-MB-1340, MLTX-02-005-EN-4310 | 100% | 2026-05-19 | 2026-06-25 | QA/QC Engineer [16.1 h] | MOD-02-EN-4150 |  |
| MLTX-02-005-EN-4160 |  | Preparation & Submission of Method Statement for Metal Works | 30d | 2026-03-07 A | 2026-06-02 A | MLTX-02-005-MB-1340, MLTX-02-005-EN-4060 | 100% | 2026-05-19 | 2026-06-25 | QA/QC Engineer [16.1 h] | MOD-02-EN-4160 |  |
| MLTX-02-005-EN-4170 |  | Preparation & Submission of Method Statement for Partitions Works | 30d | 2026-03-07 A | 2026-06-02 A | MLTX-02-005-MB-1340, MLTX-02-005-EN-4310 | 100% | 2026-05-19 | 2026-06-25 | QA/QC Engineer [16.1 h] | MOD-02-EN-4170 |  |
| MLTX-02-005-EN-4180 |  | Preparation & Submission of Method Statement for Gypsum Board Works | 30d | 2026-03-07 A | 2026-06-02 A | MLTX-02-005-MB-1340, MLTX-02-005-EN-4220 | 100% | 2026-05-09 | 2026-06-15 | QA/QC Engineer [16.1 h] | MOD-02-EN-4180 |  |
| MLTX-02-005-EN-4060 |  | Preparation & Submission of Method Statement for Plastering Works | 15d | 2026-03-09 A | 2026-03-14 A | MLTX-02-005-MB-1340, MLTX-02-005-EN-4200 | 100% | 2026-05-02 | 2026-05-18 | QA/QC Engineer [16.1 h] | MOD-02-EN-4060 | A1010 |
|  | 2 | **MECHANICAL WORKS** |  | 2026-03-12 | 2026-06-04 |  |  |  |  |  |  |  |
| MLTX-02-005-EN-4200 |  | Preparation & Submission of Method Statement for Sewage/Drainage System | 30d | 2026-03-12 A | 2026-05-02 A | MLTX-02-005-EN-4020 | 100% | 2026-03-28 | 2026-04-30 | QA/QC Engineer [16.1 h] | MOD-02-EN-4200 | A1010 |
| MLTX-02-005-EN-4210 |  | Preparation & Submission of Method Statement for Water Supply System | 30d | 2026-03-12 A | 2026-05-02 A | MLTX-02-005-EN-4030 | 100% | 2026-04-14 | 2026-05-18 | QA/QC Engineer [16.1 h] | MOD-02-EN-4210 | A1020 |
| MLTX-02-005-EN-4220 |  | Preparation & Submission of Method Statement for Fire Fighting System | 30d | 2026-03-12 A | 2026-06-04 A | MLTX-02-005-EN-4040 | 100% | 2026-04-04 | 2026-05-07 | QA/QC Engineer [16.1 h] | MOD-02-EN-4220 |  |
| MLTX-02-005-EN-4230 |  | Preparation & Submission of Method Statement for Irrigation System | 15d | 2026-03-12 A | 2026-06-04 A | MLTX-02-005-EN-4060, MLTX-02-005-EN-4210 | 100% | 2026-05-19 | 2026-06-08 | QA/QC Engineer [16.1 h] | MOD-02-EN-4230 | A1010 |
| MLTX-02-005-EN-4240 |  | Preparation & Submission of Method Statement for HVAC System | 30d | 2026-03-12 A | 2026-06-04 A | MLTX-02-005-EN-4070, MLTX-02-005-EN-4380 | 100% | 2026-07-04 | 2026-08-06 | QA/QC Engineer [16.1 h] | MOD-02-EN-4240 | A1020 |
|  | 5 | **ELECTRICAL WORKS** |  | 2026-03-12 | 2026-05-11 |  |  |  |  |  |  |  |
| MLTX-02-005-EN-4260 |  | Preparation & Submission of Method Statement for Telecommunication & Data System | 30d | 2026-03-12 A | 2026-05-11 A | MLTX-02-005-EN-4140, MLTX-02-005-EN-4170 | 100% | 2026-06-27 | 2026-07-30 | QA/QC Engineer [16.1 h] | MOD-02-EN-4260 |  |
| MLTX-02-005-EN-4270 |  | Preparation & Submission of Method Statement for CCTV System | 30d | 2026-03-12 A | 2026-05-11 A | MLTX-02-005-EN-4150, MLTX-02-005-EN-4140, MLTX-02-005-EN-4170 | 100% | 2026-06-27 | 2026-07-30 | QA/QC Engineer [16.1 h] | MOD-02-EN-4270 |  |
| MLTX-02-005-EN-4280 |  | Preparation & Submission of Method Statement for Lighting Works | 30d | 2026-03-12 A | 2026-05-11 A | MLTX-02-005-EN-4160, MLTX-02-005-EN-4140 | 100% | 2026-06-27 | 2026-07-30 | QA/QC Engineer [16.1 h] | MOD-02-EN-4280 |  |
| MLTX-02-005-EN-4290 |  | Preparation & Submission of Method Statement for Earthing/Lightning Works | 30d | 2026-03-12 A | 2026-05-06 A | MLTX-02-005-EN-4170, MLTX-02-005-EN-4600 | 100% | 2026-06-27 | 2026-07-30 | QA/QC Engineer [16.1 h] | MOD-02-EN-4290 |  |
| MLTX-02-005-EN-4300 |  | Preparation & Submission of Method Statement for Panel Boards Works | 30d | 2026-03-12 A | 2026-05-11 A | MLTX-02-005-EN-4180, MLTX-02-005-EN-4170 | 100% | 2026-06-27 | 2026-07-30 | QA/QC Engineer [16.1 h] | MOD-02-EN-4300 |  |
| MLTX-02-005-EN-4310 |  | Preparation & Submission of Method Statement for Electrical Conduits/Pulling Works | 30d | 2026-03-12 A | 2026-05-11 A | MLTX-02-005-EN-4110 | 100% | 2026-04-14 | 2026-05-18 | QA/QC Engineer [16.1 h] | MOD-02-EN-4310 |  |
| MLTX-02-005-EN-4330 |  | Preparation & Submission of Method Statement for Lighting Poles Installation | 30d | 2026-03-12 A | 2026-05-11 A | MLTX-02-005-EN-4130, MLTX-02-005-EN-4260 | 100% | 2026-08-01 | 2026-09-03 | QA/QC Engineer [16.1 h] | MOD-02-EN-4330 |  |

| ID | WBS | Activity | Duration | Start | Finish | Predecessors | Complete | Planned start | Planned finish | Resources | New Activity ID | Old Activity ID - MK |
| --- | --- | --- | --- | --- | --- | --- | --- | --- | --- | --- | --- | --- |
|  | 2 | **METHOD STATEMENT APPROVAL** |  | 2026-03-12 | 2026-09-12 |  |  |  |  |  |  |  |
|  | 4 | **CIVIL WORKS** |  | 2026-03-12 | 2026-04-30 |  |  |  |  |  |  |  |
| MLTX-02-005-EN-4360 |  | Approval of Method Statement for Earthwork | 15d | 2026-03-12 A | 2026-04-30 A | MLTX-02-005-EN-4020, MLTX-02-005-EN-4380 | 100% | 2026-07-04 | 2026-07-20 | Consultant Staff [16.1 h] | MOD-02-EN-4360 | A1010 |
| MLTX-02-005-EN-4370 |  | Approval of Method Statement for Concrete Works | 30d | 2026-03-12 A | 2026-04-30 A | MLTX-02-005-EN-4030, MLTX-02-005-EN-4360, MLTX-02-005-EN-4130 | 100% | 2026-07-21 | 2026-08-24 | Consultant Staff [16.1 h] | MOD-02-EN-4370 | A1020 |
| MLTX-02-005-EN-4380 |  | Approval of Method Statement for Waterproofing | 21d | 2026-03-12 A | 2026-04-30 A | MLTX-02-005-EN-4040, MLTX-02-005-EN-4540 | 100% | 2026-06-09 | 2026-07-02 | Consultant Staff [16.1 h] | MOD-02-EN-4380 |  |
|  | 1 | **ARCHITECTURE WORKS** |  | 2026-03-12 | 2026-09-12 |  |  |  |  |  |  |  |
| MLTX-02-005-EN-4400 |  | Approval of Method Statement for Plastering Works | 30d | 2026-03-12 A | 2026-04-30 A | MLTX-02-005-EN-4060, MLTX-02-005-EN-4480 | 100% | 2026-08-06 | 2026-09-09 | Consultant Staff [16.1 h] | MOD-02-EN-4400 | A1010 |
| MLTX-02-005-EN-4410 |  | Approval of Method Statement for Masonary Works | 30d | 2026-03-12 A | 2026-05-24 A | MLTX-02-005-EN-4070, MLTX-02-005-EN-4600 | 100% | 2026-06-27 | 2026-07-30 | Consultant Staff [16.1 h] | MOD-02-EN-4410 | A1020 |
| MLTX-02-005-EN-4420 |  | Approval of Method Statement for Tilling Works | 30d | 2026-03-12 A | 2026-05-24 A | MLTX-02-005-EN-4080, MLTX-02-005-EN-4480, MLTX-02-005-EN-4090 | 100% | 2026-08-25 | 2026-09-29 | Consultant Staff [16.1 h] | MOD-02-EN-4420 |  |
| MLTX-02-005-EN-4450 |  | Approval of Method Statement for Interlock/Curbstone Works | 30d | 2026-03-12 A | 2026-05-05 A | MLTX-02-005-EN-4110, MLTX-02-005-EN-4480 | 100% | 2026-08-06 | 2026-09-09 | Consultant Staff [16.1 h] | MOD-02-EN-4450 |  |
| MLTX-02-005-EN-4460 |  | Approval of Method Statement for Parking Works | 30d | 2026-05-20 A | 2026-05-20 A | MLTX-02-005-EN-4120, MLTX-02-005-EN-4470 | 100% | 2026-09-12 | 2026-10-17 | Consultant Staff [16.1 h] | MOD-02-EN-4460 |  |
| MLTX-02-005-EN-4510 |  | Approval of Method Statement for Partitions Works | 30d | 2026-06-29 A | 2026-06-29 A | MLTX-02-005-EN-4170, MLTX-02-005-EN-4670 | 100% | 2026-09-05 | 2026-10-10 | Consultant Staff [16.1 h] | MOD-02-EN-4510 |  |
| MLTX-02-005-EN-4470 |  | Approval of Method Statement for Soft Scape Works | 30d | 2026-07-19 A | 2026-07-19 A | MLTX-02-005-EN-4130, MLTX-02-005-EN-4480 | 100% | 2026-08-06 | 2026-09-09 | Consultant Staff [16.1 h] | MOD-02-EN-4470 |  |
| MLTX-02-005-EN-4480 |  | Approval of Method Statement for Fence Works | 20d | 2026-07-19 A | 2026-07-19 A | MLTX-02-005-EN-4140, MLTX-02-005-EN-7030 | 100% | 2026-07-14 | 2026-08-05 | Consultant Staff [16.1 h] | MOD-02-EN-4480 |  |
| MLTX-02-005-EN-4520 |  | Approval of Method Statement for Gypsum Board Works | 30d | 2026-08-20 A | 2026-08-20 A | MLTX-02-005-EN-4180, MLTX-02-005-EN-4510 | 100% | 2026-10-11 | 2026-11-14 | Consultant Staff [16.1 h] | MOD-02-EN-4520 |  |
| MLTX-02-005-EN-4430 |  | Approval of Method Statement for Seats/Benches Works | 30d | 2026-09-12 A | 2026-09-12 A | MLTX-02-005-EN-4090, MLTX-02-005-EN-4400, MLTX-02-005-EN-4450 | 100% | 2026-09-10 | 2026-10-15 | Consultant Staff [16.1 h] | MOD-02-EN-4430 | A1010 |
| MLTX-02-005-EN-4440 |  | Approval of Method Statement for Doors/Windows Works | 30d | 2026-09-12 A | 2026-09-12 A | MLTX-02-005-EN-4100, MLTX-02-005-EN-3010 | 100% | 2026-08-08 | 2026-09-10 | Consultant Staff [16.1 h] | MOD-02-EN-4440 | A1020 |
| MLTX-02-005-EN-4490 |  | Approval of Method Statement for Air Dome Works | 30d | 2026-09-12 A | 2026-09-12 A | MLTX-02-005-EN-4150, MLTX-02-005-EN-4470 | 100% | 2026-09-10 | 2026-10-15 | Consultant Staff [16.1 h] | MOD-02-EN-4490 |  |
|  | 2 | **MECHANICAL WORKS** |  | 2026-06-14 | 2026-08-26 |  |  |  |  |  |  |  |
| MLTX-02-005-EN-4540 |  | Approval of Method Statement for Sewage/Drainage System | 30d | 2026-06-14 A | 2026-06-14 A | MLTX-02-005-EN-4200 | 100% | 2026-05-02 | 2026-06-08 | Consultant Staff [16.1 h] | MOD-02-EN-4540 | A1010 |
| MLTX-02-005-EN-4550 |  | Approval of Method Statement for Water Supply System | 30d | 2026-06-14 A | 2026-06-14 A | MLTX-02-005-EN-4210, MLTX-02-005-EN-4480 | 100% | 2026-08-06 | 2026-09-09 | Consultant Staff [16.1 h] | MOD-02-EN-4550 | A1020 |
| MLTX-02-005-EN-4570 |  | Approval of Method Statement for Irrigation System | 15d | 2026-06-14 A | 2026-06-14 A | MLTX-02-005-EN-4230, MLTX-02-005-EN-4540 | 100% | 2026-06-09 | 2026-06-25 | Consultant Staff [16.1 h] | MOD-02-EN-4570 | A1010 |
| MLTX-02-005-EN-4580 |  | Approval of Method Statement for HVAC System | 30d | 2026-07-14 A | 2026-07-22 A | MLTX-02-005-EN-4240, MLTX-02-005-EN-4480 | 100% | 2026-08-08 | 2026-09-10 | Consultant Staff [16.1 h] | MOD-02-EN-4580 | A1020 |
| MLTX-02-005-EN-4560 |  | Approval of Method Statement for Fire Fighting System | 30d | 2026-08-26 A | 2026-08-26 A | MLTX-02-005-EN-4220 | 100% | 2026-10-21 | 2026-11-24 | Consultant Staff [16.1 h] | MOD-02-EN-4560 |  |

| ID | WBS | Activity | Duration | Start | Finish | Predecessors | Complete | Planned start | Planned finish | Resources | New Activity ID | Old Activity ID - MK |
| --- | --- | --- | --- | --- | --- | --- | --- | --- | --- | --- | --- | --- |
|  | 5 | **ELECTRICAL WORKS** |  | 2026-06-06 | 2026-06-14 |  |  |  |  |  |  |  |
| MLTX-02-005-EN-4600 |  | Approval of Method Statement for Electrical Conduits/Pulling Works | 30d | 2026-06-06 A | 2026-06-06 A | MLTX-02-005-EN-4310 | 100% | 2026-05-19 | 2026-06-25 | Consultant Staff [16.1 h] | MOD-02-EN-4600 |  |
| MLTX-02-005-EN-4620 |  | Approval of Method Statement for Lighting Poles Installation | 30d | 2026-06-14 A | 2026-06-14 A | MLTX-02-005-EN-4330, MLTX-02-005-EN-4660 | 100% | 2026-09-05 | 2026-10-10 | Consultant Staff [16.1 h] | MOD-02-EN-4620 |  |
| MLTX-02-005-EN-4630 |  | Approval of Method Statement for Telecommunication & Data System | 30d | 2026-06-14 A | 2026-06-14 A | MLTX-02-005-EN-4260, MLTX-02-005-EN-4480 | 100% | 2026-08-06 | 2026-09-09 | Consultant Staff [16.1 h] | MOD-02-EN-4630 |  |
| MLTX-02-005-EN-4640 |  | Approval of Method Statement for CCTV System | 30d | 2026-06-14 A | 2026-06-14 A | MLTX-02-005-EN-4270, MLTX-02-005-EN-4480, MLTX-02-005-EN-4290 | 100% | 2026-08-06 | 2026-09-09 | Consultant Staff [16.1 h] | MOD-02-EN-4640 |  |
| MLTX-02-005-EN-4650 |  | Approval of Method Statement for Lighting Works | 30d | 2026-06-14 A | 2026-06-14 A | MLTX-02-005-EN-4280, MLTX-02-005-EN-4480 | 100% | 2026-08-06 | 2026-09-09 | Consultant Staff [16.1 h] | MOD-02-EN-4650 |  |
| MLTX-02-005-EN-4660 |  | Approval of Method Statement for Earthing/Lightning Works | 30d | 2026-06-14 A | 2026-06-14 A | MLTX-02-005-EN-4290, MLTX-02-005-EN-2980 | 100% | 2026-08-01 | 2026-09-03 | Consultant Staff [16.1 h] | MOD-02-EN-4660 |  |
| MLTX-02-005-EN-4670 |  | Approval of Method Statement for Panel Boards Works | 30d | 2026-06-14 A | 2026-06-14 A | MLTX-02-005-EN-3740, MLTX-02-005-EN-4300 | 100% | 2026-08-01 | 2026-09-03 | Consultant Staff [16.1 h] | MOD-02-EN-4670 |  |
|  | PREQ | **PRE-QUALIFICATION & MATERIAL** |  | 2026-03-07 | 2026-09-12 |  |  |  |  |  |  |  |
|  | PRE | **PRE-QUALIFICATION** |  | 2026-03-07 | 2026-06-07 |  |  |  |  |  |  |  |
|  | TOI | **TOILET/SERVICE WORKS** |  | 2026-03-07 | 2026-06-07 |  |  |  |  |  |  |  |
|  | 1 | **STEEL REINFORCEMENT** |  | 2026-03-09 | 2026-03-19 |  |  |  |  |  |  |  |
| MLTX-02-005-EN-4720 |  | Pre-Qualification Submittal for Steel Reinforcement | 15d | 2026-03-09 A | 2026-03-11 A | MLTX-02-005-MB-1340 | 100% | 2026-03-07 | 2026-03-26 | QA/QC Engineer [16.1 h] | MOD-02-EN-4720 | MAK-01-PR-1000 |
| MLTX-02-005-EN-4730 |  | Pre-Qualification Approval for Steel Reinforcement | 15d | 2026-03-12 A | 2026-03-19 A | MLTX-02-005-EN-4720 | 100% | 2026-03-28 | 2026-04-13 | Consultant Staff [16.1 h] | MOD-02-EN-4730 | MAK-01-PR-1010 |
|  | 2 | **READY MIX CONCRETE** |  | 2026-03-09 | 2026-03-19 |  |  |  |  |  |  |  |
| MLTX-02-005-EN-4750 |  | Pre-Qualification Submittal for Ready Mixed Concrete | 15d | 2026-03-09 A | 2026-03-11 A | MLTX-02-005-EN-4720 SS, MLTX-02-005-MB-1340 | 100% | 2026-03-07 | 2026-03-26 | QA/QC Engineer [16.1 h] | MOD-02-EN-4750 | MAK-01-PR-1040 |
| MLTX-02-005-EN-4760 |  | Pre-Qualification Approval of Ready Mixed Concrete | 15d | 2026-03-12 A | 2026-03-19 A | MLTX-02-005-EN-4750 | 100% | 2026-03-28 | 2026-04-13 | Consultant Staff [16.1 h] | MOD-02-EN-4760 | MAK-01-PR-1050 |
|  | 3 | **CONCRETE BLOCKS** |  | 2026-03-09 | 2026-03-19 |  |  |  |  |  |  |  |
| MLTX-02-005-EN-4780 |  | Pre-Qualification Submittal for Concrete Blocks | 15d | 2026-03-09 A | 2026-03-11 A | MLTX-02-005-MB-1340, MLTX-02-005-EN-4750 SS | 100% | 2026-03-07 | 2026-03-26 | QA/QC Engineer [16.1 h] | MOD-02-EN-4780 | MAK-01-PR-1000 |
| MLTX-02-005-EN-4790 |  | Pre-Qualification Approval for Concrete Blocks | 15d | 2026-03-12 A | 2026-03-19 A | MLTX-02-005-EN-4780, MLTX-02-005-EN-5080 | 100% | 2026-06-09 | 2026-06-25 | Consultant Staff [16.1 h] | MOD-02-EN-4790 | MAK-01-PR-1010 |
|  | 4 | **WATER PROOFING** |  | 2026-03-09 | 2026-03-19 |  |  |  |  |  |  |  |
| MLTX-02-005-EN-4810 |  | Pre-Qualification Submittal for Water Proofing | 15d | 2026-03-09 A | 2026-03-11 A | MLTX-02-005-MB-1340, MLTX-02-005-EN-4780 SS | 100% | 2026-03-07 | 2026-03-26 | QA/QC Engineer [16.1 h] | MOD-02-EN-4810 | MAK-01-PR-1060 |
| MLTX-02-005-EN-4820 |  | Pre-Qualification Approval for Water Proofing | 30d | 2026-03-12 A | 2026-03-19 A | MLTX-02-005-EN-4810, MLTX-02-005-EN-5390 | 100% | 2026-05-19 | 2026-06-25 | Consultant Staff [16.1 h] | MOD-02-EN-4820 | MAK-01-PR-1070 |
|  | 6 | **FLOOR/WALL TILES** |  | 2026-03-07 | 2026-04-07 |  |  |  |  |  |  |  |
| MLTX-02-005-EN-4840 |  | Pre-Qualification Submittal for Tilling Materials | 15d | 2026-03-07 A | 2026-03-29 A | MLTX-02-005-EN-4810 SS, MLTX-02-005-MB-1340 | 100% | 2026-03-07 | 2026-03-26 | QA/QC Engineer [16.1 h] | MOD-02-EN-4840 | MAK-01-PR-1000 |
| MLTX-02-005-EN-4850 |  | Pre-Qualification Approval for Tailling Material | 15d | 2026-03-10 A | 2026-04-07 A | MLTX-02-005-EN-4840, MLTX-02-005-EN-5080 | 100% | 2026-06-09 | 2026-06-25 | Consultant Staff [16.1 h] | MOD-02-EN-4850 | MAK-01-PR-1010 |

| ID | WBS | Activity | Duration | Start | Finish | Predecessors | Complete | Planned start | Planned finish | Resources | New Activity ID | Old Activity ID - MK |
| --- | --- | --- | --- | --- | --- | --- | --- | --- | --- | --- | --- | --- |
|  | 7 | **SUSPENDED CEILING** |  | 2026-03-09 | 2026-03-19 |  |  |  |  |  |  |  |
| MLTX-02-005-EN-4870 |  | Pre-Qualification Submittal for Suspend Ceiling | 15d | 2026-03-09 A | 2026-03-11 A | MLTX-02-005-EN-4840 SS, MLTX-02-005-MB-1340 | 100% | 2026-03-07 | 2026-03-26 | QA/QC Engineer [16.1 h] | MOD-02-EN-4870 | MAK-01-PR-1000 |
| MLTX-02-005-EN-4880 |  | Pre-Qualification Approval for Suspend Ceiling | 15d | 2026-03-12 A | 2026-03-19 A | MLTX-02-005-EN-4870, MLTX-02-005-EN-5080 | 100% | 2026-06-09 | 2026-06-25 | Consultant Staff [16.1 h] | MOD-02-EN-4880 | MAK-01-PR-1010 |
|  | 8 | **DOORS/WINDOWS** |  | 2026-03-09 | 2026-03-19 |  |  |  |  |  |  |  |
| MLTX-02-005-EN-4900 |  | Pre-Qualification Submittal for Doors/Windows | 15d | 2026-03-09 A | 2026-03-11 A | MLTX-02-005-MB-1340, MLTX-02-005-EN-4870 SS | 100% | 2026-03-07 | 2026-03-26 | QA/QC Engineer [16.1 h] | MOD-02-EN-4900 | MAK-01-PR-1000 |
| MLTX-02-005-EN-4910 |  | Pre-Qualification Approval for Doors/Windows | 15d | 2026-03-12 A | 2026-03-19 A | MLTX-02-005-EN-4900, MLTX-02-005-EN-5080 | 100% | 2026-06-09 | 2026-06-25 | Consultant Staff [16.1 h] | MOD-02-EN-4910 | MAK-01-PR-1010 |
|  | 9 | **FURNITURES** |  | 2026-03-07 | 2026-04-07 |  |  |  |  |  |  |  |
| MLTX-02-005-EN-4930 |  | Pre-Qualification Submittal for Furnitures | 15d | 2026-03-07 A | 2026-04-04 A | MLTX-02-005-EN-4900 SS, MLTX-02-005-MB-1340 | 100% | 2026-03-07 | 2026-03-26 | QA/QC Engineer [16.1 h] | MOD-02-EN-4930 | MAK-01-PR-1000 |
| MLTX-02-005-EN-4940 |  | Pre-Qualification Approval for Furnitures | 15d | 2026-03-10 A | 2026-04-07 A | MLTX-02-005-EN-4930, MLTX-02-005-EN-5080 | 100% | 2026-06-09 | 2026-06-25 | Consultant Staff [16.1 h] | MOD-02-EN-4940 | MAK-01-PR-1010 |
|  | 10 | **SANITARY FIXTURES** |  | 2026-03-07 | 2026-04-09 |  |  |  |  |  |  |  |
| MLTX-02-005-EN-4960 |  | Pre-Qualification Submittal for Sanitary Fixtures | 15d | 2026-03-07 A | 2026-04-05 A | MLTX-02-005-EN-4930 SS, MLTX-02-005-MB-1340 | 100% | 2026-03-07 | 2026-03-26 | QA/QC Engineer [16.1 h] | MOD-02-EN-4960 | MAK-01-PR-1000 |
| MLTX-02-005-EN-4970 |  | Pre-Qualification Approval for Sanitary Fixtures | 15d | 2026-03-10 A | 2026-04-09 A | MLTX-02-005-EN-4960, MLTX-02-005-EN-4760 | 100% | 2026-04-14 | 2026-04-30 | Consultant Staff [16.1 h] | MOD-02-EN-4970 | MAK-01-PR-1010 |
|  | 11 | **WATER SUPPLY PIPES** |  | 2026-03-07 | 2026-03-29 |  |  |  |  |  |  |  |
| MLTX-02-005-EN-4990 |  | Pre-Qualification Submittal for Water Supply Pipes | 15d | 2026-03-07 A | 2026-03-23 A | MLTX-02-005-EN-4960 SS, MLTX-02-005-MB-1340 | 100% | 2026-03-07 | 2026-03-26 | QA/QC Engineer [16.1 h] | MOD-02-EN-4990 | MAK-01-PR-1000 |
| MLTX-02-005-EN-5000 |  | Pre-Qualification Approval for Water Supply Pipes | 15d | 2026-03-10 A | 2026-03-29 A | MLTX-02-005-EN-4990, MLTX-02-005-EN-5080 | 100% | 2026-06-09 | 2026-06-25 | Consultant Staff [16.1 h] | MOD-02-EN-5000 | MAK-01-PR-1010 |
|  | 12 | **SEWAGE/DRAINAGE PIPES** |  | 2026-03-07 | 2026-03-29 |  |  |  |  |  |  |  |
| MLTX-02-005-EN-5020 |  | Pre-Qualification Submittal for Sewage/Drainage Pipes | 15d | 2026-03-07 A | 2026-03-23 A | MLTX-02-005-EN-4990 SS | 100% | 2026-03-07 | 2026-03-26 | QA/QC Engineer [16.1 h] | MOD-02-EN-5020 | MAK-01-PR-1000 |
| MLTX-02-005-EN-5030 |  | Pre-Qualification Approval for Sewage/Drainage Pipes | 15d | 2026-03-10 A | 2026-03-29 A | MLTX-02-005-EN-5020 | 100% | 2026-03-28 | 2026-04-13 | Consultant Staff [16.1 h] | MOD-02-EN-5030 | MAK-01-PR-1010 |
|  | 16 | **PACKAGE AC UNITS** |  | 2026-03-10 | 2026-04-07 |  |  |  |  |  |  |  |
| MLTX-02-005-EN-5050 |  | Pre-Qualification Submittal for Package AC Units | 15d | 2026-03-10 A | 2026-04-01 A | MLTX-02-005-EN-4720, MLTX-02-005-EN-4970 | 100% | 2026-05-02 | 2026-05-18 | QA/QC Engineer [16.1 h] | MOD-02-EN-5050 | MAK-01-PR-1000 |
| MLTX-02-005-EN-5060 |  | Pre-Qualification Approval for Package AC Units | 15d | 2026-03-14 A | 2026-04-07 A | MLTX-02-005-EN-5050, MLTX-02-005-EN-5330 | 100% | 2026-05-19 | 2026-06-08 | Consultant Staff [16.1 h] | MOD-02-EN-5060 | MAK-01-PR-1010 |
|  | 17 | **AIR DIFUSSERS/GRILLS** |  | 2026-03-10 | 2026-06-07 |  |  |  |  |  |  |  |
| MLTX-02-005-EN-5080 |  | Pre-Qualification Submittal for Air Diffusers/Grills | 15d | 2026-03-10 A | 2026-05-25 A | MLTX-02-005-EN-4750, MLTX-02-005-EN-5390 | 100% | 2026-05-19 | 2026-06-08 | QA/QC Engineer [16.1 h] | MOD-02-EN-5080 | MAK-01-PR-1000 |
| MLTX-02-005-EN-5090 |  | Pre-Qualification Approval for Air Diffusers/Grills | 15d | 2026-03-14 A | 2026-06-07 A | MLTX-02-005-EN-5080, MLTX-02-005-EN-5690 | 100% | 2026-06-09 | 2026-06-25 | Consultant Staff [16.1 h] | MOD-02-EN-5090 | MAK-01-PR-1010 |

| ID | WBS | Activity | Duration | Start | Finish | Predecessors | Complete | Planned start | Planned finish | Resources | New Activity ID | Old Activity ID - MK |
| --- | --- | --- | --- | --- | --- | --- | --- | --- | --- | --- | --- | --- |
|  | 18 | **GALVANIZED DUCTS** |  | 2026-03-10 | 2026-04-30 |  |  |  |  |  |  |  |
| MLTX-02-005-EN-5110 |  | Pre-Qualification Submittal for Galvanized Ducts | 15d | 2026-03-10 A | 2026-04-25 A | MLTX-02-005-EN-4780 | 100% | 2026-03-28 | 2026-04-13 | QA/QC Engineer [16.1 h] | MOD-02-EN-5110 | MAK-01-PR-1000 |
| MLTX-02-005-EN-5120 |  | Pre-Qualification Approval for Galvanized Ducts | 15d | 2026-03-14 A | 2026-04-30 A | MLTX-02-005-EN-5110 | 100% | 2026-04-14 | 2026-04-30 | Consultant Staff [16.1 h] | MOD-02-EN-5120 | MAK-01-PR-1010 |
|  | 19 | **EXHAUST FANS** |  | 2026-03-10 | 2026-04-08 |  |  |  |  |  |  |  |
| MLTX-02-005-EN-5140 |  | Pre-Qualification Submittal for Exhaust Fans | 15d | 2026-03-10 A | 2026-04-01 A | MLTX-02-005-EN-4810 | 100% | 2026-03-28 | 2026-04-13 | QA/QC Engineer [16.1 h] | MOD-02-EN-5140 | MAK-01-PR-1000 |
| MLTX-02-005-EN-5150 |  | Pre-Qualification Approval for Exhaust Fans | 15d | 2026-03-14 A | 2026-04-08 A | MLTX-02-005-EN-5140 | 100% | 2026-04-14 | 2026-04-30 | Consultant Staff [16.1 h] | MOD-02-EN-5150 | MAK-01-PR-1010 |
|  | 13 | **LIGHTING FIXTURES** |  | 2026-03-10 | 2026-06-07 |  |  |  |  |  |  |  |
| MLTX-02-005-EN-5170 |  | Pre-Qualification Submittal for Lighting Fixtures | 15d | 2026-03-10 A | 2026-05-25 A | MLTX-02-005-EN-4840 | 100% | 2026-03-28 | 2026-04-13 | QA/QC Engineer [16.1 h] | MOD-02-EN-5170 | MAK-01-PR-1000 |
| MLTX-02-005-EN-5180 |  | Pre-Qualification Approval for Lighting Fixtures | 15d | 2026-03-14 A | 2026-06-07 A | MLTX-02-005-EN-5170 | 100% | 2026-04-14 | 2026-04-30 | Consultant Staff [16.1 h] | MOD-02-EN-5180 | MAK-01-PR-1010 |
|  | 14 | **SWITCHES/SOCKETS** |  | 2026-03-10 | 2026-06-07 |  |  |  |  |  |  |  |
| MLTX-02-005-EN-5200 |  | Pre-Qualification Submittal for Switches/Sockets | 15d | 2026-03-10 A | 2026-05-25 A | MLTX-02-005-EN-4870, MLTX-02-005-EN-5080 | 100% | 2026-06-09 | 2026-06-25 | QA/QC Engineer [16.1 h] | MOD-02-EN-5200 | MAK-01-PR-1000 |
| MLTX-02-005-EN-5210 |  | Pre-Qualification Approval for Switches/Sockets | 15d | 2026-03-14 A | 2026-06-07 A | MLTX-02-005-EN-5200, MLTX-02-005-EN-5080 | 100% | 2026-06-27 | 2026-07-13 | Consultant Staff [16.1 h] | MOD-02-EN-5210 | MAK-01-PR-1010 |
|  | 15 | **EARTHING SYSTEM** |  | 2026-03-10 | 2026-05-11 |  |  |  |  |  |  |  |
| MLTX-02-005-EN-5230 |  | Pre-Qualification Submittal for Earthing System | 15d | 2026-03-10 A | 2026-05-09 A | MLTX-02-005-EN-4900, MLTX-02-005-EN-5080 | 100% | 2026-06-09 | 2026-06-25 | QA/QC Engineer [16.1 h] | MOD-02-EN-5230 | MAK-01-PR-1290 |
| MLTX-02-005-EN-5240 |  | Pre-Qualification Approval for Earthing System | 15d | 2026-03-14 A | 2026-05-11 A | MLTX-02-005-EN-5230, MLTX-02-005-EN-4820 | 100% | 2026-06-27 | 2026-07-13 | Consultant Staff [16.1 h] | MOD-02-EN-5240 | MAK-01-PR-1300 |
|  | 5 | **DISTRIBUTION PANNELS** |  | 2026-03-10 | 2026-05-06 |  |  |  |  |  |  |  |
| MLTX-02-005-EN-5260 |  | Pre-Qualification Submittal for Distribution Panels | 15d | 2026-03-10 A | 2026-04-30 A | MLTX-02-005-EN-4930, MLTX-02-005-EN-5210 | 100% | 2026-07-14 | 2026-07-30 | QA/QC Engineer [16.1 h] | MOD-02-EN-5260 | MAK-01-PR-LLI-1060 |
| MLTX-02-005-EN-5270 |  | Pre-Qualification Approval for Distribution Panels | 15d | 2026-03-14 A | 2026-05-06 A | MLTX-02-005-EN-5260, MLTX-02-005-EN-5670 | 100% | 2026-08-04 | 2026-08-20 | Consultant Staff [16.1 h] | MOD-02-EN-5270 | MAK-01-PR-LLI-1070 |
|  | PLG | **PLAYGROUND WORKS** |  | 2026-03-07 | 2026-06-07 |  |  |  |  |  |  |  |
|  | 5 | **PVC MEMBRANE** |  | 2026-03-07 | 2026-05-24 |  |  |  |  |  |  |  |
| MLTX-02-005-EN-5300 |  | Pre-Qualification Submittal for PVC Membrane | 15d | 2026-03-07 A | 2026-05-24 A | MLTX-02-005-EN-5020 SS | 100% | 2026-03-07 | 2026-03-26 | QA/QC Engineer [16.1 h] | MOD-02-EN-5300 | MAK-01-PR-1120 |
| MLTX-02-005-EN-5310 |  | Pre-Qualification Approval for PVC Membrane | 21d | 2026-03-10 A | 2026-05-20 A | MLTX-02-005-EN-5300, MLTX-02-005-EN-5730 | 100% | 2026-07-14 | 2026-08-06 | Consultant Staff [16.1 h] | MOD-02-EN-5310 | MAK-01-PR-1130 |
|  | 6 | **STEEL TENSION CABLES** |  | 2026-03-07 | 2026-05-24 |  |  |  |  |  |  |  |
| MLTX-02-005-EN-5330 |  | Pre-Qualification Submittal for Steel Tension Cables | 15d | 2026-03-07 A | 2026-05-20 A | MLTX-02-005-EN-5300 SS, MLTX-02-005-EN-5610 | 100% | 2026-05-02 | 2026-05-18 | QA/QC Engineer [16.1 h] | MOD-02-EN-5330 | MAK-01-PR-1120 |
| MLTX-02-005-EN-5340 |  | Pre-Qualification Approval for Steel Tension Cables | 15d | 2026-03-10 A | 2026-05-24 A | MLTX-02-005-EN-5330, MLTX-02-005-EN-5700 | 100% | 2026-06-27 | 2026-07-13 | Consultant Staff [16.1 h] | MOD-02-EN-5340 | MAK-01-PR-1120 |

| ID | WBS | Activity | Duration | Start | Finish | Predecessors | Complete | Planned start | Planned finish | Resources | New Activity ID | Old Activity ID - MK |
| --- | --- | --- | --- | --- | --- | --- | --- | --- | --- | --- | --- | --- |
|  | 7 | **EMERGENCY DOORS** |  | 2026-03-07 | 2026-05-24 |  |  |  |  |  |  |  |
| MLTX-02-005-EN-5360 |  | Pre-Qualification Submittal for Emergency Doors | 15d | 2026-03-07 A | 2026-05-20 A | MLTX-02-005-MB-1340, MLTX-02-005-EN-7810 | 100% | 2026-05-19 | 2026-06-08 | QA/QC Engineer [16.1 h] | MOD-02-EN-5360 | MAK-01-PR-1120 |
| MLTX-02-005-EN-5370 |  | Pre-Qualification Approval for Emergency Doors | 15d | 2026-03-10 A | 2026-05-24 A | MLTX-02-005-EN-5360, MLTX-02-005-EN-7150 | 100% | 2026-06-13 | 2026-06-29 | Consultant Staff [16.1 h] | MOD-02-EN-5370 | MAK-01-PR-1120 |
|  | 8 | **PRESSURE UNITS** |  | 2026-03-07 | 2026-05-24 |  |  |  |  |  |  |  |
| MLTX-02-005-EN-5390 |  | Pre-Qualification Submittal for Pressure Units | 15d | 2026-03-07 A | 2026-05-20 A | MLTX-02-005-MB-1340, MLTX-02-005-EN-5610 | 100% | 2026-05-02 | 2026-05-18 | QA/QC Engineer [16.1 h] | MOD-02-EN-5390 | MAK-01-PR-1120 |
| MLTX-02-005-EN-5400 |  | Pre-Qualification Approval for Pressure Units | 15d | 2026-03-10 A | 2026-05-24 A | MLTX-02-005-EN-5390, MLTX-02-005-EN-5690 | 100% | 2026-06-09 | 2026-06-25 | Consultant Staff [16.1 h] | MOD-02-EN-5400 | MAK-01-PR-1120 |
|  | 9 | **AIR LOCK DOORS** |  | 2026-03-07 | 2026-05-24 |  |  |  |  |  |  |  |
| MLTX-02-005-EN-5420 |  | Pre-Qualification Submittal for Lock Doors | 15d | 2026-03-07 A | 2026-05-20 A | MLTX-02-005-MB-1340, MLTX-02-005-EN-5610 | 100% | 2026-05-02 | 2026-05-18 | QA/QC Engineer [16.1 h] | MOD-02-EN-5420 | MAK-01-PR-1120 |
| MLTX-02-005-EN-5430 |  | Pre-Qualification Approval for Lock Doors | 15d | 2026-03-10 A | 2026-05-24 A | MLTX-02-005-EN-5420, MLTX-02-005-EN-5360 | 100% | 2026-06-09 | 2026-06-25 | Consultant Staff [16.1 h] | MOD-02-EN-5430 | MAK-01-PR-1120 |
|  | 15 | **ARTIFICIAL TURF** |  | 2026-03-07 | 2026-04-09 |  |  |  |  |  |  |  |
| MLTX-02-005-EN-5450 |  | Pre-Qualification Submittal for Artificial TURF | 15d | 2026-03-07 A | 2026-03-29 A | MLTX-02-005-MB-1340 | 100% | 2026-03-07 | 2026-03-26 | QA/QC Engineer [16.1 h] | MOD-02-EN-5450 | MAK-01-PR-1120 |
| MLTX-02-005-EN-5460 |  | Pre-Qualification Approval for Artificial TURF | 30d | 2026-03-10 A | 2026-04-09 A | MLTX-02-005-EN-5450 | 100% | 2026-03-28 | 2026-04-30 | Consultant Staff [16.1 h] | MOD-02-EN-5460 | MAK-01-PR-1120 |
|  | 20 | **RUBBER GRANULES** |  | 2026-03-07 | 2026-05-10 |  |  |  |  |  |  |  |
| MLTX-02-005-EN-5480 |  | Pre-Qualification Submittal for Rubber Granules | 15d | 2026-03-07 A | 2026-05-06 A | MLTX-02-005-MB-1340, MLTX-02-005-EN-5610 | 100% | 2026-05-02 | 2026-05-18 | QA/QC Engineer [16.1 h] | MOD-02-EN-5480 | MAK-01-PR-1120 |
| MLTX-02-005-EN-5490 |  | Pre-Qualification Approval for Rubber Granules | 21d | 2026-03-10 A | 2026-05-10 A | MLTX-02-005-EN-5480, MLTX-02-005-EN-5730 | 100% | 2026-07-14 | 2026-08-06 | Consultant Staff [16.1 h] | MOD-02-EN-5490 | MAK-01-PR-1120 |
|  | 21 | **PADEL GLASS** |  | 2026-03-07 | 2026-05-10 |  |  |  |  |  |  |  |
| MLTX-02-005-EN-5510 |  | Pre-Qualification Submittal for Padel Glass | 15d | 2026-03-07 A | 2026-05-06 A | MLTX-02-005-MB-1340, MLTX-02-005-EN-5610 | 100% | 2026-05-02 | 2026-05-18 | QA/QC Engineer [16.1 h] | MOD-02-EN-5510 | MAK-01-PR-1120 |
| MLTX-02-005-EN-5520 |  | Pre-Qualification Approval for Padel Glass | 15d | 2026-03-10 A | 2026-05-10 A | MLTX-02-005-EN-5510, MLTX-02-005-EN-5700 | 100% | 2026-06-27 | 2026-07-13 | Consultant Staff [16.1 h] | MOD-02-EN-5520 | MAK-01-PR-1120 |
|  | 22 | **PADEL WIRE MESH/STEEL SETS** |  | 2026-03-07 | 2026-05-10 |  |  |  |  |  |  |  |
| MLTX-02-005-EN-5540 |  | Pre-Qualification Submittal for Wire Mesh/Steel Sets | 15d | 2026-03-07 A | 2026-05-06 A | MLTX-02-005-MB-1340 | 100% | 2026-03-07 | 2026-03-26 | QA/QC Engineer [16.1 h] | MOD-02-EN-5540 | MAK-01-PR-1120 |
| MLTX-02-005-EN-5550 |  | Pre-Qualification Approval for Wire Mesh/Steel Sets | 15d | 2026-03-10 A | 2026-05-10 A | MLTX-02-005-EN-5540, MLTX-02-005-EN-5640 | 100% | 2026-06-27 | 2026-07-13 | Consultant Staff [16.1 h] | MOD-02-EN-5550 | MAK-01-PR-1120 |
|  | 1 | **AGGREGATE BASE COURSE** |  | 2026-03-07 | 2026-04-26 |  |  |  |  |  |  |  |
| MLTX-02-005-EN-5570 |  | Pre-Qualification Submittal for Aggregate Base Course | 15d | 2026-03-07 A | 2026-04-19 A | MLTX-02-005-MB-1340 | 100% | 2026-03-07 | 2026-03-26 | QA/QC Engineer [16.1 h] | MOD-02-EN-5570 | MAK-01-PR-1090 |
| MLTX-02-005-EN-5580 |  | Pre-Qualification Approval for Aggregate Base Course | 21d | 2026-03-10 A | 2026-04-26 A | MLTX-02-005-EN-5570 | 100% | 2026-03-28 | 2026-04-20 | Consultant Staff [16.1 h] | MOD-02-EN-5580 | MAK-01-PR-1100 |

| ID | WBS | Activity | Duration | Start | Finish | Predecessors | Complete | Planned start | Planned finish | Resources | New Activity ID | Old Activity ID - MK |
| --- | --- | --- | --- | --- | --- | --- | --- | --- | --- | --- | --- | --- |
|  | 16 | **PACKAGE AC UNITS** |  | 2026-03-10 | 2026-04-07 |  |  |  |  |  |  |  |
| MLTX-02-005-EN-5690 |  | Pre-Qualification Submittal for Package AC Units | 15d | 2026-03-10 A | 2026-04-01 A | MLTX-02-005-EN-5390, MLTX-02-005-EN-5420 | 100% | 2026-05-19 | 2026-06-08 | QA/QC Engineer [16.1 h] | MOD-02-EN-5690 | MAK-01-PR-1000 |
| MLTX-02-005-EN-5700 |  | Pre-Qualification Approval for Package AC Units | 15d | 2026-03-14 A | 2026-04-07 A | MLTX-02-005-EN-5690, MLTX-02-005-EN-5780 | 100% | 2026-06-09 | 2026-06-25 | Consultant Staff [16.1 h] | MOD-02-EN-5700 | MAK-01-PR-1010 |
|  | 17 | **AIR DIFUSSERS/GRILLS** |  | 2026-03-10 | 2026-04-30 |  |  |  |  |  |  |  |
| MLTX-02-005-EN-5720 |  | Pre-Qualification Submittal for Air Difussers/Grills | 15d | 2026-03-10 A | 2026-04-26 A | MLTX-02-005-EN-5420, MLTX-02-005-EN-5360 | 100% | 2026-06-09 | 2026-06-25 | QA/QC Engineer [16.1 h] | MOD-02-EN-5720 | MAK-01-PR-1000 |
| MLTX-02-005-EN-5730 |  | Pre-Qualification Approval for Air Difussers/Grills | 15d | 2026-03-14 A | 2026-04-30 A | MLTX-02-005-EN-5720, MLTX-02-005-EN-5360 | 100% | 2026-06-27 | 2026-07-13 | Consultant Staff [16.1 h] | MOD-02-EN-5730 | MAK-01-PR-1010 |
|  | 2 | **BITUMINOUS BASE & WEARING COURSE** |  | 2026-03-10 | 2026-04-26 |  |  |  |  |  |  |  |
| MLTX-02-005-EN-5600 |  | Pre-Qualification Submittal for Bituminous Base & Wearing Cource | 15d | 2026-03-10 A | 2026-04-19 A | MLTX-02-005-EN-5300 | 100% | 2026-03-28 | 2026-04-13 | QA/QC Engineer [16.1 h] | MOD-02-EN-5600 | MAK-01-PR-1120 |
| MLTX-02-005-EN-5610 |  | Pre-Qualification Approval for the Site | 15d | 2026-03-14 A | 2026-04-26 A | MLTX-02-005-EN-5600 | 100% | 2026-04-14 | 2026-04-30 | Consultant Staff [16.1 h] | MOD-02-EN-5610 | MAK-01-PR-1130 |
|  | 3 | **INTERLOCKING PAVING** |  | 2026-03-12 | 2026-03-24 |  |  |  |  |  |  |  |
| MLTX-02-005-EN-5630 |  | Pre-Qualification Submittal for Interlocking Block Pavers | 15d | 2026-03-12 A | 2026-03-15 A | MLTX-02-005-EN-5330, MLTX-02-005-EN-5390 | 100% | 2026-05-19 | 2026-06-08 | QA/QC Engineer [16.1 h] | MOD-02-EN-5630 | MAK-01-PR-1170 |
| MLTX-02-005-EN-5640 |  | Pre-Qualification Approval for Interlocking Block Pavers | 15d | 2026-03-16 A | 2026-03-24 A | MLTX-02-005-EN-5630, MLTX-02-005-EN-5690 | 100% | 2026-06-09 | 2026-06-25 | Consultant Staff [16.1 h] | MOD-02-EN-5640 | MAK-01-PR-1180 |
|  | 4 | **MARKING PAINT** |  | 2026-03-10 | 2026-05-09 |  |  |  |  |  |  |  |
| MLTX-02-005-EN-5660 |  | Pre-Qualification Submittal for Marking Paint | 15d | 2026-03-10 A | 2026-05-05 A | MLTX-02-005-EN-5360, MLTX-02-005-EN-5370 | 100% | 2026-06-30 | 2026-07-16 | QA/QC Engineer [16.1 h] | MOD-02-EN-5660 | MAK-01-PR-1120 |
| MLTX-02-005-EN-5670 |  | Pre-Qualification Approval for Marking Paint | 15d | 2026-03-14 A | 2026-05-09 A | MLTX-02-005-EN-5660, MLTX-02-005-EN-7030 | 100% | 2026-07-18 | 2026-08-03 | Consultant Staff [16.1 h] | MOD-02-EN-5670 | MAK-01-PR-1120 |
|  | 18 | **GALVANIZED DUCTS** |  | 2026-03-10 | 2026-04-30 |  |  |  |  |  |  |  |
| MLTX-02-005-EN-5750 |  | Pre-Qualification Submittal for Galvanized Duct | 15d | 2026-03-10 A | 2026-04-26 A | MLTX-02-005-EN-5720 SS, MLTX-02-005-EN-5360 | 100% | 2026-06-09 | 2026-06-25 | QA/QC Engineer [16.1 h] | MOD-02-EN-5750 | MAK-01-PR-1000 |
| MLTX-02-005-EN-5760 |  | Pre-Qualification Approval for Galvanized Duct | 15d | 2026-03-14 A | 2026-04-30 A | MLTX-02-005-EN-5750, MLTX-02-005-EN-5360 | 100% | 2026-06-27 | 2026-07-13 | Consultant Staff [16.1 h] | MOD-02-EN-5760 | MAK-01-PR-1010 |
|  | 19 | **EXHAUST FANS** |  | 2026-03-10 | 2026-04-08 |  |  |  |  |  |  |  |
| MLTX-02-005-EN-5780 |  | Pre-Qualification Submittal for Exhaust Fans | 15d | 2026-03-10 A | 2026-04-01 A | MLTX-02-005-EN-5450, MLTX-02-005-EN-5420 | 100% | 2026-05-19 | 2026-06-08 | QA/QC Engineer [16.1 h] | MOD-02-EN-5780 | MAK-01-PR-1000 |
| MLTX-02-005-EN-5790 |  | Pre-Qualification Approval for Exhaust Fans | 15d | 2026-03-14 A | 2026-04-08 A | MLTX-02-005-EN-5780, MLTX-02-005-EN-5360 | 100% | 2026-06-09 | 2026-06-25 | Consultant Staff [16.1 h] | MOD-02-EN-5790 | MAK-01-PR-1010 |
|  | 10 | **DISTRIBUTION BOARDS** |  | 2026-03-10 | 2026-06-07 |  |  |  |  |  |  |  |
| MLTX-02-005-EN-5810 |  | Pre-Qualification Submittal for Distribution Boards | 15d | 2026-03-10 A | 2026-05-25 A | MLTX-02-005-EN-5420, MLTX-02-005-EN-5360 | 100% | 2026-06-09 | 2026-06-25 | QA/QC Engineer [16.1 h] | MOD-02-EN-5810 | MAK-01-PR-1000 |
| MLTX-02-005-EN-5820 |  | Pre-Qualification Approval for Distribution Boards | 15d | 2026-03-14 A | 2026-06-07 A | MLTX-02-005-EN-5810, MLTX-02-005-EN-5360 | 100% | 2026-06-27 | 2026-07-13 | Consultant Staff [16.1 h] | MOD-02-EN-5820 | MAK-01-PR-1010 |

| ID | WBS | Activity | Duration | Start | Finish | Predecessors | Complete | Planned start | Planned finish | Resources | New Activity ID | Old Activity ID - MK |
| --- | --- | --- | --- | --- | --- | --- | --- | --- | --- | --- | --- | --- |
|  | 11 | **POWER CABLES** |  | 2026-03-10 | 2026-05-11 |  |  |  |  |  |  |  |
| MLTX-02-005-EN-5840 |  | Pre-Qualification Submittal for Power Cables | 15d | 2026-03-10 A | 2026-05-09 A | MLTX-02-005-EN-5540 | 100% | 2026-03-28 | 2026-04-13 | QA/QC Engineer [16.1 h] | MOD-02-EN-5840 | MAK-01-PR-1000 |
| MLTX-02-005-EN-5850 |  | Pre-Qualification Approval for Power Cables | 15d | 2026-03-14 A | 2026-05-11 A | MLTX-02-005-EN-5840 | 100% | 2026-04-14 | 2026-04-30 | Consultant Staff [16.1 h] | MOD-02-EN-5850 | MAK-01-PR-1010 |
|  | 12 | **LIGHT FIXTURES** |  | 2026-03-10 | 2026-06-07 |  |  |  |  |  |  |  |
| MLTX-02-005-EN-5870 |  | Pre-Qualification Submittal for Light Fixtures | 15d | 2026-03-10 A | 2026-05-25 A | MLTX-02-005-EN-5480, MLTX-02-005-EN-5420 | 100% | 2026-05-19 | 2026-06-08 | QA/QC Engineer [16.1 h] | MOD-02-EN-5870 | MAK-01-PR-1000 |
| MLTX-02-005-EN-5880 |  | Pre-Qualification Approval for Light Fixtures | 15d | 2026-03-14 A | 2026-06-07 A | MLTX-02-005-EN-5870, MLTX-02-005-EN-5360 | 100% | 2026-06-09 | 2026-06-25 | Consultant Staff [16.1 h] | MOD-02-EN-5880 | MAK-01-PR-1010 |
|  | 13 | **CCTV MATERIALS** |  | 2026-03-10 | 2026-06-07 |  |  |  |  |  |  |  |
| MLTX-02-005-EN-5900 |  | Pre-Qualification Submittal for CCTV | 15d | 2026-03-10 A | 2026-05-25 A | MLTX-02-005-EN-5510, MLTX-02-005-EN-5390 | 100% | 2026-05-19 | 2026-06-08 | QA/QC Engineer [16.1 h] | MOD-02-EN-5900 | MAK-01-PR-1000 |
| MLTX-02-005-EN-5910 |  | Pre-Qualification Approval for CCTV | 15d | 2026-03-14 A | 2026-06-07 A | MLTX-02-005-EN-5900, MLTX-02-005-EN-5690 | 100% | 2026-06-09 | 2026-06-25 | Consultant Staff [16.1 h] | MOD-02-EN-5910 | MAK-01-PR-1010 |
|  | 14 | **POWER OUTLETS/SWITCHES** |  | 2026-03-10 | 2026-06-07 |  |  |  |  |  |  |  |
| MLTX-02-005-EN-5930 |  | Pre-Qualification Submittal for Power Outlets/Switches | 15d | 2026-03-10 A | 2026-05-25 A | MLTX-02-005-EN-5570, MLTX-02-005-EN-5600 | 100% | 2026-04-14 | 2026-04-30 | QA/QC Engineer [16.1 h] | MOD-02-EN-5930 | MAK-01-PR-1000 |
| MLTX-02-005-EN-5940 |  | Pre-Qualification Approval for Power Outlets/Switches | 15d | 2026-03-14 A | 2026-06-07 A | MLTX-02-005-EN-5930, MLTX-02-005-EN-5610 | 100% | 2026-05-02 | 2026-05-18 | Consultant Staff [16.1 h] | MOD-02-EN-5940 | MAK-01-PR-1010 |
|  | LSC | **LANDSCAPE WORKS** |  | 2026-03-10 | 2026-05-11 |  |  |  |  |  |  |  |
|  | 7 | **INTERLOCKING PAVING** |  | 2026-03-12 | 2026-03-24 |  |  |  |  |  |  |  |
| MLTX-02-005-EN-5970 |  | Pre-Qualification Submittal for Interlocking Block Pavers | 15d | 2026-03-12 A | 2026-03-15 A | MLTX-02-005-EN-5570, MLTX-02-005-EN-6240 | 100% | 2026-04-14 | 2026-04-30 | QA/QC Engineer [16.1 h] | MOD-02-EN-5970 | MAK-01-PR-1170 |
| MLTX-02-005-EN-5980 |  | Pre-Qualification Approval for Interlocking Block Pavers | 15d | 2026-03-16 A | 2026-03-24 A | MLTX-02-005-EN-5970, MLTX-02-005-EN-6250 | 100% | 2026-05-02 | 2026-05-18 | Consultant Staff [16.1 h] | MOD-02-EN-5980 | MAK-01-PR-1180 |
|  | 9 | **CURBSTONE** |  | 2026-03-12 | 2026-03-24 |  |  |  |  |  |  |  |
| MLTX-02-005-EN-6000 |  | Pre-Qualification Submittal for Curbstone | 15d | 2026-03-12 A | 2026-03-15 A | MLTX-02-005-EN-5570 | 100% | 2026-03-28 | 2026-04-13 | QA/QC Engineer [16.1 h] | MOD-02-EN-6000 | MAK-01-PR-1260 |
| MLTX-02-005-EN-6010 |  | Pre-Qualification Approval for Curbstone | 15d | 2026-03-16 A | 2026-03-24 A | MLTX-02-005-EN-6000 | 100% | 2026-04-14 | 2026-04-30 | Consultant Staff [16.1 h] | MOD-02-EN-6010 | MAK-01-PR-1270 |
|  | 1 | **PAVEMENT MARKING** |  | 2026-03-10 | 2026-05-09 |  |  |  |  |  |  |  |
| MLTX-02-005-EN-6030 |  | Pre-Qualification Submittal for Pavement Markings | 15d | 2026-03-10 A | 2026-05-05 A | MLTX-02-005-EN-5570, MLTX-02-005-EN-6240 | 100% | 2026-04-14 | 2026-04-30 | QA/QC Engineer [16.1 h] | MOD-02-EN-6030 | MAK-01-PR-1200 |
| MLTX-02-005-EN-6040 |  | Pre-Qualification Approval for Pavement Markings | 15d | 2026-03-14 A | 2026-05-09 A | MLTX-02-005-EN-6030, MLTX-02-005-EN-6250 | 100% | 2026-05-02 | 2026-05-18 | Consultant Staff [16.1 h] | MOD-02-EN-6040 | MAK-01-PR-1210 |
|  | 2 | **TRAFFIC SIGNS** |  | 2026-03-10 | 2026-05-09 |  |  |  |  |  |  |  |
| MLTX-02-005-EN-6060 |  | Pre-Qualification Submittal for Traffic Signs | 15d | 2026-03-10 A | 2026-05-05 A | MLTX-02-005-EN-5570, MLTX-02-005-EN-6250 | 100% | 2026-05-02 | 2026-05-18 | QA/QC Engineer [16.1 h] | MOD-02-EN-6060 | MAK-01-PR-1230 |
| MLTX-02-005-EN-6070 |  | Pre-Qualification Approval for Traffic Signs | 15d | 2026-03-14 A | 2026-05-09 A | MLTX-02-005-EN-6060, MLTX-02-005-EN-6160 | 100% | 2026-05-19 | 2026-06-08 | Consultant Staff [16.1 h] | MOD-02-EN-6070 | MAK-01-PR-1240 |

| ID | WBS | Activity | Duration | Start | Finish | Predecessors | Complete | Planned start | Planned finish | Resources | New Activity ID | Old Activity ID - MK |
| --- | --- | --- | --- | --- | --- | --- | --- | --- | --- | --- | --- | --- |
|  | 3 | **IRRIGATION PIPES/SPRINKLERS** |  | 2026-03-10 | 2026-05-05 |  |  |  |  |  |  |  |
| MLTX-02-005-EN-6090 |  | Pre-Qualification Submittal for Irrigation Pipes/Sprinkles | 15d | 2026-03-10 A | 2026-04-14 A | MLTX-02-005-EN-5570 | 100% | 2026-03-28 | 2026-04-13 | QA/QC Engineer [16.1 h] | MOD-02-EN-6090 | MAK-01-PR-1260 |
| MLTX-02-005-EN-6100 |  | Pre-Qualification Approval for Irrigation Pipes/Sprinkles | 15d | 2026-03-14 A | 2026-05-05 A | MLTX-02-005-EN-6090 | 100% | 2026-04-14 | 2026-04-30 | Consultant Staff [16.1 h] | MOD-02-EN-6100 | MAK-01-PR-1270 |
|  | 5 | **AGRICULTURE SOIL** |  | 2026-03-10 | 2026-05-05 |  |  |  |  |  |  |  |
| MLTX-02-005-EN-6120 |  | Pre-Qualification Submittal for Agriculture Soil | 15d | 2026-03-10 A | 2026-04-14 A | MLTX-02-005-EN-5570, MLTX-02-005-EN-6060 | 100% | 2026-05-19 | 2026-06-08 | QA/QC Engineer [16.1 h] | MOD-02-EN-6120 | MAK-01-PR-1260 |
| MLTX-02-005-EN-6130 |  | Pre-Qualification Approval for Agriculture Soil | 15d | 2026-03-14 A | 2026-05-05 A | MLTX-02-005-EN-6120, MLTX-02-005-EN-6070 | 100% | 2026-06-09 | 2026-06-25 | Consultant Staff [16.1 h] | MOD-02-EN-6130 | MAK-01-PR-1270 |
|  | 8 | **TRACK SURFACE** |  | 2026-03-10 | 2026-05-05 |  |  |  |  |  |  |  |
| MLTX-02-005-EN-6150 |  | Pre-Qualification Submittal for Track Surface | 15d | 2026-03-10 A | 2026-04-19 A | MLTX-02-005-EN-5570, MLTX-02-005-EN-6240 | 100% | 2026-04-14 | 2026-04-30 | QA/QC Engineer [30 h] | MOD-02-EN-6150 | MAK-01-PR-1260 |
| MLTX-02-005-EN-6160 |  | Pre-Qualification Approval for Track Surface | 15d | 2026-03-14 A | 2026-05-05 A | MLTX-02-005-EN-6150, MLTX-02-005-EN-6250 | 100% | 2026-05-02 | 2026-05-18 | Consultant Staff [30 h] | MOD-02-EN-6160 | MAK-01-PR-1270 |
|  | 10 | **GRASS/TREES** |  | 2026-03-10 | 2026-05-05 |  |  |  |  |  |  |  |
| MLTX-02-005-EN-6180 |  | Pre-Qualification Submittal for Grass/Trees | 15d | 2026-03-10 A | 2026-04-14 A | MLTX-02-005-EN-5570, MLTX-02-005-EN-6250 | 100% | 2026-05-02 | 2026-05-18 | QA/QC Engineer [30 h] | MOD-02-EN-6180 | MAK-01-PR-1260 |
| MLTX-02-005-EN-6190 |  | Pre-Qualification Approval for Grass/Trees | 15d | 2026-03-14 A | 2026-05-05 A | MLTX-02-005-EN-6180, MLTX-02-005-EN-5050 | 100% | 2026-05-19 | 2026-06-08 | Consultant Staff [30 h] | MOD-02-EN-6190 | MAK-01-PR-1270 |
|  | 6 | **CABLES** |  | 2026-03-10 | 2026-05-11 |  |  |  |  |  |  |  |
| MLTX-02-005-EN-6210 |  | Pre-Qualification Submittal for Cables | 15d | 2026-03-10 A | 2026-05-09 A | MLTX-02-005-EN-5570, MLTX-02-005-EN-6060 | 100% | 2026-05-19 | 2026-06-08 | QA/QC Engineer [30 h] | MOD-02-EN-6210 | MAK-01-PR-1200 |
| MLTX-02-005-EN-6220 |  | Pre-Qualification Approval for Cables | 15d | 2026-03-14 A | 2026-05-11 A | MLTX-02-005-EN-6210, MLTX-02-005-EN-6070 | 100% | 2026-06-09 | 2026-06-25 | Consultant Staff [30 h] | MOD-02-EN-6220 | MAK-01-PR-1210 |
|  | 4 | **LIGHT POLES** |  | 2026-03-10 | 2026-04-30 |  |  |  |  |  |  |  |
| MLTX-02-005-EN-6240 |  | Pre-Qualification Submittal for Lighting poles | 15d | 2026-03-10 A | 2026-04-26 A | MLTX-02-005-EN-5570 | 100% | 2026-03-28 | 2026-04-13 | QA/QC Engineer [30 h] | MOD-02-EN-6240 | MAK-01-PR-LLI-1120 |
| MLTX-02-005-EN-6250 |  | Pre-Qualification Approval for Lighting poles | 15d | 2026-03-14 A | 2026-04-30 A | MLTX-02-005-EN-6240 | 100% | 2026-04-14 | 2026-04-30 | Consultant Staff [26.8 h] | MOD-02-EN-6250 | MAK-01-PR-LLI-1130 |
|  | MAT | **MATERIAL SUBMITTAL & APPROVAL** |  | 2026-03-18 | 2026-09-12 |  |  |  |  |  |  |  |
|  | TOI | **TOILET/SERVICE WORKS** |  | 2026-03-18 | 2026-07-11 |  |  |  |  |  |  |  |
|  | 1 | **STEEL REINFORCEMENT** |  | 2026-03-18 | 2026-04-12 |  |  |  |  |  |  |  |
| MLTX-02-005-EN-6290 |  | Material Submittal for Steel Reinforcement | 15d | 2026-03-18 A | 2026-04-07 A | MLTX-02-005-EN-4730 | 100% | 2026-04-14 | 2026-04-30 | QA/QC Engineer [16.1 h] | MOD-02-EN-6290 | MAK-01-PR-1000 |
| MLTX-02-005-EN-6300 |  | Material Approval for Steel Reinforcement | 15d | 2026-03-25 A | 2026-04-12 A | MLTX-02-005-EN-6290, MLTX-02-005-EN-6350 | 100% | 2026-07-14 | 2026-07-30 | Consultant Staff [16.1 h] | MOD-02-EN-6300 | MAK-01-PR-1010 |
|  | 2 | **READY MIX CONCRETE** |  | 2026-03-18 | 2026-04-12 |  |  |  |  |  |  |  |
| MLTX-02-005-EN-6320 |  | Material Submittal for Ready Mixed Concrete | 15d | 2026-03-18 A | 2026-04-07 A | MLTX-02-005-EN-4760 | 100% | 2026-04-14 | 2026-04-30 | QA/QC Engineer [16.1 h] | MOD-02-EN-6320 | MAK-01-PR-1040 |
| MLTX-02-005-EN-6330 |  | Material Approval of Ready Mixed Concrete | 15d | 2026-03-25 A | 2026-04-12 A | MLTX-02-005-EN-6320 | 100% | 2026-05-02 | 2026-05-18 | Consultant Staff [16.1 h] | MOD-02-EN-6330 | MAK-01-PR-1050 |

| ID | WBS | Activity | Duration | Start | Finish | Predecessors | Complete | Planned start | Planned finish | Resources | New Activity ID | Old Activity ID - MK |
| --- | --- | --- | --- | --- | --- | --- | --- | --- | --- | --- | --- | --- |
|  | 3 | **CONCRETE BLOCKS** |  | 2026-03-18 | 2026-05-11 |  |  |  |  |  |  |  |
| MLTX-02-005-EN-6350 |  | Material Submittal for Concrete Blocks | 15d | 2026-03-18 A | 2026-05-06 A | MLTX-02-005-EN-4790, MLTX-02-005-EN-7180 | 100% | 2026-06-27 | 2026-07-13 | QA/QC Engineer [16.1 h] | MOD-02-EN-6350 | MAK-01-PR-1000 |
| MLTX-02-005-EN-6360 |  | Material Approval for Concrete Blocks | 15d | 2026-03-25 A | 2026-05-11 A | MLTX-02-005-EN-6350, MLTX-02-005-EN-6410 | 100% | 2026-07-14 | 2026-07-30 | Consultant Staff [16.1 h] | MOD-02-EN-6360 | MAK-01-PR-1010 |
|  | 6 | **FLOOR/WALL TILES** |  | 2026-03-18 | 2026-05-17 |  |  |  |  |  |  |  |
| MLTX-02-005-EN-6410 |  | Material Submittal for Tilling Materials | 15d | 2026-03-18 A | 2026-05-13 A | MLTX-02-005-EN-4850, MLTX-02-005-EN-7180 | 100% | 2026-06-27 | 2026-07-13 | QA/QC Engineer [16.1 h] | MOD-02-EN-6410 | MAK-01-PR-1000 |
| MLTX-02-005-EN-6420 |  | Material Approval for Tilling Material | 15d | 2026-03-25 A | 2026-05-17 A | MLTX-02-005-EN-6410, MLTX-02-005-EN-6560 | 100% | 2026-07-14 | 2026-07-30 | Consultant Staff [16.1 h] | MOD-02-EN-6420 | MAK-01-PR-1010 |
|  | 7 | **SUSPENDED CEILING** |  | 2026-03-18 | 2026-04-19 |  |  |  |  |  |  |  |
| MLTX-02-005-EN-6440 |  | Material Submittal for Suspend Ceiling | 15d | 2026-03-18 A | 2026-04-15 A | MLTX-02-005-EN-4880, MLTX-02-005-EN-6560 | 100% | 2026-07-14 | 2026-07-30 | QA/QC Engineer [16.1 h] | MOD-02-EN-6440 | MAK-01-PR-1000 |
| MLTX-02-005-EN-6450 |  | Material Approval for Suspend Ceiling | 15d | 2026-03-25 A | 2026-04-19 A | MLTX-02-005-EN-6440, MLTX-02-005-EN-6560 | 100% | 2026-08-01 | 2026-08-17 | Consultant Staff [16.1 h] | MOD-02-EN-6450 | MAK-01-PR-1010 |
|  | 8 | **DOORS/WINDOWS** |  | 2026-03-18 | 2026-05-06 |  |  |  |  |  |  |  |
| MLTX-02-005-EN-6470 |  | Material Submittal for Doors/Windows | 15d | 2026-03-18 A | 2026-05-06 A | MLTX-02-005-EN-4910, MLTX-02-005-EN-7030 | 100% | 2026-07-14 | 2026-07-30 | QA/QC Engineer [16.1 h] | MOD-02-EN-6470 | MAK-01-PR-1000 |
| MLTX-02-005-EN-6480 |  | Material Approval for Doors/Windows | 15d | 2026-03-25 A | 2026-04-12 A | MLTX-02-005-EN-6470, MLTX-02-005-EN-6770 | 100% | 2026-08-01 | 2026-08-17 | Consultant Staff [16.1 h] | MOD-02-EN-6480 | MAK-01-PR-1010 |
|  | 9 | **FURNITURES** |  | 2026-03-18 | 2026-04-07 |  |  |  |  |  |  |  |
| MLTX-02-005-EN-6500 |  | Material Submittal for Furnitures | 15d | 2026-03-18 A | 2026-04-02 A | MLTX-02-005-EN-4940, MLTX-02-005-EN-6560 | 100% | 2026-07-14 | 2026-07-30 | QA/QC Engineer [16.1 h] | MOD-02-EN-6500 | MAK-01-PR-1000 |
| MLTX-02-005-EN-6510 |  | Material Approval for Furnitures | 15d | 2026-03-25 A | 2026-04-07 A | MLTX-02-005-EN-6500, MLTX-02-005-EN-6560 | 100% | 2026-08-01 | 2026-08-17 | Consultant Staff [16.1 h] | MOD-02-EN-6510 | MAK-01-PR-1010 |
|  | 10 | **SANITARY FIXTURES** |  | 2026-03-18 | 2026-04-16 |  |  |  |  |  |  |  |
| MLTX-02-005-EN-6530 |  | Material Submittal for Sanitary Fixtures | 15d | 2026-03-18 A | 2026-04-13 A | MLTX-02-005-EN-4970, MLTX-02-005-EN-6290 | 100% | 2026-05-02 | 2026-05-18 | QA/QC Engineer [16.1 h] | MOD-02-EN-6530 | MAK-01-PR-1000 |
| MLTX-02-005-EN-6540 |  | Material Approval for Sanitary Fixtures | 15d | 2026-03-25 A | 2026-04-16 A | MLTX-02-005-EN-6530, MLTX-02-005-EN-6330 | 100% | 2026-05-19 | 2026-06-08 | Consultant Staff [16.1 h] | MOD-02-EN-6540 | MAK-01-PR-1010 |
|  | 11 | **WATER SUPPLY PIPES** |  | 2026-03-18 | 2026-04-16 |  |  |  |  |  |  |  |
| MLTX-02-005-EN-6560 |  | Material Submittal for Water Supply Pipes | 15d | 2026-03-18 A | 2026-04-04 A | MLTX-02-005-EN-5000, MLTX-02-005-EN-7180 | 100% | 2026-06-27 | 2026-07-13 | QA/QC Engineer [16.1 h] | MOD-02-EN-6560 | MAK-01-PR-1000 |
| MLTX-02-005-EN-6570 |  | Material Approval for Water Supply Pipes | 15d | 2026-03-25 A | 2026-04-16 A | MLTX-02-005-EN-6560, MLTX-02-005-EN-6470 | 100% | 2026-08-01 | 2026-08-17 | Consultant Staff [16.1 h] | MOD-02-EN-6570 | MAK-01-PR-1010 |
|  | 12 | **SEWAGE/DRAINAGE PIPES** |  | 2026-03-18 | 2026-04-16 |  |  |  |  |  |  |  |
| MLTX-02-005-EN-6590 |  | Material Submittal for Sewage/Drainage Pipes | 15d | 2026-03-18 A | 2026-04-04 A | MLTX-02-005-EN-5030 | 100% | 2026-04-14 | 2026-04-30 | QA/QC Engineer [16.1 h] | MOD-02-EN-6590 | MAK-01-PR-1000 |
| MLTX-02-005-EN-6600 |  | Material Approval for Sewage/Drainage Pipes | 15d | 2026-03-25 A | 2026-04-16 A | MLTX-02-005-EN-6590 | 100% | 2026-05-02 | 2026-05-18 | Consultant Staff [16.1 h] | MOD-02-EN-6600 | MAK-01-PR-1010 |

| ID | WBS | Activity | Duration | Start | Finish | Predecessors | Complete | Planned start | Planned finish | Resources | New Activity ID | Old Activity ID - MK |
| --- | --- | --- | --- | --- | --- | --- | --- | --- | --- | --- | --- | --- |
|  | 16 | **PACKAGE AC UNITS** |  | 2026-06-21 | 2026-07-02 |  |  |  |  |  |  |  |
| MLTX-02-005-EN-6620 |  | Material Submittal for Package AC Units | 15d | 2026-06-21 A | 2026-06-21 A | MLTX-02-005-EN-5060, MLTX-02-005-EN-6810 | 100% | 2026-08-18 | 2026-09-03 | QA/QC Engineer [16.1 h] | MOD-02-EN-6620 | MAK-01-PR-1000 |
| MLTX-02-005-EN-6630 |  | Material Approval for Package AC Units | 15d | 2026-07-02 A | 2026-07-02 A | MLTX-02-005-EN-6620, MLTX-02-005-EN-6830 | 100% | 2026-09-08 | 2026-09-26 | Consultant Staff [16.1 h] | MOD-02-EN-6630 | MAK-01-PR-1010 |
|  | 17 | **AIR DIFUSSERS/GRILLS** |  | 2026-06-11 | 2026-06-11 |  |  |  |  |  |  |  |
| MLTX-02-005-EN-6650 |  | Material Submittal for Air Diffusers/Grills | 15d | 2026-06-11 A | 2026-06-11 A | MLTX-02-005-EN-5090, MLTX-02-005-EN-7030 | 100% | 2026-07-14 | 2026-07-30 | QA/QC Engineer [16.1 h] | MOD-02-EN-6650 | MAK-01-PR-1000 |
| MLTX-02-005-EN-6660 |  | Material Approval for Air Diffusers/Grills | 15d | 2026-06-11 A | 2026-06-11 A | MLTX-02-005-EN-6650, MLTX-02-005-EN-7030 | 100% | 2026-08-01 | 2026-08-17 | Consultant Staff [16.1 h] | MOD-02-EN-6660 | MAK-01-PR-1010 |
|  | 18 | **GALVANIZED DUCTS** |  | 2026-03-19 | 2026-05-10 |  |  |  |  |  |  |  |
| MLTX-02-005-EN-6680 |  | Material Submittal for Galvanized Ducts | 15d | 2026-03-19 A | 2026-05-06 A | MLTX-02-005-EN-5120 | 100% | 2026-05-02 | 2026-05-18 | QA/QC Engineer [16.1 h] | MOD-02-EN-6680 | MAK-01-PR-1000 |
| MLTX-02-005-EN-6690 |  | Material Approval for Galvanized Ducts | 15d | 2026-03-26 A | 2026-05-10 A | MLTX-02-005-EN-6680 | 100% | 2026-05-19 | 2026-06-08 | Consultant Staff [16.1 h] | MOD-02-EN-6690 | MAK-01-PR-1010 |
|  | 19 | **EXHAUST FANS** |  | 2026-06-11 | 2026-06-11 |  |  |  |  |  |  |  |
| MLTX-02-005-EN-6710 |  | Material Submittal for Exhaust Fans | 15d | 2026-06-11 A | 2026-06-11 A | MLTX-02-005-EN-5150 | 100% | 2026-05-02 | 2026-05-18 | QA/QC Engineer [16.1 h] | MOD-02-EN-6710 | MAK-01-PR-1000 |
| MLTX-02-005-EN-6720 |  | Material Approval for Exhaust Fans | 15d | 2026-06-11 A | 2026-06-11 A | MLTX-02-005-EN-6710 | 100% | 2026-05-19 | 2026-06-08 | Consultant Staff [16.1 h] | MOD-02-EN-6720 | MAK-01-PR-1010 |
|  | 13 | **LIGHTING FIXTURES** |  | 2026-07-11 | 2026-07-11 |  |  |  |  |  |  |  |
| MLTX-02-005-EN-6740 |  | Material Submittal for Lighting Fixtures | 15d | 2026-07-11 A | 2026-07-11 A | MLTX-02-005-EN-5180 | 100% | 2026-05-02 | 2026-05-18 | QA/QC Engineer [16.1 h] | MOD-02-EN-6740 | MAK-01-PR-1000 |
| MLTX-02-005-EN-6750 |  | Material Approval for Lighting Fixtures | 15d | 2026-07-11 A | 2026-07-11 A | MLTX-02-005-EN-6740 | 100% | 2026-05-19 | 2026-06-08 | Consultant Staff [16.1 h] | MOD-02-EN-6750 | MAK-01-PR-1010 |
|  | 14 | **SWITCHES/SOCKETS** |  | 2026-06-25 | 2026-06-27 |  |  |  |  |  |  |  |
| MLTX-02-005-EN-6770 |  | Material Submittal for Switches/Sockets | 15d | 2026-06-25 A | 2026-06-25 A | MLTX-02-005-EN-5210, MLTX-02-005-EN-7030 | 100% | 2026-07-14 | 2026-07-30 | QA/QC Engineer [16.1 h] | MOD-02-EN-6770 | MAK-01-PR-1000 |
| MLTX-02-005-EN-6780 |  | Material Approval for Switches/Sockets | 15d | 2026-06-27 A | 2026-06-27 A | MLTX-02-005-EN-6770, MLTX-02-005-EN-6650 | 100% | 2026-08-01 | 2026-08-17 | Consultant Staff [16.1 h] | MOD-02-EN-6780 | MAK-01-PR-1010 |
|  | 15 | **EARTHING SYSTEM** |  | 2026-03-19 | 2026-05-19 |  |  |  |  |  |  |  |
| MLTX-02-005-EN-6800 |  | Material Submittal for Earthing System | 15d | 2026-03-19 A | 2026-05-14 A | MLTX-02-005-EN-5240, MLTX-02-005-EN-6560 | 100% | 2026-07-14 | 2026-07-30 | QA/QC Engineer [16.1 h] | MOD-02-EN-6800 | MAK-01-PR-1290 |
| MLTX-02-005-EN-6810 |  | Material Approval for Earthing System | 15d | 2026-03-26 A | 2026-05-19 A | MLTX-02-005-EN-6800, MLTX-02-005-EN-6470 | 100% | 2026-08-01 | 2026-08-17 | Consultant Staff [16.1 h] | MOD-02-EN-6810 | MAK-01-PR-1300 |
|  | 5 | **DISTRIBUTION PANNELS** |  | 2026-03-19 | 2026-06-18 |  |  |  |  |  |  |  |
| MLTX-02-005-EN-6830 |  | Material Submittal for Distribution Panels | 15d | 2026-03-19 A | 2026-05-11 A | MLTX-02-005-EN-5270, MLTX-02-005-EN-6480 | 100% | 2026-08-22 | 2026-09-07 | QA/QC Engineer [16.1 h] | MOD-02-EN-6830 | MAK-01-PR-LLI-1060 |
| MLTX-02-005-EN-6840 |  | Material Approval for Distribution Panels | 15d | 2026-06-18 A | 2026-06-18 A | MLTX-02-005-EN-6830, MLTX-02-005-EN-7240 | 100% | 2026-09-08 | 2026-09-26 | Consultant Staff [16.1 h] | MOD-02-EN-6840 | MAK-01-PR-LLI-1070 |

| ID | WBS | Activity | Duration | Start | Finish | Predecessors | Complete | Planned start | Planned finish | Resources | New Activity ID | Old Activity ID - MK |
| --- | --- | --- | --- | --- | --- | --- | --- | --- | --- | --- | --- | --- |
|  | PLG | **PLAYGROUND WORKS** |  | 2026-03-18 | 2026-09-12 |  |  |  |  |  |  |  |
|  | 5 | **PVC MEMBRANE** |  | 2026-08-26 | 2026-08-26 |  |  |  |  |  |  |  |
| MLTX-02-005-EN-6870 |  | Material Submittal for PVC Membrane | 21d | 2026-08-26 A | 2026-08-26 A | MLTX-02-005-EN-5310, MLTX-02-005-EN-7200 | 100% | 2026-08-08 | 2026-08-31 | QA/QC Engineer [16.1 h] | MOD-02-EN-6870 | MAK-01-PR-1120 |
| MLTX-02-005-EN-6880 |  | Material Approval for PVC Membrane | 21d | 2026-08-26 A | 2026-08-26 A | MLTX-02-005-EN-6870, MLTX-02-005-EN-7050 | 100% | 2026-09-01 | 2026-09-26 | Consultant Staff [16.1 h] | MOD-02-EN-6880 | MAK-01-PR-1130 |
|  | 6 | **STEEL TENSION CABLES** |  | 2026-08-26 | 2026-08-26 |  |  |  |  |  |  |  |
| MLTX-02-005-EN-6900 |  | Material Submittal for Steel Tension Cables | 15d | 2026-08-26 A | 2026-08-26 A | MLTX-02-005-EN-5340, MLTX-02-005-EN-7030 | 100% | 2026-07-14 | 2026-07-30 | QA/QC Engineer [16.1 h] | MOD-02-EN-6900 | MAK-01-PR-1120 |
| MLTX-02-005-EN-6910 |  | Material Approval for Steel Tension Cables | 15d | 2026-08-26 A | 2026-08-26 A | MLTX-02-005-EN-6900, MLTX-02-005-EN-7260 | 100% | 2026-08-01 | 2026-08-17 | Consultant Staff [16.1 h] | MOD-02-EN-6910 | MAK-01-PR-1120 |
|  | 7 | **EMERGENCY DOORS** |  | 2026-08-26 | 2026-09-12 |  |  |  |  |  |  |  |
| MLTX-02-005-EN-6930 |  | Material Submittal for Emergency Doors | 15d | 2026-08-26 A | 2026-08-26 A | MLTX-02-005-EN-5370, MLTX-02-005-EN-7030 | 100% | 2026-07-14 | 2026-07-30 | QA/QC Engineer [16.1 h] | MOD-02-EN-6930 | MAK-01-PR-1120 |
| MLTX-02-005-EN-6940 |  | Material Approval for Emergency Doors | 15d | 2026-09-12 A | 2026-09-12 A | MLTX-02-005-EN-6930, MLTX-02-005-EN-1970 | 100% | 2026-08-01 | 2026-08-17 | Consultant Staff [16.1 h] | MOD-02-EN-6940 | MAK-01-PR-1120 |
|  | 8 | **PRESSURE UNITS** |  | 2026-09-12 | 2026-09-12 |  |  |  |  |  |  |  |
| MLTX-02-005-EN-6960 |  | Material Submittal for Pressure Units | 15d | 2026-09-12 A | 2026-09-12 A | MLTX-02-005-EN-5400, MLTX-02-005-EN-7030 | 100% | 2026-07-14 | 2026-07-30 | QA/QC Engineer [16.1 h] | MOD-02-EN-6960 | MAK-01-PR-1120 |
| MLTX-02-005-EN-6970 |  | Material Approval for Pressure Units | 15d | 2026-09-12 A | 2026-09-12 A | MLTX-02-005-EN-6960, MLTX-02-005-EN-7030 | 100% | 2026-08-01 | 2026-08-17 | Consultant Staff [16.1 h] | MOD-02-EN-6970 | MAK-01-PR-1120 |
|  | 9 | **AIR LOCK DOORS** |  | 2026-08-26 | 2026-09-12 |  |  |  |  |  |  |  |
| MLTX-02-005-EN-6990 |  | Material Submittal for Lock Doors | 15d | 2026-08-26 A | 2026-08-26 A | MLTX-02-005-EN-5430, MLTX-02-005-EN-7030 | 100% | 2026-07-14 | 2026-07-30 | QA/QC Engineer [16.1 h] | MOD-02-EN-6990 | MAK-01-PR-1120 |
| MLTX-02-005-EN-7000 |  | Material Approval for Lock Doors | 15d | 2026-09-12 A | 2026-09-12 A | MLTX-02-005-EN-6990, MLTX-02-005-EN-7030 | 100% | 2026-08-01 | 2026-08-17 | Consultant Staff [16.1 h] | MOD-02-EN-7000 | MAK-01-PR-1120 |
|  | 15 | **ARTIFICIAL TURF** |  | 2026-03-18 | 2026-05-19 |  |  |  |  |  |  |  |
| MLTX-02-005-EN-7020 |  | Material Submittal for Artificial TURF | 30d | 2026-03-18 A | 2026-05-14 A | MLTX-02-005-EN-5460 | 100% | 2026-05-02 | 2026-06-08 | QA/QC Engineer [16.1 h] | MOD-02-EN-7020 | MAK-01-PR-1120 |
| MLTX-02-005-EN-7030 |  | Material Approval for Artificial TURF | 30d | 2026-03-25 A | 2026-05-19 A | MLTX-02-005-EN-7020 | 100% | 2026-06-09 | 2026-07-13 | Consultant Staff [16.1 h] | MOD-02-EN-7030 | MAK-01-PR-1120 |
|  | 20 | **RUBBER GRANULES** |  | 2026-03-18 | 2026-05-19 |  |  |  |  |  |  |  |
| MLTX-02-005-EN-7050 |  | Material Submittal for Rubber Granules | 21d | 2026-03-18 A | 2026-05-14 A | MLTX-02-005-EN-5490, MLTX-02-005-EN-7290 | 100% | 2026-08-08 | 2026-08-31 | QA/QC Engineer [16.1 h] | MOD-02-EN-7050 | MAK-01-PR-1120 |
| MLTX-02-005-EN-7060 |  | Material Approval for Rubber Granules | 21d | 2026-03-25 A | 2026-05-19 A | MLTX-02-005-EN-7050, MLTX-02-005-EN-7240 | 100% | 2026-09-08 | 2026-10-03 | Consultant Staff [16.1 h] | MOD-02-EN-7060 | MAK-01-PR-1120 |
|  | 21 | **PADEL GLASS** |  | 2026-03-18 | 2026-05-19 |  |  |  |  |  |  |  |
| MLTX-02-005-EN-7080 |  | Material Submittal for Padel Glass | 15d | 2026-03-18 A | 2026-05-14 A | MLTX-02-005-EN-5520, MLTX-02-005-EN-7030 | 100% | 2026-07-14 | 2026-07-30 | QA/QC Engineer [16.1 h] | MOD-02-EN-7080 | MAK-01-PR-1120 |
| MLTX-02-005-EN-7090 |  | Material Approval for Padel Glass | 15d | 2026-03-25 A | 2026-05-19 A | MLTX-02-005-EN-7080, MLTX-02-005-EN-7260 | 100% | 2026-08-01 | 2026-08-17 | Consultant Staff [16.1 h] | MOD-02-EN-7090 | MAK-01-PR-1120 |

| ID | WBS | Activity | Duration | Start | Finish | Predecessors | Complete | Planned start | Planned finish | Resources | New Activity ID | Old Activity ID - MK |
| --- | --- | --- | --- | --- | --- | --- | --- | --- | --- | --- | --- | --- |
|  | 22 | **PADEL WIRE MESH/STEEL SETS** |  | 2026-03-18 | 2026-05-19 |  |  |  |  |  |  |  |
| MLTX-02-005-EN-7110 |  | Material Submittal for Wire Mesh/Steel Sets | 15d | 2026-03-18 A | 2026-05-14 A | MLTX-02-005-EN-5550, MLTX-02-005-EN-7030 | 100% | 2026-07-14 | 2026-07-30 | QA/QC Engineer [16.1 h] | MOD-02-EN-7110 | MAK-01-PR-1120 |
| MLTX-02-005-EN-7120 |  | Material Approval for Wire Mesh/Steel Sets | 15d | 2026-03-25 A | 2026-05-19 A | MLTX-02-005-EN-7110, MLTX-02-005-EN-7200 | 100% | 2026-08-01 | 2026-08-17 | Consultant Staff [16.1 h] | MOD-02-EN-7120 | MAK-01-PR-1120 |
|  | 1 | **AGGREGATE BASE COURSE** |  | 2026-03-18 | 2026-05-03 |  |  |  |  |  |  |  |
| MLTX-02-005-EN-7140 |  | Material Submittal for Aggregate Base Course | 21d | 2026-03-18 A | 2026-04-30 A | MLTX-02-005-EN-5580 | 100% | 2026-04-21 | 2026-05-14 | QA/QC Engineer [16.1 h] | MOD-02-EN-7140 | MAK-01-PR-1090 |
| MLTX-02-005-EN-7150 |  | Material Approval for Aggregate Base Course | 21d | 2026-03-25 A | 2026-05-03 A | MLTX-02-005-EN-7140 | 100% | 2026-05-16 | 2026-06-11 | Consultant Staff [16.1 h] | MOD-02-EN-7150 | MAK-01-PR-1100 |
|  | 16 | **PACKAGE AC UNITS** |  | 2026-07-11 | 2026-07-11 |  |  |  |  |  |  |  |
| MLTX-02-005-EN-7260 |  | Material Submittal for Package AC Units | 15d | 2026-07-11 A | 2026-07-11 A | MLTX-02-005-EN-5700, MLTX-02-005-EN-7030 | 100% | 2026-07-14 | 2026-07-30 | QA/QC Engineer [16.1 h] | MOD-02-EN-7260 | MAK-01-PR-1000 |
| MLTX-02-005-EN-7270 |  | Material Approval for Package AC Units | 15d | 2026-07-11 A | 2026-07-11 A | MLTX-02-005-EN-7260, MLTX-02-005-EN-7030 | 100% | 2026-08-01 | 2026-08-17 | Consultant Staff [16.1 h] | MOD-02-EN-7270 | MAK-01-PR-1010 |
|  | 17 | **AIR DIFUSSERS/GRILLS** |  | 2026-09-12 | 2026-09-12 |  |  |  |  |  |  |  |
| MLTX-02-005-EN-7290 |  | Material Submittal for Air Difussers/Grills | 15d | 2026-09-12 A | 2026-09-12 A | MLTX-02-005-EN-5730, MLTX-02-005-EN-7030 | 100% | 2026-07-14 | 2026-07-30 | QA/QC Engineer [16.1 h] | MOD-02-EN-7290 | MAK-01-PR-1000 |
| MLTX-02-005-EN-7300 |  | Material Approval for Air Difussers/Grills | 15d | 2026-09-12 A | 2026-09-12 A | MLTX-02-005-EN-7290, MLTX-02-005-EN-7030 | 100% | 2026-08-01 | 2026-08-17 | Consultant Staff [16.1 h] | MOD-02-EN-7300 | MAK-01-PR-1010 |
|  | 2 | **BITUMINOUS BASE & WEARING COURSE** |  | 2026-03-19 | 2026-05-04 |  |  |  |  |  |  |  |
| MLTX-02-005-EN-7170 |  | Material Submittal for Bituminous Base & Wearing Cource | 15d | 2026-03-19 A | 2026-04-30 A | MLTX-02-005-EN-5610, MLTX-02-005-EN-7140 | 100% | 2026-05-16 | 2026-06-04 | QA/QC Engineer [16.1 h] | MOD-02-EN-7170 | MAK-01-PR-1120 |
| MLTX-02-005-EN-7180 |  | Material Approval for the Site | 15d | 2026-03-26 A | 2026-05-04 A | MLTX-02-005-EN-7170, MLTX-02-005-EN-7420 | 100% | 2026-06-09 | 2026-06-25 | Consultant Staff [16.1 h] | MOD-02-EN-7180 | MAK-01-PR-1130 |
|  | 3 | **INTERLOCKING PAVING** |  | 2026-03-19 | 2026-05-10 |  |  |  |  |  |  |  |
| MLTX-02-005-EN-7200 |  | Material Submittal for Interlocking Block Pavers | 15d | 2026-03-19 A | 2026-05-05 A | MLTX-02-005-EN-5640, MLTX-02-005-EN-7030 | 100% | 2026-07-14 | 2026-07-30 | QA/QC Engineer [16.1 h] | MOD-02-EN-7200 | MAK-01-PR-1170 |
| MLTX-02-005-EN-7210 |  | Material Approval for Interlocking Block Pavers | 15d | 2026-03-26 A | 2026-05-10 A | MLTX-02-005-EN-7200, MLTX-02-005-EN-7030 | 100% | 2026-08-01 | 2026-08-17 | Consultant Staff [16.1 h] | MOD-02-EN-7210 | MAK-01-PR-1180 |
|  | 4 | **MARKING PAINT** |  | 2026-03-19 | 2026-05-18 |  |  |  |  |  |  |  |
| MLTX-02-005-EN-7230 |  | Material Submittal for Marking Paint | 15d | 2026-03-19 A | 2026-05-13 A | MLTX-02-005-EN-5670, MLTX-02-005-EN-6930 | 100% | 2026-08-04 | 2026-08-20 | QA/QC Engineer [16.1 h] | MOD-02-EN-7230 | MAK-01-PR-1120 |
| MLTX-02-005-EN-7240 |  | Material Approval for Marking Paint | 15d | 2026-03-26 A | 2026-05-18 A | MLTX-02-005-EN-7230, MLTX-02-005-EN-6940 | 100% | 2026-08-22 | 2026-09-07 | Consultant Staff [16.1 h] | MOD-02-EN-7240 | MAK-01-PR-1120 |
|  | 18 | **GALVANIZED DUCTS** |  | 2026-03-19 | 2026-05-10 |  |  |  |  |  |  |  |
| MLTX-02-005-EN-7320 |  | Material Submittal for Galvanized Duct | 15d | 2026-03-19 A | 2026-05-06 A | MLTX-02-005-EN-5760, MLTX-02-005-EN-7030 | 100% | 2026-07-14 | 2026-07-30 | QA/QC Engineer [16.1 h] | MOD-02-EN-7320 | MAK-01-PR-1000 |
| MLTX-02-005-EN-7330 |  | Material Approval for Galvanized Duct | 15d | 2026-03-26 A | 2026-05-10 A | MLTX-02-005-EN-7320, MLTX-02-005-EN-7030 | 100% | 2026-08-01 | 2026-08-17 | Consultant Staff [16.1 h] | MOD-02-EN-7330 | MAK-01-PR-1010 |

| ID | WBS | Activity | Duration | Start | Finish | Predecessors | Complete | Planned start | Planned finish | Resources | New Activity ID | Old Activity ID - MK |
| --- | --- | --- | --- | --- | --- | --- | --- | --- | --- | --- | --- | --- |
|  | 19 | **EXHAUST FANS** |  | 2026-06-11 | 2026-06-11 |  |  |  |  |  |  |  |
| MLTX-02-005-EN-7350 |  | Material Submittal for Exhaust Fans | 15d | 2026-06-11 A | 2026-06-11 A | MLTX-02-005-EN-5790, MLTX-02-005-EN-7030 | 100% | 2026-07-14 | 2026-07-30 | QA/QC Engineer [16.1 h] | MOD-02-EN-7350 | MAK-01-PR-1000 |
| MLTX-02-005-EN-7360 |  | Material Approval for Exhaust Fans | 15d | 2026-06-11 A | 2026-06-11 A | MLTX-02-005-EN-7350, MLTX-02-005-EN-7030 | 100% | 2026-08-01 | 2026-08-17 | Consultant Staff [16.1 h] | MOD-02-EN-7360 | MAK-01-PR-1010 |
|  | 10 | **DISTRIBUTION BOARDS** |  | 2026-06-15 | 2026-06-18 |  |  |  |  |  |  |  |
| MLTX-02-005-EN-7380 |  | Material Submittal for Distribution Boards | 15d | 2026-06-15 A | 2026-06-15 A | MLTX-02-005-EN-5820, MLTX-02-005-EN-7030 | 100% | 2026-07-14 | 2026-07-30 | QA/QC Engineer [16.1 h] | MOD-02-EN-7380 | MAK-01-PR-1000 |
| MLTX-02-005-EN-7390 |  | Material Approval for Distribution Boards | 15d | 2026-06-18 A | 2026-06-18 A | MLTX-02-005-EN-7380, MLTX-02-005-EN-7030 | 100% | 2026-08-01 | 2026-08-17 | Consultant Staff [16.1 h] | MOD-02-EN-7390 | MAK-01-PR-1010 |
|  | 11 | **POWER CABLES** |  | 2026-03-19 | 2026-05-19 |  |  |  |  |  |  |  |
| MLTX-02-005-EN-7410 |  | Material Submittal for Power Cables | 15d | 2026-03-19 A | 2026-05-14 A | MLTX-02-005-EN-5850 | 100% | 2026-05-02 | 2026-05-18 | QA/QC Engineer [16.1 h] | MOD-02-EN-7410 | MAK-01-PR-1000 |
| MLTX-02-005-EN-7420 |  | Material Approval for Power Cables | 15d | 2026-03-26 A | 2026-05-19 A | MLTX-02-005-EN-7410 | 100% | 2026-05-19 | 2026-06-08 | Consultant Staff [16.1 h] | MOD-02-EN-7420 | MAK-01-PR-1010 |
|  | 12 | **LIGHT FIXTURES** |  | 2026-07-11 | 2026-07-11 |  |  |  |  |  |  |  |
| MLTX-02-005-EN-7440 |  | Material Submittal for Light Fixtures | 15d | 2026-07-11 A | 2026-07-11 A | MLTX-02-005-EN-5880, MLTX-02-005-EN-7030 | 100% | 2026-07-14 | 2026-07-30 | QA/QC Engineer [16.1 h] | MOD-02-EN-7440 | MAK-01-PR-1000 |
| MLTX-02-005-EN-7450 |  | Material Approval for Light Fixtures | 15d | 2026-07-11 A | 2026-07-11 A | MLTX-02-005-EN-7440, MLTX-02-005-EN-7030 | 100% | 2026-08-01 | 2026-08-17 | Consultant Staff [16.1 h] | MOD-02-EN-7450 | MAK-01-PR-1010 |
|  | 13 | **CCTV MATERIALS** |  | 2026-08-26 | 2026-09-12 |  |  |  |  |  |  |  |
| MLTX-02-005-EN-7470 |  | Material Submittal for CCTV | 15d | 2026-08-26 A | 2026-08-26 A | MLTX-02-005-EN-5910, MLTX-02-005-EN-7030 | 100% | 2026-07-14 | 2026-07-30 | QA/QC Engineer [16.1 h] | MOD-02-EN-7470 | MAK-01-PR-1000 |
| MLTX-02-005-EN-7480 |  | Material Approval for CCTV | 15d | 2026-09-12 A | 2026-09-12 A | MLTX-02-005-EN-7470, MLTX-02-005-EN-7030 | 100% | 2026-08-01 | 2026-08-17 | Consultant Staff [16.1 h] | MOD-02-EN-7480 | MAK-01-PR-1010 |
|  | 14 | **POWER OUTLETS/SWITCHES** |  | 2026-06-25 | 2026-06-27 |  |  |  |  |  |  |  |
| MLTX-02-005-EN-7500 |  | Material Submittal for Power Outlets/Switches | 15d | 2026-06-25 A | 2026-06-25 A | MLTX-02-005-EN-5940, MLTX-02-005-EN-7140 | 100% | 2026-05-19 | 2026-06-08 | QA/QC Engineer [16.1 h] | MOD-02-EN-7500 | MAK-01-PR-1000 |
| MLTX-02-005-EN-7510 |  | Material Approval for Power Outlets/Switches | 15d | 2026-06-27 A | 2026-06-27 A | MLTX-02-005-EN-7500, MLTX-02-005-EN-7170 | 100% | 2026-06-09 | 2026-06-25 | Consultant Staff [16.1 h] | MOD-02-EN-7510 | MAK-01-PR-1010 |
|  | LSC | **LANDSCAPE WORKS** |  | 2026-03-19 | 2026-07-11 |  |  |  |  |  |  |  |
|  | 7 | **INTERLOCKING PAVING** |  | 2026-03-19 | 2026-05-10 |  |  |  |  |  |  |  |
| MLTX-02-005-EN-7540 |  | Material Submittal for Interlocking Block Pavers | 15d | 2026-03-19 A | 2026-05-05 A | MLTX-02-005-EN-5980, MLTX-02-005-EN-7810 | 100% | 2026-05-19 | 2026-06-08 | QA/QC Engineer [16.1 h] | MOD-02-EN-7540 | MAK-01-PR-1170 |
| MLTX-02-005-EN-7550 |  | Material Approval for Interlocking Block Pavers | 15d | 2026-03-26 A | 2026-05-10 A | MLTX-02-005-EN-7540, MLTX-02-005-EN-7820 | 100% | 2026-06-09 | 2026-06-25 | Consultant Staff [16.1 h] | MOD-02-EN-7550 | MAK-01-PR-1180 |
|  | 9 | **CURBSTONE** |  | 2026-03-19 | 2026-05-11 |  |  |  |  |  |  |  |
| MLTX-02-005-EN-7570 |  | Material Submittal for Curbstone | 15d | 2026-03-19 A | 2026-05-05 A | MLTX-02-005-EN-6010 | 100% | 2026-05-02 | 2026-05-18 | QA/QC Engineer [16.1 h] | MOD-02-EN-7570 | MAK-01-PR-1260 |
| MLTX-02-005-EN-7580 |  | Material Approval for Curbstone | 15d | 2026-03-26 A | 2026-05-11 A | MLTX-02-005-EN-7570 | 100% | 2026-05-19 | 2026-06-08 | Consultant Staff [16.1 h] | MOD-02-EN-7580 | MAK-01-PR-1270 |

| ID | WBS | Activity | Duration | Start | Finish | Predecessors | Complete | Planned start | Planned finish | Resources | New Activity ID | Old Activity ID - MK |
| --- | --- | --- | --- | --- | --- | --- | --- | --- | --- | --- | --- | --- |
|  | 1 | **PAVEMENT MARKING** |  | 2026-03-19 | 2026-05-18 |  |  |  |  |  |  |  |
| MLTX-02-005-EN-7600 |  | Material Submittal for Pavement Markings | 15d | 2026-03-19 A | 2026-05-12 A | MLTX-02-005-EN-6040, MLTX-02-005-EN-7810 | 100% | 2026-05-19 | 2026-06-08 | QA/QC Engineer [16.1 h] | MOD-02-EN-7600 | MAK-01-PR-1200 |
| MLTX-02-005-EN-7610 |  | Material Approval for Pavement Markings | 15d | 2026-03-26 A | 2026-05-18 A | MLTX-02-005-EN-7600, MLTX-02-005-EN-7820 | 100% | 2026-06-09 | 2026-06-25 | Consultant Staff [16.1 h] | MOD-02-EN-7610 | MAK-01-PR-1210 |
|  | 2 | **TRAFFIC SIGNS** |  | 2026-03-19 | 2026-05-18 |  |  |  |  |  |  |  |
| MLTX-02-005-EN-7630 |  | Material Submittal for Traffic Signs | 15d | 2026-03-19 A | 2026-05-12 A | MLTX-02-005-EN-6070, MLTX-02-005-EN-7820 | 100% | 2026-06-09 | 2026-06-25 | QA/QC Engineer [16.1 h] | MOD-02-EN-7630 | MAK-01-PR-1230 |
| MLTX-02-005-EN-7640 |  | Material Approval for Traffic Signs | 15d | 2026-03-26 A | 2026-05-18 A | MLTX-02-005-EN-7630, MLTX-02-005-EN-7730 | 100% | 2026-06-27 | 2026-07-13 | Consultant Staff [16.1 h] | MOD-02-EN-7640 | MAK-01-PR-1240 |
|  | 3 | **IRRIGATION PIPES/SPRINKLERS** |  | 2026-06-16 | 2026-06-18 |  |  |  |  |  |  |  |
| MLTX-02-005-EN-7660 |  | Material Submittal for Irrigation Pipes/Sprinkles | 15d | 2026-06-16 A | 2026-06-16 A | MLTX-02-005-EN-6100 | 100% | 2026-05-02 | 2026-05-18 | QA/QC Engineer [16.1 h] | MOD-02-EN-7660 | MAK-01-PR-1260 |
| MLTX-02-005-EN-7670 |  | Material Approval for Irrigation Pipes/Sprinkles | 15d | 2026-06-18 A | 2026-06-18 A | MLTX-02-005-EN-7660 | 100% | 2026-05-19 | 2026-06-08 | Consultant Staff [16.1 h] | MOD-02-EN-7670 | MAK-01-PR-1270 |
|  | 5 | **AGRICULTURE SOIL** |  | 2026-03-19 | 2026-05-21 |  |  |  |  |  |  |  |
| MLTX-02-005-EN-7690 |  | Material Submittal for Agriculture Soil | 15d | 2026-03-19 A | 2026-05-14 A | MLTX-02-005-EN-6130, MLTX-02-005-EN-7630 | 100% | 2026-06-27 | 2026-07-13 | QA/QC Engineer [16.1 h] | MOD-02-EN-7690 | MAK-01-PR-1260 |
| MLTX-02-005-EN-7700 |  | Material Approval for Agriculture Soil | 15d | 2026-03-26 A | 2026-05-21 A | MLTX-02-005-EN-7690, MLTX-02-005-EN-7640 | 100% | 2026-07-14 | 2026-07-30 | Consultant Staff [16.1 h] | MOD-02-EN-7700 | MAK-01-PR-1270 |
|  | 8 | **TRACK SURFACE** |  | 2026-03-19 | 2026-05-19 |  |  |  |  |  |  |  |
| MLTX-02-005-EN-7720 |  | Material Submittal for Track Surface | 15d | 2026-03-19 A | 2026-05-14 A | MLTX-02-005-EN-6160, MLTX-02-005-EN-7810 | 100% | 2026-05-19 | 2026-06-08 | QA/QC Engineer [16.1 h] | MOD-02-EN-7720 | MAK-01-PR-1260 |
| MLTX-02-005-EN-7730 |  | Material Approval for Track Surface | 15d | 2026-03-26 A | 2026-05-19 A | MLTX-02-005-EN-7720, MLTX-02-005-EN-7820 | 100% | 2026-06-09 | 2026-06-25 | Consultant Staff [16.1 h] | MOD-02-EN-7730 | MAK-01-PR-1270 |
|  | 10 | **GRASS/TREES** |  | 2026-03-19 | 2026-05-21 |  |  |  |  |  |  |  |
| MLTX-02-005-EN-7750 |  | Material Submittal for Grass/Trees | 15d | 2026-03-19 A | 2026-05-14 A | MLTX-02-005-EN-6190, MLTX-02-005-EN-7820 | 100% | 2026-06-09 | 2026-06-25 | QA/QC Engineer [16.1 h] | MOD-02-EN-7750 | MAK-01-PR-1260 |
| MLTX-02-005-EN-7760 |  | Material Approval for Grass/Trees | 15d | 2026-03-26 A | 2026-05-21 A | MLTX-02-005-EN-7750, MLTX-02-005-EN-7180 | 100% | 2026-06-27 | 2026-07-13 | Consultant Staff [16.1 h] | MOD-02-EN-7760 | MAK-01-PR-1270 |
|  | 6 | **CABLES** |  | 2026-03-19 | 2026-05-19 |  |  |  |  |  |  |  |
| MLTX-02-005-EN-7780 |  | Material Submittal for Cables | 15d | 2026-03-19 A | 2026-05-14 A | MLTX-02-005-EN-6220, MLTX-02-005-EN-7630 | 100% | 2026-06-27 | 2026-07-13 | QA/QC Engineer [16.1 h] | MOD-02-EN-7780 | MAK-01-PR-1200 |
| MLTX-02-005-EN-7790 |  | Material Approval for Cables | 15d | 2026-03-26 A | 2026-05-19 A | MLTX-02-005-EN-7780, MLTX-02-005-EN-7640 | 100% | 2026-07-14 | 2026-07-30 | Consultant Staff [16.1 h] | MOD-02-EN-7790 | MAK-01-PR-1210 |
|  | 4 | **LIGHT POLES** |  | 2026-07-11 | 2026-07-11 |  |  |  |  |  |  |  |
| MLTX-02-005-EN-7810 |  | Material Submittal for Lighting poles | 15d | 2026-07-11 A | 2026-07-11 A | MLTX-02-005-EN-6250 | 100% | 2026-05-02 | 2026-05-18 | QA/QC Engineer [16.1 h] | MOD-02-EN-7810 | MAK-01-PR-LLI-1120 |
| MLTX-02-005-EN-7820 |  | Material Approval for Lighting poles | 15d | 2026-07-11 A | 2026-07-11 A | MLTX-02-005-EN-7810 | 100% | 2026-05-19 | 2026-06-08 | Consultant Staff [16.1 h] | MOD-02-EN-7820 | MAK-01-PR-LLI-1130 |

| ID | WBS | Activity | Duration | Start | Finish | Predecessors | Complete | Planned start | Planned finish | Total float | Free float | Resources | Cost | Actual cost | New Activity ID | Construction |
| --- | --- | --- | --- | --- | --- | --- | --- | --- | --- | --- | --- | --- | --- | --- | --- | --- |
|  | CONST | **CONSTRUCTION PHASE** |  | 2026-04-04 | 2027-03-21 |  |  |  |  |  |  |  |  |  |  |  |
|  | SW | **SITE WORKS** |  | 2026-04-04 | 2027-03-21 |  |  |  |  |  |  |  |  |  |  |  |
|  | 1 | **EARTH WORKS** |  | 2026-04-04 | 2026-08-05 |  |  |  |  |  |  |  |  |  |  |  |
| MLTX-02-005-CN-9940 |  | Excavation (in all types of soil) including Compaction (Service/Toilet Building) | 14d | 2026-04-04 A | 2026-08-02 A | MLTX-02-005-EN-2950 | 100% | 2026-04-15 | 2026-04-30 |  |  | Labor [300 h]; Driver [80 h]; Excavator [60 h]; Loader [60 h]; Water Tanker [60 h]; Dump Truck [80 h]; Milling machine [20 h]; Excavation in any type of soil from existing level [205.9] | 14,053.5 |  | MOD-02-CN-9940 | ER |
| MLTX-02-005-CN-9930 |  | Excavation (in all types of soil) including Compaction (Playground Area) | 12d | 2026-04-06 A | 2026-04-12 A | MLTX-02-005-CN-9940 SS | 100% | 2026-04-15 | 2026-04-28 |  |  | Labor [300 h]; Driver [380 h]; Excavator [180 h]; Loader [50 h]; Water Tanker [120 h]; Dump Truck [240 h]; Milling machine [60 h]; Excavation in any type of soil from existing level [1853.1] | 126,481.53 |  | MOD-02-CN-9930 | ER |
| MLTX-02-005-CN-9970 |  | Backfilling on Layers (Selected Soil) including Compaction (Service/Toilet Building) | 20d | 2026-04-06 A | 2026-04-08 A | MLTX-02-005-CN-9940 SS, MLTX-02-005-CN-9940 FF, MLTX-02-005-CN-9960 | 100% | 2026-05-24 | 2026-06-18 |  |  | Labor [300 h]; Driver [140 h]; Loader [90 h]; Water Tanker [90 h]; Compactor [60 h]; Backfilling with selected fill material [205.32] | 7,005.52 |  | MOD-02-CN-9970 | ER |
| MLTX-02-005-CN-9960 |  | Backfilling on Layers (Selected Soil) including Compaction (Playground Area) | 21d | 2026-04-13 A | 2026-04-30 A | MLTX-02-005-CN-9930 | 100% | 2026-04-29 | 2026-05-23 |  |  | Labor [550 h]; Driver [300 h]; Loader [120 h]; Water Tanker [150 h]; Compactor [200 h]; Backfilling with selected fill material [1847.88] | 63,049.67 |  | MOD-02-CN-9960 | ER |
| MLTX-02-005-CN-9980 |  | Backfilling on Layers (Selected Soil) including Compaction (Landscape Area) | 8d | 2026-04-21 A | 2026-08-05 A | MLTX-02-005-CN-9950 SS, MLTX-02-005-CN-9950 FF, MLTX-02-005-CN-10020 | 100% | 2026-06-28 | 2026-07-06 |  |  | Labor [600 h]; Driver [300 h]; Loader [60 h]; Water Tanker [150 h]; Compactor [200 h]; Backfilling with selected fill material [2771.82] | 94,574.5 |  | MOD-02-CN-9980 | ER |
| MLTX-02-005-CN-9950 |  | Excavation (in all types of soil) including Compaction (Landscape Area) | 7d | 2026-06-28 A | 2026-08-05 A | MLTX-02-005-EN-3840, MLTX-02-005-EN-3830, MLTX-02-005-CN-9930, MLTX-02-005-EN-3820, MLTX-02-005-EN-3810, MLTX-02-005-CN-10020 | 100% | 2026-06-28 | 2026-07-05 |  |  | Labor [400 h]; Driver [200 h]; Excavator [210 h]; Loader [150 h]; Water Tanker [150 h]; Dump Truck [280 h]; Milling machine [70 h]; Excavation in any type of soil from existing level [2779.65] | 189,722.3 |  | MOD-02-CN-9950 | ER |
|  | 4 | **LANDSCAPE WORKS** |  | 2026-05-17 | 2027-03-21 |  |  |  |  |  |  |  |  |  |  |  |
|  | 4 | **PLAYGROUND AREA** |  | 2026-05-19 | 2027-03-21 |  |  |  |  |  |  |  |  |  |  |  |
|  | 6 | **FOOTBALL PLAYGROUND** |  | 2026-05-19 | 2027-01-26 |  |  |  |  |  |  |  |  |  |  |  |
| MLTX-02-005-CN-10020 |  | Preparation and Proofing for Subgrade (Football Playground) | 20d | 2026-05-19 A | 2026-06-01 A | MLTX-02-005-CN-9960 | 100% | 2026-05-24 | 2026-06-18 |  |  | Labor [500 h]; Skilled Labor [200 h]; Driver [300 h]; Forklift [270 h]; Football playground [250] | 79,212.5 | 79,212.5 | MOD-02-CN-10020 | PL |
| MLTX-02-005-CN-10030 |  | Backfilling and Compaction of Base Layers (Football Playground) | 21d | 2026-06-01 A | 2026-06-22 A | MLTX-02-005-CN-10020 | 100% | 2026-06-20 | 2026-07-13 |  |  | Labor [700 h]; Skilled Labor [250 h]; Driver [350 h]; Loader [150 h]; Dump Truck [440 h]; Compactor [220 h]; Football playground [50] | 15,842.5 | 15,842.5 | MOD-02-CN-10030 | PL |
| MLTX-02-005-CN-10070 |  | Aggregate base course layer (Football Playground) | 21d | 2026-08-02 A | 2026-08-06 A | MLTX-02-005-CN-10030, MLTX-02-005-CN-10130 | 100% | 2026-09-01 | 2026-09-26 |  |  | Football playground [50] | 15,842.5 | 15,842.5 |  | PL |
| MLTX-02-005-CN-10040 |  | Finishing Asphalt & Concrete Surface (Football Playground) | 15d | 2026-12-06 | 2026-12-22 | MLTX-02-005-CN-10070, MLTX-02-005-CN-10270 |  |  |  | -16d | 52d | Labor [800 h]; Skilled Labor [150 h]; Driver [100 h]; Forklift [390 h]; Football playground [500] | 158,424.99 |  | MOD-02-CN-10040 | PL |
| MLTX-02-005-CN-10050 |  | Install Sport Equipments - Goal / Nets - (Football Playground) | 5d | 2027-01-21 | 2027-01-26 | MLTX-02-005-CN-10060 FF, MLTX-02-005-EN-3610, MLTX-02-005-CN-10060 SS |  |  |  | -27d | 0d | Labor [390 h]; Skilled Labor [150 h]; Driver [100 h]; Crane [140 h]; Football playground [100] | 31,685 |  | MOD-02-CN-10050 | PL |
| MLTX-02-005-CN-10060 |  | Surface Marking and Painting Finishing Work (Football Playground) | 5d | 2027-01-21 | 2027-01-26 | MLTX-02-005-CN-10370, MLTX-02-005-PR-9110 |  |  |  | -27d | 0d | Skilled Labor [250 h]; Painter [240 h]; Football playground [50] | 15,842.5 |  | MOD-02-CN-10060 | PL |
|  | 7 | **PADEL PLAYGROUND** |  | 2026-05-19 | 2027-01-26 |  |  |  |  |  |  |  |  |  |  |  |
| MLTX-02-005-CN-10080 |  | Preparation and Proofing for Subgrade (Padel Playground) | 21d | 2026-05-19 A | 2026-06-01 A | MLTX-02-005-CN-10020 | 100% | 2026-06-20 | 2026-07-13 |  |  | Labor [300 h]; Skilled Labor [150 h]; Driver [200 h]; Forklift [180 h]; Padel playgound [70] | 81,894.4 | 81,894.4 | MOD-02-CN-10080 | PL |
| MLTX-02-005-CN-10090 |  | Backfilling and Compaction of Base Layers (Padel Playground) | 21d | 2026-06-01 A | 2026-06-14 A | MLTX-02-005-CN-10030, MLTX-02-005-PR-9000, MLTX-02-005-PR-9020, MLTX-02-005-CN-10080 | 100% | 2026-07-14 | 2026-08-06 |  |  | Labor [550 h]; Skilled Labor [200 h]; Driver [280 h]; Loader [150 h]; Dump Truck [360 h]; Compactor [180 h]; Padel playgound [10] | 11,699.2 | 11,699.2 | MOD-02-CN-10090 | PL |
| MLTX-02-005-CN-10130 |  | Aggregate base course layer (Padel Playground) | 21d | 2026-06-15 A | 2026-06-28 A | MLTX-02-005-CN-10030, MLTX-02-005-CN-10090 | 100% | 2026-08-08 | 2026-08-31 |  |  | Padel playgound [10] | 11,699.2 | 11,699.2 |  | PL |
| MLTX-02-005-CN-10100 |  | Finishing Asphalt & Concrete Surface (Padel Playground) | 21d | 2026-08-29 A | 2026-08-31 A | MLTX-02-005-CN-10090 | 100% | 2026-11-17 | 2026-12-10 |  |  | Labor [720 h]; Skilled Labor [200 h]; Driver [90 h]; Forklift [270 h]; Padel playgound [50] | 58,496 | 58,496 | MOD-02-CN-10100 | PL |
| MLTX-02-005-CN-10110 |  | Install Sport Equipments - Goal / Nets - (Padel Playground) | 5d | 2027-01-21 | 2027-01-26 | MLTX-02-005-CN-10050 FF, MLTX-02-005-CN-10100, MLTX-02-005-CN-10050 SS, MLTX-02-005-EN-3630 |  |  |  | -27d | 0d | Labor [950 h]; Skilled Labor [440 h]; Driver [260 h]; Crane [160 h]; Padel playgound [50] | 58,496 |  | MOD-02-CN-10110 | PL |
| MLTX-02-005-CN-10120 |  | Surface Marking and Painting Finishing Work (Padel Playground) | 5d | 2027-01-21 | 2027-01-26 | MLTX-02-005-CN-10060 SS, MLTX-02-005-CN-10100, MLTX-02-005-CN-10110 FF, MLTX-02-005-PR-9110, MLTX-02-005-CN-10110 SS |  |  |  | -27d | 0d | Skilled Labor [500 h]; Painter [240 h]; Padel playgound [10] | 11,699.2 |  | MOD-02-CN-10120 | PL |

| ID | WBS | Activity | Duration | Start | Finish | Predecessors | Complete | Planned start | Planned finish | Total float | Free float | Resources | Cost | Actual cost | New Activity ID | Construction | AIR DOME WORKS |
| --- | --- | --- | --- | --- | --- | --- | --- | --- | --- | --- | --- | --- | --- | --- | --- | --- | --- |
|  | 8 | **BASKETBALL PLAYGROUND** |  | 2026-05-19 | 2027-01-31 |  |  |  |  |  |  |  |  |  |  |  |  |
| MLTX-02-005-CN-10180 |  | Preparation and Proofing for Subgrade (Basketball Playground) | 20d | 2026-05-19 A | 2026-06-01 A | MLTX-02-005-CN-10080 | 100% | 2026-07-14 | 2026-08-05 |  |  | Labor [550 h]; Skilled Labor [200 h]; Driver [280 h]; Forklift [270 h]; Basketball playground [146.62] | 92,913.27 | 92,913.27 | MOD-02-CN-10180 | PL |  |
| MLTX-02-005-CN-10190 |  | Backfilling and Compaction of Base Layers (Basketball Playground) | 21d | 2026-06-01 A | 2026-06-14 A | MLTX-02-005-CN-10180, MLTX-02-005-CN-10030 | 100% | 2026-08-06 | 2026-08-30 |  |  | Labor [400 h]; Skilled Labor [200 h]; Driver [300 h]; Loader [150 h]; Dump Truck [400 h]; Compactor [200 h]; Basketball playground [24.93] | 15,795.26 | 15,795.26 | MOD-02-CN-10190 | PL |  |
| MLTX-02-005-CN-10230 |  | Aggregate base course layer (Basketball Playground) | 21d | 2026-06-15 A | 2026-06-28 A | MLTX-02-005-CN-10190, MLTX-02-005-CN-10030, MLTX-02-005-CN-10130 | 100% | 2026-09-01 | 2026-09-26 |  |  | Basketball playground [24.93] | 15,795.26 | 15,795.26 |  | PL |  |
| MLTX-02-005-CN-10200 |  | Finishing Asphalt & Concrete Surface (Basketball Playground) | 21d | 2026-08-19 A | 2026-08-31 A | MLTX-02-005-CN-10070, MLTX-02-005-CN-10230 | 100% | 2026-09-27 | 2026-10-20 |  |  | Labor [740 h]; Skilled Labor [150 h]; Driver [100 h]; Forklift [360 h]; Basketball playground [152.49] | 96,629.8 | 96,629.8 | MOD-02-CN-10200 | PL |  |
| MLTX-02-005-CN-10210 |  | Install Sport Equipments - Goal / Nets - (Basketball Playground) | 5d | 2027-01-21 | 2027-01-26 | MLTX-02-005-CN-10110 SS |  |  |  | -23d | 4d | Labor [200 h]; Skilled Labor [90 h]; Driver [100 h]; Crane [140 h]; Basketball playground [127.5] | 80,796.75 |  | MOD-02-CN-10210 | PL |  |
| MLTX-02-005-CN-10220 |  | Surface Marking and Painting Finishing Work (Basketball Playground) | 4d | 2027-01-27 | 2027-01-31 | MLTX-02-005-CN-10060, MLTX-02-005-CN-10210 SS, MLTX-02-005-CN-10210 FF, MLTX-02-005-CN-10200, MLTX-02-005-CN-10120, MLTX-02-005-PR-9110 |  |  |  | -27d | 36d | Skilled Labor [250 h]; Painter [240 h]; Basketball playground [25.5] | 16,159.35 |  | MOD-02-CN-10220 | PL |  |
|  | 9 | **PADEL FENCE** |  | 2026-08-08 | 2026-12-05 |  |  |  |  |  |  |  |  |  |  |  |  |
| MLTX-02-005-CN-10240 |  | Excavation for Fence | 8d | 2026-08-08 A | 2026-08-08 A | MLTX-02-005-CN-10130 | 100% | 2026-09-01 | 2026-09-09 |  |  | Labor [250 h]; Driver [160 h]; Excavator [120 h]; Dump Truck [160 h]; Supply and install of padel playground fence [0.01] | 1,196.57 |  | MOD-02-CN-10240 | PL |  |
| MLTX-02-005-CN-10250 |  | Concrete Foundation for Fence including Posts Fixation | 7d | 2026-08-15 A | 2026-08-19 A | MLTX-02-005-CN-10240 SS, MLTX-02-005-CN-10240 FF | 100% | 2026-09-02 | 2026-09-09 |  |  | Skilled Labor [150 h]; Driver [100 h]; Steel Fixer [140 h]; Supply and install of padel playground fence [0.01] | 828.69 |  | MOD-02-CN-10250 | PL |  |
| MLTX-02-005-CN-10251 |  | Backfilling and Reinstatement for Concrete Foundation | 17d | 2026-10-13 A | 2026-10-13 A | MLTX-02-005-CN-10250 | 100% | 2026-10-17 | 2026-11-04 |  |  | Skilled Labor [257.14 h]; Driver [342.86 h]; Loader [180 h]; Dump Truck [240 h]; Compactor [120 h]; Supply and install of padel playground fence [0.05] | 3,834.68 |  | MOD-02-CN-10290 | PL |  |
| MLTX-02-005-CN-10260 |  | Tempered Glass Fenc Installation and Fixation | 20d | 2026-10-20 | 2026-11-11 | MLTX-02-005-CN-10251 |  |  |  | -16d | 0d | Skilled Labor [250 h]; Driver [180 h]; Crane [240 h]; Supply and install of padel playground fence [0.37] | 30,677.48 |  | MOD-02-CN-10260 | PL |  |
| MLTX-02-005-CN-10270 |  | Chain Link Fence Installation and Fixation | 20d | 2026-11-12 | 2026-12-05 | MLTX-02-005-CN-10260, MLTX-02-005-CN-10200 |  |  |  | -16d | 0d | Labor [200 h]; Skilled Labor [150 h]; Driver [150 h]; Crane [200 h]; Supply and install of padel playground fence [0.19] | 15,338.75 |  | MOD-02-CN-10270 | PL |  |
| MLTX-02-005-CN-10280 |  | Install of Fence Gates | 12d | 2026-11-22 | 2026-12-05 | MLTX-02-005-CN-10260, MLTX-02-005-CN-10270 FF, MLTX-02-005-CN-10270 SS |  |  |  | -16d | 20d | Labor; Skilled Labor; Driver; Crane; Supply and install of padel playground fence | 86,873.81 |  | MOD-02-CN-10280 | PL |  |
|  | 1 | **CURBSTOEN/INTERLOCK** |  | 2026-08-15 | 2027-03-21 |  |  |  |  |  |  |  |  |  |  |  |  |
| MLTX-02-005-CN-10150 |  | Concrete Works Under Curbstone | 7d | 2026-08-15 A | 2026-08-15 A | MLTX-02-005-EN-4450, MLTX-02-005-EN-3460, MLTX-02-005-CN-10240, MLTX-02-005-EN-8040 | 100% | 2026-10-06 | 2026-10-13 |  |  | Skilled Labor [200 h]; Kerb type K1A [151]; Kerb type K1B [15]; Kerb type K4 [908] | 54,535.3 | 54,535.3 | MOD-02-CN-10150 | PL |  |
| MLTX-02-005-CN-10160 |  | Curbstone Installation | 4d | 2026-08-19 A | 2026-09-05 A | MLTX-02-005-CN-10150, MLTX-02-005-PR-9560, MLTX-02-005-CN-10230 | 100% | 2026-10-14 | 2026-10-18 |  |  | Labor [940 h]; Skilled Labor [440 h]; Driver [340 h]; Forklift [240 h]; Kerb type K1A [352.33]; Kerb type K1B [35]; Kerb type K4 [2118.67] | 127,249.04 | 6,824.65 | MOD-02-CN-10160 | PL |  |
| MLTX-02-005-CN-10140 |  | Interlock Installation (Grey Scale) for LandScape (Including Finishing Works) | 20d | 2027-02-23 | 2027-03-21 | MLTX-02-005-CN-10040, MLTX-02-005-PR-9520, MLTX-02-005-CN-10160, MLTX-02-005-CN-10280, MLTX-02-005-PR-9070, MLTX-02-005-PR-9600 |  |  |  | -68d | 0d | Labor [1000 h]; Skilled Labor [440 h]; Driver [540 h]; Forklift [330 h]; Interlock tiles grey scale with black marble chips 600*300*60mm zero joint [1683.33] | 180,520.67 |  | MOD-02-CN-10140 | PL |  |
|  | 10 | **AIR DOME** |  | 2026-05-17 | 2027-03-01 |  |  |  |  |  |  |  |  |  |  |  |  |
|  | 1 | **CIVIL WORKS** |  | 2026-05-17 | 2027-01-20 |  |  |  |  |  |  |  |  |  |  |  |  |
| MLTX-02-005-CN-10320 |  | Excavation for Foundation (Air Dome) | 6d | 2026-05-17 A | 2026-05-31 A | MLTX-02-005-CN-10090, MLTX-02-005-EN-3450, MLTX-02-005-EN-3500, MLTX-02-005-EN-3550, MLTX-02-005-EN-2480, MLTX-02-005-EN-2470, MLTX-02-005-CN-10180, MLTX-02-005-EN-3470, MLTX-02-005-EN-2450, MLTX-02-005-EN-4150, MLTX-02-005-EN-2390, MLTX-02-005-EN-2460 | 100% | 2026-09-26 | 2026-10-01 |  |  | Labor [200 h]; Driver [80 h]; Excavator [120 h]; Water Tanker [120 h]; Compactor [80 h]; Design, supply, install, testing and commissioning of air dome [0.03] | 167,650.3 |  | MOD-02-CN-10320 | PL | CVL |
| MLTX-02-005-CN-10330 |  | Concrete Works for Foundations including Anchor Bolts (Air Dome) | 13d | 2026-07-29 A | 2026-09-21 A | MLTX-02-005-EN-3510, MLTX-02-005-CN-10320, MLTX-02-005-EN-3520, MLTX-02-005-EN-3530 | 100% | 2026-10-03 | 2026-10-17 |  |  | Skilled Labor [200 h]; Steel Fixer [180 h]; Design, supply, install, testing and commissioning of air dome [0.04] | 228,008.77 |  | MOD-02-CN-10330 | PL | CVL |
| MLTX-02-005-CN-10340 |  | Cable System Installation (Air Dome) | 7d | 2026-09-21 A | 2026-09-21 A | MLTX-02-005-CN-10320 | 100% | 2026-10-03 | 2026-10-10 |  |  | Labor [700 h]; Skilled Labor [250 h]; Driver [250 h]; Crane [300 h]; Design, supply, install, testing and commissioning of air dome | 350,921.95 |  | MOD-02-CN-10340 | PL | CVL |
| MLTX-02-005-CN-10400 |  | Perimeter Clamping System Installation | 7d | 2026-09-21 A | 2026-09-28 A | MLTX-02-005-CN-10320 | 100% | 2026-10-03 | 2026-10-10 |  |  | Design, supply, install, testing and commissioning of air dome [0.1] | 552,946.49 |  |  | PL | CVL |
| MLTX-02-005-CN-10360 |  | Install of Membrane Covering System (Air Dome) | 20d | 2026-12-29 | 2027-01-20 | MLTX-02-005-CN-10400, MLTX-02-005-CN-11740, MLTX-02-005-CN-10520 |  |  |  | -37d | 0d | Labor [500 h]; Skilled Labor [90 h]; Driver [100 h]; Crane [160 h]; Design, supply, install, testing and commissioning of air dome [0.17] | 942,830.33 |  | MOD-02-CN-10360 | PL | CVL |
| MLTX-02-005-CN-10370 |  | Thermal Insulation Works (Air Dome) | 20d | 2026-12-29 | 2027-01-20 | MLTX-02-005-CN-10360 SS, MLTX-02-005-PR-9470, MLTX-02-005-CN-10360 FF, MLTX-02-005-CN-11740 |  |  |  | -37d | 0d | Labor [500 h]; Skilled Labor [240 h]; Driver [100 h]; Crane [160 h]; Design, supply, install, testing and commissioning of air dome [0.08] | 448,471.57 |  | MOD-02-CN-10370 | PL | CVL |

| ID | WBS | Activity | Duration | Start | Finish | Predecessors | Complete | Planned start | Planned finish | Total float | Free float | Resources | Cost | Actual cost | New Activity ID | Construction | AIR DOME WORKS | New Activity Code |
| --- | --- | --- | --- | --- | --- | --- | --- | --- | --- | --- | --- | --- | --- | --- | --- | --- | --- | --- |
|  | 3 | **MECHANICAL WORKS** |  | 2027-01-21 | 2027-02-01 |  |  |  |  |  |  |  |  |  |  |  |  |  |
| MLTX-02-005-CN-10410 |  | Air Ducts and Grills Installation (Air Dome) | 10d | 2027-01-21 | 2027-02-01 | MLTX-02-005-PR-9910, MLTX-02-005-CN-10370, MLTX-02-005-CN-11830 |  |  |  | -37d | 0d | Labor [876.9 h]; Skilled Labor [353.8 h]; Crane [120 h]; Mechanical [269.2 h]; Design, supply, install, testing and commissioning of air dome [0.13] | 728,766.3 |  | MOD-02-CN-10410 | PL | MEC |  |
| MLTX-02-005-CN-10420 |  | Air Units Installation (Air Dome) | 10d | 2027-01-21 | 2027-02-01 | MLTX-02-005-CN-10410 SS, MLTX-02-005-CN-10410 FF |  |  |  | -37d | 0d | Labor [800 h]; Skilled Labor [440 h]; Driver [420 h]; Forklift [240 h]; Mechanical [160 h]; Design, supply, install, testing and commissioning of air dome [0.06] | 336,353.67 |  | MOD-02-CN-10420 | PL | MEC |  |
| MLTX-02-005-CN-10430 |  | Exhaust Fans and Ducts Installation (Air Dome) | 10d | 2027-01-21 | 2027-02-01 | MLTX-02-005-CN-10420 SS, MLTX-02-005-CN-10410 FF, MLTX-02-005-CN-10410 SS, MLTX-02-005-CN-10420 FF |  |  |  | -37d | 0d | Labor [700 h]; Skilled Labor [300 h]; Driver [370 h]; Forklift [210 h]; Mechanical [140 h]; Design, supply, install, testing and commissioning of air dome [0.03] | 168,176.84 |  | MOD-02-CN-10430 | PL | MEC |  |
|  | 4 | **ELECTRICAL WORKS** |  | 2027-01-25 | 2027-02-01 |  |  |  |  |  |  |  |  |  |  |  |  |  |
| MLTX-02-005-CN-10450 |  | Light Fixture Works (Air Dome) | 7d | 2027-01-25 | 2027-02-01 | MLTX-02-005-CN-10420 FF, MLTX-02-005-EN-3700, MLTX-02-005-CN-10430 FF, MLTX-02-005-CN-10420 SS, MLTX-02-005-CN-10430 SS, MLTX-02-005-EN-3770 |  |  |  | -37d | 0d | Skilled Labor [440 h]; Electrician [300 h]; Design, supply, install, testing and commissioning of air dome [0.04] | 224,235.78 |  | MOD-02-CN-10450 | PL | ELE |  |
| MLTX-02-005-CN-10460 |  | Distribution Board and Electrical Works (Air Dome) | 5d | 2027-01-27 | 2027-02-01 | MLTX-02-005-CN-10450 SS, MLTX-02-005-CN-10450 FF |  |  |  | -37d | 0d | Skilled Labor [300 h]; Electrician [120 h]; Design, supply, install, testing and commissioning of air dome [0.03] | 168,176.84 |  | MOD-02-CN-10460 | PL | ELE |  |
| MLTX-02-005-CN-10470 |  | External Electrical Connection Works (Air Dome) | 5d | 2027-01-27 | 2027-02-01 | MLTX-02-005-CN-10460 FF, MLTX-02-005-CN-10460 SS |  |  |  | -37d | 0d | Skilled Labor [350 h]; Electrician [200 h]; Design, supply, install, testing and commissioning of air dome [0.03] | 168,176.84 |  | MOD-02-CN-10470 | PL | ELE |  |
| MLTX-02-005-CN-10480 |  | Emergency Generator Installation (Air Dome) | 3d | 2027-01-30 | 2027-02-01 | MLTX-02-005-CN-10470 FF, MLTX-02-005-CN-10470 SS |  |  |  | -37d | 0d | Skilled Labor [300 h]; Electrician [220 h]; Design, supply, install, testing and commissioning of air dome [0.09] | 504,530.51 |  | MOD-02-CN-10480 | PL |  |  |
| MLTX-02-005-CN-10490 |  | Control System Installation (Air Dome) | 2d | 2027-01-31 | 2027-02-01 | MLTX-02-005-PR-9350, MLTX-02-005-CN-10480 SS, MLTX-02-005-CN-10480 FF |  |  |  | -37d | 22d | Skilled Labor [1000 h]; Electrician [500 h]; Design, supply, install, testing and commissioning of air dome | 448,471.57 |  | MOD-02-CN-10490 | PL | ELE |  |
|  | 2 | **FINISHES WORKS** |  | 2027-02-23 | 2027-03-01 |  |  |  |  |  |  |  |  |  |  |  |  |  |
| MLTX-02-005-CN-10380 |  | Doors Installation Including Emergency, Entrance doors (Air Dome) | 5d | 2027-02-23 | 2027-02-28 | MLTX-02-005-PR-9900, MLTX-02-005-PR-9920, MLTX-02-005-CN-10420 FF, MLTX-02-005-PR-8930 |  |  |  | -59d | 0d | Labor [400 h]; Skilled Labor [200 h]; Forklift [150 h]; Design, supply, install, testing and commissioning of air dome [0.02] | 112,117.89 |  | MOD-02-CN-10380 | PL | FIN |  |
| MLTX-02-005-CN-10390 |  | Logo and Signs Installation (Air Dome) | 1d | 2027-03-01 | 2027-03-01 | MLTX-02-005-CN-10490, MLTX-02-005-CN-10380 |  |  |  | -59d | 0d | Labor [1300 h]; Skilled Labor [900 h]; Driver [340 h]; Crane [120 h]; Design, supply, install, testing and commissioning of air dome [0.01] | 56,058.95 |  | MOD-02-CN-10390 | PL | FIN |  |
|  | 1 | **IRRIGATION NETWORK** |  | 2026-08-18 | 2027-01-11 |  |  |  |  |  |  |  |  |  |  |  |  |  |
| MLTX-02-005-CN-11430 |  | Installing of HDPE Pipes for Irrigation Network (Main Line) | 4d | 2026-08-18 A | 2026-09-02 A | MLTX-02-005-EN-4570, MLTX-02-005-EN-3880, MLTX-02-005-EN-3920, MLTX-02-005-PR-9680 | 100% | 2026-06-28 | 2026-07-01 |  |  | Labor [1000 h]; Driver [540 h]; Crane [220 h]; Mechanical [320 h]; Plumber [300 h]; HDPE Pipes pipe line O.D 90 mm PN 10, in depth 0 to 1.5 m [250] | 53,620 | 53,620 | MOD-02-CN-11430 | LS |  | CN.MB.D15.1950 |
| MLTX-02-005-CN-11440 |  | Installing of HDPE Pipes for Irrigation Network (Branch Lines) | 4d | 2026-09-03 A | 2026-09-10 A | MLTX-02-005-CN-11430 | 100% | 2026-07-02 | 2026-07-06 |  |  | Labor [800 h]; Driver [240 h]; Crane [140 h]; Mechanical [240 h]; Plumber [240 h]; HDPE Pipes pipe line O.D 50 mm PN 10, in depth 0 to 1.5 m [116.67]; HDPE Pipes pipe line O.D 32 mm PN 10, in depth 0 to 1.5 m [250]; HDPE Pipes pipe line O.D 25 mm PN 10, in depth 0 to 1.5 m [683.33] | 50,127.83 | 20,150 | MOD-02-CN-11440 | LS |  | CN.MB.D15.1960 |
| MLTX-02-005-CN-11450 |  | Installing of Valves and fittings for Irrigation Network | 4d | 2026-09-10 A | 2026-10-13 A | MLTX-02-005-CN-11440 | 100% | 2026-07-07 | 2026-07-11 |  |  | Labor [950 h]; Mechanical [160 h]; Plumber [260 h]; Gate valve 100 mm PN16 [0.67]; Gate valve 50 mm PN16 [3.67]; Gate valve 32 mm PN16 [4.67]; Flushing Bronze gate valve dia 1.5" inside PVC box [2]; Air release valve 1.5" inside PVC box [2] | 23,560.84 | 6,824.52 | MOD-02-CN-11450 | LS |  | CN.MB.D15.1970 |
| MLTX-02-005-CN-11460 |  | Installing of Bubblers and Spreyers | 3d | 2027-01-09 | 2027-01-11 | MLTX-02-005-CN-10540 FF, MLTX-02-005-CN-10540 SS, MLTX-02-005-PR-9720, MLTX-02-005-CN-11450, MLTX-02-005-CN-10520, MLTX-02-005-CN-10200 |  |  |  | -20d | 38d | Labor [1300 h]; Mechanical [240 h]; Plumber [240 h]; Pressure�compensating bubblers 110 Lit/Hr [5]; Pressure� bubblers 60 Lit/Hr [165]; Pop up sprayer 90?- 210?, Radius 3.0 mtr [200]; Pop up sprayer 360?,Radius 3.0 mtr. [310] | 25,106.2 |  | MOD-02-CN-11460 | LS |  | CN.MB.D15.1980 |
|  | 5 | **NATURAL GROUND** |  | 2026-12-29 | 2027-01-11 |  |  |  |  |  |  |  |  |  |  |  |  |  |
| MLTX-02-005-CN-10550 |  | Compacted Natural Ground Soil Installation Works for Landscape | 6d | 2026-12-29 | 2027-01-04 | MLTX-02-005-CN-11710, MLTX-02-005-CN-11740, MLTX-02-005-CN-11450, MLTX-02-005-CN-10520, MLTX-02-005-CN-10200, MLTX-02-005-PR-9840, MLTX-02-005-EN-4620, MLTX-02-005-CN-10280 |  |  |  | -36d | 0d | Labor [1800 h]; Skilled Labor [1900 h]; Driver [370 h]; Water Tanker [270 h]; Dump Truck [360 h]; Compactor [180 h]; Compacted Natural ground soil [3333.33] | 65,000 |  | MOD-02-CN-10550 | LS |  |  |
| MLTX-02-005-CN-10540 |  | Tartan Floor Installation Works for Landscape (Including Finishing Works) | 6d | 2027-01-05 | 2027-01-11 | MLTX-02-005-PR-9800, MLTX-02-005-CN-10550 |  |  |  | -36d | 0d | Labor [1400 h]; Skilled Labor [1300 h]; Driver [240 h]; Water Tanker [210 h]; Dump Truck [280 h]; Compactor [140 h]; Tartan floor [200] | 126,740 |  | MOD-02-CN-10540 | LS |  |  |
|  | 2 | **PLANTING** |  | 2026-12-17 | 2027-01-03 |  |  |  |  |  |  |  |  |  |  |  |  |  |
| MLTX-02-005-CN-10570 |  | Placement of Sweet/Agricultural Soil (Including Levelling and Grading) | 6d | 2026-12-17 | 2026-12-23 | MLTX-02-005-PR-9640, MLTX-02-005-PR-9720, MLTX-02-005-EN-4470 |  |  |  | -34d | 0d | Labor [1850 h]; Driver [380 h]; Dump Truck [500 h]; Bobcat [280 h]; Cassia Glauca [25.5]; Plumeria Alba [25.5]; Neem [1.5]; Lawn [890] | 104,175.44 |  | MOD-02-CN-10570 | LS |  |  |
| MLTX-02-005-CN-10590 |  | Placement and Fixation of Trees | 5d | 2026-12-24 | 2026-12-29 | MLTX-02-005-CN-10570 |  |  |  | -1d | 0d | Labor [2250 h]; Skilled Labor [1500 h]; Driver [500 h]; Water Tanker [250 h]; Cassia Glauca [59.5]; Plumeria Alba [59.5]; Neem [3.5] | 101,343.52 |  | MOD-02-CN-10590 | LS |  |  |
| MLTX-02-005-CN-10580 |  | Placement of Lawn Ground Cover (Rolling and Compaction) | 4d | 2026-12-30 | 2027-01-03 | MLTX-02-005-CN-10590, MLTX-02-005-CN-11710, MLTX-02-005-CN-11360, MLTX-02-005-PR-9840, MLTX-02-005-EN-4620 |  |  |  | -1d | 57d | Labor [2500 h]; Skilled Labor [1550 h]; Driver [540 h]; Water Tanker [250 h]; Lawn [2076.67] | 141,732.5 |  | MOD-02-CN-10580 | LS |  |  |

| ID | WBS | Activity | Duration | Start | Finish | Predecessors | Complete | Remaining | Planned start | Planned finish | Total float | Free float | Resources | Cost | Actual cost | New Activity ID | Construction | New Activity Code |
| --- | --- | --- | --- | --- | --- | --- | --- | --- | --- | --- | --- | --- | --- | --- | --- | --- | --- | --- |
|  | 3 | **WALKING/BIKE PATHS** |  | 2026-06-11 | 2026-12-29 |  |  |  |  |  |  |  |  |  |  |  |  |  |
| MLTX-02-005-CN-10510 |  | Bike Path Preparation and Installation Works | 12d | 2026-06-11 A | 2026-12-29 | MLTX-02-005-PR-9760 FF, MLTX-02-005-CN-9930, MLTX-02-005-CN-10570 FF, MLTX-02-005-PR-11310, MLTX-02-005-PR-10840 FF | 50% | 0d | 2026-10-05 | 2026-10-18 | -38d | 0d | Skilled Labor [850 h]; Driver [460 h]; Bobcat [180 h]; Bike path [836.44] | 187,554.12 |  | MOD-02-CN-10510 | LS |  |
| MLTX-02-005-CN-10520 |  | Walking Path Preparation and Installation Works | 12d | 2026-06-11 A | 2026-12-29 | MLTX-02-005-CN-10510 SS, MLTX-02-005-PR-9760 FF, MLTX-02-005-CN-10570 FF, MLTX-02-005-CN-10340, MLTX-02-005-CN-10400 | 50% | 0d | 2026-10-19 | 2026-11-01 | -37d | 0d | Skilled Labor [850 h]; Driver [460 h]; Bobcat [180 h]; Walking path [803.1] | 180,079.78 |  | MOD-02-CN-10520 | LS |  |
|  | 6 | **GENERAL/FURNITURE** |  | 2026-10-03 | 2027-02-17 |  |  |  |  |  |  |  |  |  |  |  |  |  |
| MLTX-02-005-CN-11710 |  | Preleminary Works for Site Light Poles Including Cable and Bases Works | 7d | 2026-10-03 A | 2026-10-15 A | MLTX-02-005-EN-3970, MLTX-02-005-EN-3960, MLTX-02-005-EN-3950, MLTX-02-005-CN-10160, MLTX-02-005-EN-3980 | 100% |  | 2026-10-19 | 2026-10-26 |  |  | Labor [950 h]; Driver [340 h]; Electrician [460 h]; Forklift [240 h]; Supply, install, testing, and commissioning of ground mounted decorated landscape LED lighting with 6.0m height pole [12] | 75,459.6 | 75,459.6 | MOD-02-CN-11710 | LS | CN.MB.D16.2130 |
| MLTX-02-005-CN-11800 |  | Installing of Site Light Poles | 13d | 2026-10-18 A | 2026-11-03 | MLTX-02-005-PR-9930, MLTX-02-005-CN-11710, MLTX-02-005-PR-9840, MLTX-02-005-EN-4620 | 30% | 13d | 2027-01-03 | 2027-01-17 | 16d | 54d | Skilled Labor [700 h]; Electrician [500 h]; Crane [140 h]; Supply, install, testing, and commissioning of ground mounted decorated landscape LED lighting with 6.0m height pole [28] | 176,072.4 |  | MOD-02-CN-11800 | LS | CN.MB.D16.2140 |
| MLTX-02-005-CN-10610 |  | Stamped Concrete Works for LandScape (Including Finishing Works) | 5d | 2026-12-29 | 2027-01-03 | MLTX-02-005-CN-10520, MLTX-02-005-CN-11710, MLTX-02-005-PR-9840, MLTX-02-005-EN-4620 |  |  |  |  | -18d | 24d | Skilled Labor [850 h]; Steel Fixer [320 h]; Stamped concrete floor [600] | 93,594 |  | MOD-02-CN-10610 | LS |  |
| MLTX-02-005-CN-10630 |  | Fixation and Installation of Steel Frame for Benches | 7d | 2026-12-29 | 2027-01-05 | MLTX-02-005-EN-4430, MLTX-02-005-CN-10510, MLTX-02-005-CN-11710, MLTX-02-005-CN-11360, MLTX-02-005-PR-9840, MLTX-02-005-EN-4620 |  |  |  |  | -38d | 0d | Skilled Labor [850 h]; Driver [420 h]; Crane [160 h]; Supply and install playground benches consists of 6 seats [1] | 17,274.79 |  | MOD-02-CN-10630 | LS |  |
| MLTX-02-005-CN-10640 |  | Fixation and Installation of Benches | 7d | 2027-01-06 | 2027-01-13 | MLTX-02-005-CN-10630, MLTX-02-005-CN-11710, MLTX-02-005-CN-11800, MLTX-02-005-PR-9840, MLTX-02-005-EN-4620 |  |  |  |  | -38d | 0d | Skilled Labor [700 h]; Driver [420 h]; Crane [160 h]; Supply and install playground benches consists of 6 seats [2.33] | 40,307.84 |  | MOD-02-CN-10640 | LS |  |
| MLTX-02-005-CN-10650 |  | Fixation and Installation of Precast Concrete Seats (Rectangular) | 7d | 2027-01-06 | 2027-01-13 | MLTX-02-005-CN-10640 FF, MLTX-02-005-CN-10640 SS, MLTX-02-005-CN-11710, MLTX-02-005-CN-11800, MLTX-02-005-PR-9840, MLTX-02-005-EN-4620 |  |  |  |  | -38d | 0d | Skilled Labor [700 h]; Driver [420 h]; Crane [160 h]; Supply and install recycled precast concrete rectangular seats [28] | 32,757.76 |  | MOD-02-CN-10650 | LS |  |
| MLTX-02-005-CN-10660 |  | Fixation and Installation of Precast Concrete Seats (Circular) | 7d | 2027-01-06 | 2027-01-13 | MLTX-02-005-CN-10650 SS, MLTX-02-005-CN-10650 FF, MLTX-02-005-CN-11710, MLTX-02-005-CN-11800, MLTX-02-005-PR-9840, MLTX-02-005-EN-4620 |  |  |  |  | -38d | 0d | Skilled Labor [700 h]; Driver [420 h]; Crane [160 h]; Supply and install recycled precast concrete circular seats [24] | 12,869.04 |  | MOD-02-CN-10660 | LS |  |
| MLTX-02-005-CN-10670 |  | Fixation and Installation of Precast Concrete Trash Bins | 11d | 2027-01-14 | 2027-01-26 | MLTX-02-005-CN-10690, MLTX-02-005-CN-10660, MLTX-02-005-CN-11710, MLTX-02-005-CN-10540, MLTX-02-005-PR-9840, MLTX-02-005-EN-4620 |  |  |  |  | -38d | 4d | Skilled Labor [400 h]; Driver [320 h]; Crane [160 h]; Supply and install recycled precast concrete trash bins [8.33] | 12,186.67 |  | MOD-02-CN-10670 | LS |  |
| MLTX-02-005-CN-10620 |  | Traffic Signs Posts and Poles Installation | 15d | 2027-02-01 | 2027-02-17 | MLTX-02-005-CN-10660, MLTX-02-005-CN-10690, MLTX-02-005-CN-11800, MLTX-02-005-PR-9640, MLTX-02-005-CN-10670, MLTX-02-005-PR-9890, MLTX-02-005-CN-10610 |  |  |  |  | -42d | 18d | Skilled Labor [240 h]; Driver [160 h]; Excavator [240 h]; Traffic signs aluminum sheet, (breakaway) Single post I.P.E. [2] | 9,749.3 |  | MOD-02-CN-10620 | LS |  |
|  | 2 | **PARKING** |  | 2026-05-16 | 2026-10-12 |  |  |  |  |  |  |  |  |  |  |  |  |  |
| MLTX-02-005-CN-10700 |  | Site Preparation & Compaction Under Interlock for Parking Area | 3d | 2026-05-16 A | 2026-07-22 A | MLTX-02-005-EN-4460, MLTX-02-005-CN-10330 | 100% |  | 2026-11-01 | 2026-11-03 |  |  | Labor [1000 h]; Driver [120 h]; Water Tanker [90 h]; Compactor [60 h]; Supply and install interlock tiles for parking 8cm [200] | 17,548 | 17,548 | MOD-02-CN-10700 | LS |  |
| MLTX-02-005-CN-10690 |  | Interlock Installation (8 Cm) for Parking Area (Including Finishing Works) | 20d | 2026-10-03 A | 2026-10-12 A | MLTX-02-005-CN-10700, MLTX-02-005-CN-10340, MLTX-02-005-CN-10330, MLTX-02-005-EN-4490 | 100% |  | 2026-11-05 | 2026-11-28 |  |  | Labor [2000 h]; Skilled Labor [700 h]; Driver [400 h]; Forklift [300 h]; Supply and install interlock tiles for parking 8cm [466.67] | 40,945.33 |  | MOD-02-CN-10690 | LS |  |
|  | TO | **TOILET/SERVICE BUILDING** |  | 2026-05-21 | 2027-03-15 |  |  |  |  |  |  |  |  |  |  |  |  |  |
|  | 13 | **STRUCTURE WORKS** |  | 2026-05-21 | 2026-08-02 |  |  |  |  |  |  |  |  |  |  |  |  |  |
|  | 2 | **CONCRETE WORKS** |  | 2026-06-20 | 2026-07-12 |  |  |  |  |  |  |  |  |  |  |  |  |  |
|  | 1 | **SUB-STRUCTURE** |  | 2026-06-20 | 2026-06-25 |  |  |  |  |  |  |  |  |  |  |  |  |  |
| MLTX-02-005-CN-10750 |  | Plain Concrete Under Footing | 4d | 2026-06-20 A | 2026-06-21 A | MLTX-02-005-EN-6330, MLTX-02-005-EN-3080, MLTX-02-005-CN-10930, MLTX-02-005-EN-3070, MLTX-02-005-EN-4370, MLTX-02-005-EN-3060, MLTX-02-005-CN-10960, MLTX-02-005-CN-10840 | 100% |  | 2026-08-29 | 2026-09-01 |  |  | Labor [100 h]; Skilled Labor [60 h]; lean concrete under foundation [1.5] | 1,462.39 |  | MOD-02-CN-10750 | TO | CN.MB.D01.1500 |
| MLTX-02-005-CN-10800 |  | Reinforced Concrete Works for Slab on Grade Including Steel Fixing | 5d | 2026-06-22 A | 2026-06-25 A | MLTX-02-005-PR-7900, MLTX-02-005-CN-10750, MLTX-02-005-CN-11050 | 100% |  | 2026-09-02 | 2026-09-07 |  |  | Labor [300 h]; Skilled Labor [100 h]; Steel Fixer [120 h]; Provide and cast 35 Mpa concrete floor slab on grade [15] | 36,559.95 | 36,559.95 | MOD-02-CN-10800 | TO | CN.MB.D01.1590 |
|  | 2 | **SUPER-STRUCTURE** |  | 2026-07-07 | 2026-07-12 |  |  |  |  |  |  |  |  |  |  |  |  |  |
| MLTX-02-005-CN-10820 |  | AAC Panels Works for Walls | 7d | 2026-07-07 A | 2026-07-08 A | MLTX-02-005-EN-3020, MLTX-02-005-EN-3000, MLTX-02-005-EN-4410, MLTX-02-005-EN-2990, MLTX-02-005-EN-3040, MLTX-02-005-EN-3030, MLTX-02-005-EN-3010, MLTX-02-005-EN-2980 | 100% |  | 2026-08-02 | 2026-08-09 |  |  | Labor [500 h]; Skilled Labor [200 h]; Driver [280 h]; Crane [160 h]; The autoclaved aerated panel for slabs, external and internal walls and parapet [150] | 48,259.5 | 48,259.5 | MOD-02-CN-10820 | TO | CN.MB.D01.1550 |
| MLTX-02-005-CN-10830 |  | AAC Panels Works for Slabs | 3d | 2026-07-09 A | 2026-07-11 A | MLTX-02-005-CN-10820 | 100% |  | 2026-08-10 | 2026-08-12 |  |  | Labor [250 h]; Skilled Labor [100 h]; Driver [200 h]; Crane [100 h]; The autoclaved aerated panel for slabs, external and internal walls and parapet [50] | 16,086.5 | 16,086.5 | MOD-02-CN-10830 | TO | CN.MB.D01.1600 |
| MLTX-02-005-CN-10840 |  | Parpet Works and Lintels | 4d | 2026-07-11 A | 2026-07-12 A | MLTX-02-005-CN-10830, MLTX-02-005-CN-10890 | 100% |  | 2026-08-13 | 2026-08-17 |  |  | Labor [200 h]; Skilled Labor [60 h]; Driver [100 h]; Crane [60 h]; The autoclaved aerated panel for slabs, external and internal walls and parapet [50] | 16,086.5 | 16,086.5 | MOD-02-CN-10840 | TO | CN.MB.D01.1570 |

| ID | WBS | Activity | Duration | Start | Finish | Predecessors | Complete | Remaining | Planned start | Planned finish | Total float | Free float | Resources | Cost | Actual cost | New Activity Code | New Activity ID | Construction |
| --- | --- | --- | --- | --- | --- | --- | --- | --- | --- | --- | --- | --- | --- | --- | --- | --- | --- | --- |
|  | 1 | **UNDER GROUND SEPTIC TANK** |  | 2026-05-31 | 2026-06-24 |  |  |  |  |  |  |  |  |  |  |  |  |  |
| MLTX-02-005-CN-10860 |  | Plain Concrete Under Footing | 3d | 2026-05-31 A | 2026-06-01 A | MLTX-02-005-CN-10950, MLTX-02-005-CN-10920, MLTX-02-005-CN-11430 | 100% |  | 2026-07-05 | 2026-07-07 |  |  | Labor [100 h]; Skilled Labor [40 h]; lean concrete under foundation [1.5] | 1,462.39 |  | CN.MB.D01.1500 | MOD-02-CN-10860 | TO |
| MLTX-02-005-CN-10880 |  | Reinforced Concrete Works for Tank Walls Including Steel Fixing | 11d | 2026-06-07 A | 2026-06-11 A | MLTX-02-005-CN-10870, MLTX-02-005-CN-11590 | 100% |  | 2026-07-19 | 2026-07-30 |  |  | Labor [600 h]; Skilled Labor [200 h]; Steel Fixer [200 h]; Tank Walls [6] | 16,366.86 | 16,366.86 | CN.MB.D01.1590 | MOD-02-CN-10880 | TO |
| MLTX-02-005-CN-10870 |  | Reinforced Concrete Works for Tank Foundation Including Shuttering and Steel Fixing | 8d | 2026-06-10 A | 2026-06-13 A | MLTX-02-005-CN-10860, MLTX-02-005-CN-11430 | 100% |  | 2026-07-08 | 2026-07-16 |  |  | Labor [350 h]; Skilled Labor [100 h]; Steel Fixer [120 h]; Tank foundation [3] | 7,604.46 | 7,604.46 | CN.MB.D01.1530 | MOD-02-CN-10870 | TO |
| MLTX-02-005-CN-10890 |  | Reinforced Concrete Works for Tank Slab Including Shuttering and Steel Fixing | 10d | 2026-06-20 A | 2026-06-24 A | MLTX-02-005-CN-10880, MLTX-02-005-CN-11590 | 100% |  | 2026-08-01 | 2026-08-11 |  |  | Labor [700 h]; Skilled Labor [250 h]; Steel Fixer [240 h]; Tank Slab [3] | 8,774.37 | 8,774.37 | CN.MB.D01.1520 | MOD-02-CN-10890 | TO |
|  | 3 | **THERMAL & MOISTER PROTECTION** |  | 2026-05-21 | 2026-08-02 |  |  |  |  |  |  |  |  |  |  |  |  |  |
|  | 1 | **ANTI TERMIT CONTROL** |  | 2026-05-21 | 2026-05-25 |  |  |  |  |  |  |  |  |  |  |  |  |  |
| MLTX-02-005-CN-10930 |  | Anti Termite Works Under Slab on Grade and Grade Beams | 1d | 2026-05-21 A | 2026-05-21 A | MLTX-02-005-CN-10870, MLTX-02-005-CN-10840 | 100% |  | 2026-08-18 | 2026-08-18 |  |  | Labor [50 h]; Skilled Labor [30 h]; Supply and apply anti termite under all concrete in contact with soil. [54] | 2,632.5 | 2,632.5 | CN.MB.D01.1650 | MOD-02-CN-10930 | TO |
| MLTX-02-005-CN-10920 |  | Anti Termite Works Under Foundation | 1d | 2026-05-24 A | 2026-05-25 A | MLTX-02-005-CN-9980 SS, MLTX-02-005-CN-9970, MLTX-02-005-CN-11430 | 100% |  | 2026-07-02 | 2026-07-02 |  |  | Labor [40 h]; Skilled Labor [20 h]; Supply and apply anti termite under all concrete in contact with soil. [36] | 1,755 | 1,755 | CN.MB.D01.1640 | MOD-02-CN-10920 | TO |
|  | 2 | **POLYETHYLENE SHEET** |  | 2026-05-25 | 2026-06-21 |  |  |  |  |  |  |  |  |  |  |  |  |  |
| MLTX-02-005-CN-10950 |  | Water Proofing Under Blinding Concrete (Polythelen Sheet) | 1d | 2026-05-25 A | 2026-05-31 A | MLTX-02-005-EN-4820, MLTX-02-005-EN-4380, MLTX-02-005-CN-10920 SS, MLTX-02-005-CN-11430 | 100% |  | 2026-07-04 | 2026-07-04 |  |  | Labor [40 h]; Skilled Labor [20 h]; Supply and lay 250 micron thk polyethylene sheet under grade slab [36] | 877.32 | 877.32 | CN.MB.D01.1620 | MOD-02-CN-10950 | TO |
| MLTX-02-005-CN-10960 |  | Water Proofing Under Slab on Grade (Polythelen Sheet) | 1d | 2026-06-21 A | 2026-06-21 A | MLTX-02-005-CN-10870, MLTX-02-005-EN-4820, MLTX-02-005-CN-10930 SS, MLTX-02-005-CN-10840 | 100% |  | 2026-08-18 | 2026-08-18 |  |  | Labor [50 h]; Skilled Labor [30 h]; Supply and lay 250 micron thk polyethylene sheet under grade slab [54] | 1,315.98 | 1,315.98 | CN.MB.D01.1630 | MOD-02-CN-10960 | TO |
|  | 4 | **EPOXY** |  | 2026-07-12 | 2026-08-02 |  |  |  |  |  |  |  |  |  |  |  |  |  |
| MLTX-02-005-CN-11000 |  | Surface Preparation for Epoxy Coating | 3d | 2026-07-12 A | 2026-07-12 A | MLTX-02-005-CN-10880, MLTX-02-005-CN-10890, MLTX-02-005-CN-10960 | 100% |  | 2026-08-19 | 2026-08-22 |  |  | Labor [200 h]; Skilled Labor [90 h]; Provide and lay epoxy 2 coating for inner surfaces for RC walls, RC footings and bottom of the roof [7.5] | 1,096.8 | 1,096.8 | CN.MB.D01.1660 | MOD-02-CN-11000 | TO |
| MLTX-02-005-CN-11010 |  | Epoxy Coating for Walls and Slab of Tank | 5d | 2026-07-25 A | 2026-08-02 A | MLTX-02-005-CN-11000, MLTX-02-005-CN-10960 | 100% |  | 2026-08-23 | 2026-08-27 |  |  | Labor [300 h]; Skilled Labor [150 h]; Provide and lay epoxy 2 coating for inner surfaces for RC walls, RC footings and bottom of the roof [17.5] | 2,559.2 | 2,559.2 | CN.MB.D01.1670 | MOD-02-CN-11010 | TO |
|  | 5 | **MASONARY WORK** |  | 2026-07-13 | 2026-07-14 |  |  |  |  |  |  |  |  |  |  |  |  |  |
| MLTX-02-005-CN-11030 |  | CMU Masonary Works Including all Accessories | 5d | 2026-07-13 A | 2026-07-14 A | MLTX-02-005-EN-4410, MLTX-02-005-CN-10800, MLTX-02-005-PR-7970 | 100% |  | 2026-09-08 | 2026-09-13 |  |  | Labor [300 h]; Mason [150 h]; Concrete masonry unit, 100 mm thick wall [45] | 12,284.1 | 12,284.1 | CN.MB.D04.1690 | MOD-02-CN-11030 | TO |
|  | 3 | **THERMAL & MOISTER PROTECTION** |  | 2026-09-26 | 2026-10-28 |  |  |  |  |  |  |  |  |  |  |  |  |  |
| MLTX-02-005-CN-11050 |  | Preparing Surface and Preliminary Works for Toilets Waterproofing | 2d | 2026-09-26 A | 2026-09-26 A | MLTX-02-005-CN-11010, MLTX-02-005-CN-10840 | 100% |  | 2026-08-29 | 2026-08-30 |  |  | Labor [120 h]; Skilled Labor [60 h]; Plumber [20 h]; Supply and install liquid applied waterproofing membrane for toilets according to drawings and specifications. [14.4] | 2,105.86 |  | CN.MB.D07.1770 | MOD-02-CN-11050 | TO |
| MLTX-02-005-CN-11060 |  | Preparing Surface and Preliminary Works for Roofing and Wet Areas Insulation | 5d | 2026-09-30 A | 2026-09-30 A | MLTX-02-005-CN-11050 | 100% |  | 2026-09-07 | 2026-09-12 |  |  | Labor [250 h]; Skilled Labor [150 h]; Plumber [60 h]; Supply and cast in place foam concrete screed 50mm thk minimum laid to fall and cross fall [28]; Supply and install 4mm thick APP modified bituminous membrane for roof insulation [28]; Supply and install 300 micron polyethylene sheet [28]; Supply and install 50mm thk rigid insulation (extruded polystyrene) with density of 35 kg./m3 [28]; Supply and install 50mm thk loose gravel toppings [28]; Supplying and fixing 3mm thk extruded aluminum flashing [13.6]; Provide and lay 2 layers of waterproofing membrane 4mm [8] | 11,071.52 | 11,071.52 | CN.MB.D07.1790 | MOD-02-CN-11060 | TO |
| MLTX-02-005-CN-11080 |  | Finalize Water Proofing Works for Roofing and Wet Areas | 8d | 2026-10-03 A | 2026-10-28 | MLTX-02-005-CN-11060 | 80% | 8d | 2026-09-13 | 2026-09-21 | 25d | 32d | Labor [300 h]; Skilled Labor [200 h]; Supply and cast in place foam concrete screed 50mm thk minimum laid to fall and cross fall [42]; Supply and install 4mm thick APP modified bituminous membrane for roof insulation [42]; Supply and install 300 micron polyethylene sheet [42]; Supply and install 50mm thk rigid insulation (extruded polystyrene) with density of 35 kg./m3 [42]; Supply and install 50mm thk loose gravel toppings [42]; Supplying and fixing 3mm thk extruded aluminum flashing [20.4]; Provide and lay 2 layers of waterproofing membrane 4mm [12] | 16,607.28 |  | CN.MB.D07.1800 | MOD-02-CN-11080 | TO |
| MLTX-02-005-CN-11070 |  | Finalize Water Proofing Works for Toilets | 6d | 2026-10-20 | 2026-10-26 | MLTX-02-005-CN-11050 |  |  |  |  | 11d | 38d | Labor [280 h]; Skilled Labor [150 h]; Supply and install liquid applied waterproofing membrane for toilets according to drawings and specifications. [33.6] | 4,913.66 |  | CN.MB.D07.1780 | MOD-02-CN-11070 | TO |
|  | 11 | **MECHANICAL WORK** |  | 2026-07-18 | 2027-01-30 |  |  |  |  |  |  |  |  |  |  |  |  |  |
|  | 4 | **HVAC SYSTEM** |  | 2026-07-19 | 2027-01-18 |  |  |  |  |  |  |  |  |  |  |  |  |  |
| MLTX-02-005-CN-11480 |  | Preliminary HVAC and Ventilation Works | 3d | 2026-07-19 A | 2026-07-22 A | MLTX-02-005-EN-4580, MLTX-02-005-EN-3120, MLTX-02-005-EN-3100, MLTX-02-005-EN-3160, MLTX-02-005-EN-3110, MLTX-02-005-EN-3150, MLTX-02-005-CN-11670 | 100% |  | 2026-09-26 | 2026-09-28 |  |  | Labor [240 h]; Skilled Labor [90 h]; Mechanical [60 h]; Square Exhaust Diffuser 6"X6 " [6]; Supply, install, test and commission indoor ductwork [100]; Door Grilles 18"X6 " [1] | 9,359.69 | 9,359.69 | CN.MB.D15.1920 | MOD-02-CN-11480 | TO |
| MLTX-02-005-CN-11490 |  | Exhaust, Air Ducts Installation with all Accessories | 6d | 2026-09-12 A | 2026-09-12 A | MLTX-02-005-CN-11480, MLTX-02-005-PR-8450 | 100% |  | 2026-09-29 | 2026-10-05 |  |  | Labor [200 h]; Skilled Labor [180 h]; Driver [60 h]; Crane [120 h]; Mechanical [120 h]; Supply, install, test and commission inline exhaust fans duct [1] | 3,899.72 | 3,899.72 | CN.MB.D15.1940 | MOD-02-CN-11490 | TO |
| MLTX-02-005-CN-11500 |  | Install and Finish HVAC and Ventilation Works Including Split Air Units | 3d | 2027-01-16 | 2027-01-18 | MLTX-02-005-CN-11490 FF, MLTX-02-005-CN-11260, MLTX-02-005-PR-8370, MLTX-02-005-PR-8330, MLTX-02-005-CN-11770, MLTX-02-005-PR-8410 |  |  |  |  | -34d | 0d | Labor [150 h]; Skilled Labor [90 h]; Driver [60 h]; Crane [60 h]; Mechanical [60 h]; Supply and install split air conditioning unit (DX-MINI SPLIT UNIT) [1] | 14,623.96 |  | CN.MB.D15.1930 | MOD-02-CN-11500 | TO |

| ID | WBS | Activity | Duration | Start | Finish | Predecessors | Complete | Planned start | Planned finish | Total float | Free float | Resources | Cost | Actual cost | New Activity Code | New Activity ID | Construction |
| --- | --- | --- | --- | --- | --- | --- | --- | --- | --- | --- | --- | --- | --- | --- | --- | --- | --- |
|  | 2 | **WATER SUPPLY SYSTEM** |  | 2026-07-28 | 2027-01-30 |  |  |  |  |  |  |  |  |  |  |  |  |
| MLTX-02-005-CN-11540 |  | Installing of PPR Pipes and Fittings for Water Network | 3d | 2026-07-28 A | 2026-08-02 A | MLTX-02-005-EN-3180, MLTX-02-005-CN-11590, MLTX-02-005-EN-4550, MLTX-02-005-EN-3190, MLTX-02-005-PR-8250, MLTX-02-005-CN-10800 | 100% | 2026-09-19 | 2026-09-21 |  |  | Labor [100 h]; Plumber [60 h]; PPR Pipe with 65 mm ? Cold water [6]; PPR Pipe with 50 mm ? Cold water [4]; PPR Pipe with 40 mm ? Cold water [1]; PPR Pipe with 32 mm ? Cold water [2]; PPR Pipe with 25 mm ? Cold water [4]; PPR Pipe with 20 mm ? Cold water [7]; PPR Pipe with 20 mm ? Hot water [22] | 6,921.94 | 6,921.94 | CN.MB.D15.1950 | MOD-02-CN-11540 | TO |
| MLTX-02-005-CN-11520 |  | Installing of Valves and Fittings | 2d | 2026-09-05 A | 2026-09-05 A | MLTX-02-005-CN-11540, MLTX-02-005-CN-11480 | 100% | 2026-09-29 | 2026-09-30 |  |  | Labor [100 h]; Plumber [40 h]; SERVICE CONNECTIONS 50 mm ? [13.33] | 6,499.6 | 6,499.6 | CN.MB.D15.1950 | MOD-02-CN-11520 | TO |
| MLTX-02-005-CN-11560 |  | Installing of GRP Tanks | 8d | 2026-09-28 A | 2026-10-13 A | MLTX-02-005-CN-11520 | 100% | 2026-10-01 | 2026-10-10 |  |  | Skilled Labor [120 h]; Driver [100 h]; Crane [160 h]; Plumber [140 h]; Hot Press GRP Sectional Panel Water Tanks (4x3x3m) [0.33] | 64,995.36 |  | CN.MB.D15.1980 | MOD-02-CN-11560 | TO |
| MLTX-02-005-CN-11530 |  | Installing of HDPE Pipes and Valves for Water Supply Network | 3d | 2026-09-29 A | 2026-10-17 A | MLTX-02-005-CN-11520, MLTX-02-005-CN-11480 | 100% | 2026-10-01 | 2026-10-04 |  |  | Labor [250 h]; Plumber [100 h]; SERVICE CONNECTIONS 50 mm ? [53.33] | 25,998.4 | 25,998.4 | CN.MB.D15.1960 | MOD-02-CN-11530 | TO |
| MLTX-02-005-CN-11860 |  | Installing of Water Heater | 4d | 2027-01-19 | 2027-01-23 | MLTX-02-005-CN-11320, MLTX-02-005-CN-11500 |  |  |  | -34d | 0d | Labor [100 h]; Plumber [20 h]; 50 Liter Capacity [1] | 1,754.87 |  | CN.MB.D15.1980 | MOD-02-CN-11560 | TO |
| MLTX-02-005-CN-11550 |  | Installing of Booster Pump Units Including fittings and accessories | 7d | 2027-01-23 | 2027-01-30 | MLTX-02-005-CN-11490, MLTX-02-005-CN-11560, MLTX-02-005-CN-11500, MLTX-02-005-CN-11270, MLTX-02-005-CN-11260, MLTX-02-005-PR-8410, MLTX-02-005-CN-11760 |  |  |  | -36d | 22d | Labor [200 h]; Plumber [80 h]; (2W+1S Pumps) - flow of each pump 5 L/S @ 30 Meters [0.33] | 48,746.52 |  | CN.MB.D15.1970 | MOD-02-CN-11550 | TO |
|  | 1 | **SEWER/DRAINAGE SYSTEM** |  | 2026-07-18 | 2027-01-23 |  |  |  |  |  |  |  |  |  |  |  |  |
| MLTX-02-005-CN-11590 |  | Installing UPVC Pipes for Sewage Network | 2d | 2026-07-18 A | 2026-07-22 A | MLTX-02-005-EN-3130, MLTX-02-005-EN-3140, MLTX-02-005-EN-4540, MLTX-02-005-PR-8290 | 100% | 2026-07-16 | 2026-07-18 |  |  | Skilled Labor [150 h]; Plumber [60 h]; uPVC Sewer pipes Pipe with ? 4" (110mm) [21]; uPVC Sewer pipes Pipe Pipe with ? 3" (75mm) [13]; uPVC Sewer pipes Pipe Pipe with ? 2" (50mm) [20]; uPVC Sewer pipes Pipe Pipe with ? 1" (25mm) [5] | 11,767.4 | 11,767.4 | CN.MB.D15.1990 | MOD-02-CN-11590 | TO |
| MLTX-02-005-CN-11850 |  | Installing Inspection Chamber for Sewage Network | 5d | 2026-10-20 | 2026-10-25 | MLTX-02-005-CN-11590, MLTX-02-005-CN-11480 |  |  |  | -13d | 0d | Driver [80 h]; Crane [80 h]; Plumber [80 h]; Supply, installation, testing and commissioning of Inspection chamber [1] | 12,186.63 |  | CN.MB.D15.1990 | MOD-02-CN-11590 | TO |
| MLTX-02-005-CN-11580 |  | Installing UPVC Pipes for External Connection for Sewage Network | 4d | 2026-10-26 | 2026-10-29 | MLTX-02-005-CN-11850, MLTX-02-005-CN-11480 |  |  |  | -13d | 0d | Skilled Labor [90 h]; Plumber [30 h]; Supply and install 150 mm uPVC pipes to external wastewater network [16.67] | 14,217.67 |  | CN.MB.D15.1990 | MOD-02-CN-11580 | TO |
| MLTX-02-005-CN-11600 |  | Installing of Plumping Fixtures and Accessories | 2d | 2026-10-31 | 2026-11-01 | MLTX-02-005-CN-11580, MLTX-02-005-CN-11230, MLTX-02-005-CN-11490, MLTX-02-005-CN-11560 |  |  |  | -13d | 0d | Skilled Labor [120 h]; Plumber [80 h]; galvanized iron vent stack Vent Cap with 3" ? [1]; Supply and installation of Floor drain [9]; FCO 4" ? (110mm) [1]; FCO 3" ? (75mm) [1]; Supply, installation,testing and commissioning of Gully Traps [1] | 10,358.68 |  | CN.MB.D15.2000 | MOD-02-CN-11600 | TO |
| MLTX-02-005-CN-11870 |  | Installing of Toilet Fixtures and Accessories Such as Closets and Basins | 4d | 2027-01-19 | 2027-01-23 | MLTX-02-005-CN-11320, MLTX-02-005-CN-11500 |  |  |  | -30d | 28d | Skilled Labor [120 h]; Plumber [80 h]; Supply and installation of western water closet [3]; Supply and installation of western water closet [1]; Supply and installation of Bib tap with Perenial Hose (BPH) [4]; Supply, installation, testing and commissioning of Lavatory / wash basin [1]; Supply, installation, testing and commissioning of wall hung Lavatory / wash basin [1]; Supply and install Complete stainless steel 316 Handicap Rails Grab Bars [1]; Supply and install roof drain (RD) dome typ [1]; Supply and install shower mixer [4] | 31,392.79 |  | CN.MB.D15.2000 | MOD-02-CN-11600 | TO |
|  | 3 | **FIRE PROTECTION** |  | 2027-01-21 | 2027-01-23 |  |  |  |  |  |  |  |  |  |  |  |  |
| MLTX-02-005-CN-11620 |  | Installing of Fire Fighting Extinguisher and accessories (PFE-1, PFE-2) | 2d | 2027-01-21 | 2027-01-23 | MLTX-02-005-EN-3170, MLTX-02-005-CN-11840, MLTX-02-005-CN-11350, MLTX-02-005-EN-4560, MLTX-02-005-CN-11500 |  |  |  | -30d | 28d | Labor [100 h]; Mechanical [40 h]; Supply and install, PFE-1, Portable dry powder fire extinguisher 4.5 Kg capacity [1]; Supply and install, PFE-2, Portable Carbon Dioxide fire extinguisher. [1] | 1,949.87 |  | CN.MB.D15.2010 | MOD-02-CN-11620 | TO |
|  | 12 | **ELECTRICAL WORKS** |  | 2026-07-19 | 2027-01-30 |  |  |  |  |  |  |  |  |  |  |  |  |
|  | 1 | **ROUGH-IN WORKS** |  | 2026-07-19 | 2026-08-09 |  |  |  |  |  |  |  |  |  |  |  |  |
| MLTX-02-005-CN-11650 |  | Preleminary Works for Earthing Works | 2d | 2026-07-19 A | 2026-08-09 A | MLTX-02-005-EN-3380, MLTX-02-005-PR-8570, MLTX-02-005-CN-10820, MLTX-02-005-EN-4660, MLTX-02-005-CN-10840, MLTX-02-005-EN-3290, MLTX-02-005-CN-11030, MLTX-02-005-CN-11660 | 100% | 2026-09-15 | 2026-09-16 |  |  | Labor [210 h]; Electrician [60 h]; Distribution boards, panelboards, lighting installations and wiring accessories [0.9]; Telecom equipment [0.9]; KWHM [1.5] | 32,172.69 | 32,172.69 | CN.MB.D16.2090 | MOD-02-CN-11650 | TO |
| MLTX-02-005-CN-11660 |  | Preleminary Works for Panel Boards | 2d | 2026-07-19 A | 2026-07-20 A | MLTX-02-005-EN-3230, MLTX-02-005-EN-4670, MLTX-02-005-EN-3240, MLTX-02-005-EN-3270, MLTX-02-005-EN-3220, MLTX-02-005-CN-10840, MLTX-02-005-EN-3260, MLTX-02-005-CN-11060 | 100% | 2026-09-13 | 2026-09-14 |  |  | Labor [140 h]; Electrician [40 h]; Main Distribution Board including all related works to install power meter (power meter is excluded) [0.4]; Power Panel for pump room [0.13]; Power Panel for street lighting [0.4] | 68,245.12 | 54,596.1 | CN.MB.D16.2030 | MOD-02-CN-11660 | TO |
| MLTX-02-005-CN-11670 |  | Preleminary Works for Cable Works | 2d | 2026-07-19 A | 2026-07-22 A | MLTX-02-005-EN-3250, MLTX-02-005-EN-3210, MLTX-02-005-EN-3280, MLTX-02-005-EN-4650, MLTX-02-005-EN-4600, MLTX-02-005-CN-10840, MLTX-02-005-CN-10820, MLTX-02-005-CN-11660 | 100% | 2026-09-15 | 2026-09-16 |  |  | Labor [210 h]; Electrician [60 h]; Recessed mounted LED downlight luminaire 40 watt with reflector; IP44 ,230V , 4000k, 4200 LUMEN ,CRI > 80; Low glare [12]; LED flood light outdoor type 96 watt, 4000k, 12720 LUMEN [0.4]; Wall mounted emergency LED luminaire, 230V, 60 Hz., 3 hour back up time 1800 lumen,CRI>80, 2*18 watt, IP 65 [1.6]; LED Exit light fixture 4.5 watt with battery for 3 hours, and a visibility of 30 meters [0.4]; Wall mounted outdoor LED luminaire, 17 watt, 2000 lumens, with light emission from two sides [0.4]; Wall mounted outdoor LED luminaire, 13 watt, 1000 LUMEN, CR>80, for roof lighting [5] | 12,488.92 | 9,291.14 | CN.MB.D16.2050 | MOD-02-CN-11670 | TO |
| MLTX-02-005-CN-11680 |  | Preleminary Works for Sockets and Power Points | 2d | 2026-07-19 A | 2026-07-20 A | MLTX-02-005-CN-10820, MLTX-02-005-CN-10840, MLTX-02-005-CN-11660 | 100% | 2026-09-15 | 2026-09-16 |  |  | Labor [140 h]; Electrician [40 h]; 1 way, One Gang Switch [0.8]; 1 way, Two Gang Switch [3]; 1 way, One Gang Switch, weatherproof [0.4]; Exaust fan DP switch weatherproof [0.4]; Indoor AC DP switch weatherproof [0.4]; High level Single Receptacle outlet [3]; Duplex Receptacle outlet [6]; Hand Dryer switch weatherproof [0.4]; Water heater switch [0.4]; Outdoor Disconnect Switch for air conditioiner [0.9]; Outdoor Disconnect Switch for exhaust fans [0.4] | 15,990.55 | 10,725.21 | CN.MB.D16.2070 | MOD-02-CN-11680 | TO |
| MLTX-02-005-CN-11690 |  | Preleminary Works for Lightning Works | 2d | 2026-07-19 A | 2026-08-09 A | MLTX-02-005-EN-3320, MLTX-02-005-CN-10840, MLTX-02-005-EN-4660, MLTX-02-005-CN-10820, MLTX-02-005-EN-3330, MLTX-02-005-CN-11660 | 100% | 2026-09-15 | 2026-09-16 |  |  | Labor [140 h]; Electrician [40 h]; For Building [0.9] | 21,935.93 |  | CN.MB.D16.2090 | MOD-02-CN-11690 | TO |
| MLTX-02-005-CN-11700 |  | Preleminary Works for Data & Telecommunication System | 2d | 2026-07-19 A | 2026-08-09 A | MLTX-02-005-CN-10840, MLTX-02-005-EN-2280, MLTX-02-005-EN-3370, MLTX-02-005-CN-10820, MLTX-02-005-EN-3400, MLTX-02-005-EN-4630 | 100% | 2026-09-26 | 2026-09-27 |  |  | Labor [140 h]; Electrician [40 h]; Wall telephone outlet [1.2]; Wall mounted data outlet [1.2]; Telecom/IT rack complete with switch, router and patch Panel [0.9]; AV floor box outlet (1 HDMI) [0.4]; AV wall outlet (1 HDMI) [0.4] | 24,470.75 | 584.96 | CN.MB.D16.2110 | MOD-02-CN-11700 | TO |
| MLTX-02-005-CN-11720 |  | Preleminary Works for Security and Access Control System | 2d | 2026-07-19 A | 2026-08-09 A | MLTX-02-005-CN-10840, MLTX-02-005-CN-10820, MLTX-02-005-EN-4640, MLTX-02-005-CN-11660 | 100% | 2026-09-15 | 2026-09-16 |  |  | Labor [210 h]; Electrician [60 h]; 1 CCTV cabinet (Rack) [0.9]; NVR [0.9]; 21" LED monitor [0.4]; Indoor dome type Camera IP-20 ,IK-10, POE type with infra red feature, minimum coverage 20 meters, ONVIF supported [5]; Outdoor fixed camera weahter proof IP-65, POE type [3]; Pull box for fiber optic cable pulling from provider [0.4] | 30,913.36 | 13,649.03 | CN.MB.D16.2150 | MOD-02-CN-11720 | TO |

| ID | WBS | Activity | Duration | Start | Finish | Predecessors | Complete | Planned start | Planned finish | Total float | Free float | Resources | Cost | Actual cost | New Activity Code | New Activity ID | Construction |
| --- | --- | --- | --- | --- | --- | --- | --- | --- | --- | --- | --- | --- | --- | --- | --- | --- | --- |
|  | 2 | **FIXTURE WORKS** |  | 2026-12-10 | 2027-01-30 |  |  |  |  |  |  |  |  |  |  |  |  |
| MLTX-02-005-CN-11740 |  | Installing and Finish Works of Panel Boards | 5d | 2026-12-10 | 2026-12-15 | MLTX-02-005-PR-8610, MLTX-02-005-CN-11660, MLTX-02-005-CN-11260, MLTX-02-005-CN-11070 |  |  |  | -27d | 1d | Labor [350 h]; Electrician [100 h]; Main Distribution Board including all related works to install power meter (power meter is excluded) [0.6]; Power Panel for pump room [0.2]; Power Panel for street lighting [0.6] | 102,367.69 |  | CN.MB.D16.2040 | MOD-02-CN-11740 | TO |
| MLTX-02-005-CN-11770 |  | Installing and Finalize Works of Earthing Works | 3d | 2027-01-12 | 2027-01-14 | MLTX-02-005-CN-11260, MLTX-02-005-CN-11650, MLTX-02-005-CN-10540 |  |  |  | -36d | 0d | Labor [60 h]; Electrician [60 h]; Distribution boards, panelboards, lighting installations and wiring accessories [0.1]; Telecom equipment [0.1]; KWHM [0.5] | 6,824.51 |  | CN.MB.D16.2190 | MOD-02-CN-11770 | TO |
| MLTX-02-005-CN-11820 |  | Installing and Finalize Works of Lightning Protection System | 6d | 2027-01-16 | 2027-01-21 | MLTX-02-005-CN-11690, MLTX-02-005-CN-11260, MLTX-02-005-CN-11770 |  |  |  | -29d | 29d | Labor [100 h]; Electrician [100 h]; For Building [0.1] | 2,437.33 |  | CN.MB.D16.2200 | MOD-02-CN-11820 | TO |
| MLTX-02-005-CN-11830 |  | Installing and Finalize Works of Security and Access Control System | 4d | 2027-01-16 | 2027-01-19 | MLTX-02-005-CN-11260, MLTX-02-005-CN-11720, MLTX-02-005-PR-9430, MLTX-02-005-CN-11770 |  |  |  | -36d | 0d | Labor [80 h]; Electrician [80 h]; 1 CCTV cabinet (Rack) [0.1]; NVR [0.1]; 21" LED monitor [0.6]; Indoor dome type Camera IP-20 ,IK-10, POE type with infra red feature, minimum coverage 20 meters, ONVIF supported [1]; Outdoor fixed camera weahter proof IP-65, POE type [1]; Pull box for fiber optic cable pulling from provider [0.6] | 7,250.09 |  | CN.MB.D16.2170 | MOD-02-CN-11830 | TO |
| MLTX-02-005-CN-11760 |  | Installing and Finalize Works of Sockets and Power Points | 4d | 2027-01-18 | 2027-01-21 | MLTX-02-005-CN-11840, MLTX-02-005-PR-8530, MLTX-02-005-CN-11680, MLTX-02-005-CN-11770 |  |  |  | -36d | 0d | Labor [60 h]; Electrician [60 h]; 1 way, One Gang Switch [1.2]; 1 way, Two Gang Switch [1]; 1 way, One Gang Switch, weatherproof [0.6]; Exaust fan DP switch weatherproof [0.6]; Indoor AC DP switch weatherproof [0.6]; High level Single Receptacle outlet [1]; Duplex Receptacle outlet [1]; Hand Dryer switch weatherproof [0.6]; Water heater switch [0.6]; Outdoor Disconnect Switch for air conditioiner [0.1]; Outdoor Disconnect Switch for exhaust fans [0.6] | 7,085.1 |  | CN.MB.D16.2080 | MOD-02-CN-11760 | TO |
| MLTX-02-005-CN-11790 |  | Installing and Finalize Works of Lighting Works including Light Fixtures | 4d | 2027-01-18 | 2027-01-21 | MLTX-02-005-CN-11670, MLTX-02-005-PR-8490, MLTX-02-005-CN-11840, MLTX-02-005-CN-11770 |  |  |  | -29d | 29d | Labor [80 h]; Electrician [80 h]; Recessed mounted LED downlight luminaire 40 watt with reflector; IP44 ,230V , 4000k, 4200 LUMEN ,CRI > 80; Low glare [18]; LED flood light outdoor type 96 watt, 4000k, 12720 LUMEN [0.6]; Wall mounted emergency LED luminaire, 230V, 60 Hz., 3 hour back up time 1800 lumen,CRI>80, 2*18 watt, IP 65 [2.4]; LED Exit light fixture 4.5 watt with battery for 3 hours, and a visibility of 30 meters [0.6]; Wall mounted outdoor LED luminaire, 17 watt, 2000 lumens, with light emission from two sides [0.6]; Wall mounted outdoor LED luminaire, 13 watt, 1000 LUMEN, CR>80, for roof lighting [1] | 14,259.43 |  | CN.MB.D16.2100 | MOD-02-CN-11790 | TO |
| MLTX-02-005-CN-11750 |  | Installing Data and Telecommunication System with all Accessories | 4d | 2027-01-24 | 2027-01-27 | MLTX-02-005-CN-11860, MLTX-02-005-CN-11700, MLTX-02-005-CN-11840, MLTX-02-005-CN-11770 |  |  |  | -34d | 24d | Labor [80 h]; Electrician [80 h]; Wall telephone outlet [1.8]; Wall mounted data outlet [1.8]; Telecom/IT rack complete with switch, router and patch Panel [0.1]; AV floor box outlet (1 HDMI) [0.6]; AV wall outlet (1 HDMI) [0.6] | 6,239.59 |  | CN.MB.D16.2120 | MOD-02-CN-11750 | TO |
| MLTX-02-005-CN-11780 |  | Installing of Fire automation and Fire Alarm System | 4d | 2027-01-26 | 2027-01-30 | MLTX-02-005-CN-11500, MLTX-02-005-EN-3300, MLTX-02-005-EN-3310, MLTX-02-005-EN-3340, MLTX-02-005-CN-11770, MLTX-02-005-CN-11400 |  |  |  | -36d | 22d | Labor [200 h]; Electrician [80 h]; Analog addressable fire alarm control panel [1]; Intelligent Photoelectric smoke and heat detector with base [12]; Addressable Manual Pull Station, wall mounted [2]; Addressable Fire Alarm Strobe with Sounder, wall mounted [1]; Addressable Fire Alarm Strobe with Sounder, wall mounted water proof IP66 [1] | 34,317.53 |  | CN.MB.D15.2020 | MOD-02-CN-11780 | TO |
|  | 7 | **DOORS/WINDOWS** |  | 2026-10-20 | 2027-03-15 |  |  |  |  |  |  |  |  |  |  |  |  |
| MLTX-02-005-CN-11100 |  | Preliminary Works For Windows/Curtain Wall | 2d | 2026-10-20 | 2026-10-21 | MLTX-02-005-CN-10840, MLTX-02-005-PR-8130, MLTX-02-005-CN-11720 |  |  |  | 49d | 0d | Labor [120 h]; Skilled Labor [40 h]; Supply and install curtain wall with structural glass [0.9] | 52,646.24 |  | CN.MB.D08.1810 | MOD-02-CN-11100 | TO |
| MLTX-02-005-CN-11110 |  | Preliminary Works For Doors | 3d | 2026-10-22 | 2026-10-25 | MLTX-02-005-PR-8130, MLTX-02-005-CN-10840, MLTX-02-005-EN-4440, MLTX-02-005-CN-11100 |  |  |  | 49d | 108d | Labor [180 h]; Skilled Labor [60 h]; Metal Door D2 : [0.8] | 7,799.44 |  | CN.MB.D08.1810 | MOD-02-CN-11110 | TO |
| MLTX-02-005-CN-11130 |  | Finalize Glazzed Curtain Wall Works | 7d | 2027-01-16 | 2027-01-23 | MLTX-02-005-CN-11100, MLTX-02-005-CN-11260, MLTX-02-005-CN-11770 |  |  |  | -19d | 40d | Labor [320 h]; Skilled Labor [120 h]; Supply and install curtain wall with structural glass [0.1] | 5,849.58 |  | CN.MB.D08.1840 | MOD-02-CN-11130 | TO |
| MLTX-02-005-CN-11120 |  | Finalize Metal Doors for Toilets Building | 9d | 2027-03-02 | 2027-03-15 | MLTX-02-005-CN-11260, MLTX-02-005-CN-11110, MLTX-02-005-CN-10390 |  |  |  | -59d | 0d | Labor [240 h]; Skilled Labor [90 h]; Metal Door D2 : [0.2] | 1,949.86 |  | CN.MB.D08.1820 | MOD-02-CN-11120 | TO |
|  | 4 | **METAL WORKS** |  | 2026-09-16 | 2026-12-19 |  |  |  |  |  |  |  |  |  |  |  |  |
| MLTX-02-005-CN-11170 |  | Installation of Galvanized Steel Roof Scupper | 4d | 2026-09-16 A | 2026-09-16 A | MLTX-02-005-CN-11290 | 100% | 2026-09-28 | 2026-10-01 |  |  | Labor [200 h]; Skilled Labor [120 h]; Plumber [80 h]; Supply and install and testing of overflow galvanized steel roof scupper [1] | 3,899.72 | 3,899.72 | CN.MB.D05.1810 | MOD-02-CN-11170 | TO |
| MLTX-02-005-CN-11160 |  | Installation of DI Cover for Tank | 4d | 2026-10-20 | 2026-10-24 | MLTX-02-005-CN-11010, MLTX-02-005-EN-4160, MLTX-02-005-CN-11030 |  |  |  | 41d | 77d | Skilled Labor [120 h]; Driver [80 h]; Crane [80 h]; Supply and install heavy duty ductile iron steel cover [1] | 3,899.72 |  | CN.MB.D05.1770 | MOD-02-CN-11160 | TO |
| MLTX-02-005-CN-11150 |  | Installation of Galvanized Steel Ladder | 10d | 2026-12-08 | 2026-12-19 | MLTX-02-005-CN-11270, MLTX-02-005-CN-11260 |  |  |  | -7d | 29d | Skilled Labor [120 h]; Driver [80 h]; Crane [80 h]; Supply and install Galvanized steel ladder [1] | 5,849.58 |  | CN.MB.D05.1760 | MOD-02-CN-11150 | TO |
|  | 6 | **FINISHING WORKS** |  | 2026-08-10 | 2027-01-23 |  |  |  |  |  |  |  |  |  |  |  |  |
|  | 1 | **FLOOR FINISHES** |  | 2026-10-17 | 2027-01-23 |  |  |  |  |  |  |  |  |  |  |  |  |
| MLTX-02-005-CN-11200 |  | Creamic Tiles Floor Finish Works | 2d | 2026-10-17 A | 2026-10-18 A | MLTX-02-005-PR-8050, MLTX-02-005-CN-11280, MLTX-02-005-EN-4420, MLTX-02-005-CN-11540, MLTX-02-005-CN-11170 | 100% | 2026-10-24 | 2026-10-25 |  |  | Labor [200 h]; Tile Fixer [80 h]; Floor Finishes Anti-slip glazed grey ceramic tiles, 600*600 mm [13]; Floor Finishes Light grey Ceramic tiles, 300*300 mm [48] | 11,894.39 | 11,894.39 | CN.MB.D09.1840 | MOD-02-CN-11200 | TO |
| MLTX-02-005-CN-11230 |  | Ceramic Skirting Tiles Finish Works | 4d | 2026-10-19 A | 2026-10-19 A | MLTX-02-005-CN-11310 | 100% | 2026-10-25 | 2026-10-28 |  |  | Labor [300 h]; Tile Fixer [40 h]; Floor Finishes Anti-slip glazed ceramic skirting tiles 600*100*10 mm [12] | 1,169.88 | 1,169.88 | CN.MB.D09.1980 | MOD-02-CN-11230 | TO |
| MLTX-02-005-CN-11210 |  | Granite Tiles Floor Finish Works | 4d | 2026-10-20 | 2026-10-24 | MLTX-02-005-CN-11200 |  |  |  | 56d | 75d | Labor [200 h]; Tile Fixer [80 h]; Floor Finishes Anti-slip granite tiles for entrance [6] | 2,924.82 |  | CN.MB.D09.1960 | MOD-02-CN-11210 | TO |
| MLTX-02-005-CN-11220 |  | Epoxy Coat on Concrete Floor | 3d | 2027-01-20 | 2027-01-23 | MLTX-02-005-CN-11260, MLTX-02-005-CN-11830, MLTX-02-005-CN-11210 |  |  |  | -19d | 40d | Labor [160 h]; Skilled Labor [60 h]; Floor Finishes Epoxy paint on concrete slab on grade [6] | 1,169.94 |  | CN.MB.D09.1970 | MOD-02-CN-11220 | TO |

| ID | WBS | Activity | Duration | Start | Finish | Predecessors | Complete | Remaining | Planned start | Planned finish | Total float | Free float | Resources | Cost | Actual cost | New Activity Code | New Activity ID | Construction | Old Activity ID - MK | Procurement |
| --- | --- | --- | --- | --- | --- | --- | --- | --- | --- | --- | --- | --- | --- | --- | --- | --- | --- | --- | --- | --- |
|  | 2 | **WALL FINISHES** |  | 2026-08-10 | 2027-01-17 |  |  |  |  |  |  |  |  |  |  |  |  |  |  |  |
| MLTX-02-005-CN-11280 |  | Preliminary Works for Wall Finish Works including Plastering (Internal) | 5d | 2026-08-10 A | 2026-08-19 A | MLTX-02-005-CN-11650, MLTX-02-005-CN-11660, MLTX-02-005-CN-11680, MLTX-02-005-CN-11670, MLTX-02-005-CN-11720, MLTX-02-005-CN-11690, MLTX-02-005-EN-4400, MLTX-02-005-CN-11700 | 100% |  | 2026-09-28 | 2026-10-03 |  |  | Labor [100 h]; Skilled Labor [60 h]; Wall Finishes Supply and install plastering to walls [157] | 18,315.62 | 18,315.62 | CN.MB.D09.1870 | MOD-02-CN-11280 | TO |  |  |
| MLTX-02-005-CN-11290 |  | Preliminary Works for Wall Finish Works (External) | 4d | 2026-08-15 A | 2026-08-29 A | MLTX-02-005-CN-11540, MLTX-02-005-CN-11030 | 100% |  | 2026-09-22 | 2026-09-27 |  |  | Labor [200 h]; Skilled Labor [80 h]; Wall Finishes Supply and install acrylic paint for external elevations [37.33] | 6,551.63 |  | CN.MB.D09.1900 | MOD-02-CN-11290 | TO |  |  |
| MLTX-02-005-CN-11310 |  | Ceramic Finish Works for Walls | 5d | 2026-09-20 A | 2026-09-26 A | MLTX-02-005-CN-11170 | 100% |  | 2026-10-06 | 2026-10-11 |  |  | Labor [200 h]; Driver [100 h]; Forklift [180 h]; Tile Fixer [120 h]; Wall Finishes Supply and install 300*300 mm ceramic [115] | 15,696.35 | 15,696.35 | CN.MB.D09.1920 | MOD-02-CN-11310 | TO |  |  |
| MLTX-02-005-CN-11250 |  | Stone Cladding Finish Works for External Walls | 5d | 2026-10-13 A | 2026-10-13 A | MLTX-02-005-CN-11280 | 100% |  | 2026-10-28 | 2026-11-02 |  |  | Labor [300 h]; Driver [80 h]; Forklift [150 h]; Tile Fixer [100 h]; Wall Finishes Supply and install Riyadh stone cladding (300x600mm) [46.67] | 2,275 | 2,275 | CN.MB.D09.1920 | MOD-02-CN-11250 | TO |  |  |
| MLTX-02-005-CN-11300 |  | Painting Finish Works for External Walls | 7d | 2026-10-20 | 2026-10-27 | MLTX-02-005-CN-11290, MLTX-02-005-CN-11530, MLTX-02-005-CN-11280, MLTX-02-005-EN-8040 |  |  |  |  | 38d | 74d | Labor [200 h]; Skilled Labor [60 h]; Wall Finishes Supply and install acrylic paint for external elevations [56]; Wall Finishes Supply and spray decorative paint ( profile ) for external elevations [0.67] | 35,825.58 |  | CN.MB.D09.1910 | MOD-02-CN-11300 | TO |  |  |
| MLTX-02-005-CN-11320 |  | Phenolic Partitions for Toilets | 7d | 2026-11-08 | 2026-11-15 | MLTX-02-005-CN-11390, MLTX-02-005-CN-11360, MLTX-02-005-CN-11230, MLTX-02-005-CN-11250 |  |  |  |  | -13d | 0d | Labor [700 h]; Driver [340 h]; Forklift [330 h]; Tile Fixer [220 h]; Wall Finishes Supply and install solid phenolic toilets partition board [40] | 31,197.6 |  | CN.MB.D09.1930 | MOD-02-CN-11320 | TO |  |  |
| MLTX-02-005-CN-11260 |  | Glass Partitions including all accessories and doors | 7d | 2026-11-16 | 2026-11-23 | MLTX-02-005-CN-11320, MLTX-02-005-EN-4510 |  |  |  |  | -13d | 0d | Labor [350 h]; Skilled Labor [120 h]; Wall Finishes Supply and install 12 mm glass partition [7] | 13,649.02 |  | CN.MB.D09.1930 | MOD-02-CN-11260 | TO |  |  |
| MLTX-02-005-CN-11270 |  | Granite Capping for Parpet | 2d | 2026-12-06 | 2026-12-07 | MLTX-02-005-CN-11080, MLTX-02-005-CN-11260, MLTX-02-005-PR-10480, MLTX-02-005-CN-11320 |  |  |  |  | -7d | 0d | Labor [160 h]; Driver [40 h]; Forklift [60 h]; Tile Fixer [40 h]; Wall Finishes Supply and install granite capping for parapet [38] | 8,150.24 |  | CN.MB.D09.1930 | MOD-02-CN-11270 | TO |  |  |
| MLTX-02-005-CN-11840 |  | Painting Finish Works for Internal Walls | 2d | 2027-01-16 | 2027-01-17 | MLTX-02-005-CN-11260, MLTX-02-005-CN-11770 |  |  |  |  | -36d | 0d | Labor [160 h]; Skilled Labor [40 h]; Wall Finishes Supply and install 2 coats of acrylic paint at internal walls and columns [120] | 2,340 |  | CN.MB.D09.1910 | MOD-02-CN-11300 | TO |  |  |
|  | 3 | **CELLING FINISHES** |  | 2026-10-19 | 2027-01-20 |  |  |  |  |  |  |  |  |  |  |  |  |  |  |  |
| MLTX-02-005-CN-11360 |  | Gypsum Board Suspended Ceiling Finish Works For Ceiling | 7d | 2026-10-19 A | 2026-10-27 | MLTX-02-005-CN-11480, MLTX-02-005-CN-11310 | 50% | 7d | 2026-10-20 | 2026-10-27 | -4d | 9d | Labor [400 h]; Skilled Labor [120 h]; CEILING FINISHES Supply and install 12.5mm thk, moisture resistant gypsum board suspended ceiling; CEILING FINISHES Supply and install 12.5mm thk, gypsum board suspended ceiling | 5,771.52 |  | CN.MB.D09.1950 | MOD-02-CN-11360 | TO |  |  |
| MLTX-02-005-CN-11340 |  | Preliminary Works for Ceiling Painting Works | 15d | 2026-11-24 | 2026-12-10 | MLTX-02-005-PR-8090, MLTX-02-005-CN-11280, MLTX-02-005-EN-4520, MLTX-02-005-CN-11260 |  |  |  |  | 2d | 32d | Labor [200 h]; Skilled Labor [90 h]; CEILING FINISHES Supply and install 12.5mm thk, moisture resistant gypsum board suspended ceiling; CEILING FINISHES Supply and install 12.5mm thk, gypsum board suspended ceiling | 5,771.52 |  | CN.MB.D09.1890 | MOD-02-CN-11340 | TO |  |  |
| MLTX-02-005-CN-11350 |  | Painting Finish Works for Ceiling | 3d | 2027-01-18 | 2027-01-20 | MLTX-02-005-CN-11340, MLTX-02-005-CN-11360, MLTX-02-005-CN-11840 |  |  |  |  | -30d | 0d | Labor [200 h]; Skilled Labor [60 h]; CEILING FINISHES Supply and install 2 coats of acrylic paint at under side slab | 3,427.86 |  | CN.MB.D09.1940 | MOD-02-CN-11350 | TO |  |  |
|  | 8 | **SPECIALTIES WORK** |  | 2026-11-02 | 2027-01-28 |  |  |  |  |  |  |  |  |  |  |  |  |  |  |  |
| MLTX-02-005-CN-11390 |  | Sanitary Fixtures and Accessories Works | 5d | 2026-11-02 | 2026-11-07 | MLTX-02-005-PR-8210, MLTX-02-005-CN-11600 |  |  |  |  | -13d | 0d | Plumber [100 h]; Supply and install toilet Accessories [1] | 14,623.96 |  | CN.MB.D10.1890 | MOD-02-CN-11390 | TO |  |  |
| MLTX-02-005-CN-11400 |  | Installation of MODON Logo on the entrance | 3d | 2027-01-23 | 2027-01-25 | MLTX-02-005-CN-11840, MLTX-02-005-PR-8170, MLTX-02-005-CN-11150, MLTX-02-005-CN-11760, MLTX-02-005-CN-11300, MLTX-02-005-CN-11160 |  |  |  |  | -36d | 0d | Labor [250 h]; Driver [100 h]; Electrician [100 h]; Crane [100 h]; Supply and install MODON logo [1] | 19,498.61 |  | CN.MB.D10.1900 | MOD-02-CN-11400 | TO |  |  |
| MLTX-02-005-CN-11380 |  | Installation of Phenolic Locker | 3d | 2027-01-26 | 2027-01-28 | MLTX-02-005-CN-11320, MLTX-02-005-CN-11400 |  |  |  |  | -35d | 23d | Labor [100 h]; Skilled Labor [60 h]; phenolic locker Size 2400*550*2200 mm [1]; phenolic locker Size 3500*550*2200 mm [1] | 24,373.26 |  | CN.MB.D10.1900 | MOD-02-CN-11380 | TO |  |  |
|  | PRO | **PROCUREMENT** |  | 2026-04-02 | 2027-02-21 |  |  |  |  |  |  |  |  |  |  |  |  |  |  |  |
|  | SLI | **SHORT LEAD ITEM** |  | 2026-04-02 | 2027-02-21 |  |  |  |  |  |  |  |  |  |  |  |  |  |  |  |
|  | TOI | **TOILET/SERVICE WORKS** |  | 2026-04-02 | 2027-01-07 |  |  |  |  |  |  |  |  |  |  |  |  |  |  |  |
|  | 1 | **STEEL REINFORCEMENT** |  | 2026-04-02 | 2026-05-24 |  |  |  |  |  |  |  |  |  |  |  |  |  |  |  |
| MLTX-02-005-PR-7880 |  | PO for Steel Reinforcement | 5d | 2026-04-02 A | 2026-05-10 A | MLTX-02-005-EN-6300, MLTX-02-005-PR-9450 | 100% |  | 2026-08-01 | 2026-08-05 |  |  | Purchaser [150 h] |  |  |  | MOD-02-PR-7880 |  | MAK-01-PR-1000 | TO |
| MLTX-02-005-PR-7900 |  | Material Delivery of Steel Reinforcement | 5d | 2026-05-24 A | 2026-05-24 A | MLTX-02-005-PR-7880, MLTX-02-005-PR-8030 | 100% |  | 2026-08-18 | 2026-08-23 |  |  | Purchaser [156.8 h] |  |  |  | MOD-02-PR-7900 |  | MAK-01-PR-1020 | TO |

| ID | WBS | Activity | Duration | Start | Finish | Predecessors | Complete | Planned start | Planned finish | Resources | New Activity ID | Old Activity ID - MK | Procurement |
| --- | --- | --- | --- | --- | --- | --- | --- | --- | --- | --- | --- | --- | --- |
|  | 3 | **CONCRETE BLOCKS** |  | 2026-04-08 | 2026-07-07 |  |  |  |  |  |  |  |  |
| MLTX-02-005-PR-7950 |  | PO for Concrete Blocks | 5d | 2026-04-08 A | 2026-05-10 A | MLTX-02-005-PR-7880, MLTX-02-005-EN-6360, MLTX-02-005-EN-6330 | 100% | 2026-08-06 | 2026-08-11 | Purchaser [150 h] | MOD-02-PR-7950 | MAK-01-PR-1000 | TO |
| MLTX-02-005-PR-7970 |  | Material Delivery of Concrete Blocks | 8d | 2026-07-07 A | 2026-07-07 A | MLTX-02-005-PR-7950, MLTX-02-005-PR-8030 | 100% | 2026-08-18 | 2026-08-26 | Purchaser [150 h] | MOD-02-PR-7970 | MAK-01-PR-1020 | TO |
|  | 6 | **FLOOR/WALL TILES** |  | 2026-08-18 | 2026-08-20 |  |  |  |  |  |  |  |  |
| MLTX-02-005-PR-8030 |  | PO for Tilling Materials | 5d | 2026-08-18 A | 2026-08-18 A | MLTX-02-005-EN-6420, MLTX-02-005-PR-7950 | 100% | 2026-08-12 | 2026-08-17 | Purchaser [150 h] | MOD-02-PR-8030 | MAK-01-PR-1000 | TO |
| MLTX-02-005-PR-8050 |  | Material Delivery of Tailling Material | 13d | 2026-08-20 A | 2026-08-20 A | MLTX-02-005-PR-8030, MLTX-02-005-PR-8230 | 100% | 2026-08-30 | 2026-09-13 | Purchaser [150 h] | MOD-02-PR-8050 | MAK-01-PR-1020 | TO |
|  | 7 | **SUSPENDED CEILING** |  | 2026-07-26 | 2026-08-20 |  |  |  |  |  |  |  |  |
| MLTX-02-005-PR-8070 |  | PO for Suspend Ceiling | 5d | 2026-07-26 A | 2026-07-26 A | MLTX-02-005-EN-6450 | 100% | 2026-10-21 | 2026-10-26 | Purchaser [150 h] | MOD-02-PR-8070 | MAK-01-PR-1000 | TO |
| MLTX-02-005-PR-8090 |  | Material Delivery of Suspend Ceiling | 13d | 2026-08-20 A | 2026-08-20 A | MLTX-02-005-PR-8070 | 100% | 2026-10-27 | 2026-11-10 | Purchaser [150 h] | MOD-02-PR-8090 | MAK-01-PR-1020 | TO |
|  | 8 | **DOORS/WINDOWS** |  | 2026-09-15 | 2026-09-20 |  |  |  |  |  |  |  |  |
| MLTX-02-005-PR-8110 |  | PO for Doors/Windows | 5d | 2026-09-15 A | 2026-09-15 A | MLTX-02-005-EN-7330, MLTX-02-005-EN-6690, MLTX-02-005-EN-7360, MLTX-02-005-EN-6570, MLTX-02-005-EN-6480, MLTX-02-005-EN-6660, MLTX-02-005-EN-6780, MLTX-02-005-PR-8030, MLTX-02-005-EN-7610, MLTX-02-005-EN-7640, MLTX-02-005-EN-7790, MLTX-02-005-EN-6750, MLTX-02-005-EN-7820, MLTX-02-005-EN-7450, MLTX-02-005-EN-7480, MLTX-02-005-EN-6510, MLTX-02-005-EN-7700, MLTX-02-005-EN-7580, MLTX-02-005-EN-7730, MLTX-02-005-EN-6450, MLTX-02-005-EN-7420, MLTX-02-005-EN-6940, MLTX-02-005-EN-7390, MLTX-02-005-EN-7270, MLTX-02-005-EN-7300, MLTX-02-005-EN-6970, MLTX-02-005-EN-7000, MLTX-02-005-EN-7510, MLTX-02-005-EN-7760, MLTX-02-005-EN-7670, MLTX-02-005-EN-7210, MLTX-02-005-EN-7550 | 100% | 2026-08-18 | 2026-08-23 | Purchaser [150 h] | MOD-02-PR-8110 | MAK-01-PR-1000 | TO |
| MLTX-02-005-PR-8130 |  | Material Delivery for Doors/Windows | 15d | 2026-09-20 A | 2026-09-20 A | MLTX-02-005-PR-8110 | 100% | 2026-08-24 | 2026-09-09 | Purchaser [150 h] | MOD-02-PR-8130 | MAK-01-PR-1020 | TO |
|  | 11 | **WATER SUPPLY PIPES** |  | 2026-04-28 | 2026-07-07 |  |  |  |  |  |  |  |  |
| MLTX-02-005-PR-8230 |  | PO for Water Supply Pipes | 5d | 2026-04-28 A | 2026-05-03 A | MLTX-02-005-EN-6570, MLTX-02-005-EN-6690, MLTX-02-005-PR-8110 | 100% | 2026-08-24 | 2026-08-29 | Purchaser [150 h] | MOD-02-PR-8230 | MAK-01-PR-1000 | TO |
| MLTX-02-005-PR-8250 |  | Material Delivery for Water Supply Pipes | 7d | 2026-07-07 A | 2026-07-07 A | MLTX-02-005-PR-8230, MLTX-02-005-PR-8130 | 100% | 2026-09-10 | 2026-09-17 | Purchaser [150 h] | MOD-02-PR-8250 | MAK-01-PR-1020 | TO |
|  | 12 | **SEWAGE/DRAINAGE PIPES** |  | 2026-04-26 | 2026-07-07 |  |  |  |  |  |  |  |  |
| MLTX-02-005-PR-8270 |  | PO for Sewage/Drainage Pipes | 5d | 2026-04-26 A | 2026-05-10 A | MLTX-02-005-EN-6600, MLTX-02-005-EN-6690 | 100% | 2026-06-09 | 2026-06-14 | Purchaser [150 h] | MOD-02-PR-8270 | MAK-01-PR-1000 | TO |
| MLTX-02-005-PR-8290 |  | Material Delivery for Sewage/Drainage Pipes | 7d | 2026-07-07 A | 2026-07-07 A | MLTX-02-005-PR-8270, MLTX-02-005-PR-8430 | 100% | 2026-06-27 | 2026-07-04 | Purchaser [150 h] | MOD-02-PR-8290 | MAK-01-PR-1020 | TO |
|  | 10 | **SANITARY FIXTURES** |  | 2026-07-28 | 2026-08-20 |  |  |  |  |  |  |  |  |
| MLTX-02-005-PR-8190 |  | PO for Sanitary Fixtures | 5d | 2026-07-28 A | 2026-07-28 A | MLTX-02-005-PR-8270, MLTX-02-005-EN-6540 | 100% | 2026-06-15 | 2026-06-20 | Purchaser [150 h] | MOD-02-PR-8190 | MAK-01-PR-1000 | TO |
| MLTX-02-005-PR-8210 |  | Material Delivery for Sanitary Fixtures | 13d | 2026-08-20 A | 2026-08-20 A | MLTX-02-005-PR-8190, MLTX-02-005-PR-8130 | 100% | 2026-09-10 | 2026-09-26 | Purchaser [150 h] | MOD-02-PR-8210 | MAK-01-PR-1020 | TO |
|  | 16 | **PACKAGE AC UNITS** |  | 2026-07-07 | 2026-07-07 |  |  |  |  |  |  |  |  |
| MLTX-02-005-PR-8310 |  | PO for Package AC Units | 5d | 2026-07-07 A | 2026-07-07 A | MLTX-02-005-PR-8270, MLTX-02-005-EN-5060 | 100% | 2026-06-15 | 2026-06-20 | Purchaser [150 h] | MOD-02-PR-8310 | MAK-01-PR-1000 | TO |
| MLTX-02-005-PR-8330 |  | Material Delivery for Package AC Units | 15d | 2026-07-07 A | 2026-07-07 A | MLTX-02-005-PR-8310 | 100% | 2026-06-21 | 2026-07-07 | Purchaser [150 h] | MOD-02-PR-8330 | MAK-01-PR-1020 | TO |

| ID | WBS | Activity | Duration | Start | Finish | Predecessors | Complete | Planned start | Planned finish | Total float | Free float | Resources | New Activity ID | Old Activity ID - MK | Procurement |
| --- | --- | --- | --- | --- | --- | --- | --- | --- | --- | --- | --- | --- | --- | --- | --- |
|  | 17 | **AIR DIFUSSERS/GRILLS** |  | 2026-08-18 | 2026-08-20 |  |  |  |  |  |  |  |  |  |  |
| MLTX-02-005-PR-8350 |  | PO for Air Diffusers/Grills | 5d | 2026-08-18 A | 2026-08-18 A | MLTX-02-005-PR-8190, MLTX-02-005-EN-6660 | 100% | 2026-10-22 | 2026-10-27 |  |  | Purchaser [150 h] | MOD-02-PR-8350 | MAK-01-PR-1000 | TO |
| MLTX-02-005-PR-8370 |  | Material Delivery for Air Diffusers/Grills | 15d | 2026-08-20 A | 2026-08-20 A | MLTX-02-005-PR-8350 | 100% | 2026-11-09 | 2026-11-25 |  |  | Purchaser [150 h] | MOD-02-PR-8370 | MAK-01-PR-1020 | TO |
|  | 18 | **GALVANIZED DUCTS** |  | 2026-08-18 | 2026-08-20 |  |  |  |  |  |  |  |  |  |  |
| MLTX-02-005-PR-8390 |  | PO for Galvanized Ducts | 5d | 2026-08-18 A | 2026-08-18 A | MLTX-02-005-EN-6690, MLTX-02-005-PR-8350 | 100% | 2026-10-28 | 2026-11-02 |  |  | Purchaser [150 h] | MOD-02-PR-8390 | MAK-01-PR-1000 | TO |
| MLTX-02-005-PR-8410 |  | Material Delivery for Galvanized Ducts | 15d | 2026-08-20 A | 2026-08-20 A | MLTX-02-005-PR-8390, MLTX-02-005-PR-8350 | 100% | 2026-11-03 | 2026-11-19 |  |  | Purchaser [150 h] | MOD-02-PR-8410 | MAK-01-PR-1020 | TO |
|  | 19 | **EXHAUST FANS** |  | 2026-08-20 | 2026-08-20 |  |  |  |  |  |  |  |  |  |  |
| MLTX-02-005-PR-8430 |  | PO for Exhaust Fans | 5d | 2026-08-20 A | 2026-08-20 A | MLTX-02-005-EN-6720, MLTX-02-005-PR-8190 | 100% | 2026-06-21 | 2026-06-25 |  |  | Purchaser [150 h] | MOD-02-PR-8430 | MAK-01-PR-1000 | TO |
| MLTX-02-005-PR-8450 |  | Material Delivery for Exhaust Fans | 10d | 2026-08-20 A | 2026-08-20 A | MLTX-02-005-PR-8430, MLTX-02-005-PR-8130 | 100% | 2026-09-10 | 2026-09-21 |  |  | Purchaser [150 h] | MOD-02-PR-8450 | MAK-01-PR-1020 | TO |
|  | 13 | **LIGHTING FIXTURES** |  | 2026-07-07 | 2026-12-05 |  |  |  |  |  |  |  |  |  |  |
| MLTX-02-005-PR-8470 |  | PO for Lighting Fixtures | 5d | 2026-07-07 A | 2026-07-07 A | MLTX-02-005-EN-6750, MLTX-02-005-PR-8270 | 100% | 2026-06-15 | 2026-06-20 |  |  | Purchaser [150 h] | MOD-02-PR-8470 | MAK-01-PR-1000 | TO |
| MLTX-02-005-PR-8490 |  | Material Delivery for Lighting Fixtures | 40d | 2026-10-20 | 2026-12-05 | MLTX-02-005-PR-8470, MLTX-02-005-PR-8430 |  |  |  | -42d | 0d | Purchaser [150 h] | MOD-02-PR-8490 | MAK-01-PR-1020 | TO |
|  | 14 | **SWITCHES/SOCKETS** |  | 2026-10-20 | 2026-12-07 |  |  |  |  |  |  |  |  |  |  |
| MLTX-02-005-PR-8510 |  | PO for Switches/Sockets | 15d | 2026-10-20 | 2026-11-05 | MLTX-02-005-PR-8470, MLTX-02-005-EN-6780, MLTX-02-005-PR-8450 |  |  |  | -1d | 0d | Purchaser [150 h] | MOD-02-PR-8510 | MAK-01-PR-1000 | TO |
| MLTX-02-005-PR-8530 |  | Material Delivery for Switches/Sockets | 27d | 2026-11-07 | 2026-12-07 | MLTX-02-005-PR-8510, MLTX-02-005-PR-8350 |  |  |  | -1d | 35d | Purchaser [150 h] | MOD-02-PR-8530 | MAK-01-PR-1020 | TO |
|  | 15 | **EARTHING SYSTEM** |  | 2026-07-12 | 2026-07-12 |  |  |  |  |  |  |  |  |  |  |
| MLTX-02-005-PR-8550 |  | PO for Earthing System | 5d | 2026-07-12 A | 2026-07-12 A | MLTX-02-005-EN-6810 | 100% | 2026-08-18 | 2026-08-23 |  |  | Purchaser [150 h] | MOD-02-PR-8550 | MAK-01-PR-1290 | TO |
| MLTX-02-005-PR-8570 |  | Material Delivery for Earthing System | 15d | 2026-07-12 A | 2026-07-12 A | MLTX-02-005-PR-8550, MLTX-02-005-PR-8110 | 100% | 2026-08-24 | 2026-09-09 |  |  | Purchaser [150 h] | MOD-02-PR-8570 | MAK-01-PR-1310 | TO |
|  | 5 | **DISTRIBUTION PANNELS** |  | 2026-10-20 | 2026-12-09 |  |  |  |  |  |  |  |  |  |  |
| MLTX-02-005-PR-8590 |  | PO for Distribution Panels | 5d | 2026-10-20 | 2026-10-25 | MLTX-02-005-EN-6840, MLTX-02-005-PR-8450 |  |  |  | -3d | 24d | Purchaser [150 h] | MOD-02-PR-8590 | MAK-01-PR-LLI-1060 | TO |
| MLTX-02-005-PR-8610 |  | Material Delivery for Distribution Panels | 15d | 2026-11-23 | 2026-12-09 | MLTX-02-005-PR-8590, MLTX-02-005-PR-8150 |  |  |  | -27d | 0d | Purchaser [150 h] | MOD-02-PR-8610 | MAK-01-PR-LLI-1100 | TO |
|  | 9 | **FURNITURES** |  | 2026-10-20 | 2027-01-07 |  |  |  |  |  |  |  |  |  |  |
| MLTX-02-005-PR-8150 |  | PO for Furnitures | 29d | 2026-10-20 | 2026-11-22 | MLTX-02-005-PR-8430, MLTX-02-005-EN-6510, MLTX-02-005-PR-8230 |  |  |  | -27d | 0d | Purchaser [150 h] | MOD-02-PR-8150 | MAK-01-PR-1000 | TO |
| MLTX-02-005-PR-8170 |  | Material Delivery for Furnitures | 40d | 2026-11-23 | 2027-01-07 | MLTX-02-005-PR-8150, MLTX-02-005-PR-9170 |  |  |  | -24d | 12d | Purchaser [150 h] | MOD-02-PR-8170 | MAK-01-PR-1020 | TO |

| ID | WBS | Activity | Duration | Start | Finish | Predecessors | Complete | Planned start | Planned finish | Total float | Free float | Resources | New Activity ID | Old Activity ID - MK | Procurement |
| --- | --- | --- | --- | --- | --- | --- | --- | --- | --- | --- | --- | --- | --- | --- | --- |
|  | PLG | **PLAYGROUND WORKS** |  | 2026-04-02 | 2027-02-21 |  |  |  |  |  |  |  |  |  |  |
|  | 5 | **PVC MEMBRANE** |  | 2026-04-02 | 2026-11-30 |  |  |  |  |  |  |  |  |  |  |
| MLTX-02-005-PR-8640 |  | PO for PVC Membrane | 10d | 2026-04-02 A | 2026-05-19 A | MLTX-02-005-EN-5310, MLTX-02-005-PR-9370 | 100% | 2026-09-16 | 2026-09-28 |  |  | Purchaser [150 h] | MOD-02-PR-8640 | MAK-01-PR-1120 | PL |
| MLTX-02-005-PR-8650 |  | Material Delivery for PVC Membrane | 21d | 2026-11-07 | 2026-11-30 | MLTX-02-005-EN-6880, MLTX-02-005-PR-8640, MLTX-02-005-PR-8970 |  |  |  | -18d | 41d | Purchaser [150 h] | MOD-02-PR-8650 | MAK-01-PR-1130 | PL |
|  | 15 | **ARTIFICIAL TURF** |  | 2026-04-02 | 2027-01-31 |  |  |  |  |  |  |  |  |  |  |
| MLTX-02-005-PR-8830 |  | PO for Artificial TURF | 5d | 2026-04-02 A | 2026-05-19 A | MLTX-02-005-EN-7030 | 100% | 2026-10-20 | 2026-10-25 |  |  | Purchaser [150 h] | MOD-02-PR-8830 | MAK-01-PR-1120 | PL |
| MLTX-02-005-PR-8850 |  | Material Delivery for Artificial TURF | 12d | 2027-01-18 | 2027-01-31 | MLTX-02-005-PR-8650, MLTX-02-005-PR-8830, MLTX-02-005-PR-9110 |  |  |  | -59d | 0d | Purchaser [150 h] | MOD-02-PR-8850 | MAK-01-PR-1130 | PL |
|  | 20 | **RUBBER GRANULES** |  | 2026-04-02 | 2026-12-13 |  |  |  |  |  |  |  |  |  |  |
| MLTX-02-005-PR-8870 |  | PO for Rubber Granules | 5d | 2026-04-02 A | 2026-05-19 A | MLTX-02-005-EN-7060 | 100% | 2026-10-04 | 2026-10-08 |  |  | Purchaser [150 h] | MOD-02-PR-8870 | MAK-01-PR-1120 | PL |
| MLTX-02-005-PR-8890 |  | Material Delivery for Rubber Granules | 32d | 2026-11-07 | 2026-12-13 | MLTX-02-005-PR-8870, MLTX-02-005-PR-9090 |  |  |  | -17d | 42d | Purchaser [150 h] | MOD-02-PR-8890 | MAK-01-PR-1130 | PL |
|  | 21 | **PADEL GLASS** |  | 2026-04-02 | 2027-02-21 |  |  |  |  |  |  |  |  |  |  |
| MLTX-02-005-PR-8910 |  | PO for Padel Glass | 5d | 2026-04-02 A | 2026-05-19 A | MLTX-02-005-EN-7090 | 100% | 2026-08-19 | 2026-08-24 |  |  | Purchaser [150 h] | MOD-02-PR-8910 | MAK-01-PR-1120 | PL |
| MLTX-02-005-PR-8930 |  | Material Delivery for Padel Glass | 18d | 2027-02-01 | 2027-02-21 | MLTX-02-005-PR-8890, MLTX-02-005-PR-8850, MLTX-02-005-PR-8910, MLTX-02-005-PR-9050 |  |  |  | -59d | 0d | Purchaser [150 h] | MOD-02-PR-8930 | MAK-01-PR-1130 | PL |
|  | 22 | **PADEL WIRE MESH/STEEL SETS** |  | 2026-04-08 | 2026-11-05 |  |  |  |  |  |  |  |  |  |  |
| MLTX-02-005-PR-8950 |  | PO for Wire Mesh/Steel Sets | 5d | 2026-04-08 A | 2026-05-19 A | MLTX-02-005-PR-8910, MLTX-02-005-EN-7120 | 100% | 2026-08-25 | 2026-08-30 |  |  | Purchaser [150 h] | MOD-02-PR-8950 | MAK-01-PR-1120 | PL |
| MLTX-02-005-PR-8970 |  | Material Delivery for Wire Mesh/Steel Sets | 15d | 2026-10-20 | 2026-11-05 | MLTX-02-005-PR-8950, MLTX-02-005-PR-8110 |  |  |  | -43d | 0d | Purchaser [150 h] | MOD-02-PR-8970 | MAK-01-PR-1130 | PL |
|  | 1 | **AGGREGATE BASE COURSE** |  | 2026-07-07 | 2026-07-07 |  |  |  |  |  |  |  |  |  |  |
| MLTX-02-005-PR-8990 |  | PO for Aggregate Base Course | 5d | 2026-07-07 A | 2026-07-07 A | MLTX-02-005-EN-7150 | 100% | 2026-06-13 | 2026-06-17 |  |  | Purchaser [150 h] | MOD-02-PR-8990 | MAK-01-PR-1090 | PL |
| MLTX-02-005-PR-9000 |  | Material Delivery for Aggregate Base Course | 7d | 2026-07-07 A | 2026-07-07 A | MLTX-02-005-PR-8990 | 100% | 2026-06-18 | 2026-06-25 |  |  | Purchaser [150 h] | MOD-02-PR-9000 | MAK-01-PR-1100 | PL |
|  | 16 | **PACKAGE AC UNITS** |  | 2026-07-04 | 2026-07-10 |  |  |  |  |  |  |  |  |  |  |
| MLTX-02-005-PR-9130 |  | PO for Package AC Units | 5d | 2026-07-04 A | 2026-07-04 A | MLTX-02-005-EN-7270, MLTX-02-005-PR-8310, MLTX-02-005-PR-9370 | 100% | 2026-09-16 | 2026-09-21 |  |  | Purchaser [200 h] | MOD-02-PR-9130 | MAK-01-PR-1000 | PL |
| MLTX-02-005-PR-9150 |  | Material Delivery for Package AC Units | 15d | 2026-07-10 A | 2026-07-10 A | MLTX-02-005-PR-9130, MLTX-02-005-PR-9370 | 100% | 2026-09-22 | 2026-10-10 |  |  | Purchaser [200 h] | MOD-02-PR-9150 | MAK-01-PR-1020 | PL |
|  | 17 | **AIR DIFUSSERS/GRILLS** |  | 2026-11-07 | 2026-11-29 |  |  |  |  |  |  |  |  |  |  |
| MLTX-02-005-PR-9170 |  | PO for Air Difussers/Grills | 5d | 2026-11-07 | 2026-11-11 | MLTX-02-005-EN-7300, MLTX-02-005-EN-6630, MLTX-02-005-PR-8190, MLTX-02-005-PR-8310, MLTX-02-005-PR-9090 |  |  |  | -29d | 0d | Purchaser [200 h] | MOD-02-PR-9170 | MAK-01-PR-1000 | PL |
| MLTX-02-005-PR-9190 |  | Material Delivery for Air Difussers/Grills | 15d | 2026-11-12 | 2026-11-29 | MLTX-02-005-PR-9170, MLTX-02-005-PR-9090 |  |  |  | -29d | 0d | Purchaser [200 h] | MOD-02-PR-9190 | MAK-01-PR-1020 | PL |

| ID | WBS | Activity | Duration | Start | Finish | Predecessors | Complete | Planned start | Planned finish | Total float | Free float | Resources | New Activity ID | Old Activity ID - MK | Procurement |
| --- | --- | --- | --- | --- | --- | --- | --- | --- | --- | --- | --- | --- | --- | --- | --- |
|  | 2 | **BITUMINOUS BASE & WEARING COURSE** |  | 2026-04-02 | 2026-12-07 |  |  |  |  |  |  |  |  |  |  |
| MLTX-02-005-PR-9020 |  | PO for Bituminous Base & Wearing Course | 5d | 2026-04-02 A | 2026-05-14 A | MLTX-02-005-EN-7180, MLTX-02-005-PR-9000 | 100% | 2026-06-27 | 2026-07-01 |  |  | Purchaser [150 h] | MOD-02-PR-9020 | MAK-01-PR-1120 | PL |
| MLTX-02-005-PR-9030 |  | Material Delivery for the Site | 27d | 2026-11-07 | 2026-12-07 | MLTX-02-005-PR-9020, MLTX-02-005-PR-9090 |  |  |  | -20d | 8d | Purchaser [150 h] | MOD-02-PR-9030 | MAK-01-PR-1130 | PL |
|  | 3 | **INTERLOCKING PAVING** |  | 2026-09-15 | 2027-01-05 |  |  |  |  |  |  |  |  |  |  |
| MLTX-02-005-PR-9050 |  | PO for Interlocking Block Pavers | 15d | 2026-09-15 A | 2026-09-15 A | MLTX-02-005-EN-7210 | 100% | 2026-10-25 | 2026-11-10 |  |  | Purchaser [200 h] | MOD-02-PR-9050 | MAK-01-PR-1170 | PL |
| MLTX-02-005-PR-9070 |  | Material Delivery for Interlocking Block Pavers | 17d | 2026-12-17 | 2027-01-05 | MLTX-02-005-PR-9030, MLTX-02-005-PR-9050, MLTX-02-005-PR-9430 |  |  |  | -28d | 40d | Purchaser [200 h] | MOD-02-PR-9070 | MAK-01-PR-1190 | PL |
|  | 4 | **MARKING PAINT** |  | 2026-10-20 | 2027-01-17 |  |  |  |  |  |  |  |  |  |  |
| MLTX-02-005-PR-9090 |  | PO for Marking Paint | 15d | 2026-10-20 | 2026-11-05 | MLTX-02-005-EN-7240, MLTX-02-005-PR-9020, MLTX-02-005-PR-8130 |  |  |  | -43d | 0d | Purchaser [150 h] | MOD-02-PR-9090 | MAK-01-PR-1120 | PL |
| MLTX-02-005-PR-9110 |  | Material Delivery for Marking Paint | 17d | 2026-12-29 | 2027-01-17 | MLTX-02-005-PR-9090, MLTX-02-005-PR-9760 |  |  |  | -68d | 0d | Purchaser [150 h] | MOD-02-PR-9110 | MAK-01-PR-1130 | PL |
|  | 18 | **GALVANIZED DUCTS** |  | 2026-11-07 | 2026-11-29 |  |  |  |  |  |  |  |  |  |  |
| MLTX-02-005-PR-9210 |  | PO for Galvanized Duct | 5d | 2026-11-07 | 2026-11-11 | MLTX-02-005-EN-7330, MLTX-02-005-PR-8310, MLTX-02-005-PR-9090 |  |  |  | -29d | 0d | Purchaser [150 h] | MOD-02-PR-9210 | MAK-01-PR-1000 | PL |
| MLTX-02-005-PR-9230 |  | Material Delivery for Galvanized Duct | 15d | 2026-11-12 | 2026-11-29 | MLTX-02-005-PR-9210, MLTX-02-005-PR-9090 |  |  |  | -29d | 0d | Purchaser [150 h] | MOD-02-PR-9230 | MAK-01-PR-1020 | PL |
|  | 19 | **EXHAUST FANS** |  | 2026-10-20 | 2026-11-11 |  |  |  |  |  |  |  |  |  |  |
| MLTX-02-005-PR-9250 |  | PO for Exhaust Fans | 5d | 2026-10-20 | 2026-10-25 | MLTX-02-005-EN-7360, MLTX-02-005-PR-8310, MLTX-02-005-PR-9370 |  |  |  | -14d | 0d | Purchaser [150 h] | MOD-02-PR-9250 | MAK-01-PR-1000 | PL |
| MLTX-02-005-PR-9270 |  | Material Delivery for Exhaust Fans | 15d | 2026-10-26 | 2026-11-11 | MLTX-02-005-PR-9250, MLTX-02-005-PR-9370 |  |  |  | -14d | 15d | Purchaser [150 h] | MOD-02-PR-9270 | MAK-01-PR-1020 | PL |
|  | 10 | **DISTRIBUTION BOARDS** |  | 2026-11-07 | 2026-11-29 |  |  |  |  |  |  |  |  |  |  |
| MLTX-02-005-PR-9290 |  | PO for Distribution Boards | 5d | 2026-11-07 | 2026-11-11 | MLTX-02-005-EN-7390, MLTX-02-005-PR-8970, MLTX-02-005-PR-8310, MLTX-02-005-PR-9090 |  |  |  | -43d | 0d | Purchaser [150 h] | MOD-02-PR-9290 | MAK-01-PR-1000 | PL |
| MLTX-02-005-PR-9310 |  | Material Delivery for Distribution Boards | 15d | 2026-11-12 | 2026-11-29 | MLTX-02-005-PR-9290, MLTX-02-005-PR-9090 |  |  |  | -29d | 0d | Purchaser [150 h] | MOD-02-PR-9310 | MAK-01-PR-1020 | PL |
|  | 11 | **POWER CABLES** |  | 2026-11-12 | 2027-01-20 |  |  |  |  |  |  |  |  |  |  |
| MLTX-02-005-PR-9330 |  | PO for Power Cables | 5d | 2026-11-12 | 2026-11-17 | MLTX-02-005-PR-9290, MLTX-02-005-EN-7420, MLTX-02-005-PR-9090 |  |  |  | -43d | 0d | Purchaser [150 h] | MOD-02-PR-9330 | MAK-01-PR-1000 | PL |
| MLTX-02-005-PR-9350 |  | Material Delivery for Power Cables | 30d | 2026-12-17 | 2027-01-20 | MLTX-02-005-PR-9330, MLTX-02-005-PR-9430 |  |  |  | -29d | 8d | Purchaser [150 h] | MOD-02-PR-9350 | MAK-01-PR-1020 | PL |
|  | 12 | **LIGHT FIXTURES** |  | 2026-07-07 | 2026-11-29 |  |  |  |  |  |  |  |  |  |  |
| MLTX-02-005-PR-9370 |  | PO for Light Fixtures | 5d | 2026-07-07 A | 2026-07-07 A | MLTX-02-005-EN-7420, MLTX-02-005-EN-7450, MLTX-02-005-PR-8270, MLTX-02-005-PR-8130 | 100% | 2026-09-10 | 2026-09-15 |  |  | Purchaser [150 h] | MOD-02-PR-9370 | MAK-01-PR-1000 | PL |
| MLTX-02-005-PR-9390 |  | Material Delivery for Light Fixtures | 10d | 2026-11-18 | 2026-11-29 | MLTX-02-005-PR-9330, MLTX-02-005-PR-9370, MLTX-02-005-PR-8450, MLTX-02-005-PR-9090 |  |  |  | -29d | 0d | Purchaser [150 h] | MOD-02-PR-9390 | MAK-01-PR-1020 | PL |

| ID | WBS | Activity | Duration | Start | Finish | Predecessors | Complete | Planned start | Planned finish | Total float | Free float | Resources | New Activity ID | Old Activity ID - MK | Procurement |
| --- | --- | --- | --- | --- | --- | --- | --- | --- | --- | --- | --- | --- | --- | --- | --- |
|  | 13 | **CCTV MATERIALS** |  | 2026-10-20 | 2026-12-16 |  |  |  |  |  |  |  |  |  |  |
| MLTX-02-005-PR-9410 |  | PO for CCTV | 25d | 2026-10-20 | 2026-11-17 | MLTX-02-005-PR-9370, MLTX-02-005-EN-7480, MLTX-02-005-EN-3780 |  |  |  | -19d | 10d | Purchaser [150 h] | MOD-02-PR-9410 | MAK-01-PR-1000 | PL |
| MLTX-02-005-PR-9430 |  | Material Delivery for CCTV | 15d | 2026-11-30 | 2026-12-16 | MLTX-02-005-PR-9270, MLTX-02-005-PR-9390, MLTX-02-005-PR-9150, MLTX-02-005-PR-9410, MLTX-02-005-PR-9310, MLTX-02-005-PR-9190, MLTX-02-005-PR-9230 |  |  |  | -29d | 0d | Purchaser [150 h] | MOD-02-PR-9430 | MAK-01-PR-1020 | PL |
|  | 14 | **POWER OUTLETS/SWITCHES** |  | 2026-07-07 | 2026-11-23 |  |  |  |  |  |  |  |  |  |  |
| MLTX-02-005-PR-9450 |  | PO for Power Outlets/Switches | 6d | 2026-07-07 A | 2026-07-07 A | MLTX-02-005-PR-8330, MLTX-02-005-EN-7510 | 100% | 2026-07-08 | 2026-07-14 |  |  | Purchaser [150 h] | MOD-02-PR-9450 | MAK-01-PR-1000 | PL |
| MLTX-02-005-PR-9470 |  | Material Delivery for Power Outlets/Switches | 30d | 2026-10-20 | 2026-11-23 | MLTX-02-005-PR-9450 |  |  |  | -7d | 30d | Purchaser [150 h] | MOD-02-PR-9470 | MAK-01-PR-1020 | PL |
|  | LSC | **LANDSCAPE WORKS** |  | 2026-05-16 | 2027-02-21 |  |  |  |  |  |  |  |  |  |  |
|  | 7 | **INTERLOCKING PAVING** |  | 2026-08-26 | 2026-08-26 |  |  |  |  |  |  |  |  |  |  |
| MLTX-02-005-PR-9500 |  | PO for Interlocking Block Pavers | 5d | 2026-08-26 A | 2026-08-26 A | MLTX-02-005-EN-7550, MLTX-02-005-PR-9450 | 100% | 2026-07-15 | 2026-07-20 |  |  | Purchaser [150 h] | MOD-02-PR-9500 | MAK-01-PR-1170 | LS |
| MLTX-02-005-PR-9520 |  | Material Delivery for Interlocking Block Pavers | 12d | 2026-08-26 A | 2026-08-26 A | MLTX-02-005-PR-9500 | 100% | 2026-07-21 | 2026-08-03 |  |  | Purchaser [150 h] | MOD-02-PR-9520 | MAK-01-PR-1190 | LS |
|  | 9 | **CURBSTONE** |  | 2026-07-28 | 2026-07-28 |  |  |  |  |  |  |  |  |  |  |
| MLTX-02-005-PR-9540 |  | PO for Curbstone | 5d | 2026-07-28 A | 2026-07-28 A | MLTX-02-005-EN-7580 | 100% | 2026-06-09 | 2026-06-14 |  |  | Purchaser [150 h] | MOD-02-PR-9540 | MAK-01-PR-1260 | LS |
| MLTX-02-005-PR-9560 |  | Material Delivery for Curbstone | 12d | 2026-07-28 A | 2026-07-28 A | MLTX-02-005-PR-9540 | 100% | 2026-06-15 | 2026-06-28 |  |  | Purchaser [150 h] | MOD-02-PR-9560 | MAK-01-PR-1280 | LS |
|  | 1 | **PAVEMENT MARKING** |  | 2026-10-20 | 2027-02-21 |  |  |  |  |  |  |  |  |  |  |
| MLTX-02-005-PR-9580 |  | PO for Pavement Markings | 5d | 2026-10-20 | 2026-10-25 | MLTX-02-005-PR-9450, MLTX-02-005-EN-7610 |  |  |  | -68d | 0d | Purchaser [150 h] | MOD-02-PR-9580 | MAK-01-PR-1200 | LS |
| MLTX-02-005-PR-9600 |  | Material Delivery for Pavement Markings | 30d | 2027-01-18 | 2027-02-21 | MLTX-02-005-PR-9580, MLTX-02-005-PR-9110 |  |  |  | -68d | 0d | Purchaser [150 h] | MOD-02-PR-9600 | MAK-01-PR-1220 | LS |
|  | 2 | **TRAFFIC SIGNS** |  | 2026-10-26 | 2026-12-16 |  |  |  |  |  |  |  |  |  |  |
| MLTX-02-005-PR-9620 |  | PO for Traffic Signs | 15d | 2026-10-26 | 2026-11-11 | MLTX-02-005-EN-7640, MLTX-02-005-PR-9580, MLTX-02-005-PR-9780 |  |  |  | -68d | 0d | Purchaser [150 h] | MOD-02-PR-9620 | MAK-01-PR-1230 | LS |
| MLTX-02-005-PR-9640 |  | Material Delivery for Traffic Signs | 30d | 2026-11-12 | 2026-12-16 | MLTX-02-005-PR-9620 |  |  |  | -68d | 0d | Purchaser [150 h] | MOD-02-PR-9640 | MAK-01-PR-1250 | LS |
|  | 3 | **IRRIGATION PIPES/SPRINKLERS** |  | 2026-06-10 | 2026-07-02 |  |  |  |  |  |  |  |  |  |  |
| MLTX-02-005-PR-9660 |  | PO for Irrigation Pipes/Sprinkles | 5d | 2026-06-10 A | 2026-06-10 A | MLTX-02-005-EN-7670 | 100% | 2026-06-09 | 2026-06-14 |  |  | Purchaser [150 h] | MOD-02-PR-9660 | MAK-01-PR-1260 | LS |
| MLTX-02-005-PR-9680 |  | Material Delivery for Irrigation Pipes/Sprinkles | 8d | 2026-07-02 A | 2026-07-02 A | MLTX-02-005-PR-9660 | 100% | 2026-06-15 | 2026-06-23 |  |  | Purchaser [150 h] | MOD-02-PR-9680 | MAK-01-PR-1280 | LS |
|  | 5 | **AGRICULTURE SOIL** |  | 2026-10-20 | 2026-12-07 |  |  |  |  |  |  |  |  |  |  |
| MLTX-02-005-PR-9700 |  | PO for Agriculture Soil | 15d | 2026-10-20 | 2026-11-05 | MLTX-02-005-EN-7700, MLTX-02-005-PR-9780 |  |  |  | -21d | 0d | Purchaser [150 h] | MOD-02-PR-9700 | MAK-01-PR-1260 | LS |
| MLTX-02-005-PR-9720 |  | Material Delivery for Agriculture Soil | 22d | 2026-11-12 | 2026-12-07 | MLTX-02-005-PR-9700, MLTX-02-005-PR-9620 |  |  |  | -26d | 8d | Purchaser [150 h] | MOD-02-PR-9720 | MAK-01-PR-1280 | LS |

| ID | WBS | Activity | Duration | Start | Finish | Predecessors | Complete | Planned start | Planned finish | Total float | Free float | Resources | New Activity ID | Old Activity ID - MK | Procurement |
| --- | --- | --- | --- | --- | --- | --- | --- | --- | --- | --- | --- | --- | --- | --- | --- |
|  | 8 | **TRACK SURFACE** |  | 2026-05-16 | 2026-12-28 |  |  |  |  |  |  |  |  |  |  |
| MLTX-02-005-PR-9740 |  | PO for Track Surface | 5d | 2026-05-16 A | 2026-05-19 A | MLTX-02-005-EN-7730, MLTX-02-005-EN-5370, MLTX-02-005-EN-7610, MLTX-02-005-PR-9560 | 100% | 2026-06-30 | 2026-07-05 |  |  | Purchaser [150 h] | MOD-02-PR-9740 | MAK-01-PR-1260 | LS |
| MLTX-02-005-PR-9760 |  | Material Delivery for Track Surface | 10d | 2026-12-17 | 2026-12-28 | MLTX-02-005-PR-9740, MLTX-02-005-PR-9580, MLTX-02-005-PR-9640 |  |  |  | -68d | 0d | Purchaser [150 h] | MOD-02-PR-9760 | MAK-01-PR-1280 | LS |
|  | 10 | **GRASS/TREES** |  | 2026-05-17 | 2026-12-05 |  |  |  |  |  |  |  |  |  |  |
| MLTX-02-005-PR-9780 |  | PO for Grass/Trees | 5d | 2026-05-17 A | 2026-05-20 A | MLTX-02-005-EN-7760, MLTX-02-005-PR-9740 | 100% | 2026-07-21 | 2026-07-26 |  |  | Purchaser [150 h] | MOD-02-PR-9780 | MAK-01-PR-1260 | LS |
| MLTX-02-005-PR-9800 |  | Material Delivery for Grass/Trees | 25d | 2026-11-07 | 2026-12-05 | MLTX-02-005-PR-9700, MLTX-02-005-PR-9780, MLTX-02-005-PR-9930 |  |  |  | -10d | 26d | Purchaser [150 h] | MOD-02-PR-9800 | MAK-01-PR-1280 | LS |
|  | 6 | **CABLES** |  | 2026-09-15 | 2026-09-15 |  |  |  |  |  |  |  |  |  |  |
| MLTX-02-005-PR-9820 |  | PO for Cables | 5d | 2026-09-15 A | 2026-09-15 A | MLTX-02-005-EN-7790 | 100% | 2026-09-17 | 2026-09-22 |  |  | Purchaser [150 h] | MOD-02-PR-9820 | MAK-01-PR-1200 | LS |
| MLTX-02-005-PR-9840 |  | Material Delivery for Cables | 15d | 2026-09-15 A | 2026-09-15 A | MLTX-02-005-PR-9820 | 100% | 2026-09-24 | 2026-10-11 |  |  | Purchaser [150 h] | MOD-02-PR-9840 | MAK-01-PR-1220 | LS |
|  | LLI | **LONG LEAD ITEM** |  | 2026-07-07 | 2027-01-31 |  |  |  |  |  |  |  |  |  |  |
|  | PLG | **PLAYGROUND WORKS** |  | 2026-10-20 | 2027-01-31 |  |  |  |  |  |  |  |  |  |  |
|  | 6 | **STEEL TENSION CABLES** |  | 2026-12-06 | 2027-01-31 |  |  |  |  |  |  |  |  |  |  |
| MLTX-02-005-PR-8670 |  | PO for Steel Tension Cables | 7d | 2026-12-06 | 2026-12-13 | MLTX-02-005-EN-6910, MLTX-02-005-PR-8490 |  |  |  | -42d | 0d | Purchaser [230 h] | MOD-02-PR-8670 | MAK-01-PR-1120 | PL |
| MLTX-02-005-PR-8680 |  | Material Fabrication for Steel Tension Cables | 15d | 2026-12-14 | 2026-12-30 | MLTX-02-005-PR-8670, MLTX-02-005-PR-9870 |  |  |  | -42d | 0d | Purchaser [229.1 h] | MOD-02-PR-8680 | MAK-01-PR-1120 | PL |
| MLTX-02-005-PR-8690 |  | Material Delivery for Steel Tension Cables | 15d | 2026-12-31 | 2027-01-17 | MLTX-02-005-PR-8680, MLTX-02-005-PR-8750 |  |  |  | -42d | 0d | Purchaser [200 h] | MOD-02-PR-8690 | MAK-01-PR-1130 | PL |
| MLTX-02-005-PR-9890 |  | Staging time | 12d | 2027-01-18 | 2027-01-31 | MLTX-02-005-PR-8690, MLTX-02-005-PR-8710 |  |  |  | -42d | 0d | Purchaser [200 h] | MOD-02-PR-8690 | MAK-01-PR-1130 | PL |
|  | 7 | **EMERGENCY DOORS** |  | 2026-10-20 | 2027-01-14 |  |  |  |  |  |  |  |  |  |  |
| MLTX-02-005-PR-8710 |  | PO for Emergency Doors | 20d | 2026-10-20 | 2026-11-11 | MLTX-02-005-EN-6940, MLTX-02-005-PR-9870 |  |  |  | -32d | 0d | Purchaser [150 h] | MOD-02-PR-8710 | MAK-01-PR-1120 | PL |
| MLTX-02-005-PR-8720 |  | Material Fabrication for Emergency Doors | 20d | 2026-11-12 | 2026-12-05 | MLTX-02-005-PR-8710, MLTX-02-005-PR-9880 |  |  |  | -27d | 0d | Purchaser [150 h] | MOD-02-PR-8720 | MAK-01-PR-1120 | PL |
| MLTX-02-005-PR-8730 |  | Material Delivery for Emergency Doors | 20d | 2026-12-06 | 2026-12-28 | MLTX-02-005-PR-8720, MLTX-02-005-PR-9930 |  |  |  | -27d | 0d | Purchaser [150 h] | MOD-02-PR-8730 | MAK-01-PR-1130 | PL |
| MLTX-02-005-PR-9900 |  | Staging time | 15d | 2026-12-29 | 2027-01-14 | MLTX-02-005-PR-8730, MLTX-02-005-PR-9430 |  |  |  | -27d | 32d | Purchaser [150 h] | MOD-02-PR-8730 | MAK-01-PR-1130 | PL |
|  | 8 | **PRESSURE UNITS** |  | 2026-10-20 | 2027-01-09 |  |  |  |  |  |  |  |  |  |  |
| MLTX-02-005-PR-8750 |  | PO for Pressure Units | 10d | 2026-10-20 | 2026-10-31 | MLTX-02-005-EN-6970, MLTX-02-005-PR-9870 |  |  |  | -17d | 10d | Purchaser [150 h] | MOD-02-PR-8750 | MAK-01-PR-1120 | PL |
| MLTX-02-005-PR-8760 |  | Material Fabrication for Pressure Units | 20d | 2026-11-12 | 2026-12-05 | MLTX-02-005-PR-8750, MLTX-02-005-PR-8710 |  |  |  | -27d | 0d | Purchaser [150 h] | MOD-02-PR-8760 | MAK-01-PR-1120 | PL |
| MLTX-02-005-PR-8770 |  | Material Delivery for Pressure Units | 25d | 2026-12-06 | 2027-01-03 | MLTX-02-005-PR-8760, MLTX-02-005-PR-8790 |  |  |  | -27d | 0d | Purchaser [150 h] | MOD-02-PR-8770 | MAK-01-PR-1130 | PL |
| MLTX-02-005-PR-9910 |  | Staging time | 5d | 2027-01-04 | 2027-01-09 | MLTX-02-005-PR-8770, MLTX-02-005-PR-8730 |  |  |  | -27d | 10d | Purchaser [150 h] | MOD-02-PR-8770 | MAK-01-PR-1130 | PL |

| ID | WBS | Activity | Duration | Start | Finish | Predecessors | Complete | Planned start | Planned finish | Total float | Free float | Resources | New Activity ID | Old Activity ID - MK | Procurement |
| --- | --- | --- | --- | --- | --- | --- | --- | --- | --- | --- | --- | --- | --- | --- | --- |
|  | 9 | **AIR LOCK DOORS** |  | 2026-11-12 | 2027-01-20 |  |  |  |  |  |  |  |  |  |  |
| MLTX-02-005-PR-8790 |  | PO for Lock Doors | 10d | 2026-11-12 | 2026-11-23 | MLTX-02-005-EN-7000, MLTX-02-005-PR-8710 |  |  |  | -32d | 0d | Purchaser [150 h] | MOD-02-PR-8790 | MAK-01-PR-1120 | PL |
| MLTX-02-005-PR-8800 |  | Material Fabrication for Lock Doors | 20d | 2026-11-24 | 2026-12-16 | MLTX-02-005-PR-8790, MLTX-02-005-PR-8710 |  |  |  | -32d | 0d | Purchaser [150 h] | MOD-02-PR-8800 | MAK-01-PR-1120 | PL |
| MLTX-02-005-PR-8810 |  | Material Delivery for Lock Doors | 25d | 2026-12-17 | 2027-01-14 | MLTX-02-005-PR-8800, MLTX-02-005-PR-8720 |  |  |  | -32d | 0d | Purchaser [150 h] | MOD-02-PR-8810 | MAK-01-PR-1130 | PL |
| MLTX-02-005-PR-9920 |  | Staging time | 5d | 2027-01-16 | 2027-01-20 | MLTX-02-005-PR-8810, MLTX-02-005-PR-8730 |  |  |  | -32d | 27d | Purchaser [150 h] | MOD-02-PR-8810 | MAK-01-PR-1130 | PL |
|  | LSC | **LANDSCAPE WORKS** |  | 2026-07-07 | 2026-09-20 |  |  |  |  |  |  |  |  |  |  |
|  | 4 | **LIGHT POLES** |  | 2026-07-07 | 2026-09-20 |  |  |  |  |  |  |  |  |  |  |
| MLTX-02-005-PR-9860 |  | PO for Lighting poles | 10d | 2026-07-07 A | 2026-07-07 A | MLTX-02-005-EN-7820, MLTX-02-005-PR-8290 | 100% | 2026-07-05 | 2026-07-15 |  |  | Purchaser [150 h] | MOD-02-PR-9860 | MAK-01-PR-LLI-1120 | LS |
| MLTX-02-005-PR-9870 |  | Material Fabrication for Lighting poles | 30d | 2026-08-26 A | 2026-08-26 A | MLTX-02-005-PR-9520, MLTX-02-005-PR-9860 | 100% | 2026-08-04 | 2026-09-07 |  |  | Purchaser [150 h] | MOD-02-PR-9870 | MAK-01-PR-LLI-1130 | LS |
| MLTX-02-005-PR-9880 |  | Material Delivery for Lighting poles | 20d | 2026-09-20 A | 2026-09-20 A | MLTX-02-005-PR-9870 | 100% | 2026-09-08 | 2026-10-01 |  |  | Purchaser [150 h] | MOD-02-PR-9880 | MAK-01-PR-LLI-1160 | LS |
| MLTX-02-005-PR-9930 |  | Staging time | 15d | 2026-09-20 A | 2026-09-20 A | MLTX-02-005-PR-9880 | 100% | 2026-10-03 | 2026-10-19 |  |  | Purchaser [150 h] | MOD-02-PR-9880 | MAK-01-PR-LLI-1160 | LS |
|  | T & C | **TESTING & COMMISSIONING** |  | 2027-02-27 | 2027-03-21 |  |  |  |  |  |  |  |  |  |  |
| MLTX-02-005-TC-11870 |  | Testing and Commissioning for MEP Works for Toilet/Service Building | 12d | 2027-02-27 | 2027-03-15 | MLTX-02-005-CN-11780, MLTX-02-005-CN-11620, MLTX-02-005-CN-11740, MLTX-02-005-CN-11770, MLTX-02-005-CN-11820, MLTX-02-005-CN-11550, MLTX-02-005-CN-11870, MLTX-02-005-CN-11460, MLTX-02-005-CN-11380, MLTX-02-005-CN-11580, MLTX-02-005-CN-11790, MLTX-02-005-CN-11500, MLTX-02-005-CN-11760, MLTX-02-005-CN-11750, MLTX-02-005-CN-11860, MLTX-02-005-CN-11390, MLTX-02-005-CN-11830, MLTX-02-005-CN-11170 FF, MLTX-02-005-CN-11220 FF, MLTX-02-005-CN-11130 FF, MLTX-02-005-CN-11120 FF, MLTX-02-005-CN-11400 FF |  |  |  | -58d | 30d | QA/QC Engineer [1400 h] | MOD-02-TC-11870 | T&C-1030 |  |
| MLTX-02-005-TC-11880 |  | Testing and Commissioning for MEP Works for Landscape Works | 5d | 2027-03-07 | 2027-03-15 | MLTX-02-005-CN-10540, MLTX-02-005-CN-10580 FF, MLTX-02-005-CN-9960 FF, MLTX-02-005-CN-9970 FF, MLTX-02-005-CN-11460 FF, MLTX-02-005-CN-9980 FF, MLTX-02-005-CN-10620 FF, MLTX-02-005-CN-10670 FF, MLTX-02-005-CN-11120 FF |  |  |  | -58d | 5d | QA/QC Engineer [1392.9 h] | MOD-02-TC-11880 | T&C-1050 |  |
| MLTX-02-005-TC-11860 |  | Testing and Commissioning for MEP Works for Playground Area | 2d | 2027-03-20 | 2027-03-21 | MLTX-02-005-CN-10220, MLTX-02-005-CN-10390, MLTX-02-005-CN-10280, MLTX-02-005-CN-10140 FF, MLTX-02-005-CN-11120 FF |  |  |  | -63d | 25d | QA/QC Engineer [1400 h] | MOD-02-TC-11860 | T&C-1020 |  |
|  | 2 | **HASA OASIS** |  | 2026-03-04 | 2027-04-19 |  |  |  |  |  |  |  |  |  |  |
|  | MOB | **MOBILIZATION** |  | 2026-03-04 | 2026-04-04 |  |  |  |  |  |  |  |  |  |  |
|  | SURV | **TOPOGRAPHIC SURVEY** |  | 2026-03-04 | 2026-03-08 |  |  |  |  |  |  |  |  |  |  |
| MLTX-02-005-MB-1860 |  | Site Survey Works | 5d | 2026-03-04 A | 2026-03-08 A | MLTX-02-005-MS-1010 | 100% | 2026-03-03 | 2026-03-08 |  |  | QA/QC Engineer [60 h] | MOD-02-MB-1320 | MAK-01-TPS-1000 |  |
|  | OFFICE | **SITE FACILITIES & OFFICES** |  | 2026-03-04 | 2026-04-02 |  |  |  |  |  |  |  |  |  |  |
| MLTX-02-005-MB-1770 |  | Site Layout Plan | 4d | 2026-03-04 A | 2026-03-08 A | MLTX-02-005-MS-1010 | 100% | 2026-03-03 | 2026-03-07 |  |  | Labor [230 h] | MOD-02-MB-1340 | MAK-01-MOB-1000 |  |
| MLTX-02-005-MB-1780 |  | Clear & Grub for Offices & Access Road | 3d | 2026-03-09 A | 2026-03-11 A | MLTX-02-005-MB-1770 | 100% | 2026-03-08 | 2026-03-10 |  |  | Labor [200 h] | MOD-02-MB-1350 | MAK-01-MOB-1010 |  |
| MLTX-02-005-MB-1790 |  | Construct Site Access Roads | 4d | 2026-03-09 A | 2026-03-12 A | MLTX-02-005-MB-1770, MLTX-02-005-MB-1780 | 100% | 2026-03-11 | 2026-03-15 |  |  | Labor [200 h] | MOD-02-MB-1360 | MAK-01-MOB-1020 |  |
| MLTX-02-005-MB-1800 |  | Construct Temporary Fence | 7d | 2026-03-12 A | 2026-03-19 A | MLTX-02-005-MB-1780 | 100% | 2026-03-11 | 2026-03-18 |  |  | Labor [200 h] | MOD-02-MB-1370 | MAK-01-MOB-1030 |  |
| MLTX-02-005-MB-1810 |  | Construct Site Offices & Storage | 14d | 2026-03-14 A | 2026-04-01 A | MLTX-02-005-MB-1790, MLTX-02-005-MB-1800 | 100% | 2026-03-19 | 2026-04-07 |  |  | Labor [200 h] | MOD-02-MB-1380 | MAK-01-MOB-1040 |  |
| MLTX-02-005-MB-1820 |  | Install Project Signs | 8d | 2026-03-14 A | 2026-03-25 A | MLTX-02-005-MB-1790, MLTX-02-005-MB-1800 | 100% | 2026-03-19 | 2026-03-31 |  |  | Labor [200 h] | MOD-02-MB-1390 | MAK-01-MOB-1050 |  |
| MLTX-02-005-MB-1830 |  | Install Site Facilities | 4d | 2026-03-24 A | 2026-03-28 A | MLTX-02-005-MB-1800 | 100% | 2026-03-19 | 2026-03-26 |  |  | Labor [300 h] | MOD-02-MB-1400 | MAK-01-MOB-1060 |  |
| MLTX-02-005-MB-1840 |  | Electrical Works & Connections | 6d | 2026-03-24 A | 2026-03-30 A | MLTX-02-005-MB-1800, MLTX-02-005-MB-1850 | 100% | 2026-03-30 | 2026-04-05 |  |  | Labor [300 h] | MOD-02-MB-1410 | MAK-01-MOB-1070 |  |
| MLTX-02-005-MB-1850 |  | Construct Parking Sheds | 6d | 2026-03-24 A | 2026-03-30 A | MLTX-02-005-MB-1800 | 100% | 2026-03-19 | 2026-03-29 |  |  | Labor [300 h] | MOD-02-MB-1420 | MAK-01-MOB-1080 |  |
| MLTX-02-005-MB-1750 |  | Equipment Mobalization | 7d | 2026-03-26 A | 2026-04-02 A | MLTX-02-005-MB-1820, MLTX-02-005-MB-1830 | 100% | 2026-04-01 | 2026-04-08 |  |  | Labor [282.9 h] | MOD-02-MB-1430 | MAK-01-MOB-1100 |  |
| MLTX-02-005-MB-1740 |  | Manpower Mobalization | 5d | 2026-03-29 A | 2026-04-02 A | MLTX-02-005-MB-1830, MLTX-02-005-MB-1850 | 100% | 2026-03-30 | 2026-04-04 |  |  | Labor [250 h] | MOD-02-MB-1440 | MAK-01-MOB-1090 |  |

| ID | WBS | Activity | Duration | Start | Finish | Predecessors | Complete | Planned start | Planned finish | Resources | New Activity ID | Old Activity ID - MK | Shop Drawings |
| --- | --- | --- | --- | --- | --- | --- | --- | --- | --- | --- | --- | --- | --- |
|  | PRELI | **PRELIMINARY SUBMITTALS** |  | 2026-03-09 | 2026-04-04 |  |  |  |  |  |  |  |  |
|  | P&S | **PREPARATIONS & SUBMITTAL BY CONTRACTORS** |  | 2026-03-09 | 2026-03-19 |  |  |  |  |  |  |  |  |
| MLTX-02-005-MB-1760 |  | Preparation and Submittal of Detailed Work Order Programme (Baseline) | 10d | 2026-03-09 A | 2026-03-19 A | MLTX-02-005-MB-1770 | 100% | 2026-03-08 | 2026-03-18 | QA/QC Engineer [150 h] | MOD-02-MB-1540 | MAK-01-PS-1070 |  |
| MLTX-02-005-MB-1870 |  | Preparation and Submittal of Project Execution Plan | 8d | 2026-03-09 A | 2026-03-17 A | MLTX-02-005-MB-1770, MLTX-02-005-MB-1880 | 100% | 2026-03-17 | 2026-03-29 | QA/QC Engineer [120 h] | MOD-02-MB-1550 | MAK-01-PS-1080 |  |
| MLTX-02-005-MB-1880 |  | Submission of Contractor Project Quality Plan | 8d | 2026-03-09 A | 2026-03-17 A | MLTX-02-005-MB-1770 | 100% | 2026-03-08 | 2026-03-16 | QA/QC Engineer [120 h] | MOD-02-MB-1560 | MAK-01-PS-1090 |  |
| MLTX-02-005-MB-1890 |  | Submission of Construction Safety & Environmental Management Plan | 8d | 2026-03-09 A | 2026-03-17 A | MLTX-02-005-MB-1770, MLTX-02-005-MB-1880 | 100% | 2026-03-17 | 2026-03-29 | QA/QC Engineer [120 h] | MOD-02-MB-1570 | MAK-01-PS-1100 |  |
| MLTX-02-005-MB-1900 |  | Preparation and Submittal of Organization Chart | 8d | 2026-03-09 A | 2026-03-17 A | MLTX-02-005-MB-1770, MLTX-02-005-MB-1880 | 100% | 2026-03-17 | 2026-03-29 | QA/QC Engineer [120 h] | MOD-02-MB-1580 | MAK-01-PS-1110 |  |
| MLTX-02-005-MB-1910 |  | Preparation and Submittal of Communication Plan | 8d | 2026-03-09 A | 2026-03-17 A | MLTX-02-005-MB-1770, MLTX-02-005-MB-1880 | 100% | 2026-03-17 | 2026-03-29 | QA/QC Engineer [120 h] | MOD-02-MB-1590 | MAK-01-PS-1120 |  |
|  | APP | **APPROVALS BY EMPLOYERS** |  | 2026-03-18 | 2026-04-04 |  |  |  |  |  |  |  |  |
| MLTX-02-005-MB-1930 |  | Approval of Project Execution Plan | 10d | 2026-03-18 A | 2026-04-01 A | MLTX-02-005-MB-1870, MLTX-02-005-MB-1940 | 100% | 2026-04-01 | 2026-04-12 | Consultant Staff [120 h] | MOD-02-MB-1690 | MAK-01-PS-1210 |  |
| MLTX-02-005-MB-1940 |  | Approval of Contractor Project Quality Plan | 10d | 2026-03-18 A | 2026-04-01 A | MLTX-02-005-MB-1880 | 100% | 2026-03-17 | 2026-03-31 | Consultant Staff [120 h] | MOD-02-MB-1700 | MAK-01-PS-1220 |  |
| MLTX-02-005-MB-1950 |  | Approval of Construction Safety & Environmental Management Plan | 10d | 2026-03-18 A | 2026-04-01 A | MLTX-02-005-MB-1890, MLTX-02-005-MB-1940 | 100% | 2026-04-01 | 2026-04-12 | Consultant Staff [120 h] | MOD-02-MB-1710 | MAK-01-PS-1230 |  |
| MLTX-02-005-MB-1960 |  | Approval of Organization Chart | 10d | 2026-03-18 A | 2026-04-01 A | MLTX-02-005-MB-1900, MLTX-02-005-MB-1940 | 100% | 2026-04-01 | 2026-04-12 | Consultant Staff [120 h] | MOD-02-MB-1720 | MAK-01-PS-1240 |  |
| MLTX-02-005-MB-1970 |  | Approval of Communication Plan | 10d | 2026-03-18 A | 2026-04-01 A | MLTX-02-005-MB-1910, MLTX-02-005-MB-1940 | 100% | 2026-04-01 | 2026-04-12 | Consultant Staff [120 h] | MOD-02-MB-1730 | MAK-01-PS-1250 |  |
| MLTX-02-005-MB-1920 |  | Approval of Detailed Work Order Programme (Baseline) | 10d | 2026-03-24 A | 2026-04-04 A | MLTX-02-005-MB-1760 | 100% | 2026-03-19 | 2026-04-02 | Consultant Staff [120 h] | MOD-02-MB-1680 | MAK-01-PS-1200 |  |
|  | ENGG | **ENGINEERING** |  | 2026-03-08 | 2026-12-22 |  |  |  |  |  |  |  |  |
|  | SD | **SHOP DRAWINGS** |  | 2026-03-09 | 2026-12-22 |  |  |  |  |  |  |  |  |
|  | SUB | **SHOP DRAWINGS SUBMISSION** |  | 2026-03-09 | 2026-12-22 |  |  |  |  |  |  |  |  |
|  | 2 | **SHOP DRAWING SUBMITTALS FOR EARTHING WORKS** |  | 2026-03-09 | 2026-03-14 |  |  |  |  |  |  |  |  |
| MLTX-02-005-EN-7830 |  | Shop DWG Submittal for Layout Plan | 15d | 2026-03-09 A | 2026-03-14 A | MLTX-02-005-MB-1860 | 100% | 2026-03-09 | 2026-03-29 | Draftsman [18 h] | MOD-02-EN-1790 | MAK-01-EN-1010 | ER |
| MLTX-02-005-EN-7840 |  | Shop DWG Submittal for Setting Out | 15d | 2026-03-09 A | 2026-03-14 A | MLTX-02-005-MB-1860 | 100% | 2026-03-09 | 2026-03-29 | Draftsman [17.8 h] | MOD-02-EN-1800 | MAK-01-EN-1030 | ER |
| MLTX-02-005-EN-7850 |  | Shop DWG Submittal for Grading Layout Plan | 15d | 2026-03-09 A | 2026-03-14 A | MLTX-02-005-MB-1860 | 100% | 2026-03-09 | 2026-03-29 | Draftsman [16.1 h] | MOD-02-EN-1810 | MAK-01-EN-1050 | ER |
| MLTX-02-005-EN-7860 |  | Shop DWG Submittal for Curb Setting Out Points | 15d | 2026-03-09 A | 2026-03-14 A | MLTX-02-005-MB-1860, MLTX-02-005-EN-8840 | 100% | 2026-07-16 | 2026-08-02 | Draftsman [16.1 h] | MOD-02-EN-1820 | MAK-01-EN-1060 | ER |
| MLTX-02-005-EN-7870 |  | Shop DWG Submittal for Signing & Marking Layout Plan | 15d | 2026-03-09 A | 2026-03-14 A | MLTX-02-005-MB-1860, MLTX-02-005-EN-7860 | 100% | 2026-08-03 | 2026-08-19 | Draftsman [16.1 h] | MOD-02-EN-1830 | MAK-01-EN-1070 | ER |
| MLTX-02-005-EN-7880 |  | Shop DWG Submittal for Standards Details | 15d | 2026-03-09 A | 2026-03-14 A | MLTX-02-005-MB-1860, MLTX-02-005-EN-7860 | 100% | 2026-08-03 | 2026-08-19 | Draftsman [16.1 h] | MOD-02-EN-1840 | MAK-01-EN-1080 | ER |

| ID | WBS | Activity | Duration | Start | Finish | Predecessors | Complete | Planned start | Planned finish | Resources | New Activity Code | New Activity ID | Shop Drawings |
| --- | --- | --- | --- | --- | --- | --- | --- | --- | --- | --- | --- | --- | --- |
|  | ROAD | **SHOP DRAWING SUBMITTALS FOR SERVICE/TOILET WORKS** |  | 2026-03-09 | 2026-07-30 |  |  |  |  |  |  |  |  |
|  | 2 | **ARCHITECTURE WORKS** |  | 2026-03-09 | 2026-03-14 |  |  |  |  |  |  |  |  |
| MLTX-02-005-EN-8210 |  | Shop DWG Submittal for Floor Plan | 15d | 2026-03-09 A | 2026-03-14 A | MLTX-02-005-EN-7830 SS, MLTX-02-005-EN-7840 SS | 100% | 2026-03-09 | 2026-03-29 | Draftsman [16.1 h] | EN.MB.SD.AR.PR.1110 | MOD-02-EN-1870 | TO |
| MLTX-02-005-EN-8220 |  | Shop DWG Submittal for Elevations | 15d | 2026-03-09 A | 2026-03-14 A | MLTX-02-005-EN-8210 SS | 100% | 2026-03-09 | 2026-03-29 | Draftsman [16.1 h] | EN.MB.SD.AR.PR.1140 | MOD-02-EN-1880 | TO |
| MLTX-02-005-EN-8230 |  | Shop DWG Submittal for Sections | 15d | 2026-03-09 A | 2026-03-14 A | MLTX-02-005-EN-7850 SS, MLTX-02-005-EN-8220 SS | 100% | 2026-03-09 | 2026-03-29 | Draftsman [16.1 h] | EN.MB.SD.AR.PR.1150 | MOD-02-EN-1890 | TO |
| MLTX-02-005-EN-8240 |  | Shop DWG Submittal for Ceiling Plan | 15d | 2026-03-09 A | 2026-03-14 A | MLTX-02-005-EN-8230 SS | 100% | 2026-03-09 | 2026-03-29 | Draftsman [16.1 h] | EN.MB.SD.AR.PR.1160 | MOD-02-EN-1900 | TO |
| MLTX-02-005-EN-8250 |  | Shop DWG Submittal for Finishes Plan | 15d | 2026-03-09 A | 2026-03-14 A | MLTX-02-005-EN-8240 SS | 100% | 2026-03-09 | 2026-03-29 | Draftsman [16.1 h] | EN.MB.SD.AR.PR.1190 | MOD-02-EN-1910 | TO |
| MLTX-02-005-EN-8260 |  | Shop DWG Submittal for Toilet Details | 15d | 2026-03-09 A | 2026-03-14 A | MLTX-02-005-EN-8250 SS | 100% | 2026-03-09 | 2026-03-29 | Draftsman [16.1 h] | EN.MB.SD.AR.PR.1210 | MOD-02-EN-1920 | TO |
| MLTX-02-005-EN-8270 |  | Shop DWG Submittal for Doors/Windows Schedule | 15d | 2026-03-09 A | 2026-03-14 A | MLTX-02-005-EN-8260 SS | 100% | 2026-03-09 | 2026-03-29 | Draftsman [16.1 h] | EN.MB.SD.AR.PR.1220 | MOD-02-EN-1930 | TO |
|  | 1 | **STRUCTURE WORKS** |  | 2026-03-15 | 2026-03-19 |  |  |  |  |  |  |  |  |
| MLTX-02-005-EN-8280 |  | Shop DWG Submittal for Foundation Plan | 15d | 2026-03-15 A | 2026-03-19 A | MLTX-02-005-EN-8270 | 100% | 2026-03-30 | 2026-04-15 | Draftsman [16.1 h] | EN.MB.SD.CV.PR.1460 | MOD-02-EN-1950 | TO |
| MLTX-02-005-EN-8290 |  | Shop DWG Submittal for Ground Floor Framing Plan | 21d | 2026-03-15 A | 2026-03-19 A | MLTX-02-005-EN-8280 SS | 100% | 2026-03-30 | 2026-04-22 | Draftsman [16.1 h] | EN.MB.SD.CV.PR.1480 | MOD-02-EN-1960 | TO |
| MLTX-02-005-EN-8300 |  | Shop DWG Submittal for Sections/Details | 21d | 2026-03-15 A | 2026-03-19 A | MLTX-02-005-EN-8270 | 100% | 2026-03-30 | 2026-04-22 | Draftsman [16.1 h] | EN.MB.SD.CV.PR.1530 | MOD-02-EN-1970 | TO |
|  | 3 | **MECHANCAL WORKS** |  | 2026-03-15 | 2026-07-07 |  |  |  |  |  |  |  |  |
| MLTX-02-005-EN-8310 |  | Shop DWG Submittal for HVAC Plan | 21d | 2026-03-15 A | 2026-03-19 A | MLTX-02-005-EN-8270, MLTX-02-005-EN-11300 | 100% | 2026-09-07 | 2026-10-01 | Draftsman [16.1 h] | EN.MB.SD.MC.PR.1740 | MOD-02-EN-1990 | TO |
| MLTX-02-005-EN-8320 |  | Shop DWG Submittal for Exhaust Air Plan | 21d | 2026-03-15 A | 2026-03-19 A | MLTX-02-005-EN-8270, MLTX-02-005-EN-8350 | 100% | 2026-08-10 | 2026-09-02 | Draftsman [16.1 h] | EN.MB.SD.MC.PR.1750 | MOD-02-EN-2000 | TO |
| MLTX-02-005-EN-8330 |  | Shop DWG Submittal for HVAC Equipment Schedule | 21d | 2026-03-15 A | 2026-03-19 A | MLTX-02-005-EN-8270, MLTX-02-005-EN-8320 | 100% | 2026-09-03 | 2026-09-28 | Draftsman [16.1 h] | EN.MB.SD.MC.PR.1770 | MOD-02-EN-2010 | TO |
| MLTX-02-005-EN-8340 |  | Shop DWG Submittal for Fire Fighting Layout | 21d | 2026-03-15 A | 2026-03-19 A | MLTX-02-005-EN-8270, MLTX-02-005-EN-8310 | 100% | 2026-10-03 | 2026-10-26 | Draftsman [16.1 h] | EN.MB.SD.MC.PR.1780 | MOD-02-EN-2060 | TO |
| MLTX-02-005-EN-8350 |  | Shop DWG Submittal for Water Supply Layout | 21d | 2026-03-15 A | 2026-05-20 A | MLTX-02-005-EN-8270, MLTX-02-005-EN-11270 | 100% | 2026-07-16 | 2026-08-09 | Draftsman [16.1 h] | EN.MB.SD.MC.PR.1790 | MOD-02-EN-2070 | TO |
| MLTX-02-005-EN-8360 |  | Shop DWG Submittal for Water Supply Details | 21d | 2026-03-15 A | 2026-05-20 A | MLTX-02-005-EN-8270, MLTX-02-005-EN-11270 | 100% | 2026-07-16 | 2026-08-09 | Draftsman [16.1 h] | EN.MB.SD.MC.PR.1800 | MOD-02-EN-2080 | TO |
| MLTX-02-005-EN-8370 |  | Shop DWG Submittal for Drainage Layout | 21d | 2026-03-15 A | 2026-06-02 A | MLTX-02-005-EN-8270, MLTX-02-005-EN-8560 | 100% | 2026-07-22 | 2026-08-15 | Draftsman [16.1 h] | EN.MB.SD.MC.PR.1710 | MOD-02-EN-2020 | TO |
| MLTX-02-005-EN-8380 |  | Shop DWG Submittal for Drainage Details | 21d | 2026-03-15 A | 2026-06-02 A | MLTX-02-005-EN-8270, MLTX-02-005-EN-11270 | 100% | 2026-07-16 | 2026-08-09 | Draftsman [16.1 h] | EN.MB.SD.MC.PR.1720 | MOD-02-EN-2030 | TO |
| MLTX-02-005-EN-8920 |  | Shop DWG Submittal for Dut Routing Layout | 21d | 2026-03-15 A | 2026-03-19 A | MLTX-02-005-EN-8270, MLTX-02-005-EN-8350 | 100% | 2026-08-10 | 2026-09-02 | Draftsman [16.1 h] | EN.MB.SD.MC.PR.1770 | MOD-02-EN-2040 | TO |
| MLTX-02-005-EN-8930 |  | Shop DWG Submittal for Diffusers Layout | 21d | 2026-07-07 A | 2026-07-07 A | MLTX-02-005-EN-8270, MLTX-02-005-EN-11300 | 100% | 2026-09-07 | 2026-10-01 | Draftsman [16.1 h] | EN.MB.SD.MC.PR.1770 | MOD-02-EN-2050 | TO |

| ID | WBS | Activity | Duration | Start | Finish | Predecessors | Complete | Planned start | Planned finish | Resources | New Activity Code | New Activity ID | Shop Drawings |
| --- | --- | --- | --- | --- | --- | --- | --- | --- | --- | --- | --- | --- | --- |
|  | 4 | **ELECTRICAL WORKS** |  | 2026-03-15 | 2026-07-30 |  |  |  |  |  |  |  |  |
| MLTX-02-005-EN-8390 |  | Shop DWG Submittal for Lighting Layout | 21d | 2026-03-15 A | 2026-03-19 A | MLTX-02-005-EN-8270, MLTX-02-005-EN-11270 | 100% | 2026-07-16 | 2026-08-09 | Draftsman [16.1 h] | EN.MB.SD.EL.PR.1980 | MOD-02-EN-2100 | TO |
| MLTX-02-005-EN-8400 |  | Shop DWG Submittal for Power Layout | 21d | 2026-03-15 A | 2026-03-19 A | MLTX-02-005-EN-8270, MLTX-02-005-EN-8560 | 100% | 2026-07-22 | 2026-08-15 | Draftsman [16.1 h] | EN.MB.SD.EL.PR.2000 | MOD-02-EN-2110 | TO |
| MLTX-02-005-EN-8430 |  | Shop DWG Submittal for Lighting Installation Details | 21d | 2026-03-15 A | 2026-03-19 A | MLTX-02-005-EN-8440 SS, MLTX-02-005-EN-11270 | 100% | 2026-07-16 | 2026-08-09 | Draftsman [16.1 h] | EN.MB.SD.EL.PR.2040 | MOD-02-EN-2140 | TO |
| MLTX-02-005-EN-8440 |  | Shop DWG Submittal for Power Installation Details | 15d | 2026-03-15 A | 2026-03-19 A | MLTX-02-005-EN-8270 | 100% | 2026-03-30 | 2026-04-15 | Draftsman [16.1 h] | EN.MB.SD.EL.PR.2050 | MOD-02-EN-2150 | TO |
| MLTX-02-005-EN-8450 |  | Shop DWG Submittal for Cable Tray Installation Details | 15d | 2026-03-15 A | 2026-03-19 A | MLTX-02-005-EN-8440 SS | 100% | 2026-03-30 | 2026-04-15 | Draftsman [16.1 h] | EN.MB.SD.EL.PR.2060 | MOD-02-EN-2160 | TO |
| MLTX-02-005-EN-8460 |  | Shop DWG Submittal for Manhole & Ductbank Details | 15d | 2026-03-15 A | 2026-03-19 A | MLTX-02-005-EN-8450 SS | 100% | 2026-03-30 | 2026-04-15 | Draftsman [16.1 h] | EN.MB.SD.EL.PR.2070 | MOD-02-EN-2170 | TO |
| MLTX-02-005-EN-8470 |  | Shop DWG Submittal for Grounding Details | 15d | 2026-03-15 A | 2026-03-19 A | MLTX-02-005-EN-8460 SS | 100% | 2026-03-30 | 2026-04-15 | Draftsman [16.1 h] | EN.MB.SD.EL.PR.2080 | MOD-02-EN-2180 | TO |
| MLTX-02-005-EN-8480 |  | Shop DWG Submittal for Lightning Protection Details | 15d | 2026-03-15 A | 2026-03-19 A | MLTX-02-005-EN-8470 SS | 100% | 2026-03-30 | 2026-04-15 | Draftsman [16.1 h] | EN.MB.SD.EL.PR.2110 | MOD-02-EN-2210 | TO |
| MLTX-02-005-EN-8490 |  | Shop DWG Submittal for Fire Alarm Installation Details | 15d | 2026-03-15 A | 2026-03-19 A | MLTX-02-005-EN-8480 SS | 100% | 2026-03-30 | 2026-04-15 | Draftsman [16.1 h] | EN.MB.SD.EL.PR.2090 | MOD-02-EN-2190 | TO |
| MLTX-02-005-EN-8510 |  | Shop DWG Submittal for Grounding Layout | 15d | 2026-03-15 A | 2026-03-19 A | MLTX-02-005-EN-8490 | 100% | 2026-04-16 | 2026-05-03 | Draftsman [16.1 h] | EN.MB.SD.EL.PR.2170 | MOD-02-EN-2270 | TO |
| MLTX-02-005-EN-8520 |  | Shop DWG Submittal for Lightning Protection System Layout | 15d | 2026-03-15 A | 2026-03-19 A | MLTX-02-005-EN-8510 SS | 100% | 2026-04-16 | 2026-05-03 | Draftsman [16.1 h] | EN.MB.SD.EL.PR.2120 | MOD-02-EN-2220 | TO |
| MLTX-02-005-EN-8530 |  | Shop DWG Submittal for Fire Alarm Layout | 15d | 2026-03-15 A | 2026-03-19 A | MLTX-02-005-EN-8520 SS | 100% | 2026-04-16 | 2026-05-03 | Draftsman [16.1 h] | EN.MB.SD.EL.PR.2100 | MOD-02-EN-2200 | TO |
| MLTX-02-005-EN-8540 |  | Shop DWG Submittal for Fire Alarm Riser Diagram | 15d | 2026-03-15 A | 2026-03-19 A | MLTX-02-005-EN-8530 SS | 100% | 2026-04-16 | 2026-05-03 | Draftsman [16.1 h] | EN.MB.SD.EL.PR.2130 | MOD-02-EN-2230 | TO |
| MLTX-02-005-EN-8550 |  | Shop DWG Submittal for CCTV Layout | 15d | 2026-03-15 A | 2026-03-19 A | MLTX-02-005-EN-8540 SS | 100% | 2026-04-16 | 2026-05-03 | Draftsman [16.1 h] | EN.MB.SD.EL.PR.2150 | MOD-02-EN-2250 | TO |
| MLTX-02-005-EN-8560 |  | Shop DWG Submittal for CCTV Riser Diagram | 15d | 2026-03-15 A | 2026-03-19 A | MLTX-02-005-EN-8550 SS | 100% | 2026-07-05 | 2026-07-21 | Draftsman [16.1 h] | EN.MB.SD.EL.PR.2180 | MOD-02-EN-2280 | TO |
| MLTX-02-005-EN-8570 |  | Shop DWG Submittal for Telephone & Data Layout | 21d | 2026-03-15 A | 2026-03-19 A | MLTX-02-005-EN-8540 | 100% | 2026-05-04 | 2026-05-31 | Draftsman [16.1 h] | EN.MB.SD.EL.PR.2160 | MOD-02-EN-2260 | TO |
| MLTX-02-005-EN-8580 |  | Shop DWG Submittal for Telephone & Data Riser Diagram | 21d | 2026-03-15 A | 2026-03-19 A | MLTX-02-005-EN-8270, MLTX-02-005-EN-8570 SS, MLTX-02-005-EN-11270 | 100% | 2026-07-16 | 2026-08-09 | Draftsman [16.1 h] | EN.MB.SD.EL.PR.2190 | MOD-02-EN-2290 | TO |
| MLTX-02-005-EN-8410 |  | Shop DWG Submittal for Power Single Line Diagram | 21d | 2026-06-10 A | 2026-06-10 A | MLTX-02-005-EN-8270, MLTX-02-005-EN-8320 | 100% | 2026-09-03 | 2026-09-28 | Draftsman [16.1 h] | EN.MB.SD.EL.PR.2020 | MOD-02-EN-2120 | TO |
| MLTX-02-005-EN-8420 |  | Shop DWG Submittal for Panel Board Schedules | 15d | 2026-06-10 A | 2026-06-10 A | MLTX-02-005-EN-8270, MLTX-02-005-EN-8570 | 100% | 2026-06-01 | 2026-06-17 | Draftsman [16.1 h] | EN.MB.SD.EL.PR.2030 | MOD-02-EN-2130 | TO |
| MLTX-02-005-EN-8500 |  | Shop DWG Submittal for CCTV Details | 15d | 2026-07-30 A | 2026-07-30 A | MLTX-02-005-EN-8490 SS, MLTX-02-005-EN-8560 | 100% | 2026-07-22 | 2026-08-08 | Draftsman [16.1 h] | EN.MB.SD.EL.PR.2140 | MOD-02-EN-2240 | TO |
|  | ELE | **SHOP DRAWINGS SUBMITTALS FOR PLAYGROUND WORKS** |  | 2026-03-09 | 2026-12-22 |  |  |  |  |  |  |  |  |
|  | 3 | **ARCHITECTURE WORKS** |  | 2026-03-09 | 2026-07-13 |  |  |  |  |  |  |  |  |
| MLTX-02-005-EN-8780 |  | Shop DWG Submittal for Playground Plan/Layout | 15d | 2026-03-09 A | 2026-03-14 A | MLTX-02-005-MB-1860 | 100% | 2026-03-09 | 2026-03-29 | Draftsman [16.1 h] | EN.MB.SD.AR.PR.1110 | MOD-02-EN-2320 | PL |
| MLTX-02-005-EN-8790 |  | Shop DWG Submittal for Furniture & Marking | 15d | 2026-03-09 A | 2026-04-28 A | MLTX-02-005-EN-8780 SS | 100% | 2026-03-09 | 2026-03-29 | Draftsman [16.1 h] | EN.MB.SD.AR.PR.1140 | MOD-02-EN-2330 | PL |
| MLTX-02-005-EN-8800 |  | Shop DWG Submittal for Sections | 15d | 2026-03-09 A | 2026-03-14 A | MLTX-02-005-EN-8790 SS | 100% | 2026-03-09 | 2026-03-29 | Draftsman [16.1 h] | EN.MB.SD.AR.PR.1150 | MOD-02-EN-2340 | PL |
| MLTX-02-005-EN-8810 |  | Shop DWG Submittal for Interlock Pattern Plan | 21d | 2026-03-09 A | 2026-03-14 A | MLTX-02-005-EN-8800 SS | 100% | 2026-03-09 | 2026-04-05 | Draftsman [16.1 h] | EN.MB.SD.AR.PR.1190 | MOD-02-EN-2350 | PL |
| MLTX-02-005-EN-8850 |  | Shop DWG Submittal for Dome Internal Layout | 21d | 2026-03-09 A | 2026-05-20 A | MLTX-02-005-EN-8810 | 100% | 2026-04-06 | 2026-04-29 | Draftsman [16.1 h] | EN.MB.SD.AR.PR.1110 | MOD-02-EN-2370 | PL |
| MLTX-02-005-EN-8820 |  | Shop DWG Submittal for Doors/Windows Schedule | 21d | 2026-07-13 A | 2026-07-13 A | MLTX-02-005-EN-8800, MLTX-02-005-EN-8370 | 100% | 2026-08-16 | 2026-09-08 | Draftsman [16.1 h] | EN.MB.SD.AR.PR.1220 | MOD-02-EN-2360 | PL |

| ID | WBS | Activity | Duration | Start | Finish | Predecessors | Complete | Planned start | Planned finish | Total float | Free float | Resources | New Activity Code | New Activity ID | Shop Drawings |
| --- | --- | --- | --- | --- | --- | --- | --- | --- | --- | --- | --- | --- | --- | --- | --- |
|  | 4 | **STRUCTURE WORKS** |  | 2026-03-15 | 2026-07-14 |  |  |  |  |  |  |  |  |  |  |
| MLTX-02-005-EN-8830 |  | Shop DWG Submittal for Air Dome System | 21d | 2026-03-15 A | 2026-05-10 A | MLTX-02-005-EN-8850 | 100% | 2026-04-30 | 2026-05-24 |  |  | Draftsman [16.1 h] | EN.MB.SD.AR.PR.1110 | MOD-02-EN-2390 | PL |
| MLTX-02-005-EN-8840 |  | Shop DWG Submittal for Foundation of Air Dome | 21d | 2026-07-14 A | 2026-07-14 A | MLTX-02-005-EN-8830 SS, MLTX-02-005-EN-8870, MLTX-02-005-EN-8420 | 100% | 2026-06-22 | 2026-07-15 |  |  | Draftsman [16.1 h] | EN.MB.SD.AR.PR.1140 | MOD-02-EN-2400 | PL |
| MLTX-02-005-EN-8860 |  | Shop DWG Submittal for Anchor Bolt Layout of Air Dome | 21d | 2026-07-14 A | 2026-07-14 A | MLTX-02-005-EN-8840 SS, MLTX-02-005-EN-8870 | 100% | 2026-06-22 | 2026-07-15 |  |  | Draftsman [16.1 h] | EN.MB.SD.AR.PR.1140 | MOD-02-EN-2420 | PL |
|  | 5 | **AIR DOME SYSTEM** |  | 2026-03-15 | 2026-05-25 |  |  |  |  |  |  |  |  |  |  |
| MLTX-02-005-EN-8870 |  | Shop DWG Submittal for Air Dome Structural Layout | 21d | 2026-03-15 A | 2026-05-10 A | MLTX-02-005-EN-8830 | 100% | 2026-05-25 | 2026-06-21 |  |  | Draftsman [16.1 h] | EN.MB.SD.AR.PR.1110 | MOD-02-EN-2440 | PL |
| MLTX-02-005-EN-8880 |  | Shop DWG Submittal for Membrane Panel Layout | 21d | 2026-03-15 A | 2026-05-25 A | MLTX-02-005-EN-8870 SS | 100% | 2026-05-25 | 2026-06-21 |  |  | Draftsman [16.1 h] | EN.MB.SD.AR.PR.1140 | MOD-02-EN-2450 | PL |
| MLTX-02-005-EN-8890 |  | Shop DWG Submittal for Cable Tension Layout | 21d | 2026-03-15 A | 2026-05-25 A | MLTX-02-005-EN-8880 SS | 100% | 2026-05-25 | 2026-06-21 |  |  | Draftsman [16.1 h] | EN.MB.SD.AR.PR.1150 | MOD-02-EN-2460 | PL |
| MLTX-02-005-EN-8900 |  | Shop DWG Submittal for Airlock Door Details | 21d | 2026-03-15 A | 2026-05-25 A | MLTX-02-005-EN-8890 SS | 100% | 2026-05-25 | 2026-06-21 |  |  | Draftsman [16.1 h] | EN.MB.SD.AR.PR.1140 | MOD-02-EN-2470 | PL |
| MLTX-02-005-EN-8910 |  | Shop DWG Submittal for Emergency Exit Details | 21d | 2026-03-15 A | 2026-05-25 A | MLTX-02-005-EN-8900 SS | 100% | 2026-05-25 | 2026-06-21 |  |  | Draftsman [16.1 h] | EN.MB.SD.AR.PR.1140 | MOD-02-EN-2480 | PL |
|  | 6 | **SPORTS EQUIPMENT** |  | 2026-06-29 | 2026-06-29 |  |  |  |  |  |  |  |  |  |  |
| MLTX-02-005-EN-8940 |  | Shop DWG Submittal for Football Turf Installation | 21d | 2026-06-29 A | 2026-06-29 A | MLTX-02-005-EN-8910 SS | 100% | 2026-05-25 | 2026-06-21 |  |  | Draftsman [16.1 h] | EN.MB.SD.EL.PR.2170 | MOD-02-EN-2500 | PL |
| MLTX-02-005-EN-8950 |  | Shop DWG Submittal for Basketball Court Marking | 21d | 2026-06-29 A | 2026-06-29 A | MLTX-02-005-EN-8940 SS | 100% | 2026-05-25 | 2026-06-21 |  |  | Draftsman [16.1 h] | EN.MB.SD.EL.PR.2180 | MOD-02-EN-2510 | PL |
| MLTX-02-005-EN-8960 |  | Shop DWG Submittal for Padel Court Structure | 21d | 2026-06-29 A | 2026-06-29 A | MLTX-02-005-EN-8950 SS, MLTX-02-005-EN-11300 | 100% | 2026-09-07 | 2026-10-01 |  |  | Draftsman [16.1 h] | EN.MB.SD.EL.PR.2160 | MOD-02-EN-2520 | PL |
|  | 1 | **MECHANCAL WORKS** |  | 2026-10-20 | 2026-11-17 |  |  |  |  |  |  |  |  |  |  |
| MLTX-02-005-EN-8760 |  | Shop DWG Submittal for HVAC Plan | 25d | 2026-10-20 | 2026-11-17 | MLTX-02-005-EN-11310, MLTX-02-005-EN-8960 SS |  |  |  | -18d | 0d | Draftsman [16.1 h] | EN.MB.SD.MC.PR.1740 | MOD-02-EN-2540 | PL |
| MLTX-02-005-EN-8770 |  | Shop DWG Submittal for Exhaust Air Plan | 25d | 2026-10-20 | 2026-11-17 | MLTX-02-005-EN-8760 SS, MLTX-02-005-EN-8820 |  |  |  | -18d | 0d | Draftsman [16.1 h] | EN.MB.SD.MC.PR.1750 | MOD-02-EN-2550 | PL |
|  | 2 | **ELECTRICAL WORKS** |  | 2026-08-20 | 2026-12-22 |  |  |  |  |  |  |  |  |  |  |
| MLTX-02-005-EN-8710 |  | Shop DWG Submittal for CCTV Details | 21d | 2026-08-20 A | 2026-08-20 A | MLTX-02-005-EN-8550 | 100% | 2026-05-04 | 2026-05-31 |  |  | Draftsman [16.1 h] | EN.MB.SD.EL.PR.2140 | MOD-02-EN-2650 | PL |
| MLTX-02-005-EN-8740 |  | Shop DWG Submittal for CCTV Layout | 21d | 2026-08-20 A | 2026-08-20 A | MLTX-02-005-EN-8710, MLTX-02-005-EN-8330 | 100% | 2026-09-29 | 2026-10-22 |  |  | Draftsman [16.1 h] | EN.MB.SD.EL.PR.2150 | MOD-02-EN-2660 | PL |
| MLTX-02-005-EN-8750 |  | Shop DWG Submittal for CCTV Riser Diagram | 21d | 2026-08-20 A | 2026-08-20 A | MLTX-02-005-EN-8740 SS, MLTX-02-005-EN-8330 | 100% | 2026-09-29 | 2026-10-22 |  |  | Draftsman [16.1 h] | EN.MB.SD.EL.PR.2180 | MOD-02-EN-2670 | PL |
| MLTX-02-005-EN-8650 |  | Shop DWG Submittal for Lighting Layout | 25d | 2026-10-20 | 2026-11-17 | MLTX-02-005-EN-8770 SS |  |  |  | -18d | 0d | Draftsman [16.1 h] | EN.MB.SD.EL.PR.1980 | MOD-02-EN-2570 | PL |
| MLTX-02-005-EN-8660 |  | Shop DWG Submittal for Power Layout | 25d | 2026-10-20 | 2026-11-17 | MLTX-02-005-EN-8710 SS |  |  |  | -13d | 0d | Draftsman [16.1 h] | EN.MB.SD.EL.PR.2000 | MOD-02-EN-2580 | PL |
| MLTX-02-005-EN-8670 |  | Shop DWG Submittal for Power Single Line Diagram | 25d | 2026-10-20 | 2026-11-17 | MLTX-02-005-EN-8710 SS, MLTX-02-005-EN-8330 |  |  |  | -18d | 0d | Draftsman [16.1 h] | EN.MB.SD.EL.PR.2020 | MOD-02-EN-2620 | PL |
| MLTX-02-005-EN-8680 |  | Shop DWG Submittal for Panel Board Schedules | 25d | 2026-10-20 | 2026-11-17 | MLTX-02-005-EN-8670 SS, MLTX-02-005-EN-8330 |  |  |  | -18d | 0d | Draftsman [16.1 h] | EN.MB.SD.EL.PR.2030 | MOD-02-EN-2630 | PL |
| MLTX-02-005-EN-8690 |  | Shop DWG Submittal for Power Installation Details | 25d | 2026-10-20 | 2026-11-17 | MLTX-02-005-EN-8680 SS, MLTX-02-005-EN-8330 |  |  |  | -13d | 0d | Draftsman [16.1 h] | EN.MB.SD.EL.PR.2050 | MOD-02-EN-2590 | PL |
| MLTX-02-005-EN-8700 |  | Shop DWG Submittal for Fire Alarm Installation Details | 30d | 2026-11-18 | 2026-12-22 | MLTX-02-005-EN-8690 SS, MLTX-02-005-EN-8650 |  |  |  | -18d | 0d | Draftsman [16.1 h] | EN.MB.SD.EL.PR.2090 | MOD-02-EN-2600 | PL |
| MLTX-02-005-EN-8720 |  | Shop DWG Submittal for Fire Alarm Layout | 30d | 2026-11-18 | 2026-12-22 | MLTX-02-005-EN-8700 SS, MLTX-02-005-EN-8650 |  |  |  | -18d | 15d | Draftsman [16.1 h] | EN.MB.SD.EL.PR.2100 | MOD-02-EN-2610 | PL |
| MLTX-02-005-EN-8730 |  | Shop DWG Submittal for Fire Alarm Riser Diagram | 30d | 2026-11-18 | 2026-12-22 | MLTX-02-005-EN-8700 SS, MLTX-02-005-EN-8650, MLTX-02-005-EN-8680 |  |  |  | -18d | 15d | Draftsman [16.1 h] | EN.MB.SD.EL.PR.2130 | MOD-02-EN-2640 | PL |

| ID | WBS | Activity | Duration | Start | Finish | Predecessors | Complete | Planned start | Planned finish | Resources | New Activity ID | Old Activity ID - MK | Shop Drawings | New Activity Code |
| --- | --- | --- | --- | --- | --- | --- | --- | --- | --- | --- | --- | --- | --- | --- |
|  | EAR | **SHOP DRAWINGS SUBMITTALS FOR LANDSCAPE WORKS** |  | 2026-03-09 | 2026-07-29 |  |  |  |  |  |  |  |  |  |
|  | 3 | **ARCHITECTURE WORKS** |  | 2026-03-09 | 2026-03-19 |  |  |  |  |  |  |  |  |  |
| MLTX-02-005-EN-8590 |  | Shop DWG Submittal for Landscape Layout | 21d | 2026-03-09 A | 2026-03-14 A | MLTX-02-005-MB-1860 | 100% | 2026-03-09 | 2026-04-05 | Draftsman [16.1 h] | MOD-02-EN-2700 | MAK-01-EN-1120 | LS |  |
| MLTX-02-005-EN-8600 |  | Shop DWG Submittal for Hardscape Plan | 21d | 2026-03-09 A | 2026-03-14 A | MLTX-02-005-MB-1860 | 100% | 2026-03-09 | 2026-04-05 | Draftsman [16.1 h] | MOD-02-EN-2710 | MAK-01-EN-1130 | LS |  |
| MLTX-02-005-EN-8620 |  | Shop DWG Submittal for Landscape Details | 15d | 2026-03-09 A | 2026-03-14 A | MLTX-02-005-MB-1860 | 100% | 2026-03-09 | 2026-03-29 | Draftsman [16.1 h] | MOD-02-EN-2730 | MAK-01-EN-1150 | LS |  |
| MLTX-02-005-EN-8610 |  | Shop DWG Submittal for Planting Plan | 15d | 2026-03-15 A | 2026-03-19 A | MLTX-02-005-EN-8620 | 100% | 2026-03-30 | 2026-04-15 | Draftsman [16.1 h] | MOD-02-EN-2720 | MAK-01-EN-1140 | LS |  |
|  | 1 | **MECHANCAL WORKS** |  | 2026-07-06 | 2026-07-06 |  |  |  |  |  |  |  |  |  |
| MLTX-02-005-EN-8630 |  | Shop DWG Submittal for Irrigation Details | 30d | 2026-07-06 A | 2026-07-06 A | MLTX-02-005-MB-1860, MLTX-02-005-EN-8840 | 100% | 2026-07-16 | 2026-08-19 | Draftsman [16.1 h] | MOD-02-EN-2770 | MAK-01-EN-1140 | LS |  |
| MLTX-02-005-EN-8640 |  | Shop DWG Submittal for Irrigation Layout | 30d | 2026-07-06 A | 2026-07-06 A | MLTX-02-005-MB-1860, MLTX-02-005-EN-8840 | 100% | 2026-07-16 | 2026-08-19 | Draftsman [16.1 h] | MOD-02-EN-2810 | MAK-01-EN-1140 | LS |  |
|  | 2 | **ELECTRICAL WORKS** |  | 2026-07-29 | 2026-07-29 |  |  |  |  |  |  |  |  |  |
| MLTX-02-005-EN-7890 |  | Shop DWG Submittal for Lighting General Arrangement | 30d | 2026-07-29 A | 2026-07-29 A | MLTX-02-005-MB-1860, MLTX-02-005-EN-8840 | 100% | 2026-07-16 | 2026-08-19 | Draftsman [16.1 h] | MOD-02-EN-2860 | MAK-01-EN-1120 | LS |  |
| MLTX-02-005-EN-7900 |  | Shop DWG Submittal for Lighting Network Layout | 30d | 2026-07-29 A | 2026-07-29 A | MLTX-02-005-MB-1860 | 100% | 2026-03-09 | 2026-04-15 | Draftsman [16.1 h] | MOD-02-EN-2870 | MAK-01-EN-1130 | LS |  |
| MLTX-02-005-EN-7910 |  | Shop DWG Submittal for Lighting Details | 30d | 2026-07-29 A | 2026-07-29 A | MLTX-02-005-MB-1860, MLTX-02-005-EN-8840 | 100% | 2026-07-16 | 2026-08-19 | Draftsman [16.1 h] | MOD-02-EN-2840 | MAK-01-EN-1140 | LS |  |
| MLTX-02-005-EN-7920 |  | Shop DWG Submittal for Lighting Single Line Diagram | 30d | 2026-07-29 A | 2026-07-29 A | MLTX-02-005-MB-1860, MLTX-02-005-EN-8840 | 100% | 2026-07-16 | 2026-08-19 | Draftsman [16.1 h] | MOD-02-EN-2850 | MAK-01-EN-1150 | LS |  |
|  | APP | **SHOP DRAWINGS APPROVALS** |  | 2026-03-15 | 2026-12-16 |  |  |  |  |  |  |  |  |  |
|  | 2 | **SHOP DRAWING APPROVAL FOR EARTHING WORKS** |  | 2026-03-15 | 2026-03-29 |  |  |  |  |  |  |  |  |  |
| MLTX-02-005-EN-11260 |  | Shop DWG Approval for Layout Plan | 15d | 2026-03-15 A | 2026-03-29 A | MLTX-02-005-EN-7830, MLTX-02-005-EN-11900 | 100% | 2026-06-11 | 2026-06-28 | Draftsman [12.71 h]; Consultant Staff [3.39 h] | MOD-02-EN-2900 | MAK-01-EN-1010 | ER |  |
| MLTX-02-005-EN-11270 |  | Shop DWG Approval for Setting Out | 15d | 2026-03-15 A | 2026-03-29 A | MLTX-02-005-EN-7840, MLTX-02-005-EN-11260 | 100% | 2026-06-29 | 2026-07-15 | Draftsman [12.71 h]; Consultant Staff [3.39 h] | MOD-02-EN-2910 | MAK-01-EN-1030 | ER |  |
| MLTX-02-005-EN-11280 |  | Shop DWG Approval for Grading Layout Plan | 15d | 2026-03-15 A | 2026-03-29 A | MLTX-02-005-EN-11270, MLTX-02-005-EN-7850 | 100% | 2026-07-16 | 2026-08-02 | Draftsman [12.71 h]; Consultant Staff [3.39 h] | MOD-02-EN-2920 | MAK-01-EN-1050 | ER |  |
| MLTX-02-005-EN-11290 |  | Shop DWG Approval for Curb Setting Out Points | 15d | 2026-03-15 A | 2026-03-29 A | MLTX-02-005-EN-11280, MLTX-02-005-EN-7860 | 100% | 2026-08-03 | 2026-08-19 | Draftsman [12.71 h]; Consultant Staff [3.39 h] | MOD-02-EN-2930 | MAK-01-EN-1060 | ER |  |
| MLTX-02-005-EN-11300 |  | Shop DWG Approval for Signing & Marking Layout Plan | 15d | 2026-03-15 A | 2026-03-29 A | MLTX-02-005-EN-11290, MLTX-02-005-EN-7870 | 100% | 2026-08-20 | 2026-09-06 | Draftsman [12.71 h]; Consultant Staff [3.39 h] | MOD-02-EN-2940 | MAK-01-EN-1070 | ER |  |
| MLTX-02-005-EN-11310 |  | Shop DWG Approval for Standards Details | 15d | 2026-03-15 A | 2026-03-29 A | MLTX-02-005-EN-11300, MLTX-02-005-EN-7880 | 100% | 2026-09-07 | 2026-09-24 | Draftsman [12.71 h]; Consultant Staff [3.39 h] | MOD-02-EN-2950 | MAK-01-EN-1080 | ER |  |
|  | ROAD | **SHOP DRAWING APPROVAL FOR SERVICE/TOILET WORKS** |  | 2026-03-15 | 2026-07-30 |  |  |  |  |  |  |  |  |  |
|  | 2 | **ARCHITECTURE WORKS** |  | 2026-03-15 | 2026-03-29 |  |  |  |  |  |  |  |  |  |
| MLTX-02-005-EN-11360 |  | Shop DWG Approval for Floor Plan | 30d | 2026-03-15 A | 2026-03-29 A | MLTX-02-005-EN-8210 | 100% | 2026-03-30 | 2026-05-03 | Draftsman [12.71 h]; Consultant Staff [3.39 h] | MOD-02-EN-2980 |  | TO | EN.MB.SD.AR.PR.1110 |
| MLTX-02-005-EN-11370 |  | Shop DWG Approval for Elevations | 30d | 2026-03-15 A | 2026-03-29 A | MLTX-02-005-EN-8220, MLTX-02-005-EN-11360 | 100% | 2026-05-04 | 2026-06-10 | Draftsman [12.71 h]; Consultant Staff [3.39 h] | MOD-02-EN-2990 |  | TO | EN.MB.SD.AR.PR.1140 |
| MLTX-02-005-EN-11380 |  | Shop DWG Approval for Sections | 30d | 2026-03-15 A | 2026-03-29 A | MLTX-02-005-EN-8230, MLTX-02-005-EN-11920 | 100% | 2026-04-22 | 2026-05-30 | Draftsman [12.71 h]; Consultant Staff [3.39 h] | MOD-02-EN-3000 |  | TO | EN.MB.SD.AR.PR.1150 |
| MLTX-02-005-EN-11390 |  | Shop DWG Approval for Ceiling Plan | 30d | 2026-03-15 A | 2026-03-29 A | MLTX-02-005-EN-8240, MLTX-02-005-EN-11360 | 100% | 2026-05-04 | 2026-06-10 | Draftsman [12.71 h]; Consultant Staff [3.39 h] | MOD-02-EN-3010 |  | TO | EN.MB.SD.AR.PR.1160 |
| MLTX-02-005-EN-11400 |  | Shop DWG Approval for Finishes Plan | 30d | 2026-03-15 A | 2026-03-29 A | MLTX-02-005-EN-8250, MLTX-02-005-EN-11360 | 100% | 2026-05-04 | 2026-06-10 | Draftsman [12.71 h]; Consultant Staff [3.39 h] | MOD-02-EN-3020 |  | TO | EN.MB.SD.AR.PR.1190 |
| MLTX-02-005-EN-11410 |  | Shop DWG Approval for Toilet Details | 30d | 2026-03-15 A | 2026-03-29 A | MLTX-02-005-EN-8260, MLTX-02-005-EN-11360 | 100% | 2026-05-04 | 2026-06-10 | Draftsman [12.71 h]; Consultant Staff [3.39 h] | MOD-02-EN-3030 |  | TO | EN.MB.SD.AR.PR.1210 |
| MLTX-02-005-EN-11420 |  | Shop DWG Approval for Doors/Windows Schedule | 30d | 2026-03-15 A | 2026-03-29 A | MLTX-02-005-EN-8270, MLTX-02-005-EN-11940 | 100% | 2026-04-29 | 2026-06-06 | Draftsman [12.71 h]; Consultant Staff [3.39 h] | MOD-02-EN-3040 |  | TO | EN.MB.SD.AR.PR.1220 |

| ID | WBS | Activity | Duration | Start | Finish | Predecessors | Complete | Planned start | Planned finish | Resources | New Activity Code | New Activity ID | Shop Drawings |
| --- | --- | --- | --- | --- | --- | --- | --- | --- | --- | --- | --- | --- | --- |
|  | 1 | **STRUCTURE WORKS** |  | 2026-03-24 | 2026-04-04 |  |  |  |  |  |  |  |  |
| MLTX-02-005-EN-11430 |  | Shop DWG Approval for Foundation Plan | 15d | 2026-03-24 A | 2026-04-04 A | MLTX-02-005-EN-8280, MLTX-02-005-EN-11360 | 100% | 2026-05-04 | 2026-05-20 | Draftsman [12.71 h]; Consultant Staff [3.39 h] | EN.MB.SD.CV.PR.1460 | MOD-02-EN-3060 | TO |
| MLTX-02-005-EN-11440 |  | Shop DWG Approval for Ground Floor Framing Plan | 21d | 2026-03-24 A | 2026-04-04 A | MLTX-02-005-EN-8290, MLTX-02-005-EN-11770 | 100% | 2026-04-23 | 2026-05-17 | Draftsman [12.71 h]; Consultant Staff [3.39 h] | EN.MB.SD.CV.PR.1480 | MOD-02-EN-3070 | TO |
| MLTX-02-005-EN-11450 |  | Shop DWG Approval for Sections/Details | 21d | 2026-03-24 A | 2026-04-04 A | MLTX-02-005-EN-8300 | 100% | 2026-04-23 | 2026-05-17 | Draftsman [12.71 h]; Consultant Staff [3.39 h] | EN.MB.SD.CV.PR.1530 | MOD-02-EN-3080 | TO |
|  | 3 | **MECHANCAL WORKS** |  | 2026-03-24 | 2026-07-30 |  |  |  |  |  |  |  |  |
| MLTX-02-005-EN-11470 |  | Shop DWG Approval for Exhaust Air Plan | 21d | 2026-03-24 A | 2026-04-04 A | MLTX-02-005-EN-8320, MLTX-02-005-EN-11500 | 100% | 2026-09-14 | 2026-10-08 | Draftsman [12.71 h]; Consultant Staff [3.39 h] | EN.MB.SD.MC.PR.1750 | MOD-02-EN-3110 | TO |
| MLTX-02-005-EN-11490 |  | Shop DWG Approval for Fire Fighting Layout | 21d | 2026-03-24 A | 2026-04-04 A | MLTX-02-005-EN-8340 | 100% | 2026-10-27 | 2026-11-19 | Draftsman [12.71 h]; Consultant Staff [3.39 h] | EN.MB.SD.MC.PR.1780 | MOD-02-EN-3170 | TO |
| MLTX-02-005-EN-12050 |  | Shop DWG Approval for Duct Routing Layout | 21d | 2026-03-24 A | 2026-04-04 A | MLTX-02-005-EN-8920, MLTX-02-005-EN-11500 | 100% | 2026-09-14 | 2026-10-08 | Draftsman [12.71 h]; Consultant Staff [3.39 h] | EN.MB.SD.MC.PR.1770 | MOD-02-EN-3150 | TO |
| MLTX-02-005-EN-11520 |  | Shop DWG Approval for Drainage Layout | 21d | 2026-03-30 A | 2026-06-04 A | MLTX-02-005-EN-8370, MLTX-02-005-EN-11280 | 100% | 2026-08-16 | 2026-09-08 | Draftsman [12.71 h]; Consultant Staff [3.39 h] | EN.MB.SD.MC.PR.1710 | MOD-02-EN-3130 | TO |
| MLTX-02-005-EN-11530 |  | Shop DWG Approval for Drainage Details | 21d | 2026-03-30 A | 2026-06-04 A | MLTX-02-005-EN-8380, MLTX-02-005-EN-11280 | 100% | 2026-08-10 | 2026-09-02 | Draftsman [12.71 h]; Consultant Staff [3.39 h] | EN.MB.SD.MC.PR.1720 | MOD-02-EN-3140 | TO |
| MLTX-02-005-EN-11500 |  | Shop DWG Approval for Water Supply Layout | 21d | 2026-06-03 A | 2026-06-03 A | MLTX-02-005-EN-8350, MLTX-02-005-EN-11290 | 100% | 2026-08-20 | 2026-09-13 | Draftsman [12.71 h]; Consultant Staff [3.39 h] | EN.MB.SD.MC.PR.1790 | MOD-02-EN-3180 | TO |
| MLTX-02-005-EN-11510 |  | Shop DWG Approval for Water Supply Details | 21d | 2026-06-03 A | 2026-06-03 A | MLTX-02-005-EN-8360, MLTX-02-005-EN-11290 | 100% | 2026-08-20 | 2026-09-13 | Draftsman [12.71 h]; Consultant Staff [3.39 h] | EN.MB.SD.MC.PR.1800 | MOD-02-EN-3190 | TO |
| MLTX-02-005-EN-11460 |  | Shop DWG Approval for HVAC Plan | 21d | 2026-07-30 A | 2026-07-30 A | MLTX-02-005-EN-8310 | 100% | 2026-10-25 | 2026-11-17 | Draftsman [12.71 h]; Consultant Staff [3.39 h] | EN.MB.SD.MC.PR.1740 | MOD-02-EN-3100 | TO |
| MLTX-02-005-EN-11480 |  | Shop DWG Approval for HVAC Equipment Schedule | 21d | 2026-07-30 A | 2026-07-30 A | MLTX-02-005-EN-8330, MLTX-02-005-EN-11470 | 100% | 2026-10-10 | 2026-11-02 | Draftsman [12.71 h]; Consultant Staff [3.39 h] | EN.MB.SD.MC.PR.1770 | MOD-02-EN-3120 | TO |
| MLTX-02-005-EN-12060 |  | Shop DWG Approval for Diffusers Layout | 21d | 2026-07-30 A | 2026-07-30 A | MLTX-02-005-EN-8930 | 100% | 2026-10-25 | 2026-11-17 | Draftsman [12.71 h]; Consultant Staff [3.39 h] | EN.MB.SD.MC.PR.1770 | MOD-02-EN-3160 | TO |
|  | 4 | **ELECTRICAL WORKS** |  | 2026-03-24 | 2026-07-30 |  |  |  |  |  |  |  |  |
| MLTX-02-005-EN-11540 |  | Shop DWG Approval for Lighting Layout | 21d | 2026-03-24 A | 2026-04-04 A | MLTX-02-005-EN-8390, MLTX-02-005-EN-11280 | 100% | 2026-08-10 | 2026-09-02 | Draftsman [12.71 h]; Consultant Staff [3.39 h] | EN.MB.SD.EL.PR.1980 | MOD-02-EN-3210 | TO |
| MLTX-02-005-EN-11550 |  | Shop DWG Approval for Power Layout | 21d | 2026-03-24 A | 2026-04-04 A | MLTX-02-005-EN-8400, MLTX-02-005-EN-11570 | 100% | 2026-08-16 | 2026-09-08 | Draftsman [12.71 h]; Consultant Staff [3.39 h] | EN.MB.SD.EL.PR.2000 | MOD-02-EN-3220 | TO |
| MLTX-02-005-EN-11580 |  | Shop DWG Approval for Lighting Installation Details | 21d | 2026-03-24 A | 2026-04-04 A | MLTX-02-005-EN-8430, MLTX-02-005-EN-11280 | 100% | 2026-08-10 | 2026-09-02 | Draftsman [12.71 h]; Consultant Staff [3.39 h] | EN.MB.SD.EL.PR.2040 | MOD-02-EN-3250 | TO |
| MLTX-02-005-EN-11590 |  | Shop DWG Approval for Power Installation Details | 30d | 2026-03-24 A | 2026-04-04 A | MLTX-02-005-EN-8440, MLTX-02-005-EN-12080 | 100% | 2026-07-27 | 2026-08-30 | Draftsman [12.71 h]; Consultant Staff [3.39 h] | EN.MB.SD.EL.PR.2050 | MOD-02-EN-3260 | TO |
| MLTX-02-005-EN-11620 |  | Shop DWG Approval for Grounding Details | 30d | 2026-03-24 A | 2026-04-04 A | MLTX-02-005-EN-8470, MLTX-02-005-EN-11600 | 100% | 2026-07-30 | 2026-09-02 | Draftsman [12.71 h]; Consultant Staff [3.39 h] | EN.MB.SD.EL.PR.2080 | MOD-02-EN-3290 | TO |
| MLTX-02-005-EN-11630 |  | Shop DWG Approval for Lightning Protection Details | 30d | 2026-03-24 A | 2026-04-04 A | MLTX-02-005-EN-8480, MLTX-02-005-EN-11600 | 100% | 2026-07-30 | 2026-09-02 | Draftsman [12.71 h]; Consultant Staff [3.39 h] | EN.MB.SD.EL.PR.2110 | MOD-02-EN-3320 | TO |
| MLTX-02-005-EN-11640 |  | Shop DWG Approval for Fire Alarm Installation Details | 30d | 2026-03-24 A | 2026-04-04 A | MLTX-02-005-EN-8490, MLTX-02-005-EN-11470 | 100% | 2026-10-10 | 2026-11-12 | Draftsman [12.71 h]; Consultant Staff [3.39 h] | EN.MB.SD.EL.PR.2090 | MOD-02-EN-3300 | TO |
| MLTX-02-005-EN-11660 |  | Shop DWG Approval for Grounding Layout | 30d | 2026-03-24 A | 2026-04-04 A | MLTX-02-005-EN-8510, MLTX-02-005-EN-11600 | 100% | 2026-07-30 | 2026-09-02 | Draftsman [12.71 h]; Consultant Staff [3.39 h] | EN.MB.SD.EL.PR.2170 | MOD-02-EN-3380 | TO |
| MLTX-02-005-EN-11670 |  | Shop DWG Approval for Lightning Protection System Layout | 30d | 2026-03-24 A | 2026-04-04 A | MLTX-02-005-EN-8520, MLTX-02-005-EN-11600 | 100% | 2026-07-30 | 2026-09-02 | Draftsman [12.71 h]; Consultant Staff [3.39 h] | EN.MB.SD.EL.PR.2120 | MOD-02-EN-3330 | TO |
| MLTX-02-005-EN-11680 |  | Shop DWG Approval for Fire Alarm Layout | 30d | 2026-03-24 A | 2026-04-04 A | MLTX-02-005-EN-8530, MLTX-02-005-EN-11470 | 100% | 2026-10-10 | 2026-11-12 | Draftsman [12.71 h]; Consultant Staff [3.39 h] | EN.MB.SD.EL.PR.2100 | MOD-02-EN-3310 | TO |
| MLTX-02-005-EN-11690 |  | Shop DWG Approval for Fire Alarm Riser Diagram | 30d | 2026-03-24 A | 2026-04-04 A | MLTX-02-005-EN-8540, MLTX-02-005-EN-11470 | 100% | 2026-10-10 | 2026-11-12 | Draftsman [12.71 h]; Consultant Staff [3.39 h] | EN.MB.SD.EL.PR.2130 | MOD-02-EN-3340 | TO |
| MLTX-02-005-EN-11720 |  | Shop DWG Approval for Telephone & Data Layout | 21d | 2026-03-24 A | 2026-04-04 A | MLTX-02-005-EN-8570, MLTX-02-005-EN-11380 | 100% | 2026-06-01 | 2026-06-24 | Draftsman [12.71 h]; Consultant Staff [3.39 h] | EN.MB.SD.EL.PR.2160 | MOD-02-EN-3370 | TO |
| MLTX-02-005-EN-11570 |  | Shop DWG Approval for Panel Board Schedules | 30d | 2026-07-22 A | 2026-07-22 A | MLTX-02-005-EN-8420, MLTX-02-005-EN-11260 | 100% | 2026-06-29 | 2026-08-02 | Draftsman [12.71 h]; Consultant Staff [3.39 h] | EN.MB.SD.EL.PR.2030 | MOD-02-EN-3240 | TO |
| MLTX-02-005-EN-11560 |  | Shop DWG Approval for Power Single Line Diagram | 21d | 2026-07-30 A | 2026-07-30 A | MLTX-02-005-EN-8410, MLTX-02-005-EN-11310, MLTX-02-005-EN-11780, MLTX-02-005-EN-11790 | 100% | 2026-09-29 | 2026-10-22 | Draftsman [12.71 h]; Consultant Staff [3.39 h] | EN.MB.SD.EL.PR.2020 | MOD-02-EN-3230 | TO |
| MLTX-02-005-EN-11600 |  | Shop DWG Approval for Cable Tray Installation Details | 30d | 2026-07-30 A | 2026-07-30 A | MLTX-02-005-EN-8450, MLTX-02-005-EN-8420, MLTX-02-005-EN-11720 | 100% | 2026-06-25 | 2026-07-29 | Draftsman [12.71 h]; Consultant Staff [3.39 h] | EN.MB.SD.EL.PR.2060 | MOD-02-EN-3270 | TO |
| MLTX-02-005-EN-11610 |  | Shop DWG Approval for Manhole & Ductbank Details | 30d | 2026-07-30 A | 2026-07-30 A | MLTX-02-005-EN-8460, MLTX-02-005-EN-11720 | 100% | 2026-06-25 | 2026-07-29 | Draftsman [12.71 h]; Consultant Staff [3.39 h] | EN.MB.SD.EL.PR.2070 | MOD-02-EN-3280 | TO |
| MLTX-02-005-EN-11650 |  | Shop DWG Approval for CCTV Details | 30d | 2026-07-30 A | 2026-07-30 A | MLTX-02-005-EN-8500, MLTX-02-005-EN-11610, MLTX-02-005-EN-11600, MLTX-02-005-EN-11570 | 100% | 2026-08-09 | 2026-09-12 | Draftsman [12.71 h]; Consultant Staff [3.39 h] | EN.MB.SD.EL.PR.2140 | MOD-02-EN-3350 | TO |
| MLTX-02-005-EN-11700 |  | Shop DWG Approval for CCTV Layout | 30d | 2026-07-30 A | 2026-07-30 A | MLTX-02-005-EN-8550, MLTX-02-005-EN-11600 | 100% | 2026-07-30 | 2026-09-02 | Draftsman [12.71 h]; Consultant Staff [3.39 h] | EN.MB.SD.EL.PR.2150 | MOD-02-EN-3360 | TO |
| MLTX-02-005-EN-11710 |  | Shop DWG Approval for CCTV Riser Diagram | 30d | 2026-07-30 A | 2026-07-30 A | MLTX-02-005-EN-11600, MLTX-02-005-EN-8560, MLTX-02-005-EN-12080 | 100% | 2026-07-30 | 2026-09-02 | Draftsman [12.71 h]; Consultant Staff [3.39 h] | EN.MB.SD.EL.PR.2180 | MOD-02-EN-3390 | TO |
| MLTX-02-005-EN-11730 |  | Shop DWG Approval for Telephone & Data Riser Diagram | 21d | 2026-07-30 A | 2026-07-30 A | MLTX-02-005-EN-8560, MLTX-02-005-EN-8580, MLTX-02-005-EN-11570, MLTX-02-005-EN-11280 | 100% | 2026-08-10 | 2026-09-02 | Draftsman [12.71 h]; Consultant Staff [3.39 h] | EN.MB.SD.EL.PR.2190 | MOD-02-EN-3400 | TO |

| ID | WBS | Activity | Duration | Start | Finish | Predecessors | Complete | Planned start | Planned finish | Total float | Free float | Resources | New Activity Code | New Activity ID | Shop Drawings |
| --- | --- | --- | --- | --- | --- | --- | --- | --- | --- | --- | --- | --- | --- | --- | --- |
|  | ELE | **SHOP DRAWINGS APPROVAL FOR PLAYGROUND WORKS** |  | 2026-03-15 | 2026-12-16 |  |  |  |  |  |  |  |  |  |  |
|  | 3 | **ARCHITECTURE WORKS** |  | 2026-03-15 | 2026-05-24 |  |  |  |  |  |  |  |  |  |  |
| MLTX-02-005-EN-11900 |  | Shop DWG Approval for Playground Plan/Layout | 15d | 2026-03-15 A | 2026-03-29 A | MLTX-02-005-EN-8780, MLTX-02-005-EN-11330, MLTX-02-005-EN-11450, MLTX-02-005-EN-11440 | 100% | 2026-05-21 | 2026-06-10 |  |  | Draftsman [12.71 h]; Consultant Staff [3.39 h] | EN.MB.SD.AR.PR.1110 | MOD-02-EN-3430 | PL |
| MLTX-02-005-EN-11910 |  | Shop DWG Approval for Furniture & Marking | 30d | 2026-03-15 A | 2026-05-14 A | MLTX-02-005-EN-8790, MLTX-02-005-EN-11290 | 100% | 2026-08-20 | 2026-09-24 |  |  | Draftsman [12.71 h]; Consultant Staff [3.39 h] | EN.MB.SD.AR.PR.1140 | MOD-02-EN-3440 | PL |
| MLTX-02-005-EN-11920 |  | Shop DWG Approval for Sections | 20d | 2026-03-15 A | 2026-03-29 A | MLTX-02-005-EN-8800 | 100% | 2026-03-30 | 2026-04-21 |  |  | Draftsman [12.71 h]; Consultant Staff [3.39 h] | EN.MB.SD.AR.PR.1150 | MOD-02-EN-3450 | PL |
| MLTX-02-005-EN-11930 |  | Shop DWG Approval for Interlock Pattern Plan | 30d | 2026-03-15 A | 2026-03-29 A | MLTX-02-005-EN-8810, MLTX-02-005-EN-12000 | 100% | 2026-07-16 | 2026-08-19 |  |  | Draftsman [12.71 h]; Consultant Staff [3.39 h] | EN.MB.SD.AR.PR.1190 | MOD-02-EN-3460 | PL |
| MLTX-02-005-EN-11940 |  | Shop DWG Approval for Doors/Windows Schedule | 20d | 2026-03-15 A | 2026-05-24 A | MLTX-02-005-EN-8810 | 100% | 2026-04-06 | 2026-04-28 |  |  | Draftsman [12.71 h]; Consultant Staff [3.39 h] | EN.MB.SD.AR.PR.1220 | MOD-02-EN-3470 | PL |
| MLTX-02-005-EN-11980 |  | Shop DWG Approval for Dome Internal Layout | 30d | 2026-03-15 A | 2026-05-24 A | MLTX-02-005-EN-8850, MLTX-02-005-EN-11900 | 100% | 2026-06-11 | 2026-07-15 |  |  | Draftsman [12.71 h]; Consultant Staff [3.39 h] | EN.MB.SD.AR.PR.1110 | MOD-02-EN-3480 | PL |
|  | 4 | **STRUCTURE WORKS** |  | 2026-03-24 | 2026-07-16 |  |  |  |  |  |  |  |  |  |  |
| MLTX-02-005-EN-11950 |  | Shop DWG Approval for Air Dome System | 21d | 2026-03-24 A | 2026-05-16 A | MLTX-02-005-EN-8830 | 100% | 2026-07-05 | 2026-07-28 |  |  | Draftsman [12.71 h]; Consultant Staff [3.39 h] | EN.MB.SD.AR.PR.1110 | MOD-02-EN-3500 | PL |
| MLTX-02-005-EN-11960 |  | Shop DWG Approval for Foundation of Air Dome | 21d | 2026-07-16 A | 2026-07-16 A | MLTX-02-005-EN-8840, MLTX-02-005-EN-11980 | 100% | 2026-07-16 | 2026-08-09 |  |  | Draftsman [12.71 h]; Consultant Staff [3.39 h] | EN.MB.SD.AR.PR.1140 | MOD-02-EN-3510 | PL |
| MLTX-02-005-EN-11970 |  | Shop DWG Approval for Foundation of Air Dome | 21d | 2026-07-16 A | 2026-07-16 A | MLTX-02-005-EN-11960 SS, MLTX-02-005-EN-11980 | 100% | 2026-07-16 | 2026-08-09 |  |  | Draftsman [12.71 h]; Consultant Staff [3.39 h] | EN.MB.SD.AR.PR.1150 | MOD-02-EN-3520 | PL |
| MLTX-02-005-EN-11990 |  | Shop DWG Approval for Anchor Bolt Layout of Air Dome | 21d | 2026-07-16 A | 2026-07-16 A | MLTX-02-005-EN-8860, MLTX-02-005-EN-11980 | 100% | 2026-07-16 | 2026-08-09 |  |  | Draftsman [12.71 h]; Consultant Staff [3.39 h] | EN.MB.SD.AR.PR.1140 | MOD-02-EN-3530 | PL |
|  | 5 | **AIR DOME SYSTEM** |  | 2026-03-24 | 2026-05-25 |  |  |  |  |  |  |  |  |  |  |
| MLTX-02-005-EN-12000 |  | Shop DWG Approval for Air Dome Structural Layout | 21d | 2026-03-24 A | 2026-05-16 A | MLTX-02-005-EN-8870 | 100% | 2026-06-22 | 2026-07-15 |  |  | Draftsman [12.71 h]; Consultant Staff [3.39 h] | EN.MB.SD.AR.PR.1110 | MOD-02-EN-3550 | PL |
| MLTX-02-005-EN-12010 |  | Shop DWG Approval for Membrane Panel Layout | 21d | 2026-03-24 A | 2026-05-25 A | MLTX-02-005-EN-8880 | 100% | 2026-06-22 | 2026-07-15 |  |  | Draftsman [12.71 h]; Consultant Staff [3.39 h] | EN.MB.SD.AR.PR.1140 | MOD-02-EN-3560 | PL |
| MLTX-02-005-EN-12020 |  | Shop DWG Approval for Cable Tension Layout | 21d | 2026-03-24 A | 2026-05-25 A | MLTX-02-005-EN-8890, MLTX-02-005-EN-12010 SS | 100% | 2026-06-22 | 2026-07-15 |  |  | Draftsman [12.71 h]; Consultant Staff [3.39 h] | EN.MB.SD.AR.PR.1150 | MOD-02-EN-3570 | PL |
| MLTX-02-005-EN-12030 |  | Shop DWG Approval for Airlock Door Details | 21d | 2026-03-24 A | 2026-05-25 A | MLTX-02-005-EN-8900 | 100% | 2026-06-22 | 2026-07-15 |  |  | Draftsman [12.71 h]; Consultant Staff [3.39 h] | EN.MB.SD.AR.PR.1140 | MOD-02-EN-3580 | PL |
| MLTX-02-005-EN-12040 |  | Shop DWG Approval for Emergency Exit Details | 21d | 2026-03-24 A | 2026-05-25 A | MLTX-02-005-EN-8910 | 100% | 2026-06-22 | 2026-07-15 |  |  | Draftsman [12.71 h]; Consultant Staff [3.39 h] | EN.MB.SD.AR.PR.1140 | MOD-02-EN-3590 | PL |
|  | 6 | **SPORTS EQUIPMENT** |  | 2026-07-20 | 2026-11-12 |  |  |  |  |  |  |  |  |  |  |
| MLTX-02-005-EN-12090 |  | Shop DWG Approval for Padel Court Structure | 30d | 2026-07-20 A | 2026-07-20 A | MLTX-02-005-EN-8960 | 100% | 2026-11-03 | 2026-12-07 |  |  | Draftsman [12.71 h]; Consultant Staff [3.39 h] | EN.MB.SD.EL.PR.2160 | MOD-02-EN-3630 | PL |
| MLTX-02-005-EN-12080 |  | Shop DWG Approval for Basketball Court Marking | 30d | 2026-08-25 A | 2026-08-25 A | MLTX-02-005-EN-8950 | 100% | 2026-06-22 | 2026-07-26 |  |  | Draftsman [12.71 h]; Consultant Staff [3.39 h] | EN.MB.SD.EL.PR.2180 | MOD-02-EN-3620 | PL |
| MLTX-02-005-EN-12070 |  | Shop DWG Approval for Football Turf Installation | 21d | 2026-10-20 | 2026-11-12 | MLTX-02-005-EN-8940, MLTX-02-005-EN-11470 |  |  |  | 4d | 7d | Draftsman [12.71 h]; Consultant Staff [3.39 h] | EN.MB.SD.EL.PR.2170 | MOD-02-EN-3610 | PL |
|  | 1 | **MECHANCAL WORKS** |  | 2026-11-18 | 2026-12-14 |  |  |  |  |  |  |  |  |  |  |
| MLTX-02-005-EN-11880 |  | Shop DWG Approval for HVAC Plan | 23d | 2026-11-18 | 2026-12-14 | MLTX-02-005-EN-8760 |  |  |  | -18d | 22d | Draftsman [12.71 h]; Consultant Staff [3.39 h] | EN.MB.SD.MC.PR.1740 | MOD-02-EN-3650 | PL |
| MLTX-02-005-EN-11890 |  | Shop DWG Approval for Exhaust Air Plan | 23d | 2026-11-18 | 2026-12-14 | MLTX-02-005-EN-8770 |  |  |  | -18d | 22d | Draftsman [12.71 h]; Consultant Staff [3.39 h] | EN.MB.SD.MC.PR.1750 | MOD-02-EN-3660 | PL |

| ID | WBS | Activity | Duration | Start | Finish | Predecessors | Complete | Planned start | Planned finish | Total float | Free float | Resources | New Activity Code | New Activity ID | Shop Drawings | Old Activity ID - MK |
| --- | --- | --- | --- | --- | --- | --- | --- | --- | --- | --- | --- | --- | --- | --- | --- | --- |
|  | 2 | **ELECTRICAL WORKS** |  | 2026-08-25 | 2026-12-16 |  |  |  |  |  |  |  |  |  |  |  |
| MLTX-02-005-EN-11850 |  | Shop DWG Approval for CCTV Details | 21d | 2026-08-25 A | 2026-08-25 A | MLTX-02-005-EN-8710, MLTX-02-005-EN-11480 | 100% | 2026-11-03 | 2026-11-26 |  |  | Draftsman [12.71 h]; Consultant Staff [3.39 h] | EN.MB.SD.EL.PR.2140 | MOD-02-EN-3760 | PL |  |
| MLTX-02-005-EN-11860 |  | Shop DWG Approval for CCTV Layout | 21d | 2026-08-25 A | 2026-08-25 A | MLTX-02-005-EN-8740, MLTX-02-005-EN-11480 | 100% | 2026-11-03 | 2026-11-26 |  |  | Draftsman [12.71 h]; Consultant Staff [3.39 h] | EN.MB.SD.EL.PR.2150 | MOD-02-EN-3770 | PL |  |
| MLTX-02-005-EN-11870 |  | Shop DWG Approval for CCTV Riser Diagram | 21d | 2026-08-25 A | 2026-08-25 A | MLTX-02-005-EN-8750, MLTX-02-005-EN-11480 | 100% | 2026-11-03 | 2026-11-26 |  |  | Draftsman [12.71 h]; Consultant Staff [3.39 h] | EN.MB.SD.EL.PR.2180 | MOD-02-EN-3780 | PL |  |
| MLTX-02-005-EN-11800 |  | Shop DWG Approval for Lighting Layout | 25d | 2026-11-18 | 2026-12-16 | MLTX-02-005-EN-8650 |  |  |  | -13d | 20d | Draftsman [12.71 h]; Consultant Staff [3.39 h] | EN.MB.SD.EL.PR.1980 | MOD-02-EN-3680 | PL |  |
| MLTX-02-005-EN-11810 |  | Shop DWG Approval for Power Layout | 25d | 2026-11-18 | 2026-12-16 | MLTX-02-005-EN-8660 |  |  |  | -13d | 20d | Draftsman [12.71 h]; Consultant Staff [3.39 h] | EN.MB.SD.EL.PR.2000 | MOD-02-EN-3690 | PL |  |
| MLTX-02-005-EN-11820 |  | Shop DWG Approval for Power Single Line Diagram | 25d | 2026-11-18 | 2026-12-16 | MLTX-02-005-EN-11560, MLTX-02-005-EN-8670, MLTX-02-005-EN-8650 |  |  |  | -13d | 20d | Draftsman [12.71 h]; Consultant Staff [3.39 h] | EN.MB.SD.EL.PR.2020 | MOD-02-EN-3730 | PL |  |
| MLTX-02-005-EN-11830 |  | Shop DWG Approval for Panel Board Schedules | 25d | 2026-11-18 | 2026-12-16 | MLTX-02-005-EN-8680, MLTX-02-005-EN-8650 |  |  |  | -13d | 20d | Draftsman [12.71 h]; Consultant Staff [3.39 h] | EN.MB.SD.EL.PR.2030 | MOD-02-EN-3740 | PL |  |
| MLTX-02-005-EN-11840 |  | Shop DWG Approval for Power Installation Details | 25d | 2026-11-18 | 2026-12-16 | MLTX-02-005-EN-8690, MLTX-02-005-EN-8650 |  |  |  | -13d | 20d | Draftsman [12.71 h]; Consultant Staff [3.39 h] | EN.MB.SD.EL.PR.2050 | MOD-02-EN-3700 | PL |  |
|  | EAR | **SHOP DRAWINGS APPROVAL FOR LANDSCAPE WORKS** |  | 2026-03-15 | 2026-07-30 |  |  |  |  |  |  |  |  |  |  |  |
|  | 3 | **ARCHITECTURE WORKS** |  | 2026-03-15 | 2026-05-19 |  |  |  |  |  |  |  |  |  |  |  |
| MLTX-02-005-EN-11740 |  | Shop DWG Approval for Landscape Layout | 21d | 2026-03-15 A | 2026-03-29 A | MLTX-02-005-EN-8590 | 100% | 2026-04-06 | 2026-04-29 |  |  | Draftsman [12.71 h]; Consultant Staff [3.39 h] |  | MOD-02-EN-3810 | LS | MAK-01-EN-1120 |
| MLTX-02-005-EN-11750 |  | Shop DWG Approval for Hardscape Plan | 21d | 2026-03-15 A | 2026-03-29 A | MLTX-02-005-EN-8600 | 100% | 2026-04-06 | 2026-04-29 |  |  | Draftsman [12.71 h]; Consultant Staff [3.39 h] |  | MOD-02-EN-3820 | LS | MAK-01-EN-1130 |
| MLTX-02-005-EN-11770 |  | Shop DWG Approval for Landscape Details | 21d | 2026-03-15 A | 2026-03-29 A | MLTX-02-005-EN-8620 | 100% | 2026-03-30 | 2026-04-22 |  |  | Draftsman [12.71 h]; Consultant Staff [3.39 h] |  | MOD-02-EN-3840 | LS | MAK-01-EN-1150 |
| MLTX-02-005-EN-11760 |  | Shop DWG Approval for Planting Plan | 15d | 2026-03-24 A | 2026-05-19 A | MLTX-02-005-EN-8610 | 100% | 2026-04-16 | 2026-05-03 |  |  | Draftsman [12.71 h]; Consultant Staff [3.39 h] |  | MOD-02-EN-3830 | LS | MAK-01-EN-1140 |
|  | 1 | **MECHANCAL WORKS** |  | 2026-07-08 | 2026-07-08 |  |  |  |  |  |  |  |  |  |  |  |
| MLTX-02-005-EN-11780 |  | Shop DWG Approval for Irrigation Details | 30d | 2026-07-08 A | 2026-07-08 A | MLTX-02-005-EN-8630, MLTX-02-005-EN-11290 | 100% | 2026-08-20 | 2026-09-24 |  |  | Draftsman [12.71 h]; Consultant Staff [3.39 h] |  | MOD-02-EN-3880 | LS | MAK-01-EN-1140 |
| MLTX-02-005-EN-11790 |  | Shop DWG Approval for Irrigation Layout | 30d | 2026-07-08 A | 2026-07-08 A | MLTX-02-005-EN-8640, MLTX-02-005-EN-11290 | 100% | 2026-08-20 | 2026-09-24 |  |  | Draftsman [12.71 h]; Consultant Staff [3.39 h] |  | MOD-02-EN-3920 | LS | MAK-01-EN-1140 |
|  | 2 | **ELECTRICAL WORKS** |  | 2026-07-30 | 2026-07-30 |  |  |  |  |  |  |  |  |  |  |  |
| MLTX-02-005-EN-11320 |  | Shop DWG Approval for Lighting General Arrangement | 30d | 2026-07-30 A | 2026-07-30 A | MLTX-02-005-EN-7890, MLTX-02-005-EN-11960 | 100% | 2026-08-20 | 2026-09-24 |  |  | Draftsman [12.71 h]; Consultant Staff [3.39 h] |  | MOD-02-EN-3970 | LS | MAK-01-EN-1120 |
| MLTX-02-005-EN-11330 |  | Shop DWG Approval for Lighting Network Layout | 30d | 2026-07-30 A | 2026-07-30 A | MLTX-02-005-EN-7900 | 100% | 2026-04-16 | 2026-05-20 |  |  | Draftsman [12.71 h]; Consultant Staff [3.39 h] |  | MOD-02-EN-3980 | LS | MAK-01-EN-1130 |
| MLTX-02-005-EN-11340 |  | Shop DWG Approval for Lighting Details | 30d | 2026-07-30 A | 2026-07-30 A | MLTX-02-005-EN-7910, MLTX-02-005-EN-11960 | 100% | 2026-08-20 | 2026-09-24 |  |  | Draftsman [12.71 h]; Consultant Staff [3.39 h] |  | MOD-02-EN-3950 | LS | MAK-01-EN-1140 |
| MLTX-02-005-EN-11350 |  | Shop DWG Approval for Lighting Single Line Diagram | 30d | 2026-07-30 A | 2026-07-30 A | MLTX-02-005-EN-7920, MLTX-02-005-EN-11960 | 100% | 2026-08-20 | 2026-09-24 |  |  | Draftsman [12.71 h]; Consultant Staff [3.39 h] |  | MOD-02-EN-3960 | LS | MAK-01-EN-1150 |
|  | MTS | **METHOD STATEMENTS** |  | 2026-03-08 | 2026-09-12 |  |  |  |  |  |  |  |  |  |  |  |
|  | 1 | **METHOD STATEMENT SUBMITTAL** |  | 2026-03-08 | 2026-06-04 |  |  |  |  |  |  |  |  |  |  |  |
|  | 4 | **CIVIL WORKS** |  | 2026-03-09 | 2026-03-14 |  |  |  |  |  |  |  |  |  |  |  |
| MLTX-02-005-EN-7930 |  | Preparation & Submission of Method Statement for Earthwork | 15d | 2026-03-09 A | 2026-03-14 A | MLTX-02-005-MB-1770 | 100% | 2026-03-08 | 2026-03-28 |  |  | QA/QC Engineer [16.1 h] |  | MOD-02-EN-4020 |  | A1010 |
| MLTX-02-005-EN-7940 |  | Preparation & Submission of Method Statement for Concrete Works | 21d | 2026-03-09 A | 2026-03-14 A | MLTX-02-005-MB-1770, MLTX-02-005-EN-7930 | 100% | 2026-03-29 | 2026-04-21 |  |  | QA/QC Engineer [16.1 h] |  | MOD-02-EN-4030 |  | A1020 |
| MLTX-02-005-EN-7950 |  | Preparation & Submission of Method Statement for Waterproofing | 21d | 2026-03-09 A | 2026-03-14 A | MLTX-02-005-MB-1770 | 100% | 2026-03-08 | 2026-04-04 |  |  | QA/QC Engineer [16.1 h] |  | MOD-02-EN-4040 |  |  |

| ID | WBS | Activity | Duration | Start | Finish | Predecessors | Complete | Planned start | Planned finish | Resources | New Activity ID | Old Activity ID - MK |
| --- | --- | --- | --- | --- | --- | --- | --- | --- | --- | --- | --- | --- |
|  | 1 | **ARCHITECTURE WORKS** |  | 2026-03-08 | 2026-06-02 |  |  |  |  |  |  |  |
| MLTX-02-005-EN-7990 |  | Preparation & Submission of Method Statement for Masonary Works | 21d | 2026-03-08 A | 2026-05-11 A | MLTX-02-005-MB-1770 | 100% | 2026-03-08 | 2026-04-04 | QA/QC Engineer [16.1 h] | MOD-02-EN-4070 | A1020 |
| MLTX-02-005-EN-8000 |  | Preparation & Submission of Method Statement for Tilling Works | 30d | 2026-03-08 A | 2026-05-17 A | MLTX-02-005-MB-1770, MLTX-02-005-EN-8070 | 100% | 2026-07-01 | 2026-08-04 | QA/QC Engineer [16.1 h] | MOD-02-EN-4080 |  |
| MLTX-02-005-EN-8010 |  | Preparation & Submission of Method Statement for Seats/Benches Works | 30d | 2026-03-08 A | 2026-06-02 A | MLTX-02-005-MB-1770, MLTX-02-005-EN-7980 | 100% | 2026-07-16 | 2026-08-19 | QA/QC Engineer [16.1 h] | MOD-02-EN-4090 | A1010 |
| MLTX-02-005-EN-8020 |  | Preparation & Submission of Method Statement for Doors/Windows Works | 30d | 2026-03-08 A | 2026-06-02 A | MLTX-02-005-MB-1770, MLTX-02-005-EN-7970 | 100% | 2026-09-03 | 2026-10-08 | QA/QC Engineer [16.1 h] | MOD-02-EN-4100 | A1020 |
| MLTX-02-005-EN-8030 |  | Preparation & Submission of Method Statement for Interlock/Curbstone Works | 21d | 2026-03-08 A | 2026-05-24 A | MLTX-02-005-MB-1770 | 100% | 2026-03-08 | 2026-04-04 | QA/QC Engineer [16.1 h] | MOD-02-EN-4110 |  |
| MLTX-02-005-EN-8040 |  | Preparation & Submission of Method Statement for Parking Works | 30d | 2026-03-08 A | 2026-05-24 A | MLTX-02-005-MB-1770, MLTX-02-005-EN-11590 | 100% | 2026-08-31 | 2026-10-05 | QA/QC Engineer [16.1 h] | MOD-02-EN-4120 |  |
| MLTX-02-005-EN-8050 |  | Preparation & Submission of Method Statement for Soft Scape Works | 21d | 2026-03-08 A | 2026-06-02 A | MLTX-02-005-MB-1770, MLTX-02-005-EN-7980 | 100% | 2026-07-16 | 2026-08-09 | QA/QC Engineer [16.1 h] | MOD-02-EN-4130 |  |
| MLTX-02-005-EN-8060 |  | Preparation & Submission of Method Statement for Fence Works | 30d | 2026-03-08 A | 2026-06-02 A | MLTX-02-005-MB-1770 | 100% | 2026-03-08 | 2026-04-14 | QA/QC Engineer [16.1 h] | MOD-02-EN-4140 |  |
| MLTX-02-005-EN-8070 |  | Preparation & Submission of Method Statement for Air Dome Works | 30d | 2026-03-08 A | 2026-06-02 A | MLTX-02-005-MB-1770, MLTX-02-005-EN-8160, MLTX-02-005-EN-11230 | 100% | 2026-05-24 | 2026-06-30 | QA/QC Engineer [16.1 h] | MOD-02-EN-4150 |  |
| MLTX-02-005-EN-8080 |  | Preparation & Submission of Method Statement for Metal Works | 21d | 2026-03-08 A | 2026-06-02 A | MLTX-02-005-MB-1770 | 100% | 2026-03-08 | 2026-04-04 | QA/QC Engineer [16.1 h] | MOD-02-EN-4160 |  |
| MLTX-02-005-EN-8090 |  | Preparation & Submission of Method Statement for Partitions Works | 21d | 2026-03-08 A | 2026-06-02 A | MLTX-02-005-MB-1770, MLTX-02-005-EN-7990 | 100% | 2026-04-05 | 2026-04-28 | QA/QC Engineer [16.1 h] | MOD-02-EN-4170 |  |
| MLTX-02-005-EN-8100 |  | Preparation & Submission of Method Statement for Gypsum Board Works | 21d | 2026-03-08 A | 2026-06-02 A | MLTX-02-005-MB-1770, MLTX-02-005-EN-8070 | 100% | 2026-07-01 | 2026-07-25 | QA/QC Engineer [16.1 h] | MOD-02-EN-4180 |  |
| MLTX-02-005-EN-7980 |  | Preparation & Submission of Method Statement for Plastering Works | 15d | 2026-03-09 A | 2026-03-14 A | MLTX-02-005-MB-1770, MLTX-02-005-EN-11260 | 100% | 2026-06-29 | 2026-07-15 | QA/QC Engineer [16.1 h] | MOD-02-EN-4060 | A1010 |
|  | 2 | **MECHANICAL WORKS** |  | 2026-03-14 | 2026-06-04 |  |  |  |  |  |  |  |
| MLTX-02-005-EN-8110 |  | Preparation & Submission of Method Statement for Sewage/Drainage System | 21d | 2026-03-14 A | 2026-05-04 A | MLTX-02-005-EN-7930, MLTX-02-005-EN-7980 | 100% | 2026-07-16 | 2026-08-09 | QA/QC Engineer [16.1 h] | MOD-02-EN-4200 | A1010 |
| MLTX-02-005-EN-8120 |  | Preparation & Submission of Method Statement for Water Supply System | 21d | 2026-03-14 A | 2026-05-04 A | MLTX-02-005-EN-7940, MLTX-02-005-EN-7980 | 100% | 2026-07-16 | 2026-08-09 | QA/QC Engineer [16.1 h] | MOD-02-EN-4210 | A1020 |
| MLTX-02-005-EN-8130 |  | Preparation & Submission of Method Statement for Fire Fighting System | 21d | 2026-03-14 A | 2026-06-04 A | MLTX-02-005-EN-7950, MLTX-02-005-EN-8040, MLTX-02-005-EN-11190 | 100% | 2026-10-06 | 2026-10-29 | QA/QC Engineer [16.1 h] | MOD-02-EN-4220 |  |
| MLTX-02-005-EN-8140 |  | Preparation & Submission of Method Statement for Irrigation System | 15d | 2026-03-14 A | 2026-06-04 A | MLTX-02-005-EN-7980, MLTX-02-005-EN-8170 | 100% | 2026-08-05 | 2026-08-22 | QA/QC Engineer [16.1 h] | MOD-02-EN-4230 | A1010 |
| MLTX-02-005-EN-8150 |  | Preparation & Submission of Method Statement for HVAC System | 21d | 2026-03-14 A | 2026-06-04 A | MLTX-02-005-EN-7990, MLTX-02-005-EN-8110 | 100% | 2026-08-10 | 2026-09-02 | QA/QC Engineer [16.1 h] | MOD-02-EN-4240 | A1020 |
|  | 5 | **ELECTRICAL WORKS** |  | 2026-03-14 | 2026-05-11 |  |  |  |  |  |  |  |
| MLTX-02-005-EN-7960 |  | Preparation & Submission of Method Statement for Electrical Conduits/Pulling Works | 21d | 2026-03-14 A | 2026-05-11 A | MLTX-02-005-EN-8030 | 100% | 2026-04-05 | 2026-04-28 | QA/QC Engineer [16.1 h] | MOD-02-EN-4310 |  |
| MLTX-02-005-EN-7970 |  | Preparation & Submission of Method Statement for Lighting Poles Installation | 21d | 2026-03-14 A | 2026-05-11 A | MLTX-02-005-EN-8050, MLTX-02-005-EN-8170 | 100% | 2026-08-10 | 2026-09-02 | QA/QC Engineer [16.1 h] | MOD-02-EN-4330 |  |
| MLTX-02-005-EN-8160 |  | Preparation & Submission of Method Statement for Telecommunication & Data System | 30d | 2026-03-14 A | 2026-05-11 A | MLTX-02-005-EN-8060 | 100% | 2026-04-15 | 2026-05-19 | QA/QC Engineer [16.1 h] | MOD-02-EN-4260 |  |
| MLTX-02-005-EN-8170 |  | Preparation & Submission of Method Statement for CCTV System | 30d | 2026-03-14 A | 2026-05-11 A | MLTX-02-005-EN-8070, MLTX-02-005-EN-11240 | 100% | 2026-07-01 | 2026-08-04 | QA/QC Engineer [16.1 h] | MOD-02-EN-4270 |  |
| MLTX-02-005-EN-8180 |  | Preparation & Submission of Method Statement for Lighting Works | 21d | 2026-03-14 A | 2026-05-11 A | MLTX-02-005-EN-8080 | 100% | 2026-04-05 | 2026-04-28 | QA/QC Engineer [16.1 h] | MOD-02-EN-4280 |  |
| MLTX-02-005-EN-8190 |  | Preparation & Submission of Method Statement for Earthing/Lightning Works | 21d | 2026-03-14 A | 2026-05-11 A | MLTX-02-005-EN-8090, MLTX-02-005-EN-7960 | 100% | 2026-04-29 | 2026-05-23 | QA/QC Engineer [16.1 h] | MOD-02-EN-4290 |  |
| MLTX-02-005-EN-8200 |  | Preparation & Submission of Method Statement for Panel Boards Works | 21d | 2026-03-14 A | 2026-05-11 A | MLTX-02-005-EN-8100, MLTX-02-005-EN-7980 | 100% | 2026-07-26 | 2026-08-18 | QA/QC Engineer [16.1 h] | MOD-02-EN-4300 |  |

| ID | WBS | Activity | Duration | Start | Finish | Predecessors | Complete | Planned start | Planned finish | Resources | New Activity ID | Old Activity ID - MK |
| --- | --- | --- | --- | --- | --- | --- | --- | --- | --- | --- | --- | --- |
|  | 2 | **METHOD STATEMENT APPROVAL** |  | 2026-03-14 | 2026-09-12 |  |  |  |  |  |  |  |
|  | 4 | **CIVIL WORKS** |  | 2026-03-14 | 2026-04-30 |  |  |  |  |  |  |  |
| MLTX-02-005-EN-10990 |  | Approval of Method Statement for Earthwork | 15d | 2026-03-14 A | 2026-04-30 A | MLTX-02-005-EN-7930 | 100% | 2026-03-29 | 2026-04-14 | Consultant Staff [16.1 h] | MOD-02-EN-4360 | A1010 |
| MLTX-02-005-EN-11000 |  | Approval of Method Statement for Concrete Works | 30d | 2026-03-14 A | 2026-04-30 A | MLTX-02-005-EN-7940, MLTX-02-005-EN-10990 | 100% | 2026-04-22 | 2026-05-30 | Consultant Staff [16.1 h] | MOD-02-EN-4370 | A1020 |
| MLTX-02-005-EN-11010 |  | Approval of Method Statement for Waterproofing | 21d | 2026-03-14 A | 2026-04-30 A | MLTX-02-005-EN-7950 | 100% | 2026-04-05 | 2026-04-28 | Consultant Staff [16.1 h] | MOD-02-EN-4380 |  |
|  | 1 | **ARCHITECTURE WORKS** |  | 2026-03-14 | 2026-09-12 |  |  |  |  |  |  |  |
| MLTX-02-005-EN-11040 |  | Approval of Method Statement for Plastering Works | 30d | 2026-03-14 A | 2026-04-30 A | MLTX-02-005-EN-7980, MLTX-02-005-EN-11130 | 100% | 2026-08-05 | 2026-09-08 | Consultant Staff [16.1 h] | MOD-02-EN-4400 | A1010 |
| MLTX-02-005-EN-11050 |  | Approval of Method Statement for Masonary Works | 30d | 2026-03-14 A | 2026-05-21 A | MLTX-02-005-EN-7990, MLTX-02-005-EN-11010 | 100% | 2026-04-29 | 2026-06-06 | Consultant Staff [16.1 h] | MOD-02-EN-4410 | A1020 |
| MLTX-02-005-EN-11060 |  | Approval of Method Statement for Tilling Works | 30d | 2026-03-14 A | 2026-05-21 A | MLTX-02-005-EN-8000, MLTX-02-005-EN-11130 | 100% | 2026-08-05 | 2026-09-08 | Consultant Staff [16.1 h] | MOD-02-EN-4420 |  |
| MLTX-02-005-EN-11130 |  | Approval of Method Statement for Air Dome Works | 30d | 2026-07-11 A | 2026-07-22 A | MLTX-02-005-EN-8070, MLTX-02-005-EN-11210 | 100% | 2026-07-01 | 2026-08-04 | Consultant Staff [16.1 h] | MOD-02-EN-4490 |  |
| MLTX-02-005-EN-11120 |  | Approval of Method Statement for Fence Works | 30d | 2026-08-10 A | 2026-08-10 A | MLTX-02-005-EN-8060, MLTX-02-005-EN-11070, MLTX-02-005-EN-11150, MLTX-02-005-EN-8020, MLTX-02-005-EN-8750 | 100% | 2026-10-24 | 2026-11-26 | Consultant Staff [16.1 h] | MOD-02-EN-4480 |  |
| MLTX-02-005-EN-11090 |  | Approval of Method Statement for Interlock/Curbstone Works | 30d | 2026-08-15 A | 2026-08-15 A | MLTX-02-005-EN-8030, MLTX-02-005-EN-11130 | 100% | 2026-08-05 | 2026-09-08 | Consultant Staff [16.1 h] | MOD-02-EN-4450 |  |
| MLTX-02-005-EN-11150 |  | Approval of Method Statement for Gypsum Board Works | 30d | 2026-08-20 A | 2026-08-20 A | MLTX-02-005-EN-8100, MLTX-02-005-EN-11040 | 100% | 2026-09-09 | 2026-10-14 | Consultant Staff [16.1 h] | MOD-02-EN-4520 |  |
| MLTX-02-005-EN-11100 |  | Approval of Method Statement for Parking Works | 30d | 2026-08-26 A | 2026-08-26 A | MLTX-02-005-EN-8040, MLTX-02-005-EN-11470 | 100% | 2026-10-10 | 2026-11-12 | Consultant Staff [16.1 h] | MOD-02-EN-4460 |  |
| MLTX-02-005-EN-11070 |  | Approval of Method Statement for Seats/Benches Works | 30d | 2026-09-12 A | 2026-09-12 A | MLTX-02-005-EN-8010, MLTX-02-005-EN-11040 | 100% | 2026-09-09 | 2026-10-14 | Consultant Staff [16.1 h] | MOD-02-EN-4430 | A1010 |
| MLTX-02-005-EN-11080 |  | Approval of Method Statement for Doors/Windows Works | 30d | 2026-09-12 A | 2026-09-12 A | MLTX-02-005-EN-8020, MLTX-02-005-EN-11110, MLTX-02-005-EN-11100 | 100% | 2026-11-14 | 2026-12-17 | Consultant Staff [16.1 h] | MOD-02-EN-4440 | A1020 |
| MLTX-02-005-EN-11110 |  | Approval of Method Statement for Soft Scape Works | 30d | 2026-09-12 A | 2026-09-12 A | MLTX-02-005-EN-8050, MLTX-02-005-EN-11040 | 100% | 2026-09-09 | 2026-10-14 | Consultant Staff [16.1 h] | MOD-02-EN-4470 |  |
| MLTX-02-005-EN-11140 |  | Approval of Method Statement for Partitions Works | 30d | 2026-09-12 A | 2026-09-12 A | MLTX-02-005-EN-8090, MLTX-02-005-EN-11040 | 100% | 2026-09-09 | 2026-10-14 | Consultant Staff [16.1 h] | MOD-02-EN-4510 |  |
|  | 2 | **MECHANICAL WORKS** |  | 2026-06-02 | 2026-08-26 |  |  |  |  |  |  |  |
| MLTX-02-005-EN-11170 |  | Approval of Method Statement for Water Supply System | 21d | 2026-06-02 A | 2026-06-02 A | MLTX-02-005-EN-8120, MLTX-02-005-EN-8140 | 100% | 2026-08-23 | 2026-09-15 | Consultant Staff [16.1 h] | MOD-02-EN-4550 | A1020 |
| MLTX-02-005-EN-11160 |  | Approval of Method Statement for Sewage/Drainage System | 21d | 2026-06-09 A | 2026-06-09 A | MLTX-02-005-EN-8110, MLTX-02-005-EN-11130 | 100% | 2026-08-10 | 2026-09-02 | Consultant Staff [16.1 h] | MOD-02-EN-4540 | A1010 |
| MLTX-02-005-EN-11190 |  | Approval of Method Statement for Irrigation System | 15d | 2026-06-28 A | 2026-06-28 A | MLTX-02-005-EN-8140, MLTX-02-005-EN-11040 | 100% | 2026-09-09 | 2026-09-27 | Consultant Staff [16.1 h] | MOD-02-EN-4570 | A1010 |
| MLTX-02-005-EN-11200 |  | Approval of Method Statement for HVAC System | 21d | 2026-08-25 A | 2026-08-25 A | MLTX-02-005-EN-8150, MLTX-02-005-EN-11160 | 100% | 2026-09-03 | 2026-09-28 | Consultant Staff [16.1 h] | MOD-02-EN-4580 | A1020 |
| MLTX-02-005-EN-11180 |  | Approval of Method Statement for Fire Fighting System | 21d | 2026-08-26 A | 2026-08-26 A | MLTX-02-005-EN-8130, MLTX-02-005-EN-8740 | 100% | 2026-10-31 | 2026-11-23 | Consultant Staff [16.1 h] | MOD-02-EN-4560 |  |

| ID | WBS | Activity | Duration | Start | Finish | Predecessors | Complete | Planned start | Planned finish | Resources | New Activity ID | Old Activity ID - MK |
| --- | --- | --- | --- | --- | --- | --- | --- | --- | --- | --- | --- | --- |
|  | 5 | **ELECTRICAL WORKS** |  | 2026-07-12 | 2026-08-26 |  |  |  |  |  |  |  |
| MLTX-02-005-EN-11020 |  | Approval of Method Statement for Electrical Conduits/Pulling Works | 21d | 2026-07-12 A | 2026-07-16 A | MLTX-02-005-EN-7960, MLTX-02-005-EN-11130 | 100% | 2026-08-05 | 2026-08-29 | Consultant Staff [16.1 h] | MOD-02-EN-4600 |  |
| MLTX-02-005-EN-11250 |  | Approval of Method Statement for Panel Boards Works | 21d | 2026-07-12 A | 2026-07-22 A | MLTX-02-005-EN-8200, MLTX-02-005-EN-11130 | 100% | 2026-08-19 | 2026-09-12 | Consultant Staff [16.1 h] | MOD-02-EN-4670 |  |
| MLTX-02-005-EN-11210 |  | Approval of Method Statement for Telecommunication & Data System | 30d | 2026-08-10 A | 2026-08-10 A | MLTX-02-005-EN-8160 | 100% | 2026-05-20 | 2026-06-27 | Consultant Staff [16.1 h] | MOD-02-EN-4630 |  |
| MLTX-02-005-EN-11220 |  | Approval of Method Statement for CCTV System | 30d | 2026-08-10 A | 2026-08-10 A | MLTX-02-005-EN-8170, MLTX-02-005-EN-11130 | 100% | 2026-08-05 | 2026-09-08 | Consultant Staff [16.1 h] | MOD-02-EN-4640 |  |
| MLTX-02-005-EN-11230 |  | Approval of Method Statement for Lighting Works | 21d | 2026-08-10 A | 2026-08-10 A | MLTX-02-005-EN-8180 | 100% | 2026-04-29 | 2026-05-23 | Consultant Staff [16.1 h] | MOD-02-EN-4650 |  |
| MLTX-02-005-EN-11240 |  | Approval of Method Statement for Earthing/Lightning Works | 21d | 2026-08-10 A | 2026-08-10 A | MLTX-02-005-EN-11230, MLTX-02-005-EN-8190 | 100% | 2026-05-24 | 2026-06-20 | Consultant Staff [16.1 h] | MOD-02-EN-4660 |  |
| MLTX-02-005-EN-11030 |  | Approval of Method Statement for Lighting Poles Installation | 21d | 2026-08-26 A | 2026-08-26 A | MLTX-02-005-EN-7970, MLTX-02-005-EN-11220, MLTX-02-005-EN-11020 | 100% | 2026-09-09 | 2026-10-04 | Consultant Staff [16.1 h] | MOD-02-EN-4620 |  |
|  | PREQ | **PRE-QUALIFICATION & MATERIAL** |  | 2026-03-08 | 2026-09-12 |  |  |  |  |  |  |  |
|  | PRE | **PRE-QUALIFICATION** |  | 2026-03-08 | 2026-06-07 |  |  |  |  |  |  |  |
|  | TOI | **TOILET/SERVICE WORKS** |  | 2026-03-08 | 2026-06-07 |  |  |  |  |  |  |  |
|  | 1 | **STEEL REINFORCEMENT** |  | 2026-03-09 | 2026-03-19 |  |  |  |  |  |  |  |
| MLTX-02-005-EN-9990 |  | Pre-Qualification Submittal for Steel Reinforcement | 15d | 2026-03-09 A | 2026-03-11 A | MLTX-02-005-MB-1770 | 100% | 2026-03-08 | 2026-03-28 | QA/QC Engineer [16.1 h] | MOD-02-EN-4720 | MAK-01-PR-1000 |
| MLTX-02-005-EN-10110 |  | Pre-Qualification Approval for Steel Reinforcement | 15d | 2026-03-12 A | 2026-03-19 A | MLTX-02-005-EN-9990 | 100% | 2026-03-29 | 2026-04-14 | Consultant Staff [16.1 h] | MOD-02-EN-4730 | MAK-01-PR-1010 |
|  | 2 | **READY MIX CONCRETE** |  | 2026-03-09 | 2026-03-19 |  |  |  |  |  |  |  |
| MLTX-02-005-EN-10000 |  | Pre-Qualification Submittal for Ready Mixed Concrete | 15d | 2026-03-09 A | 2026-03-11 A | MLTX-02-005-MB-1770, MLTX-02-005-EN-9990 SS | 100% | 2026-03-08 | 2026-03-28 | QA/QC Engineer [16.1 h] | MOD-02-EN-4750 | MAK-01-PR-1040 |
| MLTX-02-005-EN-10010 |  | Pre-Qualification Approval of Ready Mixed Concrete | 15d | 2026-03-12 A | 2026-03-19 A | MLTX-02-005-EN-10000 | 100% | 2026-03-29 | 2026-04-14 | Consultant Staff [16.1 h] | MOD-02-EN-4760 | MAK-01-PR-1050 |
|  | 3 | **CONCRETE BLOCKS** |  | 2026-03-09 | 2026-03-19 |  |  |  |  |  |  |  |
| MLTX-02-005-EN-10210 |  | Pre-Qualification Submittal for Concrete Blocks | 15d | 2026-03-09 A | 2026-03-11 A | MLTX-02-005-EN-10000 SS, MLTX-02-005-MB-1770 | 100% | 2026-03-08 | 2026-03-28 | QA/QC Engineer [16.1 h] | MOD-02-EN-4780 | MAK-01-PR-1000 |
| MLTX-02-005-EN-10220 |  | Pre-Qualification Approval for Concrete Blocks | 15d | 2026-03-12 A | 2026-03-19 A | MLTX-02-005-EN-10210 | 100% | 2026-03-29 | 2026-04-14 | Consultant Staff [16.1 h] | MOD-02-EN-4790 | MAK-01-PR-1010 |
|  | 4 | **WATER PROOFING** |  | 2026-03-09 | 2026-03-19 |  |  |  |  |  |  |  |
| MLTX-02-005-EN-10020 |  | Pre-Qualification Submittal for Water Proofing | 15d | 2026-03-09 A | 2026-03-11 A | MLTX-02-005-MB-1770, MLTX-02-005-EN-10210 SS | 100% | 2026-03-08 | 2026-03-28 | QA/QC Engineer [16.1 h] | MOD-02-EN-4810 | MAK-01-PR-1060 |
| MLTX-02-005-EN-10120 |  | Pre-Qualification Approval for Water Proofing | 21d | 2026-03-12 A | 2026-03-19 A | MLTX-02-005-EN-10020, MLTX-02-005-EN-10010 | 100% | 2026-04-15 | 2026-05-09 | Consultant Staff [16.1 h] | MOD-02-EN-4820 | MAK-01-PR-1070 |
|  | 6 | **FLOOR/WALL TILES** |  | 2026-03-08 | 2026-05-10 |  |  |  |  |  |  |  |
| MLTX-02-005-EN-10230 |  | Pre-Qualification Submittal for Tilling Materials | 15d | 2026-03-08 A | 2026-05-05 A | MLTX-02-005-MB-1770, MLTX-02-005-EN-10020 SS | 100% | 2026-03-08 | 2026-03-28 | QA/QC Engineer [16.1 h] | MOD-02-EN-4840 | MAK-01-PR-1000 |
| MLTX-02-005-EN-10240 |  | Pre-Qualification Approval for Tailling Material | 15d | 2026-03-11 A | 2026-05-10 A | MLTX-02-005-EN-10230, MLTX-02-005-EN-10460 | 100% | 2026-06-28 | 2026-07-14 | Consultant Staff [16.1 h] | MOD-02-EN-4850 | MAK-01-PR-1010 |

| ID | WBS | Activity | Duration | Start | Finish | Predecessors | Complete | Planned start | Planned finish | Resources | New Activity ID | Old Activity ID - MK |
| --- | --- | --- | --- | --- | --- | --- | --- | --- | --- | --- | --- | --- |
|  | 7 | **SUSPENDED CEILING** |  | 2026-03-09 | 2026-03-19 |  |  |  |  |  |  |  |
| MLTX-02-005-EN-10250 |  | Pre-Qualification Submittal for Suspend Ceiling | 15d | 2026-03-09 A | 2026-03-11 A | MLTX-02-005-EN-10230 SS, MLTX-02-005-MB-1770 | 100% | 2026-03-08 | 2026-03-28 | QA/QC Engineer [16.1 h] | MOD-02-EN-4870 | MAK-01-PR-1000 |
| MLTX-02-005-EN-10260 |  | Pre-Qualification Approval for Suspend Ceiling | 15d | 2026-03-12 A | 2026-03-19 A | MLTX-02-005-EN-10250, MLTX-02-005-EN-10280 | 100% | 2026-08-09 | 2026-08-25 | Consultant Staff [16.1 h] | MOD-02-EN-4880 | MAK-01-PR-1010 |
|  | 8 | **DOORS/WINDOWS** |  | 2026-03-09 | 2026-03-19 |  |  |  |  |  |  |  |
| MLTX-02-005-EN-10270 |  | Pre-Qualification Submittal for Doors/Windows | 15d | 2026-03-09 A | 2026-03-11 A | MLTX-02-005-EN-10250 SS, MLTX-02-005-MB-1770 | 100% | 2026-03-08 | 2026-03-28 | QA/QC Engineer [16.1 h] | MOD-02-EN-4900 | MAK-01-PR-1000 |
| MLTX-02-005-EN-10280 |  | Pre-Qualification Approval for Doors/Windows | 15d | 2026-03-12 A | 2026-03-19 A | MLTX-02-005-EN-10270, MLTX-02-005-EN-10100 | 100% | 2026-07-22 | 2026-08-08 | Consultant Staff [16.1 h] | MOD-02-EN-4910 | MAK-01-PR-1010 |
|  | 9 | **FURNITURES** |  | 2026-03-08 | 2026-05-10 |  |  |  |  |  |  |  |
| MLTX-02-005-EN-10390 |  | Pre-Qualification Submittal for Furnitures | 15d | 2026-03-08 A | 2026-05-06 A | MLTX-02-005-MB-1770, MLTX-02-005-EN-10270 SS | 100% | 2026-03-08 | 2026-03-28 | QA/QC Engineer [16.1 h] | MOD-02-EN-4930 | MAK-01-PR-1000 |
| MLTX-02-005-EN-10400 |  | Pre-Qualification Approval for Furnitures | 15d | 2026-03-11 A | 2026-05-10 A | MLTX-02-005-EN-10390, MLTX-02-005-EN-10010 | 100% | 2026-04-15 | 2026-05-02 | Consultant Staff [16.1 h] | MOD-02-EN-4940 | MAK-01-PR-1010 |
|  | 10 | **SANITARY FIXTURES** |  | 2026-03-08 | 2026-05-10 |  |  |  |  |  |  |  |
| MLTX-02-005-EN-10290 |  | Pre-Qualification Submittal for Sanitary Fixtures | 15d | 2026-03-08 A | 2026-05-06 A | MLTX-02-005-EN-10390 SS, MLTX-02-005-MB-1770 | 100% | 2026-03-08 | 2026-03-28 | QA/QC Engineer [16.1 h] | MOD-02-EN-4960 | MAK-01-PR-1000 |
| MLTX-02-005-EN-10300 |  | Pre-Qualification Approval for Sanitary Fixtures | 15d | 2026-03-11 A | 2026-05-10 A | MLTX-02-005-EN-10290 | 100% | 2026-03-29 | 2026-04-14 | Consultant Staff [16.1 h] | MOD-02-EN-4970 | MAK-01-PR-1010 |
|  | 11 | **WATER SUPPLY PIPES** |  | 2026-03-09 | 2026-03-19 |  |  |  |  |  |  |  |
| MLTX-02-005-EN-10310 |  | Pre-Qualification Submittal for Water Supply Pipes | 15d | 2026-03-09 A | 2026-03-11 A | MLTX-02-005-EN-10290 SS, MLTX-02-005-MB-1770 | 100% | 2026-03-08 | 2026-03-28 | QA/QC Engineer [16.1 h] | MOD-02-EN-4990 | MAK-01-PR-1000 |
| MLTX-02-005-EN-10320 |  | Pre-Qualification Approval for Water Supply Pipes | 15d | 2026-03-12 A | 2026-03-19 A | MLTX-02-005-EN-10310, MLTX-02-005-EN-10460 | 100% | 2026-06-28 | 2026-07-14 | Consultant Staff [16.1 h] | MOD-02-EN-5000 | MAK-01-PR-1010 |
|  | 12 | **SEWAGE/DRAINAGE PIPES** |  | 2026-03-09 | 2026-03-19 |  |  |  |  |  |  |  |
| MLTX-02-005-EN-10330 |  | Pre-Qualification Submittal for Sewage/Drainage Pipes | 15d | 2026-03-09 A | 2026-03-11 A | MLTX-02-005-EN-10310 SS | 100% | 2026-03-08 | 2026-03-28 | QA/QC Engineer [16.1 h] | MOD-02-EN-5020 | MAK-01-PR-1000 |
| MLTX-02-005-EN-10340 |  | Pre-Qualification Approval for Sewage/Drainage Pipes | 15d | 2026-03-12 A | 2026-03-19 A | MLTX-02-005-EN-10330 | 100% | 2026-03-29 | 2026-04-14 | Consultant Staff [16.1 h] | MOD-02-EN-5030 | MAK-01-PR-1010 |
|  | 16 | **PACKAGE AC UNITS** |  | 2026-03-12 | 2026-03-24 |  |  |  |  |  |  |  |
| MLTX-02-005-EN-10420 |  | Pre-Qualification Submittal for Package AC Units | 15d | 2026-03-12 A | 2026-03-15 A | MLTX-02-005-EN-9990 | 100% | 2026-03-29 | 2026-04-14 | QA/QC Engineer [16.1 h] | MOD-02-EN-5050 | MAK-01-PR-1000 |
| MLTX-02-005-EN-10430 |  | Pre-Qualification Approval for Package AC Units | 15d | 2026-03-16 A | 2026-03-24 A | MLTX-02-005-EN-10420 | 100% | 2026-04-15 | 2026-05-02 | Consultant Staff [16.1 h] | MOD-02-EN-5060 | MAK-01-PR-1010 |
|  | 17 | **AIR DIFUSSERS/GRILLS** |  | 2026-03-12 | 2026-05-06 |  |  |  |  |  |  |  |
| MLTX-02-005-EN-10440 |  | Pre-Qualification Submittal for Air Diffusers/Grills | 15d | 2026-03-12 A | 2026-05-06 A | MLTX-02-005-EN-10000, MLTX-02-005-EN-10200 | 100% | 2026-07-05 | 2026-07-21 | QA/QC Engineer [16.1 h] | MOD-02-EN-5080 | MAK-01-PR-1000 |
| MLTX-02-005-EN-10450 |  | Pre-Qualification Approval for Air Diffusers/Grills | 15d | 2026-03-16 A | 2026-05-06 A | MLTX-02-005-EN-10440, MLTX-02-005-EN-10280 | 100% | 2026-08-09 | 2026-08-25 | Consultant Staff [16.1 h] | MOD-02-EN-5090 | MAK-01-PR-1010 |

| ID | WBS | Activity | Duration | Start | Finish | Predecessors | Complete | Planned start | Planned finish | Resources | New Activity ID | Old Activity ID - MK |
| --- | --- | --- | --- | --- | --- | --- | --- | --- | --- | --- | --- | --- |
|  | 18 | **GALVANIZED DUCTS** |  | 2026-03-11 | 2026-04-30 |  |  |  |  |  |  |  |
| MLTX-02-005-EN-10460 |  | Pre-Qualification Submittal for Galvanized Ducts | 15d | 2026-03-11 A | 2026-04-25 A | MLTX-02-005-EN-10210, MLTX-02-005-EN-10080 | 100% | 2026-06-10 | 2026-06-27 | QA/QC Engineer [16.1 h] | MOD-02-EN-5110 | MAK-01-PR-1000 |
| MLTX-02-005-EN-10470 |  | Pre-Qualification Approval for Galvanized Ducts | 15d | 2026-03-15 A | 2026-04-30 A | MLTX-02-005-EN-10460, MLTX-02-005-EN-10840 | 100% | 2026-06-28 | 2026-07-14 | Consultant Staff [16.1 h] | MOD-02-EN-5120 | MAK-01-PR-1010 |
|  | 19 | **EXHAUST FANS** |  | 2026-03-11 | 2026-06-07 |  |  |  |  |  |  |  |
| MLTX-02-005-EN-10480 |  | Pre-Qualification Submittal for Exhaust Fans | 15d | 2026-03-11 A | 2026-05-25 A | MLTX-02-005-EN-10020 | 100% | 2026-03-29 | 2026-04-14 | QA/QC Engineer [16.1 h] | MOD-02-EN-5140 | MAK-01-PR-1000 |
| MLTX-02-005-EN-10490 |  | Pre-Qualification Approval for Exhaust Fans | 15d | 2026-03-15 A | 2026-06-07 A | MLTX-02-005-EN-10480 | 100% | 2026-04-15 | 2026-05-02 | Consultant Staff [16.1 h] | MOD-02-EN-5150 | MAK-01-PR-1010 |
|  | 13 | **LIGHTING FIXTURES** |  | 2026-03-11 | 2026-06-07 |  |  |  |  |  |  |  |
| MLTX-02-005-EN-10350 |  | Pre-Qualification Submittal for Lighting Fixtures | 15d | 2026-03-11 A | 2026-05-25 A | MLTX-02-005-EN-10230 | 100% | 2026-03-29 | 2026-04-14 | QA/QC Engineer [16.1 h] | MOD-02-EN-5170 | MAK-01-PR-1000 |
| MLTX-02-005-EN-10360 |  | Pre-Qualification Approval for Lighting Fixtures | 15d | 2026-03-15 A | 2026-06-07 A | MLTX-02-005-EN-10350 | 100% | 2026-04-15 | 2026-05-02 | Consultant Staff [16.1 h] | MOD-02-EN-5180 | MAK-01-PR-1010 |
|  | 14 | **SWITCHES/SOCKETS** |  | 2026-03-11 | 2026-06-07 |  |  |  |  |  |  |  |
| MLTX-02-005-EN-10370 |  | Pre-Qualification Submittal for Switches/Sockets | 15d | 2026-03-11 A | 2026-05-25 A | MLTX-02-005-EN-10250 | 100% | 2026-03-29 | 2026-04-14 | QA/QC Engineer [16.1 h] | MOD-02-EN-5200 | MAK-01-PR-1000 |
| MLTX-02-005-EN-10380 |  | Pre-Qualification Approval for Switches/Sockets | 15d | 2026-03-15 A | 2026-06-07 A | MLTX-02-005-EN-10370 | 100% | 2026-04-15 | 2026-05-02 | Consultant Staff [16.1 h] | MOD-02-EN-5210 | MAK-01-PR-1010 |
|  | 15 | **EARTHING SYSTEM** |  | 2026-03-11 | 2026-05-11 |  |  |  |  |  |  |  |
| MLTX-02-005-EN-10170 |  | Pre-Qualification Submittal for Earthing System | 15d | 2026-03-11 A | 2026-05-09 A | MLTX-02-005-EN-10270, MLTX-02-005-EN-10730 | 100% | 2026-05-31 | 2026-06-16 | QA/QC Engineer [16.1 h] | MOD-02-EN-5230 | MAK-01-PR-1290 |
| MLTX-02-005-EN-10180 |  | Pre-Qualification Approval for Earthing System | 15d | 2026-03-15 A | 2026-05-11 A | MLTX-02-005-EN-10170, MLTX-02-005-EN-10460 | 100% | 2026-06-28 | 2026-07-14 | Consultant Staff [16.1 h] | MOD-02-EN-5240 | MAK-01-PR-1300 |
|  | 5 | **DISTRIBUTION PANNELS** |  | 2026-03-11 | 2026-06-07 |  |  |  |  |  |  |  |
| MLTX-02-005-EN-10190 |  | Pre-Qualification Submittal for Distribution Panels | 15d | 2026-03-11 A | 2026-05-25 A | MLTX-02-005-EN-10390, MLTX-02-005-EN-10690 | 100% | 2026-05-20 | 2026-06-09 | QA/QC Engineer [16.1 h] | MOD-02-EN-5260 | MAK-01-PR-LLI-1060 |
| MLTX-02-005-EN-10200 |  | Pre-Qualification Approval for Distribution Panels | 15d | 2026-03-15 A | 2026-06-07 A | MLTX-02-005-EN-10190, MLTX-02-005-EN-10170 | 100% | 2026-06-17 | 2026-07-04 | Consultant Staff [16.1 h] | MOD-02-EN-5270 | MAK-01-PR-LLI-1070 |
|  | PLG | **PLAYGROUND WORKS** |  | 2026-03-08 | 2026-06-07 |  |  |  |  |  |  |  |
|  | 5 | **PVC MEMBRANE** |  | 2026-03-08 | 2026-05-24 |  |  |  |  |  |  |  |
| MLTX-02-005-EN-10580 |  | Pre-Qualification Submittal for PVC Membrane | 15d | 2026-03-08 A | 2026-05-20 A | MLTX-02-005-EN-10330 SS | 100% | 2026-03-08 | 2026-03-28 | QA/QC Engineer [16.1 h] | MOD-02-EN-5300 | MAK-01-PR-1120 |
| MLTX-02-005-EN-10590 |  | Pre-Qualification Approval for PVC Membrane | 15d | 2026-03-11 A | 2026-05-24 A | MLTX-02-005-EN-10580, MLTX-02-005-EN-10040 | 100% | 2026-04-22 | 2026-05-09 | Consultant Staff [16.1 h] | MOD-02-EN-5310 | MAK-01-PR-1130 |
|  | 6 | **STEEL TENSION CABLES** |  | 2026-03-08 | 2026-05-24 |  |  |  |  |  |  |  |
| MLTX-02-005-EN-10600 |  | Pre-Qualification Submittal for Steel Tension Cables | 15d | 2026-03-08 A | 2026-05-20 A | MLTX-02-005-EN-10580 SS, MLTX-02-005-EN-10040 | 100% | 2026-04-22 | 2026-05-09 | QA/QC Engineer [16.1 h] | MOD-02-EN-5330 | MAK-01-PR-1120 |
| MLTX-02-005-EN-10900 |  | Pre-Qualification Approval for Steel Tension Cables | 15d | 2026-03-11 A | 2026-05-24 A | MLTX-02-005-EN-10600, MLTX-02-005-EN-10620 | 100% | 2026-07-01 | 2026-07-18 | Consultant Staff [16.1 h] | MOD-02-EN-5340 | MAK-01-PR-1120 |

| ID | WBS | Activity | Duration | Start | Finish | Predecessors | Complete | Planned start | Planned finish | Resources | New Activity ID | Old Activity ID - MK |
| --- | --- | --- | --- | --- | --- | --- | --- | --- | --- | --- | --- | --- |
|  | 7 | **EMERGENCY DOORS** |  | 2026-03-08 | 2026-05-24 |  |  |  |  |  |  |  |
| MLTX-02-005-EN-10610 |  | Pre-Qualification Submittal for Emergency Doors | 15d | 2026-03-08 A | 2026-05-20 A | MLTX-02-005-MB-1770, MLTX-02-005-EN-10030 | 100% | 2026-03-29 | 2026-04-14 | QA/QC Engineer [16.1 h] | MOD-02-EN-5360 | MAK-01-PR-1120 |
| MLTX-02-005-EN-10910 |  | Pre-Qualification Approval for Emergency Doors | 15d | 2026-03-11 A | 2026-05-24 A | MLTX-02-005-EN-10610, MLTX-02-005-EN-10050 | 100% | 2026-04-15 | 2026-05-02 | Consultant Staff [16.1 h] | MOD-02-EN-5370 | MAK-01-PR-1120 |
|  | 8 | **PRESSURE UNITS** |  | 2026-03-08 | 2026-05-24 |  |  |  |  |  |  |  |
| MLTX-02-005-EN-10620 |  | Pre-Qualification Submittal for Pressure Units | 15d | 2026-03-08 A | 2026-05-20 A | MLTX-02-005-MB-1770, MLTX-02-005-EN-9030 | 100% | 2026-06-14 | 2026-06-30 | QA/QC Engineer [16.1 h] | MOD-02-EN-5390 | MAK-01-PR-1120 |
| MLTX-02-005-EN-10920 |  | Pre-Qualification Approval for Pressure Units | 15d | 2026-03-11 A | 2026-05-24 A | MLTX-02-005-EN-10620, MLTX-02-005-EN-10930 | 100% | 2026-07-15 | 2026-08-01 | Consultant Staff [16.1 h] | MOD-02-EN-5400 | MAK-01-PR-1120 |
|  | 9 | **AIR LOCK DOORS** |  | 2026-03-08 | 2026-05-24 |  |  |  |  |  |  |  |
| MLTX-02-005-EN-10630 |  | Pre-Qualification Submittal for Lock Doors | 15d | 2026-03-08 A | 2026-05-20 A | MLTX-02-005-MB-1770, MLTX-02-005-EN-10690 | 100% | 2026-05-20 | 2026-06-09 | QA/QC Engineer [16.1 h] | MOD-02-EN-5420 | MAK-01-PR-1120 |
| MLTX-02-005-EN-10930 |  | Pre-Qualification Approval for Lock Doors | 15d | 2026-03-11 A | 2026-05-24 A | MLTX-02-005-EN-10630, MLTX-02-005-EN-9670 | 100% | 2026-06-28 | 2026-07-14 | Consultant Staff [16.1 h] | MOD-02-EN-5430 | MAK-01-PR-1120 |
|  | 15 | **ARTIFICIAL TURF** |  | 2026-03-08 | 2026-05-10 |  |  |  |  |  |  |  |
| MLTX-02-005-EN-10780 |  | Pre-Qualification Submittal for Artificial TURF | 15d | 2026-03-08 A | 2026-05-06 A | MLTX-02-005-MB-1770 | 100% | 2026-03-08 | 2026-03-28 | QA/QC Engineer [16.1 h] | MOD-02-EN-5450 | MAK-01-PR-1120 |
| MLTX-02-005-EN-10940 |  | Pre-Qualification Approval for Artificial TURF | 15d | 2026-03-11 A | 2026-05-10 A | MLTX-02-005-EN-10780 | 100% | 2026-03-29 | 2026-04-14 | Consultant Staff [16.1 h] | MOD-02-EN-5460 | MAK-01-PR-1120 |
|  | 20 | **RUBBER GRANULES** |  | 2026-03-08 | 2026-05-10 |  |  |  |  |  |  |  |
| MLTX-02-005-EN-10790 |  | Pre-Qualification Submittal for Rubber Granules | 15d | 2026-03-08 A | 2026-05-06 A | MLTX-02-005-MB-1770 | 100% | 2026-03-08 | 2026-03-28 | QA/QC Engineer [16.1 h] | MOD-02-EN-5480 | MAK-01-PR-1120 |
| MLTX-02-005-EN-10950 |  | Pre-Qualification Approval for Rubber Granules | 21d | 2026-03-11 A | 2026-05-10 A | MLTX-02-005-EN-10790 | 100% | 2026-03-29 | 2026-04-21 | Consultant Staff [16.1 h] | MOD-02-EN-5490 | MAK-01-PR-1120 |
|  | 21 | **PADEL GLASS** |  | 2026-03-08 | 2026-05-10 |  |  |  |  |  |  |  |
| MLTX-02-005-EN-10800 |  | Pre-Qualification Submittal for Padel Glass | 15d | 2026-03-08 A | 2026-05-06 A | MLTX-02-005-MB-1770, MLTX-02-005-EN-10030 | 100% | 2026-03-29 | 2026-04-14 | QA/QC Engineer [16.1 h] | MOD-02-EN-5510 | MAK-01-PR-1120 |
| MLTX-02-005-EN-10960 |  | Pre-Qualification Approval for Padel Glass | 15d | 2026-03-11 A | 2026-05-10 A | MLTX-02-005-EN-10800, MLTX-02-005-EN-10040 | 100% | 2026-04-22 | 2026-05-09 | Consultant Staff [16.1 h] | MOD-02-EN-5520 | MAK-01-PR-1120 |
|  | 22 | **PADEL WIRE MESH/STEEL SETS** |  | 2026-03-08 | 2026-05-10 |  |  |  |  |  |  |  |
| MLTX-02-005-EN-10810 |  | Pre-Qualification Submittal for Wire Mesh/Steel Sets | 15d | 2026-03-08 A | 2026-05-06 A | MLTX-02-005-MB-1770 | 100% | 2026-03-08 | 2026-03-28 | QA/QC Engineer [16.1 h] | MOD-02-EN-5540 | MAK-01-PR-1120 |
| MLTX-02-005-EN-10970 |  | Pre-Qualification Approval for Wire Mesh/Steel Sets | 15d | 2026-03-11 A | 2026-05-10 A | MLTX-02-005-EN-10810, MLTX-02-005-EN-10930 | 100% | 2026-07-15 | 2026-08-01 | Consultant Staff [16.1 h] | MOD-02-EN-5550 | MAK-01-PR-1120 |
|  | 1 | **AGGREGATE BASE COURSE** |  | 2026-03-08 | 2026-04-30 |  |  |  |  |  |  |  |
| MLTX-02-005-EN-10030 |  | Pre-Qualification Submittal for Aggregate Base Course | 15d | 2026-03-08 A | 2026-04-26 A | MLTX-02-005-MB-1770 | 100% | 2026-03-08 | 2026-03-28 | QA/QC Engineer [16.1 h] | MOD-02-EN-5570 | MAK-01-PR-1090 |
| MLTX-02-005-EN-10040 |  | Pre-Qualification Approval for Aggregate Base Course | 21d | 2026-03-11 A | 2026-04-30 A | MLTX-02-005-EN-10030 | 100% | 2026-03-29 | 2026-04-21 | Consultant Staff [16.1 h] | MOD-02-EN-5580 | MAK-01-PR-1100 |

| ID | WBS | Activity | Duration | Start | Finish | Predecessors | Complete | Planned start | Planned finish | Resources | New Activity ID | Old Activity ID - MK |
| --- | --- | --- | --- | --- | --- | --- | --- | --- | --- | --- | --- | --- |
|  | 16 | **PACKAGE AC UNITS** |  | 2026-03-11 | 2026-06-07 |  |  |  |  |  |  |  |
| MLTX-02-005-EN-10500 |  | Pre-Qualification Submittal for Package AC Units | 15d | 2026-03-11 A | 2026-05-25 A | MLTX-02-005-EN-10620, MLTX-02-005-EN-10930 | 100% | 2026-07-15 | 2026-08-01 | QA/QC Engineer [16.1 h] | MOD-02-EN-5690 | MAK-01-PR-1000 |
| MLTX-02-005-EN-10510 |  | Pre-Qualification Approval for Package AC Units | 15d | 2026-03-15 A | 2026-06-07 A | MLTX-02-005-EN-10500, MLTX-02-005-EN-10520 | 100% | 2026-08-02 | 2026-08-18 | Consultant Staff [16.1 h] | MOD-02-EN-5700 | MAK-01-PR-1010 |
|  | 17 | **AIR DIFUSSERS/GRILLS** |  | 2026-03-11 | 2026-06-07 |  |  |  |  |  |  |  |
| MLTX-02-005-EN-10520 |  | Pre-Qualification Submittal for Air Difussers/Grills | 15d | 2026-03-11 A | 2026-05-25 A | MLTX-02-005-EN-10630, MLTX-02-005-EN-10930 | 100% | 2026-07-15 | 2026-08-01 | QA/QC Engineer [16.1 h] | MOD-02-EN-5720 | MAK-01-PR-1000 |
| MLTX-02-005-EN-10530 |  | Pre-Qualification Approval for Air Difussers/Grills | 15d | 2026-03-15 A | 2026-06-07 A | MLTX-02-005-EN-10520, MLTX-02-005-EN-10930 | 100% | 2026-08-02 | 2026-08-18 | Consultant Staff [16.1 h] | MOD-02-EN-5730 | MAK-01-PR-1010 |
|  | 2 | **BITUMINOUS BASE & WEARING COURSE** |  | 2026-03-11 | 2026-04-30 |  |  |  |  |  |  |  |
| MLTX-02-005-EN-10050 |  | Pre-Qualification Submittal for Bituminous Base & Wearing Cource | 15d | 2026-03-11 A | 2026-04-26 A | MLTX-02-005-EN-10580 | 100% | 2026-03-29 | 2026-04-14 | QA/QC Engineer [16.1 h] | MOD-02-EN-5600 | MAK-01-PR-1120 |
| MLTX-02-005-EN-10060 |  | Pre-Qualification Approval for the Site | 15d | 2026-03-15 A | 2026-04-30 A | MLTX-02-005-EN-10050 | 100% | 2026-04-15 | 2026-05-02 | Consultant Staff [16.1 h] | MOD-02-EN-5610 | MAK-01-PR-1130 |
|  | 3 | **INTERLOCKING PAVING** |  | 2026-03-11 | 2026-04-14 |  |  |  |  |  |  |  |
| MLTX-02-005-EN-10070 |  | Pre-Qualification Submittal for Interlocking Block Pavers | 15d | 2026-03-11 A | 2026-04-11 A | MLTX-02-005-EN-10600, MLTX-02-005-EN-10590 | 100% | 2026-05-10 | 2026-05-30 | QA/QC Engineer [16.1 h] | MOD-02-EN-5630 | MAK-01-PR-1170 |
| MLTX-02-005-EN-10130 |  | Pre-Qualification Approval for Interlocking Block Pavers | 15d | 2026-03-15 A | 2026-04-14 A | MLTX-02-005-EN-10070, MLTX-02-005-EN-10730 | 100% | 2026-05-31 | 2026-06-16 | Consultant Staff [16.1 h] | MOD-02-EN-5640 | MAK-01-PR-1180 |
|  | 4 | **MARKING PAINT** |  | 2026-03-11 | 2026-05-09 |  |  |  |  |  |  |  |
| MLTX-02-005-EN-10410 |  | Pre-Qualification Submittal for Marking Paint | 15d | 2026-03-11 A | 2026-05-05 A | MLTX-02-005-EN-10610, MLTX-02-005-EN-10050 | 100% | 2026-04-15 | 2026-05-02 | QA/QC Engineer [16.1 h] | MOD-02-EN-5660 | MAK-01-PR-1120 |
| MLTX-02-005-EN-10980 |  | Pre-Qualification Approval for Marking Paint | 15d | 2026-03-15 A | 2026-05-09 A | MLTX-02-005-EN-10410, MLTX-02-005-EN-10040 | 100% | 2026-05-03 | 2026-05-19 | Consultant Staff [16.1 h] | MOD-02-EN-5670 | MAK-01-PR-1120 |
|  | 18 | **GALVANIZED DUCTS** |  | 2026-03-11 | 2026-04-30 |  |  |  |  |  |  |  |
| MLTX-02-005-EN-10540 |  | Pre-Qualification Submittal for Galvanized Duct | 15d | 2026-03-11 A | 2026-04-30 A | MLTX-02-005-EN-10520 SS, MLTX-02-005-EN-10930 | 100% | 2026-07-15 | 2026-08-01 | QA/QC Engineer [16.1 h] | MOD-02-EN-5750 | MAK-01-PR-1000 |
| MLTX-02-005-EN-10550 |  | Pre-Qualification Approval for Galvanized Duct | 15d | 2026-03-15 A | 2026-04-25 A | MLTX-02-005-EN-10540, MLTX-02-005-EN-10930 | 100% | 2026-08-02 | 2026-08-18 | Consultant Staff [16.1 h] | MOD-02-EN-5760 | MAK-01-PR-1010 |
|  | 19 | **EXHAUST FANS** |  | 2026-03-11 | 2026-06-07 |  |  |  |  |  |  |  |
| MLTX-02-005-EN-10560 |  | Pre-Qualification Submittal for Exhaust Fans | 15d | 2026-03-11 A | 2026-05-25 A | MLTX-02-005-EN-10780, MLTX-02-005-EN-10620 | 100% | 2026-07-01 | 2026-07-18 | QA/QC Engineer [16.1 h] | MOD-02-EN-5780 | MAK-01-PR-1000 |
| MLTX-02-005-EN-10570 |  | Pre-Qualification Approval for Exhaust Fans | 15d | 2026-03-15 A | 2026-06-07 A | MLTX-02-005-EN-10560, MLTX-02-005-EN-10930 | 100% | 2026-07-19 | 2026-08-04 | Consultant Staff [16.1 h] | MOD-02-EN-5790 | MAK-01-PR-1010 |
|  | 10 | **DISTRIBUTION BOARDS** |  | 2026-03-11 | 2026-06-07 |  |  |  |  |  |  |  |
| MLTX-02-005-EN-10640 |  | Pre-Qualification Submittal for Distribution Boards | 15d | 2026-03-11 A | 2026-05-25 A | MLTX-02-005-EN-10630, MLTX-02-005-EN-10930 | 100% | 2026-07-15 | 2026-08-01 | QA/QC Engineer [16.1 h] | MOD-02-EN-5810 | MAK-01-PR-1000 |
| MLTX-02-005-EN-10650 |  | Pre-Qualification Approval for Distribution Boards | 15d | 2026-03-15 A | 2026-06-07 A | MLTX-02-005-EN-10640, MLTX-02-005-EN-9610 | 100% | 2026-08-03 | 2026-08-19 | Consultant Staff [16.1 h] | MOD-02-EN-5820 | MAK-01-PR-1010 |

| ID | WBS | Activity | Duration | Start | Finish | Predecessors | Complete | Planned start | Planned finish | Resources | New Activity ID | Old Activity ID - MK |
| --- | --- | --- | --- | --- | --- | --- | --- | --- | --- | --- | --- | --- |
|  | 11 | **POWER CABLES** |  | 2026-03-11 | 2026-05-11 |  |  |  |  |  |  |  |
| MLTX-02-005-EN-10660 |  | Pre-Qualification Submittal for Power Cables | 15d | 2026-03-11 A | 2026-05-09 A | MLTX-02-005-EN-10810 | 100% | 2026-03-29 | 2026-04-14 | QA/QC Engineer [16.1 h] | MOD-02-EN-5840 | MAK-01-PR-1000 |
| MLTX-02-005-EN-10670 |  | Pre-Qualification Approval for Power Cables | 15d | 2026-03-15 A | 2026-05-11 A | MLTX-02-005-EN-10660 | 100% | 2026-04-15 | 2026-05-02 | Consultant Staff [16.1 h] | MOD-02-EN-5850 | MAK-01-PR-1010 |
|  | 12 | **LIGHT FIXTURES** |  | 2026-03-11 | 2026-06-07 |  |  |  |  |  |  |  |
| MLTX-02-005-EN-10680 |  | Pre-Qualification Submittal for Light Fixtures | 15d | 2026-03-11 A | 2026-05-25 A | MLTX-02-005-EN-10790, MLTX-02-005-EN-10050 | 100% | 2026-04-15 | 2026-05-02 | QA/QC Engineer [16.1 h] | MOD-02-EN-5870 | MAK-01-PR-1000 |
| MLTX-02-005-EN-10690 |  | Pre-Qualification Approval for Light Fixtures | 15d | 2026-03-15 A | 2026-06-07 A | MLTX-02-005-EN-10680, MLTX-02-005-EN-10040 | 100% | 2026-05-03 | 2026-05-19 | Consultant Staff [16.1 h] | MOD-02-EN-5880 | MAK-01-PR-1010 |
|  | 13 | **CCTV MATERIALS** |  | 2026-03-11 | 2026-06-07 |  |  |  |  |  |  |  |
| MLTX-02-005-EN-10700 |  | Pre-Qualification Submittal for CCTV | 15d | 2026-03-11 A | 2026-05-25 A | MLTX-02-005-EN-10800, MLTX-02-005-EN-10050 | 100% | 2026-04-15 | 2026-05-02 | QA/QC Engineer [16.1 h] | MOD-02-EN-5900 | MAK-01-PR-1000 |
| MLTX-02-005-EN-10710 |  | Pre-Qualification Approval for CCTV | 15d | 2026-03-15 A | 2026-06-07 A | MLTX-02-005-EN-10700, MLTX-02-005-EN-10040 | 100% | 2026-05-03 | 2026-05-19 | Consultant Staff [16.1 h] | MOD-02-EN-5910 | MAK-01-PR-1010 |
|  | 14 | **POWER OUTLETS/SWITCHES** |  | 2026-03-11 | 2026-06-07 |  |  |  |  |  |  |  |
| MLTX-02-005-EN-10720 |  | Pre-Qualification Submittal for Power Outlets/Switches | 15d | 2026-03-11 A | 2026-05-25 A | MLTX-02-005-EN-10030, MLTX-02-005-EN-10040 | 100% | 2026-04-22 | 2026-05-09 | QA/QC Engineer [16.1 h] | MOD-02-EN-5930 | MAK-01-PR-1000 |
| MLTX-02-005-EN-10730 |  | Pre-Qualification Approval for Power Outlets/Switches | 15d | 2026-03-15 A | 2026-06-07 A | MLTX-02-005-EN-10720, MLTX-02-005-EN-10960 | 100% | 2026-05-10 | 2026-05-30 | Consultant Staff [16.1 h] | MOD-02-EN-5940 | MAK-01-PR-1010 |
|  | LSC | **LANDSCAPE WORKS** |  | 2026-03-11 | 2026-05-18 |  |  |  |  |  |  |  |
|  | 7 | **INTERLOCKING PAVING** |  | 2026-03-12 | 2026-03-24 |  |  |  |  |  |  |  |
| MLTX-02-005-EN-10760 |  | Pre-Qualification Submittal for Interlocking Block Pavers | 15d | 2026-03-12 A | 2026-03-15 A | MLTX-02-005-EN-10030 | 100% | 2026-03-29 | 2026-04-14 | QA/QC Engineer [16.1 h] | MOD-02-EN-5970 | MAK-01-PR-1170 |
| MLTX-02-005-EN-10770 |  | Pre-Qualification Approval for Interlocking Block Pavers | 15d | 2026-03-16 A | 2026-03-24 A | MLTX-02-005-EN-10760 | 100% | 2026-04-15 | 2026-05-02 | Consultant Staff [16.1 h] | MOD-02-EN-5980 | MAK-01-PR-1180 |
|  | 9 | **CURBSTONE** |  | 2026-03-12 | 2026-03-24 |  |  |  |  |  |  |  |
| MLTX-02-005-EN-10860 |  | Pre-Qualification Submittal for Curbstone | 15d | 2026-03-12 A | 2026-03-15 A | MLTX-02-005-EN-10030, MLTX-02-005-EN-10080 | 100% | 2026-06-10 | 2026-06-27 | QA/QC Engineer [16.1 h] | MOD-02-EN-6000 | MAK-01-PR-1260 |
| MLTX-02-005-EN-10870 |  | Pre-Qualification Approval for Curbstone | 15d | 2026-03-16 A | 2026-03-24 A | MLTX-02-005-EN-10860, MLTX-02-005-EN-10840 | 100% | 2026-06-28 | 2026-07-14 | Consultant Staff [16.1 h] | MOD-02-EN-6010 | MAK-01-PR-1270 |
|  | 1 | **PAVEMENT MARKING** |  | 2026-03-11 | 2026-05-09 |  |  |  |  |  |  |  |
| MLTX-02-005-EN-10080 |  | Pre-Qualification Submittal for Pavement Markings | 15d | 2026-03-11 A | 2026-05-05 A | MLTX-02-005-EN-10030, MLTX-02-005-EN-10690 | 100% | 2026-05-20 | 2026-06-09 | QA/QC Engineer [16.1 h] | MOD-02-EN-6030 | MAK-01-PR-1200 |
| MLTX-02-005-EN-10140 |  | Pre-Qualification Approval for Pavement Markings | 15d | 2026-03-15 A | 2026-05-09 A | MLTX-02-005-EN-10080, MLTX-02-005-EN-10880 | 100% | 2026-06-17 | 2026-07-04 | Consultant Staff [16.1 h] | MOD-02-EN-6040 | MAK-01-PR-1210 |
|  | 2 | **TRAFFIC SIGNS** |  | 2026-03-11 | 2026-05-09 |  |  |  |  |  |  |  |
| MLTX-02-005-EN-10090 |  | Pre-Qualification Submittal for Traffic Signs | 15d | 2026-03-11 A | 2026-05-05 A | MLTX-02-005-EN-10030, MLTX-02-005-EN-10880 | 100% | 2026-06-17 | 2026-07-04 | QA/QC Engineer [16.1 h] | MOD-02-EN-6060 | MAK-01-PR-1230 |
| MLTX-02-005-EN-10100 |  | Pre-Qualification Approval for Traffic Signs | 15d | 2026-03-15 A | 2026-05-09 A | MLTX-02-005-EN-10090, MLTX-02-005-EN-10840 | 100% | 2026-07-05 | 2026-07-21 | Consultant Staff [16.1 h] | MOD-02-EN-6070 | MAK-01-PR-1240 |

| ID | WBS | Activity | Duration | Start | Finish | Predecessors | Complete | Planned start | Planned finish | Resources | New Activity ID | Old Activity ID - MK |
| --- | --- | --- | --- | --- | --- | --- | --- | --- | --- | --- | --- | --- |
|  | 3 | **IRRIGATION PIPES/SPRINKLERS** |  | 2026-03-11 | 2026-05-10 |  |  |  |  |  |  |  |
| MLTX-02-005-EN-10150 |  | Pre-Qualification Submittal for Irrigation Pipes/Sprinkles | 15d | 2026-03-11 A | 2026-05-06 A | MLTX-02-005-EN-10030, MLTX-02-005-EN-10820 | 100% | 2026-07-15 | 2026-08-01 | QA/QC Engineer [16.1 h] | MOD-02-EN-6090 | MAK-01-PR-1260 |
| MLTX-02-005-EN-10160 |  | Pre-Qualification Approval for Irrigation Pipes/Sprinkles | 15d | 2026-03-15 A | 2026-05-10 A | MLTX-02-005-EN-10150, MLTX-02-005-EN-10830 | 100% | 2026-08-05 | 2026-08-22 | Consultant Staff [16.1 h] | MOD-02-EN-6100 | MAK-01-PR-1270 |
|  | 5 | **AGRICULTURE SOIL** |  | 2026-03-11 | 2026-05-14 |  |  |  |  |  |  |  |
| MLTX-02-005-EN-10820 |  | Pre-Qualification Submittal for Agriculture Soil | 15d | 2026-03-11 A | 2026-05-07 A | MLTX-02-005-EN-10030, MLTX-02-005-EN-10840 | 100% | 2026-06-28 | 2026-07-14 | QA/QC Engineer [16.1 h] | MOD-02-EN-6120 | MAK-01-PR-1260 |
| MLTX-02-005-EN-10830 |  | Pre-Qualification Approval for Agriculture Soil | 15d | 2026-03-15 A | 2026-05-14 A | MLTX-02-005-EN-10820, MLTX-02-005-EN-10850 | 100% | 2026-07-19 | 2026-08-04 | Consultant Staff [16.1 h] | MOD-02-EN-6130 | MAK-01-PR-1270 |
|  | 8 | **TRACK SURFACE** |  | 2026-03-11 | 2026-05-13 |  |  |  |  |  |  |  |
| MLTX-02-005-EN-10840 |  | Pre-Qualification Submittal for Track Surface | 15d | 2026-03-11 A | 2026-05-10 A | MLTX-02-005-EN-10030, MLTX-02-005-EN-10630 | 100% | 2026-06-10 | 2026-06-27 | QA/QC Engineer [30 h] | MOD-02-EN-6150 | MAK-01-PR-1260 |
| MLTX-02-005-EN-10850 |  | Pre-Qualification Approval for Track Surface | 15d | 2026-03-15 A | 2026-05-13 A | MLTX-02-005-EN-10840, MLTX-02-005-EN-10620 | 100% | 2026-07-01 | 2026-07-18 | Consultant Staff [30 h] | MOD-02-EN-6160 | MAK-01-PR-1270 |
|  | 10 | **GRASS/TREES** |  | 2026-03-11 | 2026-05-18 |  |  |  |  |  |  |  |
| MLTX-02-005-EN-10880 |  | Pre-Qualification Submittal for Grass/Trees | 15d | 2026-03-11 A | 2026-05-13 A | MLTX-02-005-EN-10030, MLTX-02-005-EN-10730 | 100% | 2026-05-31 | 2026-06-16 | QA/QC Engineer [30 h] | MOD-02-EN-6180 | MAK-01-PR-1260 |
| MLTX-02-005-EN-10890 |  | Pre-Qualification Approval for Grass/Trees | 15d | 2026-03-15 A | 2026-05-18 A | MLTX-02-005-EN-10880, MLTX-02-005-EN-10840 | 100% | 2026-06-28 | 2026-07-14 | Consultant Staff [30 h] | MOD-02-EN-6190 | MAK-01-PR-1270 |
|  | 6 | **CABLES** |  | 2026-03-11 | 2026-05-11 |  |  |  |  |  |  |  |
| MLTX-02-005-EN-10740 |  | Pre-Qualification Submittal for Cables | 15d | 2026-03-11 A | 2026-05-09 A | MLTX-02-005-EN-10030 | 100% | 2026-03-29 | 2026-04-14 | QA/QC Engineer [30 h] | MOD-02-EN-6210 | MAK-01-PR-1200 |
| MLTX-02-005-EN-10750 |  | Pre-Qualification Approval for Cables | 15d | 2026-03-15 A | 2026-05-11 A | MLTX-02-005-EN-10740 | 100% | 2026-04-15 | 2026-05-02 | Consultant Staff [30 h] | MOD-02-EN-6220 | MAK-01-PR-1210 |
|  | 4 | **LIGHT POLES** |  | 2026-03-11 | 2026-05-04 |  |  |  |  |  |  |  |
| MLTX-02-005-EN-9970 |  | Pre-Qualification Submittal for Lighting poles | 15d | 2026-03-11 A | 2026-04-30 A | MLTX-02-005-EN-10030 | 100% | 2026-03-29 | 2026-04-14 | QA/QC Engineer [30 h] | MOD-02-EN-6240 | MAK-01-PR-LLI-1120 |
| MLTX-02-005-EN-9980 |  | Pre-Qualification Approval for Lighting poles | 15d | 2026-03-15 A | 2026-05-04 A | MLTX-02-005-EN-9970 | 100% | 2026-04-15 | 2026-05-02 | Consultant Staff [26.8 h] | MOD-02-EN-6250 | MAK-01-PR-LLI-1130 |
|  | MAT | **MATERIAL SUBMITTAL** |  | 2026-03-19 | 2026-09-12 |  |  |  |  |  |  |  |
|  | TOI | **TOILET/SERVICE WORKS** |  | 2026-03-19 | 2026-07-30 |  |  |  |  |  |  |  |
|  | 1 | **STEEL REINFORCEMENT** |  | 2026-03-24 | 2026-04-04 |  |  |  |  |  |  |  |
| MLTX-02-005-EN-8990 |  | Material Submittal for Steel Reinforcement | 15d | 2026-03-24 A | 2026-03-26 A | MLTX-02-005-EN-10110 | 100% | 2026-04-15 | 2026-05-02 | QA/QC Engineer [16.1 h] | MOD-02-EN-6290 | MAK-01-PR-1000 |
| MLTX-02-005-EN-9100 |  | Material Approval for Steel Reinforcement | 15d | 2026-03-28 A | 2026-04-04 A | MLTX-02-005-EN-8990 | 100% | 2026-05-03 | 2026-05-19 | Consultant Staff [16.1 h] | MOD-02-EN-6300 | MAK-01-PR-1010 |
|  | 2 | **READY MIX CONCRETE** |  | 2026-03-24 | 2026-04-04 |  |  |  |  |  |  |  |
| MLTX-02-005-EN-9000 |  | Material Submittal for Ready Mixed Concrete | 15d | 2026-03-24 A | 2026-03-26 A | MLTX-02-005-EN-10010 | 100% | 2026-04-15 | 2026-05-02 | QA/QC Engineer [16.1 h] | MOD-02-EN-6320 | MAK-01-PR-1040 |
| MLTX-02-005-EN-9010 |  | Material Approval of Ready Mixed Concrete | 15d | 2026-03-28 A | 2026-04-04 A | MLTX-02-005-EN-9000 | 100% | 2026-05-03 | 2026-05-19 | Consultant Staff [16.1 h] | MOD-02-EN-6330 | MAK-01-PR-1050 |

| ID | WBS | Activity | Duration | Start | Finish | Predecessors | Complete | Planned start | Planned finish | Resources | New Activity ID | Old Activity ID - MK |
| --- | --- | --- | --- | --- | --- | --- | --- | --- | --- | --- | --- | --- |
|  | 3 | **CONCRETE BLOCKS** |  | 2026-03-24 | 2026-04-04 |  |  |  |  |  |  |  |
| MLTX-02-005-EN-9190 |  | Material Submittal for Concrete Blocks | 15d | 2026-03-24 A | 2026-03-26 A | MLTX-02-005-EN-10220 | 100% | 2026-04-15 | 2026-05-02 | QA/QC Engineer [16.1 h] | MOD-02-EN-6350 | MAK-01-PR-1000 |
| MLTX-02-005-EN-9200 |  | Material Approval for Concrete Blocks | 15d | 2026-03-28 A | 2026-04-04 A | MLTX-02-005-EN-9190 | 100% | 2026-05-03 | 2026-05-19 | Consultant Staff [16.1 h] | MOD-02-EN-6360 | MAK-01-PR-1010 |
|  | 6 | **FLOOR/WALL TILES** |  | 2026-03-19 | 2026-05-17 |  |  |  |  |  |  |  |
| MLTX-02-005-EN-9210 |  | Material Submittal for Tilling Materials | 15d | 2026-03-19 A | 2026-05-12 A | MLTX-02-005-EN-10240, MLTX-02-005-EN-9710 | 100% | 2026-07-15 | 2026-08-01 | QA/QC Engineer [16.1 h] | MOD-02-EN-6410 | MAK-01-PR-1000 |
| MLTX-02-005-EN-9220 |  | Material Approval for Tilling Material | 15d | 2026-03-26 A | 2026-05-17 A | MLTX-02-005-EN-9210, MLTX-02-005-EN-9440 | 100% | 2026-08-02 | 2026-08-18 | Consultant Staff [16.1 h] | MOD-02-EN-6420 | MAK-01-PR-1010 |
|  | 7 | **SUSPENDED CEILING** |  | 2026-03-24 | 2026-04-04 |  |  |  |  |  |  |  |
| MLTX-02-005-EN-9230 |  | Material Submittal for Suspend Ceiling | 15d | 2026-03-24 A | 2026-03-26 A | MLTX-02-005-EN-10260, MLTX-02-005-EN-9160 | 100% | 2026-08-26 | 2026-09-12 | QA/QC Engineer [16.1 h] | MOD-02-EN-6440 | MAK-01-PR-1000 |
| MLTX-02-005-EN-9240 |  | Material Approval for Suspend Ceiling | 15d | 2026-03-28 A | 2026-04-04 A | MLTX-02-005-EN-9230, MLTX-02-005-EN-9170 | 100% | 2026-09-13 | 2026-09-30 | Consultant Staff [16.1 h] | MOD-02-EN-6450 | MAK-01-PR-1010 |
|  | 8 | **DOORS/WINDOWS** |  | 2026-03-24 | 2026-04-04 |  |  |  |  |  |  |  |
| MLTX-02-005-EN-9250 |  | Material Submittal for Doors/Windows | 15d | 2026-03-24 A | 2026-03-26 A | MLTX-02-005-EN-10280, MLTX-02-005-EN-9160 | 100% | 2026-08-19 | 2026-09-05 | QA/QC Engineer [16.1 h] | MOD-02-EN-6470 | MAK-01-PR-1000 |
| MLTX-02-005-EN-9260 |  | Material Approval for Doors/Windows | 15d | 2026-03-28 A | 2026-04-04 A | MLTX-02-005-EN-9250, MLTX-02-005-EN-9170 | 100% | 2026-09-06 | 2026-09-22 | Consultant Staff [16.1 h] | MOD-02-EN-6480 | MAK-01-PR-1010 |
|  | 9 | **FURNITURES** |  | 2026-03-19 | 2026-05-17 |  |  |  |  |  |  |  |
| MLTX-02-005-EN-9370 |  | Material Submittal for Furnitures | 15d | 2026-03-19 A | 2026-05-13 A | MLTX-02-005-EN-10400, MLTX-02-005-EN-8990 | 100% | 2026-05-03 | 2026-05-19 | QA/QC Engineer [16.1 h] | MOD-02-EN-6500 | MAK-01-PR-1000 |
| MLTX-02-005-EN-9380 |  | Material Approval for Furnitures | 15d | 2026-03-26 A | 2026-05-17 A | MLTX-02-005-EN-9370, MLTX-02-005-EN-9010 | 100% | 2026-05-20 | 2026-06-09 | Consultant Staff [16.1 h] | MOD-02-EN-6510 | MAK-01-PR-1010 |
|  | 10 | **SANITARY FIXTURES** |  | 2026-03-19 | 2026-05-17 |  |  |  |  |  |  |  |
| MLTX-02-005-EN-9270 |  | Material Submittal for Sanitary Fixtures | 15d | 2026-03-19 A | 2026-05-13 A | MLTX-02-005-EN-10300 | 100% | 2026-04-15 | 2026-05-02 | QA/QC Engineer [16.1 h] | MOD-02-EN-6530 | MAK-01-PR-1000 |
| MLTX-02-005-EN-9280 |  | Material Approval for Sanitary Fixtures | 15d | 2026-03-26 A | 2026-05-17 A | MLTX-02-005-EN-9270 | 100% | 2026-05-03 | 2026-05-19 | Consultant Staff [16.1 h] | MOD-02-EN-6540 | MAK-01-PR-1010 |
|  | 11 | **WATER SUPPLY PIPES** |  | 2026-03-24 | 2026-04-04 |  |  |  |  |  |  |  |
| MLTX-02-005-EN-9290 |  | Material Submittal for Water Supply Pipes | 15d | 2026-03-24 A | 2026-03-26 A | MLTX-02-005-EN-10320, MLTX-02-005-EN-9710 | 100% | 2026-07-15 | 2026-08-01 | QA/QC Engineer [16.1 h] | MOD-02-EN-6560 | MAK-01-PR-1000 |
| MLTX-02-005-EN-9300 |  | Material Approval for Water Supply Pipes | 15d | 2026-03-28 A | 2026-04-04 A | MLTX-02-005-EN-9290, MLTX-02-005-EN-9150 | 100% | 2026-08-02 | 2026-08-18 | Consultant Staff [16.1 h] | MOD-02-EN-6570 | MAK-01-PR-1010 |
|  | 12 | **SEWAGE/DRAINAGE PIPES** |  | 2026-06-08 | 2026-06-15 |  |  |  |  |  |  |  |
| MLTX-02-005-EN-9310 |  | Material Submittal for Sewage/Drainage Pipes | 15d | 2026-06-08 A | 2026-06-08 A | MLTX-02-005-EN-10340 | 100% | 2026-04-15 | 2026-05-02 | QA/QC Engineer [16.1 h] | MOD-02-EN-6590 | MAK-01-PR-1000 |
| MLTX-02-005-EN-9320 |  | Material Approval for Sewage/Drainage Pipes | 15d | 2026-06-15 A | 2026-06-15 A | MLTX-02-005-EN-9310 | 100% | 2026-05-03 | 2026-05-19 | Consultant Staff [16.1 h] | MOD-02-EN-6600 | MAK-01-PR-1010 |

| ID | WBS | Activity | Duration | Start | Finish | Predecessors | Complete | Planned start | Planned finish | Resources | New Activity ID | Old Activity ID - MK |
| --- | --- | --- | --- | --- | --- | --- | --- | --- | --- | --- | --- | --- |
|  | 16 | **PACKAGE AC UNITS** |  | 2026-07-07 | 2026-07-07 |  |  |  |  |  |  |  |
| MLTX-02-005-EN-9400 |  | Material Submittal for Package AC Units | 15d | 2026-07-07 A | 2026-07-07 A | MLTX-02-005-EN-10430 | 100% | 2026-05-03 | 2026-05-19 | QA/QC Engineer [16.1 h] | MOD-02-EN-6620 | MAK-01-PR-1000 |
| MLTX-02-005-EN-9410 |  | Material Approval for Package AC Units | 15d | 2026-07-07 A | 2026-07-07 A | MLTX-02-005-EN-9400 | 100% | 2026-05-20 | 2026-06-09 | Consultant Staff [16.1 h] | MOD-02-EN-6630 | MAK-01-PR-1010 |
|  | 17 | **AIR DIFUSSERS/GRILLS** |  | 2026-07-27 | 2026-07-30 |  |  |  |  |  |  |  |
| MLTX-02-005-EN-9420 |  | Material Submittal for Air Diffusers/Grills | 15d | 2026-07-27 A | 2026-07-27 A | MLTX-02-005-EN-10450, MLTX-02-005-EN-9160 | 100% | 2026-08-26 | 2026-09-12 | QA/QC Engineer [16.1 h] | MOD-02-EN-6650 | MAK-01-PR-1000 |
| MLTX-02-005-EN-9430 |  | Material Approval for Air Diffusers/Grills | 15d | 2026-07-30 A | 2026-07-30 A | MLTX-02-005-EN-9420, MLTX-02-005-EN-9170 | 100% | 2026-09-13 | 2026-09-30 | Consultant Staff [16.1 h] | MOD-02-EN-6660 | MAK-01-PR-1010 |
|  | 18 | **GALVANIZED DUCTS** |  | 2026-03-24 | 2026-04-30 |  |  |  |  |  |  |  |
| MLTX-02-005-EN-9440 |  | Material Submittal for Galvanized Ducts | 15d | 2026-03-24 A | 2026-04-25 A | MLTX-02-005-EN-10470, MLTX-02-005-EN-9710 | 100% | 2026-07-15 | 2026-08-01 | QA/QC Engineer [16.1 h] | MOD-02-EN-6680 | MAK-01-PR-1000 |
| MLTX-02-005-EN-9450 |  | Material Approval for Galvanized Ducts | 15d | 2026-03-28 A | 2026-04-30 A | MLTX-02-005-EN-9440, MLTX-02-005-EN-9860 | 100% | 2026-08-02 | 2026-08-18 | Consultant Staff [16.1 h] | MOD-02-EN-6690 | MAK-01-PR-1010 |
|  | 19 | **EXHAUST FANS** |  | 2026-07-27 | 2026-07-30 |  |  |  |  |  |  |  |
| MLTX-02-005-EN-9460 |  | Material Submittal for Exhaust Fans | 15d | 2026-07-27 A | 2026-07-27 A | MLTX-02-005-EN-10490 | 100% | 2026-05-03 | 2026-05-19 | QA/QC Engineer [16.1 h] | MOD-02-EN-6710 | MAK-01-PR-1000 |
| MLTX-02-005-EN-9470 |  | Material Approval for Exhaust Fans | 15d | 2026-07-30 A | 2026-07-30 A | MLTX-02-005-EN-9460 | 100% | 2026-05-20 | 2026-06-09 | Consultant Staff [16.1 h] | MOD-02-EN-6720 | MAK-01-PR-1010 |
|  | 13 | **LIGHTING FIXTURES** |  | 2026-07-07 | 2026-07-07 |  |  |  |  |  |  |  |
| MLTX-02-005-EN-9330 |  | Material Submittal for Lighting Fixtures | 15d | 2026-07-07 A | 2026-07-07 A | MLTX-02-005-EN-10360 | 100% | 2026-05-03 | 2026-05-19 | QA/QC Engineer [16.1 h] | MOD-02-EN-6740 | MAK-01-PR-1000 |
| MLTX-02-005-EN-9340 |  | Material Approval for Lighting Fixtures | 15d | 2026-07-07 A | 2026-07-07 A | MLTX-02-005-EN-9330 | 100% | 2026-05-20 | 2026-06-09 | Consultant Staff [16.1 h] | MOD-02-EN-6750 | MAK-01-PR-1010 |
|  | 14 | **SWITCHES/SOCKETS** |  | 2026-07-27 | 2026-07-30 |  |  |  |  |  |  |  |
| MLTX-02-005-EN-9350 |  | Material Submittal for Switches/Sockets | 15d | 2026-07-27 A | 2026-07-27 A | MLTX-02-005-EN-10380 | 100% | 2026-05-03 | 2026-05-19 | QA/QC Engineer [16.1 h] | MOD-02-EN-6770 | MAK-01-PR-1000 |
| MLTX-02-005-EN-9360 |  | Material Approval for Switches/Sockets | 15d | 2026-07-30 A | 2026-07-30 A | MLTX-02-005-EN-9350 | 100% | 2026-05-20 | 2026-06-09 | Consultant Staff [16.1 h] | MOD-02-EN-6780 | MAK-01-PR-1010 |
|  | 15 | **EARTHING SYSTEM** |  | 2026-03-24 | 2026-05-18 |  |  |  |  |  |  |  |
| MLTX-02-005-EN-9150 |  | Material Submittal for Earthing System | 15d | 2026-03-24 A | 2026-05-14 A | MLTX-02-005-EN-10180, MLTX-02-005-EN-9710 | 100% | 2026-07-15 | 2026-08-01 | QA/QC Engineer [16.1 h] | MOD-02-EN-6800 | MAK-01-PR-1290 |
| MLTX-02-005-EN-9160 |  | Material Approval for Earthing System | 15d | 2026-03-28 A | 2026-05-18 A | MLTX-02-005-EN-9150, MLTX-02-005-EN-9210 | 100% | 2026-08-02 | 2026-08-18 | Consultant Staff [16.1 h] | MOD-02-EN-6810 | MAK-01-PR-1300 |
|  | 5 | **DISTRIBUTION PANNELS** |  | 2026-07-27 | 2026-07-30 |  |  |  |  |  |  |  |
| MLTX-02-005-EN-9170 |  | Material Submittal for Distribution Panels | 15d | 2026-07-27 A | 2026-07-27 A | MLTX-02-005-EN-10200, MLTX-02-005-EN-9160 | 100% | 2026-08-19 | 2026-09-05 | QA/QC Engineer [16.1 h] | MOD-02-EN-6830 | MAK-01-PR-LLI-1060 |
| MLTX-02-005-EN-9180 |  | Material Approval for Distribution Panels | 15d | 2026-07-30 A | 2026-07-30 A | MLTX-02-005-EN-9170, MLTX-02-005-EN-9500 | 100% | 2026-09-06 | 2026-09-22 | Consultant Staff [16.1 h] | MOD-02-EN-6840 | MAK-01-PR-LLI-1070 |

| ID | WBS | Activity | Duration | Start | Finish | Predecessors | Complete | Planned start | Planned finish | Resources | New Activity ID | Old Activity ID - MK |
| --- | --- | --- | --- | --- | --- | --- | --- | --- | --- | --- | --- | --- |
|  | PLG | **PLAYGROUND WORKS** |  | 2026-03-19 | 2026-09-12 |  |  |  |  |  |  |  |
|  | 5 | **PVC MEMBRANE** |  | 2026-03-24 | 2026-04-04 |  |  |  |  |  |  |  |
| MLTX-02-005-EN-9560 |  | Material Submittal for PVC Membrane | 15d | 2026-03-24 A | 2026-03-26 A | MLTX-02-005-EN-10590, MLTX-02-005-EN-9020 | 100% | 2026-05-17 | 2026-06-06 | QA/QC Engineer [16.1 h] | MOD-02-EN-6870 | MAK-01-PR-1120 |
| MLTX-02-005-EN-9570 |  | Material Approval for PVC Membrane | 15d | 2026-03-28 A | 2026-04-04 A | MLTX-02-005-EN-9560, MLTX-02-005-EN-9780 | 100% | 2026-06-07 | 2026-06-23 | Consultant Staff [16.1 h] | MOD-02-EN-6880 | MAK-01-PR-1130 |
|  | 6 | **STEEL TENSION CABLES** |  | 2026-08-26 | 2026-08-26 |  |  |  |  |  |  |  |
| MLTX-02-005-EN-9580 |  | Material Submittal for Steel Tension Cables | 15d | 2026-08-26 A | 2026-08-26 A | MLTX-02-005-EN-10900, MLTX-02-005-EN-9710 | 100% | 2026-07-19 | 2026-08-04 | QA/QC Engineer [16.1 h] | MOD-02-EN-6900 | MAK-01-PR-1120 |
| MLTX-02-005-EN-9880 |  | Material Approval for Steel Tension Cables | 15d | 2026-08-26 A | 2026-08-26 A | MLTX-02-005-EN-9580, MLTX-02-005-EN-9110 | 100% | 2026-08-05 | 2026-08-22 | Consultant Staff [16.1 h] | MOD-02-EN-6910 | MAK-01-PR-1120 |
|  | 7 | **EMERGENCY DOORS** |  | 2026-08-26 | 2026-09-12 |  |  |  |  |  |  |  |
| MLTX-02-005-EN-9590 |  | Material Submittal for Emergency Doors | 15d | 2026-08-26 A | 2026-08-26 A | MLTX-02-005-EN-10910, MLTX-02-005-EN-9760 | 100% | 2026-05-03 | 2026-05-19 | QA/QC Engineer [16.1 h] | MOD-02-EN-6930 | MAK-01-PR-1120 |
| MLTX-02-005-EN-9890 |  | Material Approval for Emergency Doors | 15d | 2026-09-12 A | 2026-09-12 A | MLTX-02-005-EN-9590, MLTX-02-005-EN-9020 | 100% | 2026-05-20 | 2026-06-09 | Consultant Staff [16.1 h] | MOD-02-EN-6940 | MAK-01-PR-1120 |
|  | 8 | **PRESSURE UNITS** |  | 2026-09-12 | 2026-09-12 |  |  |  |  |  |  |  |
| MLTX-02-005-EN-9600 |  | Material Submittal for Pressure Units | 15d | 2026-09-12 A | 2026-09-12 A | MLTX-02-005-EN-10920, MLTX-02-005-EN-9610 | 100% | 2026-08-03 | 2026-08-19 | QA/QC Engineer [16.1 h] | MOD-02-EN-6960 | MAK-01-PR-1120 |
| MLTX-02-005-EN-9900 |  | Material Approval for Pressure Units | 15d | 2026-09-12 A | 2026-09-12 A | MLTX-02-005-EN-9600, MLTX-02-005-EN-9790 | 100% | 2026-08-20 | 2026-09-06 | Consultant Staff [16.1 h] | MOD-02-EN-6970 | MAK-01-PR-1120 |
|  | 9 | **AIR LOCK DOORS** |  | 2026-08-26 | 2026-09-12 |  |  |  |  |  |  |  |
| MLTX-02-005-EN-9610 |  | Material Submittal for Lock Doors | 15d | 2026-08-26 A | 2026-08-26 A | MLTX-02-005-EN-10930, MLTX-02-005-EN-7980 | 100% | 2026-07-16 | 2026-08-02 | QA/QC Engineer [16.1 h] | MOD-02-EN-6990 | MAK-01-PR-1120 |
| MLTX-02-005-EN-9910 |  | Material Approval for Lock Doors | 15d | 2026-09-12 A | 2026-09-12 A | MLTX-02-005-EN-9610, MLTX-02-005-EN-12080 | 100% | 2026-08-03 | 2026-08-19 | Consultant Staff [16.1 h] | MOD-02-EN-7000 | MAK-01-PR-1120 |
|  | 15 | **ARTIFICIAL TURF** |  | 2026-03-19 | 2026-05-19 |  |  |  |  |  |  |  |
| MLTX-02-005-EN-9760 |  | Material Submittal for Artificial TURF | 15d | 2026-03-19 A | 2026-05-14 A | MLTX-02-005-EN-10940 | 100% | 2026-04-15 | 2026-05-02 | QA/QC Engineer [16.1 h] | MOD-02-EN-7020 | MAK-01-PR-1120 |
| MLTX-02-005-EN-9920 |  | Material Approval for Artificial TURF | 15d | 2026-03-26 A | 2026-05-19 A | MLTX-02-005-EN-9760, MLTX-02-005-EN-9500 | 100% | 2026-09-06 | 2026-09-22 | Consultant Staff [16.1 h] | MOD-02-EN-7030 | MAK-01-PR-1120 |
|  | 20 | **RUBBER GRANULES** |  | 2026-03-19 | 2026-05-19 |  |  |  |  |  |  |  |
| MLTX-02-005-EN-9770 |  | Material Submittal for Rubber Granules | 21d | 2026-03-19 A | 2026-05-14 A | MLTX-02-005-EN-10950 | 100% | 2026-04-22 | 2026-05-16 | QA/QC Engineer [16.1 h] | MOD-02-EN-7050 | MAK-01-PR-1120 |
| MLTX-02-005-EN-9930 |  | Material Approval for Rubber Granules | 21d | 2026-03-26 A | 2026-05-19 A | MLTX-02-005-EN-9770 | 100% | 2026-05-17 | 2026-06-13 | Consultant Staff [16.1 h] | MOD-02-EN-7060 | MAK-01-PR-1120 |
|  | 21 | **PADEL GLASS** |  | 2026-03-19 | 2026-05-19 |  |  |  |  |  |  |  |
| MLTX-02-005-EN-9780 |  | Material Submittal for Padel Glass | 15d | 2026-03-19 A | 2026-05-14 A | MLTX-02-005-EN-10960, MLTX-02-005-EN-9020 | 100% | 2026-05-17 | 2026-06-06 | QA/QC Engineer [16.1 h] | MOD-02-EN-7080 | MAK-01-PR-1120 |
| MLTX-02-005-EN-9940 |  | Material Approval for Padel Glass | 15d | 2026-03-26 A | 2026-05-19 A | MLTX-02-005-EN-9780, MLTX-02-005-EN-9050 | 100% | 2026-06-10 | 2026-06-27 | Consultant Staff [16.1 h] | MOD-02-EN-7090 | MAK-01-PR-1120 |

| ID | WBS | Activity | Duration | Start | Finish | Predecessors | Complete | Planned start | Planned finish | Resources | New Activity ID | Old Activity ID - MK |
| --- | --- | --- | --- | --- | --- | --- | --- | --- | --- | --- | --- | --- |
|  | 22 | **PADEL WIRE MESH/STEEL SETS** |  | 2026-03-19 | 2026-05-19 |  |  |  |  |  |  |  |
| MLTX-02-005-EN-9790 |  | Material Submittal for Wire Mesh/Steel Sets | 15d | 2026-03-19 A | 2026-05-14 A | MLTX-02-005-EN-10970, MLTX-02-005-EN-9610 | 100% | 2026-08-03 | 2026-08-19 | QA/QC Engineer [16.1 h] | MOD-02-EN-7110 | MAK-01-PR-1120 |
| MLTX-02-005-EN-9950 |  | Material Approval for Wire Mesh/Steel Sets | 15d | 2026-03-26 A | 2026-05-19 A | MLTX-02-005-EN-9790, MLTX-02-005-EN-9910 | 100% | 2026-08-20 | 2026-09-06 | Consultant Staff [16.1 h] | MOD-02-EN-7120 | MAK-01-PR-1120 |
|  | 1 | **AGGREGATE BASE COURSE** |  | 2026-03-19 | 2026-05-07 |  |  |  |  |  |  |  |
| MLTX-02-005-EN-9020 |  | Material Submittal for Aggregate Base Course | 21d | 2026-03-19 A | 2026-05-04 A | MLTX-02-005-EN-10040 | 100% | 2026-04-22 | 2026-05-16 | QA/QC Engineer [16.1 h] | MOD-02-EN-7140 | MAK-01-PR-1090 |
| MLTX-02-005-EN-9030 |  | Material Approval for Aggregate Base Course | 21d | 2026-03-26 A | 2026-05-07 A | MLTX-02-005-EN-9020 | 100% | 2026-05-17 | 2026-06-13 | Consultant Staff [16.1 h] | MOD-02-EN-7150 | MAK-01-PR-1100 |
|  | 16 | **PACKAGE AC UNITS** |  | 2026-07-07 | 2026-07-07 |  |  |  |  |  |  |  |
| MLTX-02-005-EN-9480 |  | Material Submittal for Package AC Units | 15d | 2026-07-07 A | 2026-07-07 A | MLTX-02-005-EN-10510, MLTX-02-005-EN-9600 | 100% | 2026-08-20 | 2026-09-06 | QA/QC Engineer [16.1 h] | MOD-02-EN-7260 | MAK-01-PR-1000 |
| MLTX-02-005-EN-9490 |  | Material Approval for Package AC Units | 15d | 2026-07-07 A | 2026-07-07 A | MLTX-02-005-EN-9480, MLTX-02-005-EN-9500 | 100% | 2026-09-07 | 2026-09-24 | Consultant Staff [16.1 h] | MOD-02-EN-7270 | MAK-01-PR-1010 |
|  | 17 | **AIR DIFUSSERS/GRILLS** |  | 2026-09-12 | 2026-09-12 |  |  |  |  |  |  |  |
| MLTX-02-005-EN-9500 |  | Material Submittal for Air Difussers/Grills | 15d | 2026-09-12 A | 2026-09-12 A | MLTX-02-005-EN-10530, MLTX-02-005-EN-9610 | 100% | 2026-08-19 | 2026-09-05 | QA/QC Engineer [16.1 h] | MOD-02-EN-7290 | MAK-01-PR-1000 |
| MLTX-02-005-EN-9510 |  | Material Approval for Air Difussers/Grills | 15d | 2026-09-12 A | 2026-09-12 A | MLTX-02-005-EN-9500, MLTX-02-005-EN-9910 | 100% | 2026-09-06 | 2026-09-22 | Consultant Staff [16.1 h] | MOD-02-EN-7300 | MAK-01-PR-1010 |
|  | 2 | **BITUMINOUS BASE & WEARING COURSE** |  | 2026-03-24 | 2026-05-07 |  |  |  |  |  |  |  |
| MLTX-02-005-EN-9040 |  | Material Submittal for Bituminous Base & Wearing Cource | 15d | 2026-03-24 A | 2026-05-04 A | MLTX-02-005-EN-10060 | 100% | 2026-05-03 | 2026-05-19 | QA/QC Engineer [16.1 h] | MOD-02-EN-7170 | MAK-01-PR-1120 |
| MLTX-02-005-EN-9050 |  | Material Approval for the Site | 15d | 2026-03-28 A | 2026-05-07 A | MLTX-02-005-EN-9040 | 100% | 2026-05-20 | 2026-06-09 | Consultant Staff [16.1 h] | MOD-02-EN-7180 | MAK-01-PR-1130 |
|  | 3 | **INTERLOCKING PAVING** |  | 2026-03-24 | 2026-05-07 |  |  |  |  |  |  |  |
| MLTX-02-005-EN-9060 |  | Material Submittal for Interlocking Block Pavers | 15d | 2026-03-24 A | 2026-05-04 A | MLTX-02-005-EN-10130, MLTX-02-005-EN-9570 | 100% | 2026-06-24 | 2026-07-11 | QA/QC Engineer [16.1 h] | MOD-02-EN-7200 | MAK-01-PR-1170 |
| MLTX-02-005-EN-9110 |  | Material Approval for Interlocking Block Pavers | 15d | 2026-03-28 A | 2026-05-07 A | MLTX-02-005-EN-9060, MLTX-02-005-EN-9710 | 100% | 2026-07-15 | 2026-08-01 | Consultant Staff [16.1 h] | MOD-02-EN-7210 | MAK-01-PR-1180 |
|  | 4 | **MARKING PAINT** |  | 2026-03-24 | 2026-05-18 |  |  |  |  |  |  |  |
| MLTX-02-005-EN-9390 |  | Material Submittal for Marking Paint | 15d | 2026-03-24 A | 2026-05-12 A | MLTX-02-005-EN-10980, MLTX-02-005-EN-9020 | 100% | 2026-05-20 | 2026-06-09 | QA/QC Engineer [16.1 h] | MOD-02-EN-7230 | MAK-01-PR-1120 |
| MLTX-02-005-EN-9960 |  | Material Approval for Marking Paint | 15d | 2026-03-28 A | 2026-05-18 A | MLTX-02-005-EN-9390, MLTX-02-005-EN-9560, MLTX-02-005-EN-9380 | 100% | 2026-06-10 | 2026-06-27 | Consultant Staff [16.1 h] | MOD-02-EN-7240 | MAK-01-PR-1120 |
|  | 18 | **GALVANIZED DUCTS** |  | 2026-03-24 | 2026-05-10 |  |  |  |  |  |  |  |
| MLTX-02-005-EN-9520 |  | Material Submittal for Galvanized Duct | 15d | 2026-03-24 A | 2026-05-05 A | MLTX-02-005-EN-10550, MLTX-02-005-EN-9610 | 100% | 2026-08-19 | 2026-09-05 | QA/QC Engineer [16.1 h] | MOD-02-EN-7320 | MAK-01-PR-1000 |
| MLTX-02-005-EN-9530 |  | Material Approval for Galvanized Duct | 15d | 2026-03-28 A | 2026-05-10 A | MLTX-02-005-EN-9520, MLTX-02-005-EN-9500 | 100% | 2026-09-06 | 2026-09-22 | Consultant Staff [16.1 h] | MOD-02-EN-7330 | MAK-01-PR-1010 |

| ID | WBS | Activity | Duration | Start | Finish | Predecessors | Complete | Planned start | Planned finish | Resources | New Activity ID | Old Activity ID - MK |
| --- | --- | --- | --- | --- | --- | --- | --- | --- | --- | --- | --- | --- |
|  | 19 | **EXHAUST FANS** |  | 2026-09-12 | 2026-09-12 |  |  |  |  |  |  |  |
| MLTX-02-005-EN-9540 |  | Material Submittal for Exhaust Fans | 15d | 2026-09-12 A | 2026-09-12 A | MLTX-02-005-EN-10570, MLTX-02-005-EN-9110 | 100% | 2026-08-05 | 2026-08-22 | QA/QC Engineer [16.1 h] | MOD-02-EN-7350 | MAK-01-PR-1000 |
| MLTX-02-005-EN-9550 |  | Material Approval for Exhaust Fans | 15d | 2026-09-12 A | 2026-09-12 A | MLTX-02-005-EN-9540, MLTX-02-005-EN-9600, MLTX-02-005-EN-9880 | 100% | 2026-08-23 | 2026-09-08 | Consultant Staff [16.1 h] | MOD-02-EN-7360 | MAK-01-PR-1010 |
|  | 10 | **DISTRIBUTION BOARDS** |  | 2026-08-26 | 2026-08-26 |  |  |  |  |  |  |  |
| MLTX-02-005-EN-9620 |  | Material Submittal for Distribution Boards | 15d | 2026-08-26 A | 2026-08-26 A | MLTX-02-005-EN-10650, MLTX-02-005-EN-9910 | 100% | 2026-08-20 | 2026-09-06 | QA/QC Engineer [16.1 h] | MOD-02-EN-7380 | MAK-01-PR-1000 |
| MLTX-02-005-EN-9630 |  | Material Approval for Distribution Boards | 15d | 2026-08-26 A | 2026-08-26 A | MLTX-02-005-EN-9620, MLTX-02-005-EN-11590 | 100% | 2026-09-07 | 2026-09-24 | Consultant Staff [16.1 h] | MOD-02-EN-7390 | MAK-01-PR-1010 |
|  | 11 | **POWER CABLES** |  | 2026-03-24 | 2026-05-19 |  |  |  |  |  |  |  |
| MLTX-02-005-EN-9640 |  | Material Submittal for Power Cables | 15d | 2026-03-24 A | 2026-05-14 A | MLTX-02-005-EN-10670 | 100% | 2026-05-03 | 2026-05-19 | QA/QC Engineer [16.1 h] | MOD-02-EN-7410 | MAK-01-PR-1000 |
| MLTX-02-005-EN-9650 |  | Material Approval for Power Cables | 15d | 2026-03-28 A | 2026-05-19 A | MLTX-02-005-EN-9640 | 100% | 2026-05-20 | 2026-06-09 | Consultant Staff [16.1 h] | MOD-02-EN-7420 | MAK-01-PR-1010 |
|  | 12 | **LIGHT FIXTURES** |  | 2026-07-07 | 2026-07-07 |  |  |  |  |  |  |  |
| MLTX-02-005-EN-9660 |  | Material Submittal for Light Fixtures | 15d | 2026-07-07 A | 2026-07-07 A | MLTX-02-005-EN-10690, MLTX-02-005-EN-9020 | 100% | 2026-05-20 | 2026-06-09 | QA/QC Engineer [16.1 h] | MOD-02-EN-7440 | MAK-01-PR-1000 |
| MLTX-02-005-EN-9670 |  | Material Approval for Light Fixtures | 15d | 2026-07-07 A | 2026-07-07 A | MLTX-02-005-EN-9660, MLTX-02-005-EN-9050 | 100% | 2026-06-10 | 2026-06-27 | Consultant Staff [16.1 h] | MOD-02-EN-7450 | MAK-01-PR-1010 |
|  | 13 | **CCTV MATERIALS** |  | 2026-08-26 | 2026-09-12 |  |  |  |  |  |  |  |
| MLTX-02-005-EN-9680 |  | Material Submittal for CCTV | 15d | 2026-08-26 A | 2026-08-26 A | MLTX-02-005-EN-10710, MLTX-02-005-EN-9020 | 100% | 2026-05-20 | 2026-06-09 | QA/QC Engineer [16.1 h] | MOD-02-EN-7470 | MAK-01-PR-1000 |
| MLTX-02-005-EN-9690 |  | Material Approval for CCTV | 15d | 2026-09-12 A | 2026-09-12 A | MLTX-02-005-EN-9680, MLTX-02-005-EN-9780 | 100% | 2026-06-10 | 2026-06-27 | Consultant Staff [16.1 h] | MOD-02-EN-7480 | MAK-01-PR-1010 |
|  | 14 | **POWER OUTLETS/SWITCHES** |  | 2026-08-26 | 2026-08-26 |  |  |  |  |  |  |  |
| MLTX-02-005-EN-9700 |  | Material Submittal for Power Outlets/Switches | 15d | 2026-08-26 A | 2026-08-26 A | MLTX-02-005-EN-10730, MLTX-02-005-EN-9780 | 100% | 2026-06-07 | 2026-06-23 | QA/QC Engineer [16.1 h] | MOD-02-EN-7500 | MAK-01-PR-1000 |
| MLTX-02-005-EN-9710 |  | Material Approval for Power Outlets/Switches | 15d | 2026-08-26 A | 2026-08-26 A | MLTX-02-005-EN-9700, MLTX-02-005-EN-9670 | 100% | 2026-06-28 | 2026-07-14 | Consultant Staff [16.1 h] | MOD-02-EN-7510 | MAK-01-PR-1010 |
|  | LSC | **LANDSCAPE WORKS** |  | 2026-03-24 | 2026-09-12 |  |  |  |  |  |  |  |
|  | 7 | **INTERLOCKING PAVING** |  | 2026-03-25 | 2026-04-04 |  |  |  |  |  |  |  |
| MLTX-02-005-EN-9740 |  | Material Submittal for Interlocking Block Pavers | 15d | 2026-03-25 A | 2026-03-28 A | MLTX-02-005-EN-10770 | 100% | 2026-05-03 | 2026-05-19 | QA/QC Engineer [16.1 h] | MOD-02-EN-7540 | MAK-01-PR-1170 |
| MLTX-02-005-EN-9750 |  | Material Approval for Interlocking Block Pavers | 15d | 2026-03-29 A | 2026-04-04 A | MLTX-02-005-EN-9740 | 100% | 2026-05-20 | 2026-06-09 | Consultant Staff [16.1 h] | MOD-02-EN-7550 | MAK-01-PR-1180 |
|  | 9 | **CURBSTONE** |  | 2026-03-25 | 2026-04-04 |  |  |  |  |  |  |  |
| MLTX-02-005-EN-9840 |  | Material Submittal for Curbstone | 15d | 2026-03-25 A | 2026-03-28 A | MLTX-02-005-EN-10870, MLTX-02-005-EN-9070 | 100% | 2026-07-22 | 2026-08-08 | QA/QC Engineer [16.1 h] | MOD-02-EN-7570 | MAK-01-PR-1260 |
| MLTX-02-005-EN-9850 |  | Material Approval for Curbstone | 15d | 2026-03-29 A | 2026-04-04 A | MLTX-02-005-EN-9840, MLTX-02-005-EN-9860 | 100% | 2026-08-09 | 2026-08-25 | Consultant Staff [16.1 h] | MOD-02-EN-7580 | MAK-01-PR-1270 |

| ID | WBS | Activity | Duration | Start | Finish | Predecessors | Complete | Planned start | Planned finish | Resources | New Activity ID | Old Activity ID - MK |
| --- | --- | --- | --- | --- | --- | --- | --- | --- | --- | --- | --- | --- |
|  | 1 | **PAVEMENT MARKING** |  | 2026-03-24 | 2026-05-18 |  |  |  |  |  |  |  |
| MLTX-02-005-EN-9070 |  | Material Submittal for Pavement Markings | 15d | 2026-03-24 A | 2026-05-12 A | MLTX-02-005-EN-10140, MLTX-02-005-EN-9700 | 100% | 2026-07-05 | 2026-07-21 | QA/QC Engineer [16.1 h] | MOD-02-EN-7600 | MAK-01-PR-1200 |
| MLTX-02-005-EN-9120 |  | Material Approval for Pavement Markings | 15d | 2026-03-28 A | 2026-05-18 A | MLTX-02-005-EN-9070, MLTX-02-005-EN-9710 | 100% | 2026-07-22 | 2026-08-08 | Consultant Staff [16.1 h] | MOD-02-EN-7610 | MAK-01-PR-1210 |
|  | 2 | **TRAFFIC SIGNS** |  | 2026-03-24 | 2026-05-18 |  |  |  |  |  |  |  |
| MLTX-02-005-EN-9080 |  | Material Submittal for Traffic Signs | 15d | 2026-03-24 A | 2026-05-12 A | MLTX-02-005-EN-10100, MLTX-02-005-EN-9710 | 100% | 2026-07-22 | 2026-08-08 | QA/QC Engineer [16.1 h] | MOD-02-EN-7630 | MAK-01-PR-1230 |
| MLTX-02-005-EN-9090 |  | Material Approval for Traffic Signs | 15d | 2026-03-28 A | 2026-05-18 A | MLTX-02-005-EN-9080, MLTX-02-005-EN-9860 | 100% | 2026-08-09 | 2026-08-25 | Consultant Staff [16.1 h] | MOD-02-EN-7640 | MAK-01-PR-1240 |
|  | 3 | **IRRIGATION PIPES/SPRINKLERS** |  | 2026-09-12 | 2026-09-12 |  |  |  |  |  |  |  |
| MLTX-02-005-EN-9130 |  | Material Submittal for Irrigation Pipes/Sprinkles | 15d | 2026-09-12 A | 2026-09-12 A | MLTX-02-005-EN-10160, MLTX-02-005-EN-9800 | 100% | 2026-08-23 | 2026-09-08 | QA/QC Engineer [16.1 h] | MOD-02-EN-7660 | MAK-01-PR-1260 |
| MLTX-02-005-EN-9140 |  | Material Approval for Irrigation Pipes/Sprinkles | 15d | 2026-09-12 A | 2026-09-12 A | MLTX-02-005-EN-9130, MLTX-02-005-EN-9810 | 100% | 2026-09-09 | 2026-09-27 | Consultant Staff [16.1 h] | MOD-02-EN-7670 | MAK-01-PR-1270 |
|  | 5 | **AGRICULTURE SOIL** |  | 2026-03-24 | 2026-05-21 |  |  |  |  |  |  |  |
| MLTX-02-005-EN-9800 |  | Material Submittal for Agriculture Soil | 15d | 2026-03-24 A | 2026-05-16 A | MLTX-02-005-EN-10830, MLTX-02-005-EN-9820 | 100% | 2026-08-05 | 2026-08-22 | QA/QC Engineer [16.1 h] | MOD-02-EN-7690 | MAK-01-PR-1260 |
| MLTX-02-005-EN-9810 |  | Material Approval for Agriculture Soil | 15d | 2026-03-28 A | 2026-05-21 A | MLTX-02-005-EN-9800, MLTX-02-005-EN-9820 | 100% | 2026-08-23 | 2026-09-08 | Consultant Staff [16.1 h] | MOD-02-EN-7700 | MAK-01-PR-1270 |
|  | 8 | **TRACK SURFACE** |  | 2026-09-12 | 2026-09-12 |  |  |  |  |  |  |  |
| MLTX-02-005-EN-9820 |  | Material Submittal for Track Surface | 15d | 2026-09-12 A | 2026-09-12 A | MLTX-02-005-EN-10850, MLTX-02-005-EN-10930 | 100% | 2026-07-19 | 2026-08-04 | QA/QC Engineer [16.1 h] | MOD-02-EN-7720 | MAK-01-PR-1260 |
| MLTX-02-005-EN-9830 |  | Material Approval for Track Surface | 15d | 2026-09-12 A | 2026-09-12 A | MLTX-02-005-EN-9820, MLTX-02-005-EN-9610 | 100% | 2026-08-05 | 2026-08-22 | Consultant Staff [16.1 h] | MOD-02-EN-7730 | MAK-01-PR-1270 |
|  | 10 | **GRASS/TREES** |  | 2026-03-24 | 2026-05-21 |  |  |  |  |  |  |  |
| MLTX-02-005-EN-9860 |  | Material Submittal for Grass/Trees | 15d | 2026-03-24 A | 2026-05-16 A | MLTX-02-005-EN-10890, MLTX-02-005-EN-9710 | 100% | 2026-07-15 | 2026-08-01 | QA/QC Engineer [16.1 h] | MOD-02-EN-7750 | MAK-01-PR-1260 |
| MLTX-02-005-EN-9870 |  | Material Approval for Grass/Trees | 15d | 2026-03-28 A | 2026-05-21 A | MLTX-02-005-EN-9860, MLTX-02-005-EN-9820 | 100% | 2026-08-05 | 2026-08-22 | Consultant Staff [16.1 h] | MOD-02-EN-7760 | MAK-01-PR-1270 |
|  | 6 | **CABLES** |  | 2026-03-24 | 2026-05-19 |  |  |  |  |  |  |  |
| MLTX-02-005-EN-9720 |  | Material Submittal for Cables | 15d | 2026-03-24 A | 2026-05-14 A | MLTX-02-005-EN-10750 | 100% | 2026-05-03 | 2026-05-19 | QA/QC Engineer [16.1 h] | MOD-02-EN-7780 | MAK-01-PR-1200 |
| MLTX-02-005-EN-9730 |  | Material Approval for Cables | 15d | 2026-03-28 A | 2026-05-19 A | MLTX-02-005-EN-9720 | 100% | 2026-05-20 | 2026-06-09 | Consultant Staff [16.1 h] | MOD-02-EN-7790 | MAK-01-PR-1210 |
|  | 4 | **LIGHT POLES** |  | 2026-07-11 | 2026-07-11 |  |  |  |  |  |  |  |
| MLTX-02-005-EN-8970 |  | Material Submittal for Lighting poles | 15d | 2026-07-11 A | 2026-07-11 A | MLTX-02-005-EN-9980 | 100% | 2026-05-03 | 2026-05-19 | QA/QC Engineer [16.1 h] | MOD-02-EN-7810 | MAK-01-PR-LLI-1120 |
| MLTX-02-005-EN-8980 |  | Material Approval for Lighting poles | 15d | 2026-07-11 A | 2026-07-11 A | MLTX-02-005-EN-8970 | 100% | 2026-05-20 | 2026-06-09 | Consultant Staff [16.1 h] | MOD-02-EN-7820 | MAK-01-PR-LLI-1130 |

| ID | WBS | Activity | Duration | Start | Finish | Predecessors | Complete | Planned start | Planned finish | Total float | Free float | Resources | Cost | Actual cost | New Activity ID | Construction |
| --- | --- | --- | --- | --- | --- | --- | --- | --- | --- | --- | --- | --- | --- | --- | --- | --- |
|  | CONST | **CONSTRUCTION PHASE** |  | 2026-04-04 | 2027-04-17 |  |  |  |  |  |  |  |  |  |  |  |
|  | SW | **SITE WORKS** |  | 2026-04-04 | 2027-04-17 |  |  |  |  |  |  |  |  |  |  |  |
|  | 1 | **EARTH WORKS** |  | 2026-04-04 | 2026-08-08 |  |  |  |  |  |  |  |  |  |  |  |
| MLTX-02-005-CN-11890 |  | Excavation (in all types of soil) including Compaction (Service/Toilet Building) | 20d | 2026-04-04 A | 2026-08-02 A | MLTX-02-005-EN-10990 | 100% | 2026-04-15 | 2026-05-07 |  |  | Labor [300 h]; Driver [80 h]; Excavator [60 h]; Loader [60 h]; Water Tanker [60 h]; Dump Truck [80 h]; Milling machine [20 h]; Excavation in any type of soil from existing level [205.9] | 14,053.5 |  | MOD-02-CN-9940 | ER |
| MLTX-02-005-CN-11880 |  | Excavation (in all types of soil) including Compaction (Playground Area) | 21d | 2026-04-06 A | 2026-04-12 A | MLTX-02-005-EN-1840 | 100% | 2026-03-29 | 2026-04-21 |  |  | Labor [300 h]; Driver [380 h]; Excavator [180 h]; Loader [50 h]; Water Tanker [120 h]; Dump Truck [240 h]; Milling machine [60 h]; Excavation in any type of soil from existing level [1647.2] | 112,428.03 |  | MOD-02-CN-9930 | ER |
| MLTX-02-005-CN-11900 |  | Excavation (in all types of soil) including Compaction (Landscape Area) | 12d | 2026-04-06 A | 2026-08-05 A | MLTX-02-005-CN-11880, MLTX-02-005-EN-11740, MLTX-02-005-EN-11760, MLTX-02-005-EN-11750, MLTX-02-005-EN-11770 | 100% | 2026-05-04 | 2026-05-17 |  |  | Labor [400 h]; Driver [200 h]; Excavator [210 h]; Loader [150 h]; Water Tanker [150 h]; Dump Truck [280 h]; Milling machine [70 h]; Excavation in any type of soil from existing level [1029.5] | 70,267.52 |  | MOD-02-CN-9950 | ER |
| MLTX-02-005-CN-11920 |  | Backfilling on Layers (Selected Soil) including Compaction (Service/Toilet Building) | 19d | 2026-04-06 A | 2026-04-08 A | MLTX-02-005-CN-11890 SS, MLTX-02-005-CN-11890 FF | 100% | 2026-04-16 | 2026-05-07 |  |  | Labor [300 h]; Driver [140 h]; Loader [90 h]; Water Tanker [90 h]; Compactor [60 h]; Backfilling with selected fill material [205.32] | 7,005.52 |  | MOD-02-CN-9970 | ER |
| MLTX-02-005-CN-11910 |  | Backfilling on Layers (Selected Soil) including Compaction (Playground Area) | 20d | 2026-04-13 A | 2026-05-03 A | MLTX-02-005-MS-1060, MLTX-02-005-CN-11880, MLTX-02-005-MS-1050 | 100% | 2026-04-22 | 2026-05-14 |  |  | Labor [550 h]; Driver [300 h]; Loader [120 h]; Water Tanker [150 h]; Compactor [200 h]; Backfilling with selected fill material [1642.56] | 56,044.15 |  | MOD-02-CN-9960 | ER |
| MLTX-02-005-CN-11930 |  | Backfilling on Layers (Selected Soil) including Compaction (Landscape Area) | 8d | 2026-04-21 A | 2026-08-08 A | MLTX-02-005-CN-11900 SS, MLTX-02-005-CN-11900 FF | 100% | 2026-05-09 | 2026-05-17 |  |  | Labor [600 h]; Driver [300 h]; Loader [60 h]; Water Tanker [150 h]; Compactor [200 h]; Backfilling with selected fill material [1026.6] | 35,027.59 |  | MOD-02-CN-9980 | ER |
|  | 4 | **LANDSCAPE WORKS** |  | 2026-05-16 | 2027-04-17 |  |  |  |  |  |  |  |  |  |  |  |
|  | 4 | **PLAYGROUND AREA** |  | 2026-05-18 | 2027-04-17 |  |  |  |  |  |  |  |  |  |  |  |
|  | 6 | **FOOTBALL PLAYGROUND** |  | 2026-05-18 | 2027-02-18 |  |  |  |  |  |  |  |  |  |  |  |
| MLTX-02-005-CN-12080 |  | Preparation and Proofing for Subgrade (Football Playground) | 20d | 2026-05-18 A | 2026-05-31 A | MLTX-02-005-CN-11910 | 100% | 2026-05-16 | 2026-06-10 |  |  | Labor [500 h]; Skilled Labor [200 h]; Driver [300 h]; Forklift [270 h]; Football playground [250] | 79,212.5 | 79,212.5 | MOD-02-CN-10020 | PL |
| MLTX-02-005-CN-12090 |  | Backfilling and Compaction of Base Layers (Football Playground) | 21d | 2026-06-01 A | 2026-06-23 A | MLTX-02-005-CN-12080 | 100% | 2026-06-11 | 2026-07-05 |  |  | Labor [700 h]; Skilled Labor [250 h]; Driver [350 h]; Loader [150 h]; Dump Truck [440 h]; Compactor [220 h]; Football playground [50] | 15,842.5 | 15,842.5 | MOD-02-CN-10030 | PL |
| MLTX-02-005-CN-14740 |  | Aggregate basecourse layer (Football Playground) | 21d | 2026-06-24 A | 2026-06-27 A | MLTX-02-005-CN-12090, MLTX-02-005-CN-12030, MLTX-02-005-PR-9930 | 100% | 2026-10-20 | 2026-11-12 |  |  | Football playground [50] | 15,842.5 | 15,842.5 |  | PL |
| MLTX-02-005-CN-12100 |  | Finishing Asphalt & Concrete Surface (Football Playground) | 21d | 2026-09-14 A | 2026-09-21 A | MLTX-02-005-CN-12090 | 100% | 2026-07-06 | 2026-07-29 |  |  | Labor [800 h]; Skilled Labor [150 h]; Driver [100 h]; Forklift [390 h]; Football playground [500] | 158,424.99 |  | MOD-02-CN-10040 | PL |
| MLTX-02-005-CN-12110 |  | Install Sport Equipments - Goal / Nets - (Football Playground) | 20d | 2026-11-22 | 2026-12-14 | MLTX-02-005-EN-12070, MLTX-02-005-CN-14750, MLTX-02-005-CN-12440, MLTX-02-005-CN-14740, MLTX-02-005-CN-12190 |  |  |  | -3d | 57d | Labor [390 h]; Skilled Labor [150 h]; Driver [100 h]; Crane [140 h]; Football playground [100] | 31,685 |  | MOD-02-CN-10050 | PL |
| MLTX-02-005-CN-12120 |  | Surface Marking and Painting (Football Playground) | 3d | 2027-02-16 | 2027-02-18 | MLTX-02-005-CN-12210 SS, MLTX-02-005-CN-12320 SS |  |  |  | -75d | 0d | Skilled Labor [250 h]; Painter [240 h]; Football playground [50] | 15,842.5 |  | MOD-02-CN-10060 | PL |
|  | 7 | **PADEL PLAYGROUND** |  | 2026-05-18 | 2027-03-16 |  |  |  |  |  |  |  |  |  |  |  |
| MLTX-02-005-CN-12130 |  | Preparation and Proofing for Subgrade (Padel Playground) | 20d | 2026-05-18 A | 2026-05-31 A | MLTX-02-005-CN-12080 | 100% | 2026-06-11 | 2026-07-04 |  |  | Labor [300 h]; Skilled Labor [150 h]; Driver [200 h]; Forklift [180 h]; Padel playgound [70] | 81,894.4 | 81,894.4 | MOD-02-CN-10080 | PL |
| MLTX-02-005-CN-12140 |  | Backfilling and Compaction of Base Layers (Padel Playground) | 21d | 2026-06-01 A | 2026-06-23 A | MLTX-02-005-CN-12090, MLTX-02-005-CN-12130, MLTX-02-005-PR-9990, MLTX-02-005-EN-9050 | 100% | 2026-07-06 | 2026-07-29 |  |  | Labor [550 h]; Skilled Labor [200 h]; Driver [280 h]; Loader [150 h]; Dump Truck [360 h]; Compactor [180 h]; Padel playgound [10] | 11,699.2 | 11,699.2 | MOD-02-CN-10090 | PL |
| MLTX-02-005-CN-14750 |  | Aggregate basecourse layer (Padel Playground) | 21d | 2026-06-23 A | 2026-06-28 A | MLTX-02-005-CN-12140 | 100% | 2026-07-30 | 2026-08-23 |  |  | Padel playgound [10] | 11,699.2 | 11,699.2 |  | PL |
| MLTX-02-005-CN-12150 |  | Finishing Asphalt & Concrete Surface (Padel Playground) | 21d | 2026-08-30 A | 2026-08-30 A | MLTX-02-005-CN-12140, MLTX-02-005-CN-14750, MLTX-02-005-CN-14740, MLTX-02-005-CN-12190 | 100% | 2026-11-17 | 2026-12-10 |  |  | Labor [720 h]; Skilled Labor [200 h]; Driver [90 h]; Forklift [270 h]; Padel playgound [50] | 58,496 | 58,496 | MOD-02-CN-10100 | PL |
| MLTX-02-005-CN-12160 |  | Install Sport Equipments - Goal / Nets - (Padel Playground) | 15d | 2027-02-20 | 2027-03-09 | MLTX-02-005-EN-12090, MLTX-02-005-CN-12100, MLTX-02-005-CN-12150, MLTX-02-005-CN-12110, MLTX-02-005-CN-12120 |  |  |  | -60d | 0d | Labor [950 h]; Skilled Labor [440 h]; Driver [260 h]; Crane [160 h]; Padel playgound [50] | 58,496 |  | MOD-02-CN-10110 | PL |
| MLTX-02-005-CN-12170 |  | Surface Marking and Painting (Padel Playground) | 3d | 2027-03-14 | 2027-03-16 | MLTX-02-005-CN-12120 SS, MLTX-02-005-PR-10360, MLTX-02-005-CN-12160, MLTX-02-005-CN-12100, MLTX-02-005-CN-12250 |  |  |  | -60d | 0d | Skilled Labor [500 h]; Painter [240 h]; Padel playgound [10] | 11,699.2 |  | MOD-02-CN-10120 | PL |

| ID | WBS | Activity | Duration | Start | Finish | Predecessors | Complete | Remaining | Planned start | Planned finish | Total float | Free float | Resources | Cost | Actual cost | New Activity ID | Construction | AIR DOME WORKS |
| --- | --- | --- | --- | --- | --- | --- | --- | --- | --- | --- | --- | --- | --- | --- | --- | --- | --- | --- |
|  | 8 | **BASKETBALL PLAYGROUND** |  | 2026-05-18 | 2027-03-16 |  |  |  |  |  |  |  |  |  |  |  |  |  |
| MLTX-02-005-CN-12180 |  | Preparation and Proofing for Subgrade (Basketball Playground) | 20d | 2026-05-18 A | 2026-05-31 A | MLTX-02-005-CN-12130, MLTX-02-005-EN-10200, MLTX-02-005-EN-8910, MLTX-02-005-PR-10530, MLTX-02-005-PR-10790, MLTX-02-005-PR-10810, MLTX-02-005-MS-1120 | 100% |  | 2026-07-07 | 2026-07-29 |  |  | Labor [550 h]; Skilled Labor [200 h]; Driver [280 h]; Forklift [270 h]; Basketball playground [146.62] | 92,913.27 | 92,913.27 | MOD-02-CN-10180 | PL |  |
| MLTX-02-005-CN-12190 |  | Backfilling and Compaction of Base Layers (Basketball Playground) | 21d | 2026-06-01 A | 2026-06-23 A | MLTX-02-005-PR-9990, MLTX-02-005-EN-9960, MLTX-02-005-CN-12180, MLTX-02-005-CN-12090, MLTX-02-005-EN-9050, MLTX-02-005-PR-10150, MLTX-02-005-CN-12030 | 100% |  | 2026-10-11 | 2026-11-03 |  |  | Labor [400 h]; Skilled Labor [200 h]; Driver [300 h]; Loader [150 h]; Dump Truck [400 h]; Compactor [200 h]; Basketball playground [24.93] | 15,795.26 | 15,795.26 | MOD-02-CN-10190 | PL |  |
| MLTX-02-005-CN-14760 |  | Aggregate basecourse layer (Basketball Playground) | 21d | 2026-06-23 A | 2026-06-28 A | MLTX-02-005-CN-12180, MLTX-02-005-CN-12100 | 100% |  | 2026-07-30 | 2026-08-23 |  |  | Basketball playground [49.06] | 31,087.21 |  |  | PL |  |
| MLTX-02-005-CN-12200 |  | Finishing Asphalt & Concrete Surface (Basketball Playground) | 21d | 2026-08-29 A | 2026-08-30 A | MLTX-02-005-CN-14750 | 100% |  | 2026-08-24 | 2026-09-16 |  |  | Labor [740 h]; Skilled Labor [150 h]; Driver [100 h]; Forklift [360 h]; Basketball playground [152.49] | 96,629.8 | 96,629.8 | MOD-02-CN-10200 | PL |  |
| MLTX-02-005-CN-12210 |  | Install Sport Equipments - Goal / Nets - (Basketball Playground) | 10d | 2026-11-22 | 2026-12-02 | MLTX-02-005-EN-12080, MLTX-02-005-CN-14750, MLTX-02-005-CN-12440, MLTX-02-005-CN-14740, MLTX-02-005-CN-12190 |  |  |  |  | -1d | 74d | Labor [200 h]; Skilled Labor [90 h]; Driver [100 h]; Crane [140 h]; Basketball playground [127.5] | 80,796.75 |  | MOD-02-CN-10210 | PL |  |
| MLTX-02-005-CN-12220 |  | Surface Marking and Painting (Basketball Playground) | 3d | 2027-03-14 | 2027-03-16 | MLTX-02-005-PR-10360, MLTX-02-005-CN-12210 SS, MLTX-02-005-CN-12170 SS, MLTX-02-005-CN-12120 SS, MLTX-02-005-CN-12200, MLTX-02-005-CN-12120 FF, MLTX-02-005-CN-12250, MLTX-02-005-CN-14760, MLTX-02-005-CN-14740, MLTX-02-005-CN-12190, MLTX-02-005-CN-11970 |  |  |  |  | -60d | 27d | Skilled Labor [250 h]; Painter [240 h]; Basketball playground [25.5] | 16,159.35 |  | MOD-02-CN-10220 | PL |  |
|  | 9 | **PADEL FENCE** |  | 2026-08-06 | 2027-04-17 |  |  |  |  |  |  |  |  |  |  |  |  |  |
| MLTX-02-005-CN-12230 |  | Excavation for Fence | 8d | 2026-08-06 A | 2026-08-06 A | MLTX-02-005-CN-12190, MLTX-02-005-EN-11120 | 100% |  | 2026-11-28 | 2026-12-06 |  |  | Labor [250 h]; Driver [160 h]; Excavator [120 h]; Dump Truck [160 h]; Supply and install of padel playground fence [0.01] | 414.35 |  | MOD-02-CN-10240 | PL |  |
| MLTX-02-005-CN-12240 |  | Concrete Foundation for Fence including Posts Fixation | 7d | 2026-08-15 A | 2026-08-19 A | MLTX-02-005-CN-12230 SS, MLTX-02-005-CN-12230 FF | 100% |  | 2026-11-29 | 2026-12-06 |  |  | Skilled Labor [150 h]; Driver [100 h]; Steel Fixer [140 h]; Supply and install of padel playground fence [0.01] | 828.69 |  | MOD-02-CN-10250 | PL |  |
| MLTX-02-005-CN-12241 |  | Backfilling and Reinstatement for Concrete Foundation | 18d | 2026-10-13 A | 2026-10-13 A | MLTX-02-005-CN-12240 SS, MLTX-02-005-CN-12240 FF | 100% |  | 2027-02-16 | 2027-03-09 |  |  | Skilled Labor [257.14 h]; Driver [342.86 h]; Loader [180 h]; Dump Truck [240 h]; Compactor [120 h]; Supply and install of padel playground fence [0.05] | 3,834.68 |  | MOD-02-CN-10290 | PL |  |
| MLTX-02-005-CN-12250 |  | Tempered Glass Fenc Installation and Fixation | 15d | 2027-02-20 | 2027-03-09 | MLTX-02-005-CN-12241 SS, MLTX-02-005-CN-12241 FF, MLTX-02-005-PR-10820, MLTX-02-005-CN-12120 |  |  |  |  | -68d | 0d | Skilled Labor [250 h]; Driver [180 h]; Crane [240 h]; Supply and install of padel playground fence [0.37] | 30,677.48 |  | MOD-02-CN-10260 | PL |  |
| MLTX-02-005-CN-12260 |  | Chain Link Fence Installation and Fixation | 15d | 2027-02-20 | 2027-03-09 | MLTX-02-005-CN-12250 FF, MLTX-02-005-PR-10840, MLTX-02-005-CN-12250 SS, MLTX-02-005-CN-12120 |  |  |  |  | -68d | 19d | Labor [200 h]; Skilled Labor [150 h]; Driver [150 h]; Crane [200 h]; Supply and install of padel playground fence [0.19] | 15,338.75 |  | MOD-02-CN-10270 | PL |  |
| MLTX-02-005-CN-12270 |  | Install of Fence Gates | 26d | 2027-03-18 | 2027-04-17 | MLTX-02-005-CN-12260 FF, MLTX-02-005-CN-12250 SS, MLTX-02-005-CN-12260 SS, MLTX-02-005-CN-12330 |  |  |  |  | -87d | 0d | Labor [380 h]; Skilled Labor [90 h]; Driver [100 h]; Crane [120 h]; Supply and install of padel playground fence [0.05] | 3,834.68 |  | MOD-02-CN-10280 | PL |  |
|  | 1 | **CURBSTOEN/INTERLOCK** |  | 2026-08-12 | 2026-10-22 |  |  |  |  |  |  |  |  |  |  |  |  |  |
| MLTX-02-005-CN-12020 |  | Concrete Works Under Curbstone | 12d | 2026-08-12 A | 2026-08-12 A | MLTX-02-005-EN-11930, MLTX-02-005-CN-12290, MLTX-02-005-EN-11090, MLTX-02-005-CN-14760 | 100% |  | 2026-09-09 | 2026-09-22 |  |  | Skilled Labor [200 h]; Kerb type K1A [151]; Kerb type K1B [15]; Kerb type K4 [908] | 54,535.3 | 54,535.3 | MOD-02-CN-10150 | PL |  |
| MLTX-02-005-CN-12030 |  | Curbstone Installation | 4d | 2026-08-12 A | 2026-08-23 A | MLTX-02-005-PR-10900, MLTX-02-005-CN-12020, MLTX-02-005-CN-12430, MLTX-02-005-CN-13190, MLTX-02-005-CN-12200 | 100% |  | 2026-09-24 | 2026-09-28 |  |  | Labor [940 h]; Skilled Labor [440 h]; Driver [340 h]; Forklift [240 h]; Kerb type K1A [352.33]; Kerb type K1B [35]; Kerb type K4 [2118.67] | 127,249.04 | 6,824.65 | MOD-02-CN-10160 | PL |  |
| MLTX-02-005-CN-11960 |  | Interlock Installation (Grey Scale) for LandScape (Including Finishing Works) | 3d | 2026-09-21 A | 2026-10-22 | MLTX-02-005-CN-12030, MLTX-02-005-PR-10760, MLTX-02-005-PR-10030 | 70% | 3d | 2026-09-29 | 2026-10-01 | 60d | 147d | Labor [1000 h]; Skilled Labor [440 h]; Driver [540 h]; Forklift [330 h]; Interlock tiles grey scale with black marble chips 600*300*60mm zero joint [1683.33] | 180,520.67 |  | MOD-02-CN-10140 | PL |  |
|  | 10 | **AIR DOME** |  | 2026-05-16 | 2027-03-29 |  |  |  |  |  |  |  |  |  |  |  |  |  |
|  | 1 | **CIVIL WORKS** |  | 2026-05-16 | 2027-03-15 |  |  |  |  |  |  |  |  |  |  |  |  |  |
| MLTX-02-005-CN-12280 |  | Excavation for Foundation (Air Dome) | 15d | 2026-05-16 A | 2026-06-01 A | MLTX-02-005-EN-12010, MLTX-02-005-EN-8830, MLTX-02-005-EN-11950, MLTX-02-005-EN-11980, MLTX-02-005-EN-8070, MLTX-02-005-CN-12140, MLTX-02-005-EN-12000, MLTX-02-005-EN-12020, MLTX-02-005-CN-12180, MLTX-02-005-EN-12030, MLTX-02-005-EN-12040 | 100% |  | 2026-07-30 | 2026-08-16 |  |  | Labor [200 h]; Driver [80 h]; Excavator [120 h]; Water Tanker [120 h]; Compactor [80 h]; Design, supply, install, testing and commissioning of air dome [0.03] | 167,650.3 |  | MOD-02-CN-10320 | PL | CVL |
| MLTX-02-005-CN-12290 |  | Concrete Works for Foundations including Anchor Bolts (Air Dome) | 15d | 2026-07-22 A | 2026-09-21 A | MLTX-02-005-EN-11990, MLTX-02-005-EN-11130, MLTX-02-005-EN-8860, MLTX-02-005-EN-11970, MLTX-02-005-CN-12280, MLTX-02-005-EN-11960, MLTX-02-005-CN-12670 | 100% |  | 2026-08-17 | 2026-09-02 |  |  | Skilled Labor [200 h]; Steel Fixer [180 h]; Design, supply, install, testing and commissioning of air dome [0.04] | 228,008.77 |  | MOD-02-CN-10330 | PL | CVL |
| MLTX-02-005-CN-12300 |  | Cable System Installation (Air Dome) | 10d | 2026-09-21 A | 2026-09-21 A | MLTX-02-005-CN-12290 | 100% |  | 2026-09-03 | 2026-09-14 |  |  | Labor [700 h]; Skilled Labor [250 h]; Driver [250 h]; Crane [300 h]; Design, supply, install, testing and commissioning of air dome | 350,921.95 |  | MOD-02-CN-10340 | PL | CVL |
| MLTX-02-005-CN-12430 |  | Perimeter Clamping System Installation | 13d | 2026-09-21 A | 2026-09-28 A | MLTX-02-005-CN-12300 FF, MLTX-02-005-CN-12300 SS | 100% |  | 2026-09-03 | 2026-09-17 |  |  | Design, supply, install, testing and commissioning of air dome [0.1] | 552,946.49 |  |  | PL | CVL |
| MLTX-02-005-CN-12310 |  | Install of Membrane Covering System (Air Dome) | 20d | 2027-02-16 | 2027-03-15 | MLTX-02-005-PR-10540, MLTX-02-005-CN-12430, MLTX-02-005-CN-11740, MLTX-02-005-PR-10970, MLTX-02-005-CN-12010 |  |  |  |  | -77d | 0d | Labor [500 h]; Skilled Labor [90 h]; Driver [100 h]; Crane [160 h]; Design, supply, install, testing and commissioning of air dome [0.17] | 942,830.33 |  | MOD-02-CN-10360 | PL | CVL |
| MLTX-02-005-CN-12320 |  | Thermal Insulation Works (Air Dome) | 20d | 2027-02-16 | 2027-03-15 | MLTX-02-005-CN-12310 SS, MLTX-02-005-CN-12310 FF, MLTX-02-005-CN-11740 |  |  |  |  | -77d | 0d | Labor [500 h]; Skilled Labor [240 h]; Driver [100 h]; Crane [160 h]; Design, supply, install, testing and commissioning of air dome [0.08] | 448,471.57 |  | MOD-02-CN-10370 | PL | CVL |

| ID | WBS | Activity | Duration | Start | Finish | Predecessors | Complete | Remaining | Planned start | Planned finish | Total float | Free float | Resources | Cost | Actual cost | New Activity ID | Construction | AIR DOME WORKS | New Activity Code |
| --- | --- | --- | --- | --- | --- | --- | --- | --- | --- | --- | --- | --- | --- | --- | --- | --- | --- | --- | --- |
|  | 3 | **MECHANICAL WORKS** |  | 2027-03-09 | 2027-03-29 |  |  |  |  |  |  |  |  |  |  |  |  |  |  |
| MLTX-02-005-CN-12350 |  | Air Ducts and Grills Installation (Air Dome) | 15d | 2027-03-09 | 2027-03-29 | MLTX-02-005-EN-11890, MLTX-02-005-EN-11880, MLTX-02-005-PR-10500, MLTX-02-005-PR-10480, MLTX-02-005-PR-10990, MLTX-02-005-CN-12320 SS |  |  |  |  | -89d | 0d | Labor [876.9 h]; Skilled Labor [353.8 h]; Crane [120 h]; Mechanical [269.2 h]; Design, supply, install, testing and commissioning of air dome [0.13] | 728,766.3 |  | MOD-02-CN-10410 | PL | MEC) |  |
| MLTX-02-005-CN-12360 |  | Air Units Installation (Air Dome) | 8d | 2027-03-21 | 2027-03-29 | MLTX-02-005-PR-10460, MLTX-02-005-CN-12350 FF, MLTX-02-005-CN-12350 SS |  |  |  |  | -89d | 0d | Labor [800 h]; Skilled Labor [440 h]; Driver [420 h]; Forklift [240 h]; Mechanical [160 h]; Design, supply, install, testing and commissioning of air dome [0.06] | 336,353.67 |  | MOD-02-CN-10420 | PL | MEC) |  |
| MLTX-02-005-CN-12370 |  | Exhaust Fans and Ducts Installation (Air Dome) | 8d | 2027-03-21 | 2027-03-29 | MLTX-02-005-PR-10520, MLTX-02-005-CN-12360 SS, MLTX-02-005-CN-12360 FF, MLTX-02-005-CN-12350 SS, MLTX-02-005-CN-12350 FF |  |  |  |  | -89d | 0d | Labor [700 h]; Skilled Labor [300 h]; Driver [370 h]; Forklift [210 h]; Mechanical [140 h]; Design, supply, install, testing and commissioning of air dome [0.03] | 168,176.84 |  | MOD-02-CN-10430 | PL | MEC) |  |
|  | 4 | **ELECTRICAL WORKS** |  | 2027-03-21 | 2027-03-29 |  |  |  |  |  |  |  |  |  |  |  |  |  |  |
| MLTX-02-005-CN-12380 |  | Light Fixture Works (Air Dome) | 8d | 2027-03-21 | 2027-03-29 | MLTX-02-005-CN-12360 FF, MLTX-02-005-CN-12360 SS, MLTX-02-005-CN-12370 SS, MLTX-02-005-CN-12370 FF, MLTX-02-005-PR-10680, MLTX-02-005-PR-10660 |  |  |  |  | -89d | 0d | Skilled Labor [440 h]; Electrician [300 h]; Design, supply, install, testing and commissioning of air dome [0.04] | 224,235.78 |  | MOD-02-CN-10450 | PL | ELE |  |
| MLTX-02-005-CN-12390 |  | Distribution Board and Electrical Works (Air Dome) | 8d | 2027-03-21 | 2027-03-29 | MLTX-02-005-EN-11840, MLTX-02-005-CN-12380 FF, MLTX-02-005-CN-12380 SS, MLTX-02-005-EN-11820, MLTX-02-005-EN-11830, MLTX-02-005-EN-11810, MLTX-02-005-PR-10720, MLTX-02-005-PR-10640, MLTX-02-005-EN-11800, MLTX-02-005-PR-10660 |  |  |  |  | -89d | 0d | Skilled Labor [300 h]; Electrician [120 h]; Design, supply, install, testing and commissioning of air dome [0.03] | 168,176.84 |  | MOD-02-CN-10460 | PL | ELE |  |
| MLTX-02-005-CN-12400 |  | External Electrical Connection Works (Air Dome) | 8d | 2027-03-21 | 2027-03-29 | MLTX-02-005-CN-12390 FF, MLTX-02-005-CN-12390 SS |  |  |  |  | -89d | 0d | Skilled Labor [350 h]; Electrician [200 h]; Design, supply, install, testing and commissioning of air dome [0.03] | 168,176.84 |  | MOD-02-CN-10470 | PL |  |  |
| MLTX-02-005-CN-12410 |  | Emergency Generator Installation (Air Dome) | 8d | 2027-03-21 | 2027-03-29 | MLTX-02-005-CN-12400 FF, MLTX-02-005-EN-8700, MLTX-02-005-CN-12400 SS, MLTX-02-005-EN-8730, MLTX-02-005-EN-8720 |  |  |  |  | -89d | 0d | Skilled Labor [300 h]; Electrician [220 h]; Design, supply, install, testing and commissioning of air dome [0.09] | 504,530.51 |  | MOD-02-CN-10480 | PL | ELE |  |
| MLTX-02-005-CN-12420 |  | Control System Installation (Air Dome) | 8d | 2027-03-21 | 2027-03-29 | MLTX-02-005-CN-12410 FF, MLTX-02-005-EN-11860, MLTX-02-005-EN-11850, MLTX-02-005-EN-11870, MLTX-02-005-PR-10700 |  |  |  |  | -89d | 0d | Skilled Labor [1000 h]; Electrician [500 h]; Design, supply, install, testing and commissioning of air dome | 448,471.57 |  | MOD-02-CN-10490 | PL | ELE |  |
|  | 2 | **FINISHES WORKS** |  | 2027-02-25 | 2027-03-29 |  |  |  |  |  |  |  |  |  |  |  |  |  |  |
| MLTX-02-005-CN-12330 |  | Doors Installation Including Emergency, Entrance doors (Air Dome) | 15d | 2027-02-25 | 2027-03-17 | MLTX-02-005-CN-11740, MLTX-02-005-PR-11000 |  |  |  |  | -87d | 0d | Labor [400 h]; Skilled Labor [200 h]; Forklift [150 h]; Design, supply, install, testing and commissioning of air dome [0.02] | 112,117.89 |  | MOD-02-CN-10380 | PL | FIN |  |
| MLTX-02-005-CN-12340 |  | Logo and Signs Installation (Air Dome) | 2d | 2027-03-28 | 2027-03-29 | MLTX-02-005-CN-12330 FF, MLTX-02-005-CN-12420 FF, MLTX-02-005-CN-12420 SS |  |  |  |  | -89d | 0d | Labor [1300 h]; Skilled Labor [900 h]; Driver [340 h]; Crane [120 h]; Design, supply, install, testing and commissioning of air dome [0.01] | 56,058.95 |  | MOD-02-CN-10390 | PL | FIN |  |
|  | 1 | **IRRIGATION NETWORK** |  | 2026-07-18 | 2027-03-09 |  |  |  |  |  |  |  |  |  |  |  |  |  |  |
| MLTX-02-005-CN-13190 |  | Installing of HDPE Pipes for Irrigation Network (Main Line) | 15d | 2026-07-18 A | 2026-07-20 A | MLTX-02-005-CN-12290 | 100% |  | 2026-09-03 | 2026-09-20 |  |  | Labor [1000 h]; Driver [540 h]; Crane [220 h]; Mechanical [320 h]; Plumber [300 h]; HDPE Pipes pipe line O.D 90 mm PN 10, in depth 0 to 1.5 m [250] | 53,620 | 53,620 | MOD-02-CN-11430 | PL |  | CN.MB.D15.1950 |
| MLTX-02-005-CN-13200 |  | Installing of HDPE Pipes for Irrigation Network (Branch Lines) | 15d | 2026-08-24 A | 2026-09-01 A | MLTX-02-005-CN-13190, MLTX-02-005-EN-11780, MLTX-02-005-EN-11790, MLTX-02-005-PR-10100, MLTX-02-005-EN-11190, MLTX-02-005-CN-12030 | 100% |  | 2026-10-31 | 2026-11-16 |  |  | Labor [800 h]; Driver [240 h]; Crane [140 h]; Mechanical [240 h]; Plumber [240 h]; HDPE Pipes pipe line O.D 50 mm PN 10, in depth 0 to 1.5 m [116.67]; HDPE Pipes pipe line O.D 32 mm PN 10, in depth 0 to 1.5 m [250]; HDPE Pipes pipe line O.D 25 mm PN 10, in depth 0 to 1.5 m [683.33] | 50,127.83 | 20,150 | MOD-02-CN-11440 | PL |  | CN.MB.D15.1960 |
| MLTX-02-005-CN-13210 |  | Installing of Valves and fittings for Irrigation Network | 10d | 2026-09-10 A | 2026-10-13 A | MLTX-02-005-CN-13200 | 100% |  | 2026-11-17 | 2026-11-28 |  |  | Labor [950 h]; Mechanical [160 h]; Plumber [260 h]; Gate valve 100 mm PN16 [0.67]; Gate valve 50 mm PN16 [3.67]; Gate valve 32 mm PN16 [4.67]; Flushing Bronze gate valve dia 1.5" inside PVC box [2]; Air release valve 1.5" inside PVC box [2] | 23,560.84 | 6,824.52 | MOD-02-CN-11450 | PL |  | CN.MB.D15.1970 |
| MLTX-02-005-CN-13220 |  | Installing of Bubblers and Spreyers | 3d | 2027-03-07 | 2027-03-09 | MLTX-02-005-CN-11980 SS, MLTX-02-005-CN-13210, MLTX-02-005-PR-10860, MLTX-02-005-CN-11980 FF, MLTX-02-005-CN-12120, MLTX-02-005-CN-13120 |  |  |  |  | -75d | 14d | Labor [1300 h]; Mechanical [240 h]; Plumber [240 h]; Pressure�compensating bubblers 110 Lit/Hr [5]; Pressure� bubblers 60 Lit/Hr [165]; Pop up sprayer 90?- 210?, Radius 3.0 mtr [200]; Pop up sprayer 360?,Radius 3.0 mtr. [310] | 25,106.2 |  | MOD-02-CN-11460 | PL |  | CN.MB.D15.1980 |
|  | 5 | **NATURAL GROUND** |  | 2026-10-13 | 2026-10-25 |  |  |  |  |  |  |  |  |  |  |  |  |  |  |
| MLTX-02-005-CN-11990 |  | Compacted Natural Ground Soil Installation Works for Landscape | 5d | 2026-10-13 A | 2026-10-25 | MLTX-02-005-CN-13210, MLTX-02-005-CN-12920 | 80% | 5d | 2027-02-16 | 2027-02-21 | 42d | 0d | Labor [1800 h]; Skilled Labor [1900 h]; Driver [370 h]; Water Tanker [270 h]; Dump Truck [360 h]; Compactor [180 h]; Compacted Natural ground soil [3333.33] | 65,000 |  | MOD-02-CN-10550 | PL |  |  |
| MLTX-02-005-CN-11980 |  | Tartan Floor Installation Works for Landscape (Including Finishing Works) | 3d | 2026-10-14 A | 2026-10-22 | MLTX-02-005-CN-11990 SS | 40% | 3d | 2027-03-03 | 2027-03-06 | 42d | 117d | Labor [1400 h]; Skilled Labor [1300 h]; Driver [240 h]; Water Tanker [210 h]; Dump Truck [280 h]; Compactor [140 h]; Tartan floor [200] | 126,740 |  | MOD-02-CN-10540 | PL |  |  |
|  | 2 | **PLANTING** |  | 2026-10-03 | 2026-10-22 |  |  |  |  |  |  |  |  |  |  |  |  |  |  |
| MLTX-02-005-CN-12050 |  | Placement of Sweet/Agricultural Soil (Including Levelling and Grading) | 3d | 2026-10-03 A | 2026-10-22 | MLTX-02-005-EN-11110, MLTX-02-005-PR-10860, MLTX-02-005-CN-12920 | 70% | 3d | 2026-10-24 | 2026-10-26 | 52d | 122d | Labor [1850 h]; Driver [380 h]; Dump Truck [500 h]; Bobcat [280 h]; Cassia Glauca [25.5]; Plumeria Alba [25.5]; Neem [1.5]; Lawn [890] | 104,175.44 |  | MOD-02-CN-10570 | PL |  |  |
| MLTX-02-005-CN-12060 |  | Placement of Lawn Ground Cover (Rolling and Compaction) | 3d | 2026-10-14 A | 2026-10-22 | MLTX-02-005-CN-12070 SS, MLTX-02-005-CN-12010 SS | 30% | 3d | 2027-02-15 | 2027-02-17 | 35d | 19d | Labor [2500 h]; Skilled Labor [1550 h]; Driver [540 h]; Water Tanker [250 h]; Lawn [2076.67] | 141,732.5 |  | MOD-02-CN-10580 | PL |  |  |
| MLTX-02-005-CN-12070 |  | Placement and Fixation of Trees | 3d | 2026-10-14 A | 2026-10-22 | MLTX-02-005-CN-12010 SS | 30% | 3d | 2027-02-11 | 2027-02-14 | 35d | 0d | Labor [2250 h]; Skilled Labor [1500 h]; Driver [500 h]; Water Tanker [250 h]; Cassia Glauca [59.5]; Plumeria Alba [59.5]; Neem [3.5] | 101,343.52 |  | MOD-02-CN-10590 | PL |  |  |

| ID | WBS | Activity | Duration | Start | Finish | Predecessors | Complete | Remaining | Planned start | Planned finish | Total float | Free float | Resources | Cost | Actual cost | New Activity ID | Construction | New Activity Code |
| --- | --- | --- | --- | --- | --- | --- | --- | --- | --- | --- | --- | --- | --- | --- | --- | --- | --- | --- |
|  | 3 | **WALKING/BIKE PATHS** |  | 2026-06-01 | 2026-10-20 |  |  |  |  |  |  |  |  |  |  |  |  |  |
| MLTX-02-005-CN-12000 |  | Bike Path Preparation and Installation Works | 8d | 2026-06-01 A | 2026-10-20 | MLTX-02-005-CN-11880, MLTX-02-005-CN-12030 | 75% | 0d | 2026-09-29 | 2026-10-07 | -4d | 0d | Skilled Labor [850 h]; Driver [460 h]; Bobcat [180 h]; Bike path [836.44] | 187,554.12 |  | MOD-02-CN-10510 | PL |  |
| MLTX-02-005-CN-12010 |  | Walking Path Preparation and Installation Works | 8d | 2026-06-10 A | 2026-10-20 | MLTX-02-005-CN-12000 SS, MLTX-02-005-CN-12030 | 75% | 0d | 2026-10-08 | 2026-10-17 | 20d | 0d | Skilled Labor [850 h]; Driver [460 h]; Bobcat [180 h]; Walking path [803.1] | 180,079.78 |  | MOD-02-CN-10520 | PL |  |
|  | 6 | **GENERAL/FURNITURE** |  | 2026-09-03 | 2027-03-21 |  |  |  |  |  |  |  |  |  |  |  |  |  |
| MLTX-02-005-CN-12920 |  | Preleminary Works for Site Light Poles Including Cable and Bases Works | 8d | 2026-09-03 A | 2026-09-07 A | MLTX-02-005-PR-10740, MLTX-02-005-EN-11320, MLTX-02-005-CN-12030, MLTX-02-005-EN-11340, MLTX-02-005-EN-11330, MLTX-02-005-EN-11910, MLTX-02-005-EN-11030, MLTX-02-005-EN-11350 | 100% |  | 2026-10-06 | 2026-10-14 |  |  | Labor [950 h]; Driver [340 h]; Electrician [460 h]; Forklift [240 h]; Supply, install, testing, and commissioning of ground mounted decorated landscape LED lighting with 6.0m height pole [12] | 75,459.6 | 75,459.6 | MOD-02-CN-11710 | PL | CN.MB.D16.2130 |
| MLTX-02-005-CN-12930 |  | Installing of Site Light Poles | 22d | 2026-10-01 A | 2026-11-14 | MLTX-02-005-CN-12060 FF, MLTX-02-005-CN-12920, MLTX-02-005-CN-11970 FF, MLTX-02-005-PR-11010 | 55% | 22d | 2026-11-08 | 2026-12-02 | 16d | 6d | Skilled Labor [700 h]; Electrician [500 h]; Crane [140 h]; Supply, install, testing, and commissioning of ground mounted decorated landscape LED lighting with 6.0m height pole [28] | 176,072.4 |  | MOD-02-CN-11800 | PL | CN.MB.D16.2140 |
| MLTX-02-005-CN-11970 |  | Stamped Concrete Works for LandScape (Including Finishing Works) | 18d | 2026-10-14 A | 2026-11-09 | MLTX-02-005-CN-12010 SS, MLTX-02-005-CN-12920 | 40% | 18d | 2026-10-17 | 2026-11-05 | 20d | 4d | Skilled Labor [850 h]; Steel Fixer [320 h]; Stamped concrete floor [600] | 93,594 |  | MOD-02-CN-10610 | PL |  |
| MLTX-02-005-CN-12440 |  | Fixation and Installation of Steel Frame for Benches | 28d | 2026-10-20 | 2026-11-21 | MLTX-02-005-CN-12000, MLTX-02-005-EN-11070, MLTX-02-005-CN-12920 |  |  |  |  | -4d | 0d | Skilled Labor [850 h]; Driver [420 h]; Crane [160 h]; Supply and install playground benches consists of 6 seats [1] | 17,274.79 |  | MOD-02-CN-10630 | PL |  |
| MLTX-02-005-CN-12450 |  | Fixation and Installation of Benches | 14d | 2026-11-22 | 2026-12-07 | MLTX-02-005-CN-12440, MLTX-02-005-CN-12920 |  |  |  |  | -4d | 0d | Skilled Labor [700 h]; Driver [420 h]; Crane [160 h]; Supply and install playground benches consists of 6 seats [2.33] | 40,307.84 |  | MOD-02-CN-10640 | PL |  |
| MLTX-02-005-CN-12460 |  | Fixation and Installation of Precast Concrete Seats (Rectangular) | 14d | 2026-11-22 | 2026-12-07 | MLTX-02-005-CN-12450 SS, MLTX-02-005-CN-12450 FF, MLTX-02-005-CN-12920, MLTX-02-005-CN-12930 |  |  |  |  | 10d | 14d | Skilled Labor [700 h]; Driver [420 h]; Crane [160 h]; Supply and install recycled precast concrete rectangular seats [28] | 32,757.76 |  | MOD-02-CN-10650 | PL |  |
| MLTX-02-005-CN-12470 |  | Fixation and Installation of Precast Concrete Seats (Circular) | 14d | 2026-12-08 | 2026-12-23 | MLTX-02-005-CN-12460 FF, MLTX-02-005-CN-12460 SS, MLTX-02-005-CN-12920, MLTX-02-005-CN-12450 |  |  |  |  | -4d | 66d | Skilled Labor [700 h]; Driver [420 h]; Crane [160 h]; Supply and install recycled precast concrete circular seats [24] | 12,869.04 |  | MOD-02-CN-10660 | PL |  |
| MLTX-02-005-CN-12040 |  | Traffic Signs Posts and Poles Installation | 3d | 2027-03-16 | 2027-03-18 | MLTX-02-005-CN-11940, MLTX-02-005-CN-12470, MLTX-02-005-CN-12930, MLTX-02-005-PR-10080, MLTX-02-005-CN-12310 |  |  |  |  | -70d | 0d | Skilled Labor [240 h]; Driver [160 h]; Excavator [240 h]; Traffic signs aluminum sheet, (breakaway) Single post I.P.E. [2] | 9,749.3 |  | MOD-02-CN-10620 | PL |  |
| MLTX-02-005-CN-12480 |  | Fixation and Installation of Precast Concrete Trash Bins | 2d | 2027-03-20 | 2027-03-21 | MLTX-02-005-CN-12470, MLTX-02-005-CN-11940, MLTX-02-005-PR-10880, MLTX-02-005-CN-12920, MLTX-02-005-CN-12040, MLTX-02-005-CN-12050 |  |  |  |  | -70d | 16d | Skilled Labor [400 h]; Driver [320 h]; Crane [160 h]; Supply and install recycled precast concrete trash bins [8.33] | 12,186.67 |  | MOD-02-CN-10670 | PL |  |
|  | 2 | **PARKING** |  | 2026-05-14 | 2026-09-19 |  |  |  |  |  |  |  |  |  |  |  |  |  |
| MLTX-02-005-CN-11950 |  | Site Preparation & Compaction Under Interlock for Parking Area | 5d | 2026-05-14 A | 2026-06-30 A | MLTX-02-005-PR-10870, MLTX-02-005-EN-8040, MLTX-02-005-EN-11180 | 100% |  | 2026-11-24 | 2026-11-29 |  |  | Labor [1000 h]; Driver [120 h]; Water Tanker [90 h]; Compactor [60 h]; Supply and install interlock tiles for parking 8cm [200] | 17,548 | 17,548 | MOD-02-CN-10700 | PL |  |
| MLTX-02-005-CN-11940 |  | Interlock Installation (8 Cm) for Parking Area (Including Finishing Works) | 7d | 2026-09-10 A | 2026-09-19 A | MLTX-02-005-CN-11950, MLTX-02-005-EN-11100, MLTX-02-005-CN-12030 | 100% |  | 2026-11-30 | 2026-12-07 |  |  | Labor [2000 h]; Skilled Labor [700 h]; Driver [400 h]; Forklift [300 h]; Supply and install interlock tiles for parking 8cm [466.67] | 40,945.33 |  | MOD-02-CN-10690 | PL |  |
|  | TO | **TOILET/SERVICE BUILDING** |  | 2026-05-24 | 2027-03-29 |  |  |  |  |  |  |  |  |  |  |  |  |  |
|  | 13 | **STRUCTURE WORKS** |  | 2026-05-24 | 2026-08-10 |  |  |  |  |  |  |  |  |  |  |  |  |  |
|  | 2 | **CONCRETE WORKS** |  | 2026-05-25 | 2026-07-02 |  |  |  |  |  |  |  |  |  |  |  |  |  |
|  | 1 | **SUB-STRUCTURE** |  | 2026-05-25 | 2026-06-06 |  |  |  |  |  |  |  |  |  |  |  |  |  |
| MLTX-02-005-CN-12490 |  | Plain Concrete Under Footing | 2d | 2026-05-25 A | 2026-05-31 A | MLTX-02-005-EN-9010, MLTX-02-005-EN-11000, MLTX-02-005-EN-11440, MLTX-02-005-EN-11430, MLTX-02-005-CN-12550, MLTX-02-005-EN-11450 | 100% |  | 2026-05-31 | 2026-06-01 |  |  | Labor [100 h]; Skilled Labor [60 h]; lean concrete under foundation [1.5] | 1,462.39 |  | MOD-02-CN-10750 | TO | CN.MB.D01.1500 |
| MLTX-02-005-CN-12520 |  | Reinforced Concrete Works for Slab on Grade Including Steel Fixing | 5d | 2026-06-03 A | 2026-06-06 A | MLTX-02-005-PR-10070, MLTX-02-005-CN-12490 | 100% |  | 2026-06-04 | 2026-06-09 |  |  | Labor [300 h]; Skilled Labor [100 h]; Steel Fixer [120 h]; Provide and cast 35 Mpa concrete floor slab on grade [15] | 36,559.95 | 36,559.95 | MOD-02-CN-10800 | TO | CN.MB.D01.1590 |
|  | 2 | **SUPER-STRUCTURE** |  | 2026-06-28 | 2026-07-02 |  |  |  |  |  |  |  |  |  |  |  |  |  |
| MLTX-02-005-CN-12500 |  | AAC Panels Works for Walls | 7d | 2026-06-28 A | 2026-06-30 A | MLTX-02-005-EN-11420, MLTX-02-005-EN-11400, MLTX-02-005-EN-11390, MLTX-02-005-EN-11410, MLTX-02-005-EN-11370, MLTX-02-005-CN-12600, MLTX-02-005-EN-11360, MLTX-02-005-EN-11380 | 100% |  | 2026-06-20 | 2026-06-27 |  |  | Labor [500 h]; Skilled Labor [200 h]; Driver [280 h]; Crane [160 h]; The autoclaved aerated panel for slabs, external and internal walls and parapet [150] | 48,259.5 | 48,259.5 | MOD-02-CN-10820 | TO | CN.MB.D01.1550 |
| MLTX-02-005-CN-12530 |  | AAC Panels Works for Slabs | 2d | 2026-07-01 A | 2026-07-01 A | MLTX-02-005-CN-12500 | 100% |  | 2026-06-28 | 2026-06-29 |  |  | Labor [250 h]; Skilled Labor [100 h]; Driver [200 h]; Crane [100 h]; The autoclaved aerated panel for slabs, external and internal walls and parapet [50] | 16,086.5 | 16,086.5 | MOD-02-CN-10830 | TO | CN.MB.D01.1600 |
| MLTX-02-005-CN-12510 |  | Parpet Works and Lintels | 3d | 2026-07-02 A | 2026-07-02 A | MLTX-02-005-CN-12530, MLTX-02-005-CN-13090 | 100% |  | 2026-06-30 | 2026-07-02 |  |  | Labor [200 h]; Skilled Labor [60 h]; Driver [100 h]; Crane [60 h]; The autoclaved aerated panel for slabs, external and internal walls and parapet [50] | 16,086.5 | 16,086.5 | MOD-02-CN-10840 | TO | CN.MB.D01.1570 |

| ID | WBS | Activity | Duration | Start | Finish | Predecessors | Complete | Remaining | Planned start | Planned finish | Total float | Free float | Resources | Cost | Actual cost | New Activity Code | New Activity ID | Construction |
| --- | --- | --- | --- | --- | --- | --- | --- | --- | --- | --- | --- | --- | --- | --- | --- | --- | --- | --- |
|  | 1 | **UNDER GROUND SEPTIC TANK** |  | 2026-06-04 | 2026-07-06 |  |  |  |  |  |  |  |  |  |  |  |  |  |
| MLTX-02-005-CN-13080 |  | Plain Concrete Under Footing | 3d | 2026-06-04 A | 2026-06-06 A | MLTX-02-005-CN-12540 | 100% |  | 2026-05-11 | 2026-05-13 |  |  | Labor [100 h]; Skilled Labor [40 h]; lean concrete under foundation [1.5] | 1,462.39 |  | CN.MB.D01.1500 | MOD-02-CN-10860 | TO |
| MLTX-02-005-CN-13100 |  | Reinforced Concrete Works for Tank Foundation Including Shuttering and Steel Fixing | 7d | 2026-06-18 A | 2026-06-20 A | MLTX-02-005-CN-13080 | 100% |  | 2026-05-14 | 2026-05-21 |  |  | Labor [350 h]; Skilled Labor [100 h]; Steel Fixer [120 h]; Tank foundation [3] | 7,604.46 | 7,604.46 | CN.MB.D01.1530 | MOD-02-CN-10870 | TO |
| MLTX-02-005-CN-13110 |  | Reinforced Concrete Works for Tank Walls Including Steel Fixing | 10d | 2026-06-20 A | 2026-06-29 A | MLTX-02-005-CN-13100 | 100% |  | 2026-05-23 | 2026-06-06 |  |  | Labor [600 h]; Skilled Labor [200 h]; Steel Fixer [200 h]; Tank Walls [6] | 16,366.86 | 16,366.86 | CN.MB.D01.1590 | MOD-02-CN-10880 | TO |
| MLTX-02-005-CN-13090 |  | Reinforced Concrete Works for Tank Slab Including Shuttering and Steel Fixing | 8d | 2026-07-02 A | 2026-07-06 A | MLTX-02-005-CN-13110 | 100% |  | 2026-06-07 | 2026-06-15 |  |  | Labor [700 h]; Skilled Labor [250 h]; Steel Fixer [240 h]; Tank Slab [3] | 8,774.37 | 8,774.37 | CN.MB.D01.1520 | MOD-02-CN-10890 | TO |
|  | 3 | **THERMAL & MOISTER PROTECTION** |  | 2026-05-24 | 2026-08-10 |  |  |  |  |  |  |  |  |  |  |  |  |  |
|  | 1 | **ANTI TERMIT CONTROL** |  | 2026-05-24 | 2026-06-03 |  |  |  |  |  |  |  |  |  |  |  |  |  |
| MLTX-02-005-CN-12570 |  | Anti Termite Works Under Slab on Grade and Grade Beams | 1d | 2026-05-24 A | 2026-05-25 A | MLTX-02-005-CN-13100 | 100% |  | 2026-05-23 | 2026-05-23 |  |  | Labor [50 h]; Skilled Labor [30 h]; Supply and apply anti termite under all concrete in contact with soil. [54] | 2,632.5 | 2,632.5 | CN.MB.D01.1650 | MOD-02-CN-10930 | TO |
| MLTX-02-005-CN-12560 |  | Anti Termite Works Under Foundation | 1d | 2026-05-31 A | 2026-06-03 A | MLTX-02-005-CN-11930 SS, MLTX-02-005-CN-11920 | 100% |  | 2026-05-09 | 2026-05-09 |  |  | Labor [40 h]; Skilled Labor [20 h]; Supply and apply anti termite under all concrete in contact with soil. [36] | 1,755 | 1,755 | CN.MB.D01.1640 | MOD-02-CN-10920 | TO |
|  | 2 | **POLYETHYLENE SHEET** |  | 2026-05-25 | 2026-06-04 |  |  |  |  |  |  |  |  |  |  |  |  |  |
| MLTX-02-005-CN-12550 |  | Water Proofing Under Slab on Grade (Polythelen Sheet) | 1d | 2026-05-25 A | 2026-05-31 A | MLTX-02-005-EN-10120, MLTX-02-005-CN-12570 | 100% |  | 2026-05-24 | 2026-05-24 |  |  | Labor [50 h]; Skilled Labor [30 h]; Supply and lay 250 micron thk polyethylene sheet under grade slab [54] | 1,315.98 | 1,315.98 | CN.MB.D01.1630 | MOD-02-CN-10960 | TO |
| MLTX-02-005-CN-12540 |  | Water Proofing Under Blinding Concrete (Polythelen Sheet) | 1d | 2026-06-01 A | 2026-06-04 A | MLTX-02-005-EN-10120, MLTX-02-005-CN-12560, MLTX-02-005-EN-11010 | 100% |  | 2026-05-10 | 2026-05-10 |  |  | Labor [40 h]; Skilled Labor [20 h]; Supply and lay 250 micron thk polyethylene sheet under grade slab [36] | 877.32 | 877.32 | CN.MB.D01.1620 | MOD-02-CN-10950 | TO |
|  | 4 | **EPOXY** |  | 2026-07-11 | 2026-08-10 |  |  |  |  |  |  |  |  |  |  |  |  |  |
| MLTX-02-005-CN-12580 |  | Surface Preparation for Epoxy Coating | 3d | 2026-07-11 A | 2026-07-11 A | MLTX-02-005-CN-13090, MLTX-02-005-CN-13110 | 100% |  | 2026-06-16 | 2026-06-18 |  |  | Labor [200 h]; Skilled Labor [90 h]; Provide and lay epoxy 2 coating for inner surfaces for RC walls, RC footings and bottom of the roof [7.5] | 1,096.8 | 1,096.8 | CN.MB.D01.1660 | MOD-02-CN-11000 | TO |
| MLTX-02-005-CN-12590 |  | Epoxy Coating for Walls and Slab of Tank | 5d | 2026-07-28 A | 2026-08-10 A | MLTX-02-005-CN-12580 | 100% |  | 2026-06-20 | 2026-06-24 |  |  | Labor [300 h]; Skilled Labor [150 h]; Provide and lay epoxy 2 coating for inner surfaces for RC walls, RC footings and bottom of the roof [17.5] | 2,559.2 | 2,559.2 | CN.MB.D01.1670 | MOD-02-CN-11010 | TO |
|  | 5 | **MASONARY WORK** |  | 2026-07-06 | 2026-07-08 |  |  |  |  |  |  |  |  |  |  |  |  |  |
| MLTX-02-005-CN-12600 |  | CMU Masonary Works Including all Accessories | 5d | 2026-07-06 A | 2026-07-08 A | MLTX-02-005-EN-11050, MLTX-02-005-PR-10160, MLTX-02-005-CN-12520 | 100% |  | 2026-06-14 | 2026-06-18 |  |  | Labor [300 h]; Mason [150 h]; Concrete masonry unit, 100 mm thick wall [45] | 12,284.1 | 12,284.1 | CN.MB.D04.1690 | MOD-02-CN-11030 | TO |
|  | 3 | **THERMAL & MOISTER PROTECTION** |  | 2026-09-10 | 2026-11-09 |  |  |  |  |  |  |  |  |  |  |  |  |  |
| MLTX-02-005-CN-12620 |  | Preparing Surface and Preliminary Works for Toilets Waterproofing | 2d | 2026-09-10 A | 2026-09-10 A | MLTX-02-005-CN-12510, MLTX-02-005-CN-12590 | 100% |  | 2026-07-04 | 2026-07-05 |  |  | Labor [120 h]; Skilled Labor [60 h]; Plumber [20 h]; Supply and install liquid applied waterproofing membrane for toilets according to drawings and specifications. [14.4] | 2,105.86 |  | CN.MB.D07.1770 | MOD-02-CN-11050 | TO |
| MLTX-02-005-CN-12630 |  | Finalize Water Proofing Works for Toilets | 5d | 2026-09-12 A | 2026-09-12 A | MLTX-02-005-CN-12620 | 100% |  | 2026-07-06 | 2026-07-11 |  |  | Labor [280 h]; Skilled Labor [150 h]; Supply and install liquid applied waterproofing membrane for toilets according to drawings and specifications. [33.6] | 4,913.66 |  | CN.MB.D07.1780 | MOD-02-CN-11070 | TO |
| MLTX-02-005-CN-12640 |  | Preparing Surface and Preliminary Works for Roofing and Wet Areas Insulation | 16d | 2026-09-20 A | 2026-09-20 A | MLTX-02-005-CN-12630 | 100% |  | 2026-07-12 | 2026-07-29 |  |  | Labor [250 h]; Skilled Labor [150 h]; Plumber [60 h]; Supply and cast in place foam concrete screed 50mm thk minimum laid to fall and cross fall [28]; Supply and install 4mm thick APP modified bituminous membrane for roof insulation [28]; Supply and install 300 micron polyethylene sheet [28]; Supply and install 50mm thk rigid insulation (extruded polystyrene) with density of 35 kg./m3 [28]; Supply and install 50mm thk loose gravel toppings [28]; Supplying and fixing 3mm thk extruded aluminum flashing [13.6]; Provide and lay 2 layers of waterproofing membrane 4mm [8] | 11,071.52 | 11,071.52 | CN.MB.D07.1790 | MOD-02-CN-11060 | TO |
| MLTX-02-005-CN-12650 |  | Finalize Water Proofing Works for Roofing and Wet Areas | 18d | 2026-09-20 A | 2026-11-09 | MLTX-02-005-CN-12640 | 90% | 18d | 2026-07-30 | 2026-08-19 | -26d | 0d | Labor [300 h]; Skilled Labor [200 h]; Supply and cast in place foam concrete screed 50mm thk minimum laid to fall and cross fall [42]; Supply and install 4mm thick APP modified bituminous membrane for roof insulation [42]; Supply and install 300 micron polyethylene sheet [42]; Supply and install 50mm thk rigid insulation (extruded polystyrene) with density of 35 kg./m3 [42]; Supply and install 50mm thk loose gravel toppings [42]; Supplying and fixing 3mm thk extruded aluminum flashing [20.4]; Provide and lay 2 layers of waterproofing membrane 4mm [12] | 16,607.28 |  | CN.MB.D07.1800 | MOD-02-CN-11080 | TO |
|  | 11 | **MECHANICAL WORK** |  | 2026-07-12 | 2027-03-16 |  |  |  |  |  |  |  |  |  |  |  |  |  |
|  | 4 | **HVAC SYSTEM** |  | 2026-07-12 | 2026-10-08 |  |  |  |  |  |  |  |  |  |  |  |  |  |
| MLTX-02-005-CN-12720 |  | Preliminary HVAC and Ventilation Works | 3d | 2026-07-12 A | 2026-07-12 A | MLTX-02-005-EN-8330, MLTX-02-005-EN-8930, MLTX-02-005-EN-11200, MLTX-02-005-EN-8310, MLTX-02-005-EN-8150, MLTX-02-005-EN-12050, MLTX-02-005-EN-11060, MLTX-02-005-EN-9450, MLTX-02-005-EN-9280, MLTX-02-005-EN-11470, MLTX-02-005-CN-12750, MLTX-02-005-PR-9840 | 100% |  | 2026-10-12 | 2026-10-14 |  |  | Labor [240 h]; Skilled Labor [90 h]; Mechanical [60 h]; Square Exhaust Diffuser 6"X6 " [6]; Supply, install, test and commission indoor ductwork [100]; Door Grilles 18"X6 " [1] | 9,359.69 | 9,359.69 | CN.MB.D15.1920 | MOD-02-CN-11480 | TO |
| MLTX-02-005-CN-12740 |  | Exhaust, Air Ducts Installation with all Accessories | 6d | 2026-08-25 A | 2026-08-29 A | MLTX-02-005-CN-13180 | 100% |  | 2026-10-04 | 2026-10-10 |  |  | Labor [200 h]; Skilled Labor [180 h]; Driver [60 h]; Crane [120 h]; Mechanical [120 h]; Supply, install, test and commission inline exhaust fans duct [1] | 3,899.72 | 3,899.72 | CN.MB.D15.1940 | MOD-02-CN-11490 | TO |
| MLTX-02-005-CN-12730 |  | Install and Finish HVAC and Ventilation Works Including Split Air Units | 4d | 2026-10-08 A | 2026-10-08 A | MLTX-02-005-CN-12740 FF, MLTX-02-005-PR-10380, MLTX-02-005-CN-13260 | 100% |  | 2026-10-06 | 2026-10-10 |  |  | Labor [150 h]; Skilled Labor [90 h]; Driver [60 h]; Crane [60 h]; Mechanical [60 h]; Supply and install split air conditioning unit (DX-MINI SPLIT UNIT) [1] | 14,623.96 | 14,623.96 | CN.MB.D15.1930 | MOD-02-CN-11500 | TO |

| ID | WBS | Activity | Duration | Start | Finish | Predecessors | Complete | Planned start | Planned finish | Total float | Free float | Resources | Cost | Actual cost | New Activity Code | New Activity ID | Construction |
| --- | --- | --- | --- | --- | --- | --- | --- | --- | --- | --- | --- | --- | --- | --- | --- | --- | --- |
|  | 2 | **WATER SUPPLY SYSTEM** |  | 2026-07-21 | 2026-10-08 |  |  |  |  |  |  |  |  |  |  |  |  |
| MLTX-02-005-CN-12750 |  | Installing of PPR Pipes and Fittings for Water Network | 6d | 2026-07-21 A | 2026-07-21 A | MLTX-02-005-CN-12790, MLTX-02-005-EN-11510, MLTX-02-005-PR-10260, MLTX-02-005-EN-11170, MLTX-02-005-EN-11500 | 100% | 2026-09-16 | 2026-09-22 |  |  | Labor [100 h]; Plumber [60 h]; PPR Pipe with 65 mm ? Cold water [6]; PPR Pipe with 50 mm ? Cold water [4]; PPR Pipe with 40 mm ? Cold water [1]; PPR Pipe with 32 mm ? Cold water [2]; PPR Pipe with 25 mm ? Cold water [4]; PPR Pipe with 20 mm ? Cold water [7]; PPR Pipe with 20 mm ? Hot water [22] | 6,921.94 | 6,921.94 | CN.MB.D15.1950 | MOD-02-CN-11540 | TO |
| MLTX-02-005-CN-13170 |  | Installing of Valves and Fittings | 5d | 2026-09-05 A | 2026-09-05 A | MLTX-02-005-CN-12750, MLTX-02-005-CN-12880, MLTX-02-005-CN-12770 | 100% | 2026-09-24 | 2026-09-29 |  |  | Labor [100 h]; Plumber [40 h]; SERVICE CONNECTIONS 50 mm ? [13.33] | 6,499.6 | 6,499.6 | CN.MB.D15.1950 | MOD-02-CN-11520 | TO |
| MLTX-02-005-CN-12780 |  | Installing of GRP Tanks | 20d | 2026-09-06 A | 2026-09-14 A | MLTX-02-005-CN-12790 | 100% | 2026-09-12 | 2026-10-05 |  |  | Skilled Labor [120 h]; Driver [100 h]; Crane [160 h]; Plumber [140 h]; Hot Press GRP Sectional Panel Water Tanks (4x3x3m) [0.33] | 64,995.36 |  | CN.MB.D15.1980 | MOD-02-CN-11560 | TO |
| MLTX-02-005-CN-12760 |  | Installing of HDPE Pipes and Valves for Water Supply Network | 7d | 2026-09-19 A | 2026-10-08 A | MLTX-02-005-CN-13170, MLTX-02-005-CN-12690, MLTX-02-005-PR-8870 | 100% | 2026-10-10 | 2026-10-17 |  |  | Labor [250 h]; Plumber [100 h]; SERVICE CONNECTIONS 50 mm ? [53.33] | 25,998.4 | 25,998.4 | CN.MB.D15.1960 | MOD-02-CN-11530 | TO |
| MLTX-02-005-CN-13260 |  | Installing of Water Heater | 3d | 2026-09-29 A | 2026-09-29 A | MLTX-02-005-CN-14750 | 100% | 2026-08-24 | 2026-08-26 |  |  | Labor [100 h]; Plumber [20 h]; 50 Liter Capacity [1] | 1,754.87 | 1,754.87 | CN.MB.D15.1980 | MOD-02-CN-11560 | TO |
| MLTX-02-005-CN-12770 |  | Installing of Booster Pump Units Including fittings and accessories | 20d | 2026-10-04 A | 2026-10-04 A | MLTX-02-005-CN-13260 | 100% | 2026-08-27 | 2026-09-19 |  |  | Labor [200 h]; Plumber [80 h]; (2W+1S Pumps) - flow of each pump 5 L/S @ 30 Meters [0.33] | 48,746.52 |  | CN.MB.D15.1970 | MOD-02-CN-11550 | TO |
|  | 1 | **SEWER/DRAINAGE SYSTEM** |  | 2026-07-21 | 2026-10-12 |  |  |  |  |  |  |  |  |  |  |  |  |
| MLTX-02-005-CN-12790 |  | Installing UPVC Pipes for Sewage Network | 2d | 2026-07-21 A | 2026-07-22 A | MLTX-02-005-EN-11530, MLTX-02-005-PR-10280, MLTX-02-005-EN-11520, MLTX-02-005-EN-11160 | 100% | 2026-09-09 | 2026-09-10 |  |  | Skilled Labor [150 h]; Plumber [60 h]; uPVC Sewer pipes Pipe with ? 4" (110mm) [21]; uPVC Sewer pipes Pipe Pipe with ? 3" (75mm) [13]; uPVC Sewer pipes Pipe Pipe with ? 2" (50mm) [20]; uPVC Sewer pipes Pipe Pipe with ? 1" (25mm) [5] | 11,767.4 | 11,767.4 | CN.MB.D15.1990 | MOD-02-CN-11590 | TO |
| MLTX-02-005-CN-13250 |  | Installing Inspection Chamber for Sewage Network | 10d | 2026-10-03 A | 2026-10-03 A | MLTX-02-005-CN-12790 | 100% | 2026-09-12 | 2026-09-22 |  |  | Driver [80 h]; Crane [80 h]; Plumber [80 h]; Supply, installation, testing and commissioning of Inspection chamber [1] | 12,186.63 | 12,186.63 | CN.MB.D15.1990 | MOD-02-CN-11590 | TO |
| MLTX-02-005-CN-12800 |  | Installing of Plumping Fixtures and Accessories | 5d | 2026-10-04 A | 2026-10-12 A | MLTX-02-005-CN-13180, MLTX-02-005-CN-13070, MLTX-02-005-CN-12990, MLTX-02-005-CN-12780 | 100% | 2026-10-15 | 2026-10-20 |  |  | Skilled Labor [120 h]; Plumber [80 h]; galvanized iron vent stack Vent Cap with 3" ? [1]; Supply and installation of Floor drain [9]; FCO 4" ? (110mm) [1]; FCO 3" ? (75mm) [1]; Supply, installation,testing and commissioning of Gully Traps [1] | 10,358.68 | 10,358.68 | CN.MB.D15.2000 | MOD-02-CN-11600 | TO |
| MLTX-02-005-CN-13180 |  | Installing UPVC Pipes for External Connection for Sewage Network | 8d | 2026-10-08 A | 2026-10-08 A | MLTX-02-005-CN-13250, MLTX-02-005-CN-12750, MLTX-02-005-CN-13270 | 100% | 2026-09-24 | 2026-10-03 |  |  | Skilled Labor [90 h]; Plumber [30 h]; Supply and install 150 mm uPVC pipes to external wastewater network [16.67] | 14,217.67 |  | CN.MB.D15.1990 | MOD-02-CN-11580 | TO |
| MLTX-02-005-CN-13270 |  | Installing of Toilet Fixtures and Accessories Such as Closets and Basins | 21d | 2026-10-08 A | 2026-10-12 A | MLTX-02-005-CN-13260 | 100% | 2026-08-27 | 2026-09-20 |  |  | Skilled Labor [120 h]; Plumber [80 h]; Supply and installation of western water closet [3]; Supply and installation of western water closet [1]; Supply and installation of Bib tap with Perenial Hose (BPH) [4]; Supply, installation, testing and commissioning of Lavatory / wash basin [1]; Supply, installation, testing and commissioning of wall hung Lavatory / wash basin [1]; Supply and install Complete stainless steel 316 Handicap Rails Grab Bars [1]; Supply and install roof drain (RD) dome typ [1]; Supply and install shower mixer [4] | 31,392.79 | 31,392.79 | CN.MB.D15.2000 | MOD-02-CN-11600 | TO |
|  | 3 | **FIRE PROTECTION** |  | 2027-02-16 | 2027-03-16 |  |  |  |  |  |  |  |  |  |  |  |  |
| MLTX-02-005-CN-12810 |  | Installing of Fire Fighting Extinguisher and accessories (PFE-1, PFE-2) | 21d | 2027-02-16 | 2027-03-16 | MLTX-02-005-EN-11490, MLTX-02-005-CN-13280, MLTX-02-005-EN-11180, MLTX-02-005-CN-13240, MLTX-02-005-CN-13260, MLTX-02-005-EN-11850, MLTX-02-005-CN-13300, MLTX-02-005-PR-10200, MLTX-02-005-EN-11150, MLTX-02-005-CN-13140, MLTX-02-005-CN-12840, MLTX-02-005-CN-14740, MLTX-02-005-CN-12190, MLTX-02-005-CN-13030, MLTX-02-005-PR-10970, MLTX-02-005-CN-12010 |  |  |  | -66d | 20d | Labor [100 h]; Mechanical [40 h]; Supply and install, PFE-1, Portable dry powder fire extinguisher 4.5 Kg capacity [1]; Supply and install, PFE-2, Portable Carbon Dioxide fire extinguisher. [1] | 1,949.87 |  | CN.MB.D15.2010 | MOD-02-CN-11620 | TO |
|  | 12 | **ELECTRICAL WORKS** |  | 2026-07-14 | 2027-03-18 |  |  |  |  |  |  |  |  |  |  |  |  |
|  | 1 | **ROUGH-IN WORKS** |  | 2026-07-14 | 2026-08-17 |  |  |  |  |  |  |  |  |  |  |  |  |
| MLTX-02-005-CN-12860 |  | Preleminary Works for Sockets and Power Points | 2d | 2026-07-14 A | 2026-08-09 A | MLTX-02-005-CN-12510, MLTX-02-005-CN-12500, MLTX-02-005-CN-12880 | 100% | 2026-09-06 | 2026-09-07 |  |  | Labor [140 h]; Electrician [40 h]; 1 way, One Gang Switch [0.8]; 1 way, Two Gang Switch [3]; 1 way, One Gang Switch, weatherproof [0.4]; Exaust fan DP switch weatherproof [0.4]; Indoor AC DP switch weatherproof [0.4]; High level Single Receptacle outlet [3]; Duplex Receptacle outlet [6]; Hand Dryer switch weatherproof [0.4]; Water heater switch [0.4]; Outdoor Disconnect Switch for air conditioiner [0.9]; Outdoor Disconnect Switch for exhaust fans [0.4] | 15,990.55 | 10,725.21 | CN.MB.D16.2070 | MOD-02-CN-11680 | TO |
| MLTX-02-005-CN-12830 |  | Preleminary Works for Panel Boards | 2d | 2026-07-22 A | 2026-08-09 A | MLTX-02-005-EN-11550, MLTX-02-005-EN-11590, MLTX-02-005-EN-11250, MLTX-02-005-CN-12500, MLTX-02-005-CN-12510, MLTX-02-005-CN-12880 | 100% | 2026-09-13 | 2026-09-14 |  |  | Labor [140 h]; Electrician [40 h]; Main Distribution Board including all related works to install power meter (power meter is excluded) [0.4]; Power Panel for pump room [0.13]; Power Panel for street lighting [0.4] | 68,245.12 | 54,596.1 | CN.MB.D16.2030 | MOD-02-CN-11660 | TO |
| MLTX-02-005-CN-12850 |  | Preleminary Works for Cable Works | 2d | 2026-07-22 A | 2026-08-09 A | MLTX-02-005-EN-11020, MLTX-02-005-CN-12510, MLTX-02-005-EN-11540, MLTX-02-005-CN-12500, MLTX-02-005-EN-11580, MLTX-02-005-CN-12880 | 100% | 2026-09-06 | 2026-09-07 |  |  | Labor [210 h]; Electrician [60 h]; Recessed mounted LED downlight luminaire 40 watt with reflector; IP44 ,230V , 4000k, 4200 LUMEN ,CRI > 80; Low glare [12]; LED flood light outdoor type 96 watt, 4000k, 12720 LUMEN [0.4]; Wall mounted emergency LED luminaire, 230V, 60 Hz., 3 hour back up time 1800 lumen,CRI>80, 2*18 watt, IP 65 [1.6]; LED Exit light fixture 4.5 watt with battery for 3 hours, and a visibility of 30 meters [0.4]; Wall mounted outdoor LED luminaire, 17 watt, 2000 lumens, with light emission from two sides [0.4]; Wall mounted outdoor LED luminaire, 13 watt, 1000 LUMEN, CR>80, for roof lighting [5] | 12,488.95 | 5,849.64 | CN.MB.D16.2050 | MOD-02-CN-11670 | TO |
| MLTX-02-005-CN-12880 |  | Preleminary Works for Lightning Works | 2d | 2026-08-09 A | 2026-08-17 A | MLTX-02-005-EN-11630, MLTX-02-005-CN-12510, MLTX-02-005-CN-12500, MLTX-02-005-EN-11670, MLTX-02-005-EN-11240 | 100% | 2026-09-03 | 2026-09-05 |  |  | Labor [140 h]; Electrician [40 h]; For Building [0.9] | 21,935.93 |  | CN.MB.D16.2090 | MOD-02-CN-11690 | TO |
| MLTX-02-005-CN-12900 |  | Preleminary Works for Data & Telecommunication System | 2d | 2026-08-09 A | 2026-08-17 A | MLTX-02-005-EN-11210, MLTX-02-005-CN-12510, MLTX-02-005-EN-11720, MLTX-02-005-EN-11730, MLTX-02-005-CN-12500, MLTX-02-005-CN-12880 | 100% | 2026-09-06 | 2026-09-07 |  |  | Labor [140 h]; Electrician [40 h]; Wall telephone outlet [1.2]; Wall mounted data outlet [1.2]; Telecom/IT rack complete with switch, router and patch Panel [0.9]; AV floor box outlet (1 HDMI) [0.4]; AV wall outlet (1 HDMI) [0.4] | 24,470.75 | 584.96 | CN.MB.D16.2110 | MOD-02-CN-11700 | TO |
| MLTX-02-005-CN-12940 |  | Preleminary Works for Security and Access Control System | 2d | 2026-08-09 A | 2026-08-17 A | MLTX-02-005-EN-11710, MLTX-02-005-EN-11700, MLTX-02-005-CN-12500, MLTX-02-005-EN-11220, MLTX-02-005-CN-12510, MLTX-02-005-EN-11650, MLTX-02-005-CN-12880 | 100% | 2026-09-13 | 2026-09-14 |  |  | Labor [210 h]; Electrician [60 h]; 1 CCTV cabinet (Rack) [0.9]; NVR [0.9]; 21" LED monitor [0.4]; Indoor dome type Camera IP-20 ,IK-10, POE type with infra red feature, minimum coverage 20 meters, ONVIF supported [5]; Outdoor fixed camera weahter proof IP-65, POE type [3]; Pull box for fiber optic cable pulling from provider [0.4] | 30,913.59 | 13,649.03 | CN.MB.D16.2150 | MOD-02-CN-11720 | TO |
| MLTX-02-005-CN-13230 |  | Preleminary Works for Earthing Works | 2d | 2026-08-09 A | 2026-08-17 A | MLTX-02-005-EN-8500, MLTX-02-005-CN-12500, MLTX-02-005-PR-10120, MLTX-02-005-CN-12510, MLTX-02-005-EN-11240, MLTX-02-005-EN-11660, MLTX-02-005-EN-11620, MLTX-02-005-CN-12880 | 100% | 2026-09-12 | 2026-09-13 |  |  | Labor [210 h]; Electrician [60 h]; Distribution boards, panelboards, lighting installations and wiring accessories [0.9]; Telecom equipment [0.9]; KWHM [1.5] | 32,172.69 | 32,172.69 | CN.MB.D16.2090 | MOD-02-CN-11650 | TO |

| ID | WBS | Activity | Duration | Start | Finish | Predecessors | Complete | Planned start | Planned finish | Total float | Free float | Resources | Cost | Actual cost | New Activity Code | New Activity ID | Construction |
| --- | --- | --- | --- | --- | --- | --- | --- | --- | --- | --- | --- | --- | --- | --- | --- | --- | --- |
|  | 2 | **FIXTURE WORKS** |  | 2026-12-13 | 2027-03-18 |  |  |  |  |  |  |  |  |  |  |  |  |
| MLTX-02-005-CN-12840 |  | Installing and Finish Works of Panel Boards | 20d | 2026-12-13 | 2027-01-04 | MLTX-02-005-PR-10140, MLTX-02-005-CN-13140, MLTX-02-005-CN-12830, MLTX-02-005-CN-12190 |  |  |  | -30d | 0d | Labor [350 h]; Electrician [100 h]; Main Distribution Board including all related works to install power meter (power meter is excluded) [0.6]; Power Panel for pump room [0.2]; Power Panel for street lighting [0.6] | 102,367.69 |  | CN.MB.D16.2040 | MOD-02-CN-11740 | TO |
| MLTX-02-005-CN-12820 |  | Installing of Fire automation and Fire Alarm System | 18d | 2027-01-05 | 2027-01-25 | MLTX-02-005-EN-11690, MLTX-02-005-CN-12730, MLTX-02-005-EN-11640, MLTX-02-005-EN-11680, MLTX-02-005-CN-13260, MLTX-02-005-CN-12840, MLTX-02-005-PR-10440, MLTX-02-005-EN-11460, MLTX-02-005-PR-10400, MLTX-02-005-EN-12060, MLTX-02-005-PR-10420, MLTX-02-005-EN-11480, MLTX-02-005-CN-12720, MLTX-02-005-CN-14740, MLTX-02-005-CN-12190, MLTX-02-005-CN-13030, MLTX-02-005-CN-13140 |  |  |  | -27d | 59d | Labor [200 h]; Electrician [80 h]; Analog addressable fire alarm control panel [1]; Intelligent Photoelectric smoke and heat detector with base [12]; Addressable Manual Pull Station, wall mounted [2]; Addressable Fire Alarm Strobe with Sounder, wall mounted [1]; Addressable Fire Alarm Strobe with Sounder, wall mounted water proof IP66 [1] | 34,317.53 |  | CN.MB.D15.2020 | MOD-02-CN-11780 | TO |
| MLTX-02-005-CN-12870 |  | Installing and Finalize Works of Sockets and Power Points | 20d | 2027-01-05 | 2027-01-27 | MLTX-02-005-CN-13240, MLTX-02-005-PR-10320, MLTX-02-005-CN-12860, MLTX-02-005-CN-12840, MLTX-02-005-EN-11850, MLTX-02-005-CN-13140 |  |  |  | -29d | 57d | Labor [60 h]; Electrician [60 h]; 1 way, One Gang Switch [1.2]; 1 way, Two Gang Switch [1]; 1 way, One Gang Switch, weatherproof [0.6]; Exaust fan DP switch weatherproof [0.6]; Indoor AC DP switch weatherproof [0.6]; High level Single Receptacle outlet [1]; Duplex Receptacle outlet [1]; Hand Dryer switch weatherproof [0.6]; Water heater switch [0.6]; Outdoor Disconnect Switch for air conditioiner [0.1]; Outdoor Disconnect Switch for exhaust fans [0.6] | 7,085.1 |  | CN.MB.D16.2080 | MOD-02-CN-11760 | TO |
| MLTX-02-005-CN-12890 |  | Installing and Finalize Works of Lighting Works including Light Fixtures | 21d | 2027-01-05 | 2027-01-28 | MLTX-02-005-PR-10300, MLTX-02-005-CN-13240, MLTX-02-005-CN-12850, MLTX-02-005-CN-12840, MLTX-02-005-EN-11850, MLTX-02-005-CN-13140 |  |  |  | -30d | 56d | Labor [80 h]; Electrician [80 h]; Recessed mounted LED downlight luminaire 40 watt with reflector; IP44 ,230V , 4000k, 4200 LUMEN ,CRI > 80; Low glare [18]; LED flood light outdoor type 96 watt, 4000k, 12720 LUMEN [0.6]; Wall mounted emergency LED luminaire, 230V, 60 Hz., 3 hour back up time 1800 lumen,CRI>80, 2*18 watt, IP 65 [2.4]; LED Exit light fixture 4.5 watt with battery for 3 hours, and a visibility of 30 meters [0.6]; Wall mounted outdoor LED luminaire, 17 watt, 2000 lumens, with light emission from two sides [0.6]; Wall mounted outdoor LED luminaire, 13 watt, 1000 LUMEN, CR>80, for roof lighting [1] | 14,259.43 |  | CN.MB.D16.2100 | MOD-02-CN-11790 | TO |
| MLTX-02-005-CN-12910 |  | Installing Data and Telecommunication System with all Accessories | 20d | 2027-01-05 | 2027-01-27 | MLTX-02-005-CN-13260, MLTX-02-005-CN-13240, MLTX-02-005-CN-12900, MLTX-02-005-CN-14750, MLTX-02-005-EN-11850, MLTX-02-005-CN-13140, MLTX-02-005-CN-12840, MLTX-02-005-CN-14740, MLTX-02-005-CN-12190, MLTX-02-005-CN-13030 |  |  |  | -29d | 57d | Labor [80 h]; Electrician [80 h]; Wall telephone outlet [1.8]; Wall mounted data outlet [1.8]; Telecom/IT rack complete with switch, router and patch Panel [0.1]; AV floor box outlet (1 HDMI) [0.6]; AV wall outlet (1 HDMI) [0.6] | 6,239.59 |  | CN.MB.D16.2120 | MOD-02-CN-11750 | TO |
| MLTX-02-005-CN-12960 |  | Installing and Finalize Works of Earthing Works | 20d | 2027-01-05 | 2027-01-27 | MLTX-02-005-CN-13140, MLTX-02-005-CN-13230, MLTX-02-005-CN-12840 |  |  |  | -29d | 57d | Labor [60 h]; Electrician [60 h]; Distribution boards, panelboards, lighting installations and wiring accessories [0.1]; Telecom equipment [0.1]; KWHM [0.5] | 6,824.51 |  | CN.MB.D16.2190 | MOD-02-CN-11770 | TO |
| MLTX-02-005-CN-12950 |  | Installing and Finalize Works of Security and Access Control System | 20d | 2027-02-20 | 2027-03-18 | MLTX-02-005-CN-12940, MLTX-02-005-CN-13140, MLTX-02-005-CN-13260, MLTX-02-005-CN-12120, MLTX-02-005-CN-14740, MLTX-02-005-CN-12190, MLTX-02-005-CN-13030 |  |  |  | -68d | 18d | Labor [80 h]; Electrician [80 h]; 1 CCTV cabinet (Rack) [0.1]; NVR [0.1]; 21" LED monitor [0.6]; Indoor dome type Camera IP-20 ,IK-10, POE type with infra red feature, minimum coverage 20 meters, ONVIF supported [1]; Outdoor fixed camera weahter proof IP-65, POE type [1]; Pull box for fiber optic cable pulling from provider [0.6] | 7,250.09 |  | CN.MB.D16.2170 | MOD-02-CN-11830 | TO |
| MLTX-02-005-CN-12970 |  | Installing and Finalize Works of Lightning Protection System | 20d | 2027-02-20 | 2027-03-18 | MLTX-02-005-CN-13140, MLTX-02-005-CN-12880, MLTX-02-005-CN-13260, MLTX-02-005-CN-12120, MLTX-02-005-CN-14740, MLTX-02-005-CN-12190, MLTX-02-005-CN-13030 |  |  |  | -68d | 18d | Labor [100 h]; Electrician [100 h]; For Building [0.1] | 2,437.33 |  | CN.MB.D16.2200 | MOD-02-CN-11820 | TO |
|  | 7 | **DOORS/WINDOWS** |  | 2026-09-28 | 2027-03-22 |  |  |  |  |  |  |  |  |  |  |  |  |
| MLTX-02-005-CN-12660 |  | Preliminary Works For Doors | 13d | 2026-09-28 A | 2026-09-28 A | MLTX-02-005-CN-12510 | 100% | 2026-07-04 | 2026-07-18 |  |  | Labor [180 h]; Skilled Labor [60 h]; Metal Door D2 : [0.8] | 7,799.44 | 7,799.44 | CN.MB.D08.1810 | MOD-02-CN-11110 | TO |
| MLTX-02-005-CN-12670 |  | Finalize Metal Doors for Toilets Building | 11d | 2026-09-29 A | 2026-09-29 A | MLTX-02-005-CN-12660 | 100% | 2026-07-19 | 2026-07-30 |  |  | Labor [240 h]; Skilled Labor [90 h]; Metal Door D2 : [0.2] | 1,949.86 | 1,949.86 | CN.MB.D08.1820 | MOD-02-CN-11120 | TO |
| MLTX-02-005-CN-13120 |  | Preliminary Works For Windows/Curtain Wall | 12d | 2027-02-20 | 2027-03-06 | MLTX-02-005-CN-12510, MLTX-02-005-PR-10220, MLTX-02-005-CN-12120 |  |  |  | -75d | 0d | Labor [120 h]; Skilled Labor [40 h]; Supply and install curtain wall with structural glass [0.9] | 52,646.24 |  | CN.MB.D08.1810 | MOD-02-CN-11100 | TO |
| MLTX-02-005-CN-13040 |  | Finalize Glazzed Curtain Wall Works | 11d | 2027-03-07 | 2027-03-22 | MLTX-02-005-CN-13140, MLTX-02-005-CN-13120, MLTX-02-005-CN-11950 |  |  |  | -65d | 22d | Labor [320 h]; Skilled Labor [120 h]; Supply and install curtain wall with structural glass [0.1] | 5,849.58 |  | CN.MB.D08.1840 | MOD-02-CN-11130 | TO |
|  | 4 | **METAL WORKS** |  | 2026-09-06 | 2026-11-28 |  |  |  |  |  |  |  |  |  |  |  |  |
| MLTX-02-005-CN-12990 |  | Installation of Galvanized Steel Roof Scupper | 4d | 2026-09-06 A | 2026-09-06 A | MLTX-02-005-CN-13000 | 100% | 2026-10-04 | 2026-10-07 |  |  | Labor [200 h]; Skilled Labor [120 h]; Plumber [80 h]; Supply and install and testing of overflow galvanized steel roof scupper [1] | 3,899.72 | 3,899.72 | CN.MB.D05.1810 | MOD-02-CN-11170 | TO |
| MLTX-02-005-CN-12610 |  | Installation of Galvanized Steel Ladder | 14d | 2026-10-18 A | 2026-10-18 A | MLTX-02-005-CN-12660 | 100% | 2026-11-23 | 2026-12-08 |  |  | Skilled Labor [120 h]; Driver [80 h]; Crane [80 h]; Supply and install Galvanized steel ladder [1] | 5,849.58 | 5,849.58 | CN.MB.D05.1760 | MOD-02-CN-11150 | TO |
| MLTX-02-005-CN-12980 |  | Installation of DI Cover for Tank | 14d | 2026-11-12 | 2026-11-28 | MLTX-02-005-CN-12610, MLTX-02-005-CN-12590, MLTX-02-005-EN-8080, MLTX-02-005-PR-9290 |  |  |  | -30d | 0d | Skilled Labor [120 h]; Driver [80 h]; Crane [80 h]; Supply and install heavy duty ductile iron steel cover [1] | 3,899.72 |  | CN.MB.D05.1770 | MOD-02-CN-11160 | TO |
|  | 6 | **FINISHING WORKS** |  | 2026-08-17 | 2027-03-22 |  |  |  |  |  |  |  |  |  |  |  |  |
|  | 1 | **FLOOR FINISHES** |  | 2026-09-15 | 2027-03-22 |  |  |  |  |  |  |  |  |  |  |  |  |
| MLTX-02-005-CN-12680 |  | Creamic Tiles Floor Finish Works | 2d | 2026-09-15 A | 2026-09-16 A | MLTX-02-005-CN-12690, MLTX-02-005-PR-10180, MLTX-02-005-CN-12750, MLTX-02-005-EN-11060 | 100% | 2026-09-24 | 2026-09-26 |  |  | Labor [200 h]; Tile Fixer [80 h]; Floor Finishes Anti-slip glazed grey ceramic tiles, 600*600 mm [13]; Floor Finishes Light grey Ceramic tiles, 300*300 mm [48] | 11,894.39 | 11,894.39 | CN.MB.D09.1840 | MOD-02-CN-11200 | TO |
| MLTX-02-005-CN-13070 |  | Ceramic Skirting Tiles Finish Works | 4d | 2026-10-04 A | 2026-10-04 A | MLTX-02-005-CN-13020, MLTX-02-005-CN-13280 | 100% | 2026-10-11 | 2026-10-14 |  |  | Labor [300 h]; Tile Fixer [40 h]; Floor Finishes Anti-slip glazed ceramic skirting tiles 600*100*10 mm [12] | 1,169.88 | 1,169.88 | CN.MB.D09.1980 | MOD-02-CN-11230 | TO |
| MLTX-02-005-CN-13050 |  | Granite Tiles Floor Finish Works | 6d | 2026-10-20 | 2026-10-26 | MLTX-02-005-CN-12680, MLTX-02-005-CN-13020 |  |  |  | -2d | 28d | Labor [200 h]; Tile Fixer [80 h]; Floor Finishes Anti-slip granite tiles for entrance [6] | 2,924.82 |  | CN.MB.D09.1960 | MOD-02-CN-11210 | TO |
| MLTX-02-005-CN-13060 |  | Epoxy Coat on Concrete Floor | 23d | 2027-02-20 | 2027-03-22 | MLTX-02-005-CN-13140, MLTX-02-005-CN-13260, MLTX-02-005-CN-12120, MLTX-02-005-CN-14740, MLTX-02-005-CN-12190, MLTX-02-005-CN-13030 |  |  |  | -65d | 22d | Labor [160 h]; Skilled Labor [60 h]; Floor Finishes Epoxy paint on concrete slab on grade [6] | 1,169.94 |  | CN.MB.D09.1970 | MOD-02-CN-11220 | TO |

| ID | WBS | Activity | Duration | Start | Finish | Predecessors | Complete | Remaining | Planned start | Planned finish | Total float | Free float | Resources | Cost | Actual cost | New Activity Code | New Activity ID | Construction | Old Activity ID - MK | Procurement |
| --- | --- | --- | --- | --- | --- | --- | --- | --- | --- | --- | --- | --- | --- | --- | --- | --- | --- | --- | --- | --- |
|  | 2 | **WALL FINISHES** |  | 2026-08-17 | 2026-12-12 |  |  |  |  |  |  |  |  |  |  |  |  |  |  |  |
| MLTX-02-005-CN-12690 |  | Preliminary Works for Wall Finish Works including Plastering (Internal) | 3d | 2026-08-17 A | 2026-08-19 A | MLTX-02-005-CN-13230, MLTX-02-005-CN-12880, MLTX-02-005-EN-11040, MLTX-02-005-CN-12900, MLTX-02-005-CN-12850, MLTX-02-005-CN-12940, MLTX-02-005-CN-12860, MLTX-02-005-CN-12830 | 100% |  | 2026-09-15 | 2026-09-17 |  |  | Labor [100 h]; Skilled Labor [60 h]; Wall Finishes Supply and install plastering to walls [157] | 18,315.62 | 18,315.62 | CN.MB.D09.1870 | MOD-02-CN-11280 | TO |  |  |
| MLTX-02-005-CN-13000 |  | Preliminary Works for Wall Finish Works (External) | 6d | 2026-08-19 A | 2026-08-31 A | MLTX-02-005-CN-12690, MLTX-02-005-CN-13020 | 100% |  | 2026-09-27 | 2026-10-03 |  |  | Labor [200 h]; Skilled Labor [80 h]; Wall Finishes Supply and install acrylic paint for external elevations [37.33] | 6,551.63 |  | CN.MB.D09.1900 | MOD-02-CN-11290 | TO |  |  |
| MLTX-02-005-CN-13020 |  | Ceramic Finish Works for Walls | 5d | 2026-09-01 A | 2026-09-03 A | MLTX-02-005-CN-12690 | 100% |  | 2026-09-20 | 2026-09-26 |  |  | Labor [200 h]; Driver [100 h]; Forklift [180 h]; Tile Fixer [120 h]; Wall Finishes Supply and install 300*300 mm ceramic [115] | 15,696.35 | 15,696.35 | CN.MB.D09.1920 | MOD-02-CN-11310 | TO |  |  |
| MLTX-02-005-CN-13010 |  | Painting Finish Works for External Walls | 3d | 2026-09-27 A | 2026-10-22 | MLTX-02-005-CN-12760, MLTX-02-005-CN-13000, MLTX-02-005-CN-13020, MLTX-02-005-CN-13240, MLTX-02-005-CN-13300 | 90% | 3d | 2026-10-18 | 2026-10-20 | 1d | 31d | Labor [200 h]; Skilled Labor [60 h]; Wall Finishes Supply and install acrylic paint for external elevations [56]; Wall Finishes Supply and spray decorative paint ( profile ) for external elevations [0.67] | 35,825.58 |  | CN.MB.D09.1910 | MOD-02-CN-11300 | TO |  |  |
| MLTX-02-005-CN-13240 |  | Painting Finish Works for Internal Walls | 2d | 2026-09-29 A | 2026-10-06 A | MLTX-02-005-CN-13000 | 100% |  | 2026-10-04 | 2026-10-05 |  |  | Labor [160 h]; Skilled Labor [40 h]; Wall Finishes Supply and install 2 coats of acrylic paint at internal walls and columns [120] | 2,340 | 2,340 | CN.MB.D09.1910 | MOD-02-CN-11300 | TO |  |  |
| MLTX-02-005-CN-13130 |  | Stone Cladding Finish Works for External Walls | 5d | 2026-10-04 A | 2026-10-04 A | MLTX-02-005-CN-13020 | 100% |  | 2026-09-27 | 2026-10-01 |  |  | Labor [300 h]; Driver [80 h]; Forklift [150 h]; Tile Fixer [100 h]; Wall Finishes Supply and install Riyadh stone cladding (300x600mm) [46.67] | 2,275 | 2,275 | CN.MB.D09.1920 | MOD-02-CN-11250 | TO |  |  |
| MLTX-02-005-CN-13150 |  | Granite Capping for Parpet | 12d | 2026-11-10 | 2026-11-23 | MLTX-02-005-CN-12650 |  |  |  |  | -26d | 4d | Labor [160 h]; Driver [40 h]; Forklift [60 h]; Tile Fixer [40 h]; Wall Finishes Supply and install granite capping for parapet [38] | 8,150.24 |  | CN.MB.D09.1930 | MOD-02-CN-11270 | TO |  |  |
| MLTX-02-005-CN-13030 |  | Phenolic Partitions for Toilets | 7d | 2026-11-29 | 2026-12-06 | MLTX-02-005-CN-13290, MLTX-02-005-CN-12700, MLTX-02-005-CN-13070, MLTX-02-005-CN-13130, MLTX-02-005-CN-12980, MLTX-02-005-PR-10210, MLTX-02-005-CN-13010, MLTX-02-005-CN-12800, MLTX-02-005-CN-12720, MLTX-02-005-CN-12730, MLTX-02-005-CN-13050, MLTX-02-005-CN-13150 |  |  |  |  | -30d | 0d | Labor [700 h]; Driver [340 h]; Forklift [330 h]; Tile Fixer [220 h]; Wall Finishes Supply and install solid phenolic toilets partition board [40] | 31,197.6 |  | CN.MB.D09.1930 | MOD-02-CN-11320 | TO |  |  |
| MLTX-02-005-CN-13140 |  | Glass Partitions including all accessories and doors | 5d | 2026-12-07 | 2026-12-12 | MLTX-02-005-CN-13030, MLTX-02-005-EN-11140, MLTX-02-005-CN-12980 |  |  |  |  | -30d | 0d | Labor [350 h]; Skilled Labor [120 h]; Wall Finishes Supply and install 12 mm glass partition [7] | 13,649.02 |  | CN.MB.D09.1930 | MOD-02-CN-11260 | TO |  |  |
|  | 3 | **CELLING FINISHES** |  | 2026-09-28 | 2026-10-01 |  |  |  |  |  |  |  |  |  |  |  |  |  |  |  |
| MLTX-02-005-CN-13290 |  | Gypsum Board Suspended Ceiling Finish Works For Ceiling | 5d | 2026-09-28 A | 2026-09-29 A | MLTX-02-005-CN-13020 | 100% |  | 2026-09-27 | 2026-10-01 |  |  | Labor [400 h]; Skilled Labor [120 h]; CEILING FINISHES Supply and install 12.5mm thk, moisture resistant gypsum board suspended ceiling; CEILING FINISHES Supply and install 12.5mm thk, gypsum board suspended ceiling | 5,771.52 |  | CN.MB.D09.1950 | MOD-02-CN-11360 | TO |  |  |
| MLTX-02-005-CN-13300 |  | Preliminary Works for Ceiling Painting Works | 13d | 2026-09-28 A | 2026-09-29 A | MLTX-02-005-CN-12690 | 100% |  | 2026-09-19 | 2026-10-04 |  |  | Labor [200 h]; Skilled Labor [90 h]; CEILING FINISHES Supply and install 12.5mm thk, moisture resistant gypsum board suspended ceiling; CEILING FINISHES Supply and install 12.5mm thk, gypsum board suspended ceiling | 5,771.52 |  | CN.MB.D09.1890 | MOD-02-CN-11340 | TO |  |  |
| MLTX-02-005-CN-13280 |  | Painting Finish Works for Ceiling | 13d | 2026-09-30 A | 2026-10-01 A | MLTX-02-005-CN-12300 | 100% |  | 2026-09-15 | 2026-09-30 |  |  | Labor [200 h]; Skilled Labor [60 h]; CEILING FINISHES Supply and install 2 coats of acrylic paint at under side slab | 1,357.11 |  | CN.MB.D09.1940 | MOD-02-CN-11350 | TO |  |  |
|  | 8 | **SPECIALTIES WORK** |  | 2026-10-04 | 2027-03-29 |  |  |  |  |  |  |  |  |  |  |  |  |  |  |  |
| MLTX-02-005-CN-12700 |  | Sanitary Fixtures and Accessories Works | 3d | 2026-10-04 A | 2026-10-22 | MLTX-02-005-PR-10240, MLTX-02-005-CN-13020 | 80% | 3d | 2026-09-27 | 2026-09-29 | 1d | 31d | Plumber [100 h]; Supply and install toilet Accessories [1] | 14,623.96 |  | CN.MB.D10.1890 | MOD-02-CN-11390 | TO |  |  |
| MLTX-02-005-CN-13160 |  | Installation of Phenolic Locker | 12d | 2027-01-05 | 2027-01-18 | MLTX-02-005-CN-13030, MLTX-02-005-CN-12730, MLTX-02-005-CN-12840, MLTX-02-005-PR-10440, MLTX-02-005-EN-11460, MLTX-02-005-PR-10400, MLTX-02-005-EN-12060, MLTX-02-005-PR-10420, MLTX-02-005-EN-11480, MLTX-02-005-CN-12720, MLTX-02-005-CN-14740, MLTX-02-005-CN-12190, MLTX-02-005-CN-13140 |  |  |  |  | -21d | 65d | Labor [100 h]; Skilled Labor [60 h]; phenolic locker Size 2400*550*2200 mm [1]; phenolic locker Size 3500*550*2200 mm [1] | 24,373.26 |  | CN.MB.D10.1900 | MOD-02-CN-11380 | TO |  |  |
| MLTX-02-005-CN-12710 |  | Installation of MODON Logo on the entrance | 17d | 2027-03-07 | 2027-03-29 | MLTX-02-005-CN-13240, MLTX-02-005-PR-10340, MLTX-02-005-CN-13120, MLTX-02-005-CN-13140, MLTX-02-005-CN-12840 |  |  |  |  | -71d | 16d | Labor [250 h]; Driver [100 h]; Electrician [100 h]; Crane [100 h]; Supply and install MODON logo [1] | 19,498.61 |  | CN.MB.D10.1900 | MOD-02-CN-11400 | TO |  |  |
|  | PRO | **PROCUREMENT** |  | 2026-04-04 | 2027-03-14 |  |  |  |  |  |  |  |  |  |  |  |  |  |  |  |
|  | SLI | **SHORT LEAD ITEM** |  | 2026-04-04 | 2027-03-14 |  |  |  |  |  |  |  |  |  |  |  |  |  |  |  |
|  | TOI | **TOILET/SERVICE WORKS** |  | 2026-04-04 | 2026-12-15 |  |  |  |  |  |  |  |  |  |  |  |  |  |  |  |
|  | 1 | **STEEL REINFORCEMENT** |  | 2026-04-04 | 2026-07-07 |  |  |  |  |  |  |  |  |  |  |  |  |  |  |  |
| MLTX-02-005-PR-9970 |  | PO for Steel Reinforcement | 5d | 2026-04-04 A | 2026-05-18 A | MLTX-02-005-EN-9100 | 100% |  | 2026-05-20 | 2026-05-25 |  |  | Purchaser [150 h] |  |  |  | MOD-02-PR-7880 |  | MAK-01-PR-1000 | TO |
| MLTX-02-005-PR-10070 |  | Material Delivery of Steel Reinforcement | 5d | 2026-07-07 A | 2026-07-07 A | MLTX-02-005-PR-9970 | 100% |  | 2026-05-30 | 2026-06-03 |  |  | Purchaser [156.8 h] |  |  |  | MOD-02-PR-7900 |  | MAK-01-PR-1020 | TO |

| ID | WBS | Activity | Duration | Start | Finish | Predecessors | Complete | Planned start | Planned finish | Resources | New Activity ID | Old Activity ID - MK | Procurement |
| --- | --- | --- | --- | --- | --- | --- | --- | --- | --- | --- | --- | --- | --- |
|  | 3 | **CONCRETE BLOCKS** |  | 2026-04-09 | 2026-07-07 |  |  |  |  |  |  |  |  |
| MLTX-02-005-PR-10150 |  | PO for Concrete Blocks | 5d | 2026-04-09 A | 2026-05-18 A | MLTX-02-005-PR-9970, MLTX-02-005-EN-9010, MLTX-02-005-EN-9200 | 100% | 2026-05-30 | 2026-06-03 | Purchaser [150 h] | MOD-02-PR-7950 | MAK-01-PR-1000 | TO |
| MLTX-02-005-PR-10160 |  | Material Delivery of Concrete Blocks | 8d | 2026-07-07 A | 2026-07-07 A | MLTX-02-005-PR-10150 | 100% | 2026-06-04 | 2026-06-13 | Purchaser [150 h] | MOD-02-PR-7970 | MAK-01-PR-1020 | TO |
|  | 6 | **FLOOR/WALL TILES** |  | 2026-08-18 | 2026-08-20 |  |  |  |  |  |  |  |  |
| MLTX-02-005-PR-10170 |  | PO for Tilling Materials | 5d | 2026-08-18 A | 2026-08-18 A | MLTX-02-005-PR-10150, MLTX-02-005-EN-9220, MLTX-02-005-PR-10020 | 100% | 2026-08-22 | 2026-08-26 | Purchaser [150 h] | MOD-02-PR-8030 | MAK-01-PR-1000 | TO |
| MLTX-02-005-PR-10180 |  | Material Delivery of Tailling Material | 13d | 2026-08-20 A | 2026-08-20 A | MLTX-02-005-PR-10170, MLTX-02-005-PR-10020 | 100% | 2026-08-27 | 2026-09-10 | Purchaser [150 h] | MOD-02-PR-8050 | MAK-01-PR-1020 | TO |
|  | 7 | **SUSPENDED CEILING** |  | 2026-07-28 | 2026-08-18 |  |  |  |  |  |  |  |  |
| MLTX-02-005-PR-10190 |  | PO for Suspend Ceiling | 5d | 2026-07-28 A | 2026-07-28 A | MLTX-02-005-EN-9240, MLTX-02-005-PR-10240 | 100% | 2026-10-01 | 2026-10-06 | Purchaser [150 h] | MOD-02-PR-8070 | MAK-01-PR-1000 | TO |
| MLTX-02-005-PR-10200 |  | Material Delivery of Suspend Ceiling | 13d | 2026-08-18 A | 2026-08-18 A | MLTX-02-005-PR-10190, MLTX-02-005-PR-10240 | 100% | 2026-10-07 | 2026-10-21 | Purchaser [150 h] | MOD-02-PR-8090 | MAK-01-PR-1020 | TO |
|  | 8 | **DOORS/WINDOWS** |  | 2026-09-15 | 2026-09-20 |  |  |  |  |  |  |  |  |
| MLTX-02-005-PR-10210 |  | PO for Doors/Windows | 15d | 2026-09-15 A | 2026-09-15 A | MLTX-02-005-EN-9340, MLTX-02-005-EN-9120, MLTX-02-005-EN-9650, MLTX-02-005-EN-9490, MLTX-02-005-EN-9110, MLTX-02-005-EN-9550, MLTX-02-005-EN-9380, MLTX-02-005-EN-9240, MLTX-02-005-EN-9730, MLTX-02-005-EN-9090, MLTX-02-005-PR-10170, MLTX-02-005-EN-8980, MLTX-02-005-EN-9910, MLTX-02-005-EN-9140, MLTX-02-005-EN-9870, MLTX-02-005-EN-9510, MLTX-02-005-EN-9830, MLTX-02-005-EN-9360, MLTX-02-005-EN-9900, MLTX-02-005-EN-9810, MLTX-02-005-EN-9630, MLTX-02-005-EN-9450, MLTX-02-005-EN-9300, MLTX-02-005-EN-9890, MLTX-02-005-EN-9260, MLTX-02-005-EN-9850, MLTX-02-005-EN-9750, MLTX-02-005-EN-9430, MLTX-02-005-EN-9670, MLTX-02-005-EN-9530, MLTX-02-005-EN-9690, MLTX-02-005-EN-9710, MLTX-02-005-PR-10850 | 100% | 2026-10-01 | 2026-10-18 | Purchaser [150 h] | MOD-02-PR-8110 | MAK-01-PR-1000 | TO |
| MLTX-02-005-PR-10220 |  | Material Delivery for Doors/Windows | 25d | 2026-09-20 A | 2026-09-20 A | MLTX-02-005-PR-10210, MLTX-02-005-PR-10090 | 100% | 2026-10-19 | 2026-11-16 | Purchaser [150 h] | MOD-02-PR-8130 | MAK-01-PR-1020 | TO |
|  | 11 | **WATER SUPPLY PIPES** |  | 2026-07-07 | 2026-07-08 |  |  |  |  |  |  |  |  |
| MLTX-02-005-PR-10250 |  | PO for Water Supply Pipes | 5d | 2026-07-07 A | 2026-07-07 A | MLTX-02-005-EN-9300, MLTX-02-005-EN-9450, MLTX-02-005-PR-10170 | 100% | 2026-08-27 | 2026-09-01 | Purchaser [150 h] | MOD-02-PR-8230 | MAK-01-PR-1000 | TO |
| MLTX-02-005-PR-10260 |  | Material Delivery for Water Supply Pipes | 7d | 2026-07-08 A | 2026-07-08 A | MLTX-02-005-PR-10250, MLTX-02-005-PR-10170 | 100% | 2026-09-02 | 2026-09-09 | Purchaser [150 h] | MOD-02-PR-8250 | MAK-01-PR-1020 | TO |
|  | 12 | **SEWAGE/DRAINAGE PIPES** |  | 2026-06-13 | 2026-06-20 |  |  |  |  |  |  |  |  |
| MLTX-02-005-PR-10280 |  | Material Delivery for Sewage/Drainage Pipes | 7d | 2026-06-13 A | 2026-06-13 A | MLTX-02-005-PR-10270, MLTX-02-005-PR-10110 | 100% | 2026-08-25 | 2026-09-01 | Purchaser [150 h] | MOD-02-PR-8290 | MAK-01-PR-1020 | TO |
| MLTX-02-005-PR-10270 |  | PO for Sewage/Drainage Pipes | 5d | 2026-06-20 A | 2026-06-20 A | MLTX-02-005-EN-9320 | 100% | 2026-05-20 | 2026-05-25 | Purchaser [150 h] | MOD-02-PR-8270 | MAK-01-PR-1000 | TO |
|  | 10 | **SANITARY FIXTURES** |  | 2026-07-28 | 2026-07-28 |  |  |  |  |  |  |  |  |
| MLTX-02-005-PR-10230 |  | PO for Sanitary Fixtures | 5d | 2026-07-28 A | 2026-07-28 A | MLTX-02-005-EN-9280, MLTX-02-005-PR-10270 | 100% | 2026-05-30 | 2026-06-03 | Purchaser [150 h] | MOD-02-PR-8190 | MAK-01-PR-1000 | TO |
| MLTX-02-005-PR-10240 |  | Material Delivery for Sanitary Fixtures | 13d | 2026-07-28 A | 2026-07-28 A | MLTX-02-005-PR-10230, MLTX-02-005-PR-10260 | 100% | 2026-09-10 | 2026-09-26 | Purchaser [150 h] | MOD-02-PR-8210 | MAK-01-PR-1020 | TO |
|  | 16 | **PACKAGE AC UNITS** |  | 2026-07-07 | 2026-07-07 |  |  |  |  |  |  |  |  |
| MLTX-02-005-PR-10370 |  | PO for Package AC Units | 5d | 2026-07-07 A | 2026-07-07 A | MLTX-02-005-EN-9410, MLTX-02-005-EN-9280 | 100% | 2026-06-10 | 2026-06-15 | Purchaser [150 h] | MOD-02-PR-8310 | MAK-01-PR-1000 | TO |
| MLTX-02-005-PR-10380 |  | Material Delivery for Package AC Units | 15d | 2026-07-07 A | 2026-07-07 A | MLTX-02-005-PR-10370 | 100% | 2026-06-16 | 2026-07-02 | Purchaser [150 h] | MOD-02-PR-8330 | MAK-01-PR-1020 | TO |

| ID | WBS | Activity | Duration | Start | Finish | Predecessors | Complete | Planned start | Planned finish | Total float | Free float | Resources | New Activity ID | Old Activity ID - MK | Procurement |
| --- | --- | --- | --- | --- | --- | --- | --- | --- | --- | --- | --- | --- | --- | --- | --- |
|  | 17 | **AIR DIFUSSERS/GRILLS** |  | 2026-08-18 | 2026-08-20 |  |  |  |  |  |  |  |  |  |  |
| MLTX-02-005-PR-10390 |  | PO for Air Diffusers/Grills | 5d | 2026-08-18 A | 2026-08-18 A | MLTX-02-005-PR-10230, MLTX-02-005-EN-9430, MLTX-02-005-PR-10210 | 100% | 2026-10-19 | 2026-10-24 |  |  | Purchaser [150 h] | MOD-02-PR-8350 | MAK-01-PR-1000 | TO |
| MLTX-02-005-PR-10400 |  | Material Delivery for Air Diffusers/Grills | 15d | 2026-08-20 A | 2026-08-20 A | MLTX-02-005-PR-10390, MLTX-02-005-PR-10210 | 100% | 2026-10-25 | 2026-11-10 |  |  | Purchaser [150 h] | MOD-02-PR-8370 | MAK-01-PR-1020 | TO |
|  | 18 | **GALVANIZED DUCTS** |  | 2026-08-20 | 2026-08-20 |  |  |  |  |  |  |  |  |  |  |
| MLTX-02-005-PR-10410 |  | PO for Galvanized Ducts | 5d | 2026-08-20 A | 2026-08-20 A | MLTX-02-005-EN-9450, MLTX-02-005-PR-10230, MLTX-02-005-PR-10210 | 100% | 2026-10-19 | 2026-10-24 |  |  | Purchaser [150 h] | MOD-02-PR-8390 | MAK-01-PR-1000 | TO |
| MLTX-02-005-PR-10420 |  | Material Delivery for Galvanized Ducts | 15d | 2026-08-20 A | 2026-08-20 A | MLTX-02-005-PR-10410, MLTX-02-005-PR-10210 | 100% | 2026-10-25 | 2026-11-10 |  |  | Purchaser [150 h] | MOD-02-PR-8410 | MAK-01-PR-1020 | TO |
|  | 19 | **EXHAUST FANS** |  | 2026-08-18 | 2026-08-18 |  |  |  |  |  |  |  |  |  |  |
| MLTX-02-005-PR-10430 |  | PO for Exhaust Fans | 5d | 2026-08-18 A | 2026-08-18 A | MLTX-02-005-EN-9470, MLTX-02-005-PR-10230 | 100% | 2026-06-10 | 2026-06-15 |  |  | Purchaser [150 h] | MOD-02-PR-8430 | MAK-01-PR-1000 | TO |
| MLTX-02-005-PR-10440 |  | Material Delivery for Exhaust Fans | 10d | 2026-08-18 A | 2026-08-18 A | MLTX-02-005-PR-10430, MLTX-02-005-PR-10210 | 100% | 2026-10-19 | 2026-10-29 |  |  | Purchaser [150 h] | MOD-02-PR-8450 | MAK-01-PR-1020 | TO |
|  | 13 | **LIGHTING FIXTURES** |  | 2026-07-07 | 2026-11-11 |  |  |  |  |  |  |  |  |  |  |
| MLTX-02-005-PR-10290 |  | PO for Lighting Fixtures | 5d | 2026-07-07 A | 2026-07-07 A | MLTX-02-005-EN-9280, MLTX-02-005-EN-9340 | 100% | 2026-06-10 | 2026-06-15 |  |  | Purchaser [150 h] | MOD-02-PR-8470 | MAK-01-PR-1000 | TO |
| MLTX-02-005-PR-10300 |  | Material Delivery for Lighting Fixtures | 20d | 2026-10-20 | 2026-11-11 | MLTX-02-005-PR-10430, MLTX-02-005-PR-10290 |  |  |  | -72d | 12d | Purchaser [150 h] | MOD-02-PR-8490 | MAK-01-PR-1020 | TO |
|  | 14 | **SWITCHES/SOCKETS** |  | 2026-10-20 | 2026-11-25 |  |  |  |  |  |  |  |  |  |  |
| MLTX-02-005-PR-10310 |  | PO for Switches/Sockets | 15d | 2026-10-20 | 2026-11-05 | MLTX-02-005-PR-10290, MLTX-02-005-EN-9360 |  |  |  | -84d | 0d | Purchaser [150 h] | MOD-02-PR-8510 | MAK-01-PR-1000 | TO |
| MLTX-02-005-PR-10320 |  | Material Delivery for Switches/Sockets | 17d | 2026-11-07 | 2026-11-25 | MLTX-02-005-PR-10310 |  |  |  | -84d | 0d | Purchaser [150 h] | MOD-02-PR-8530 | MAK-01-PR-1020 | TO |
|  | 15 | **EARTHING SYSTEM** |  | 2026-08-10 | 2026-08-10 |  |  |  |  |  |  |  |  |  |  |
| MLTX-02-005-PR-10110 |  | PO for Earthing System | 5d | 2026-08-10 A | 2026-08-10 A | MLTX-02-005-EN-9160 | 100% | 2026-08-19 | 2026-08-24 |  |  | Purchaser [150 h] | MOD-02-PR-8550 | MAK-01-PR-1290 | TO |
| MLTX-02-005-PR-10120 |  | Material Delivery for Earthing System | 15d | 2026-08-10 A | 2026-08-10 A | MLTX-02-005-PR-10110 | 100% | 2026-08-25 | 2026-09-10 |  |  | Purchaser [150 h] | MOD-02-PR-8570 | MAK-01-PR-1310 | TO |
|  | 5 | **DISTRIBUTION PANNELS** |  | 2026-10-20 | 2026-11-11 |  |  |  |  |  |  |  |  |  |  |
| MLTX-02-005-PR-10130 |  | PO for Distribution Panels | 5d | 2026-10-20 | 2026-10-25 | MLTX-02-005-EN-9180, MLTX-02-005-PR-10240 |  |  |  | -4d | 0d | Purchaser [150 h] | MOD-02-PR-8590 | MAK-01-PR-LLI-1060 | TO |
| MLTX-02-005-PR-10140 |  | Material Delivery for Distribution Panels | 15d | 2026-10-26 | 2026-11-11 | MLTX-02-005-PR-10130, MLTX-02-005-PR-10240 |  |  |  | -4d | 26d | Purchaser [150 h] | MOD-02-PR-8610 | MAK-01-PR-LLI-1100 | TO |
|  | 9 | **FURNITURES** |  | 2026-10-20 | 2026-12-15 |  |  |  |  |  |  |  |  |  |  |
| MLTX-02-005-PR-10330 |  | PO for Furnitures | 19d | 2026-10-20 | 2026-11-10 | MLTX-02-005-EN-9380, MLTX-02-005-PR-10430 |  |  |  | -89d | 0d | Purchaser [150 h] | MOD-02-PR-8150 | MAK-01-PR-1000 | TO |
| MLTX-02-005-PR-10340 |  | Material Delivery for Furnitures | 30d | 2026-11-11 | 2026-12-15 | MLTX-02-005-PR-10330 |  |  |  | -89d | 0d | Purchaser [150 h] | MOD-02-PR-8170 | MAK-01-PR-1020 | TO |

| ID | WBS | Activity | Duration | Start | Finish | Predecessors | Complete | Planned start | Planned finish | Total float | Free float | Resources | New Activity ID | Old Activity ID - MK | Procurement |
| --- | --- | --- | --- | --- | --- | --- | --- | --- | --- | --- | --- | --- | --- | --- | --- |
|  | PLG | **PLAYGROUND WORKS** |  | 2026-04-04 | 2027-03-14 |  |  |  |  |  |  |  |  |  |  |
|  | 5 | **PVC MEMBRANE** |  | 2026-04-04 | 2026-12-10 |  |  |  |  |  |  |  |  |  |  |
| MLTX-02-005-PR-10530 |  | PO for PVC Membrane | 4d | 2026-04-04 A | 2026-05-19 A | MLTX-02-005-EN-9570, MLTX-02-005-PR-9980 | 100% | 2026-06-24 | 2026-06-28 |  |  | Purchaser [150 h] | MOD-02-PR-8640 | MAK-01-PR-1120 | PL |
| MLTX-02-005-PR-10540 |  | Material Delivery for PVC Membrane | 30d | 2026-11-07 | 2026-12-10 | MLTX-02-005-PR-10530, MLTX-02-005-PR-10510 |  |  |  | -20d | 57d | Purchaser [150 h] | MOD-02-PR-8650 | MAK-01-PR-1130 | PL |
|  | 15 | **ARTIFICIAL TURF** |  | 2026-04-04 | 2026-11-23 |  |  |  |  |  |  |  |  |  |  |
| MLTX-02-005-PR-10770 |  | PO for Artificial TURF | 5d | 2026-04-04 A | 2026-05-19 A | MLTX-02-005-EN-9920, MLTX-02-005-PR-10030 | 100% | 2026-09-24 | 2026-09-29 |  |  | Purchaser [150 h] | MOD-02-PR-8830 | MAK-01-PR-1120 | PL |
| MLTX-02-005-PR-10780 |  | Material Delivery for Artificial TURF | 30d | 2026-10-20 | 2026-11-23 | MLTX-02-005-PR-10770, MLTX-02-005-PR-10830 |  |  |  | -8d | 43d | Purchaser [150 h] | MOD-02-PR-8850 | MAK-01-PR-1130 | PL |
|  | 20 | **RUBBER GRANULES** |  | 2026-04-04 | 2026-11-23 |  |  |  |  |  |  |  |  |  |  |
| MLTX-02-005-PR-10790 |  | PO for Rubber Granules | 5d | 2026-04-04 A | 2026-05-19 A | MLTX-02-005-EN-9930 | 100% | 2026-06-14 | 2026-06-18 |  |  | Purchaser [150 h] | MOD-02-PR-8870 | MAK-01-PR-1120 | PL |
| MLTX-02-005-PR-10800 |  | Material Delivery for Rubber Granules | 30d | 2026-10-20 | 2026-11-23 | MLTX-02-005-PR-10790, MLTX-02-005-PR-10900 |  |  |  | -13d | 15d | Purchaser [150 h] | MOD-02-PR-8890 | MAK-01-PR-1130 | PL |
|  | 21 | **PADEL GLASS** |  | 2026-04-04 | 2026-11-23 |  |  |  |  |  |  |  |  |  |  |
| MLTX-02-005-PR-10810 |  | PO for Padel Glass | 5d | 2026-04-04 A | 2026-05-19 A | MLTX-02-005-EN-9940, MLTX-02-005-PR-9980 | 100% | 2026-06-28 | 2026-07-02 |  |  | Purchaser [150 h] | MOD-02-PR-8910 | MAK-01-PR-1120 | PL |
| MLTX-02-005-PR-10820 |  | Material Delivery for Padel Glass | 30d | 2026-10-20 | 2026-11-23 | MLTX-02-005-PR-10810, MLTX-02-005-PR-10830 |  |  |  | -28d | 0d | Purchaser [150 h] | MOD-02-PR-8930 | MAK-01-PR-1130 | PL |
|  | 22 | **PADEL WIRE MESH/STEEL SETS** |  | 2026-04-09 | 2026-11-05 |  |  |  |  |  |  |  |  |  |  |
| MLTX-02-005-PR-10830 |  | PO for Wire Mesh/Steel Sets | 5d | 2026-04-09 A | 2026-05-19 A | MLTX-02-005-PR-10810, MLTX-02-005-EN-9950, MLTX-02-005-PR-10030 | 100% | 2026-09-10 | 2026-09-15 |  |  | Purchaser [150 h] | MOD-02-PR-8950 | MAK-01-PR-1120 | PL |
| MLTX-02-005-PR-10840 |  | Material Delivery for Wire Mesh/Steel Sets | 15d | 2026-10-20 | 2026-11-05 | MLTX-02-005-PR-10830, MLTX-02-005-PR-10030 |  |  |  | -18d | 0d | Purchaser [150 h] | MOD-02-PR-8970 | MAK-01-PR-1130 | PL |
|  | 1 | **AGGREGATE BASE COURSE** |  | 2026-04-04 | 2026-07-07 |  |  |  |  |  |  |  |  |  |  |
| MLTX-02-005-PR-9980 |  | PO for Aggregate Base Course | 5d | 2026-04-04 A | 2026-05-14 A | MLTX-02-005-EN-9030 | 100% | 2026-06-14 | 2026-06-18 |  |  | Purchaser [150 h] | MOD-02-PR-8990 | MAK-01-PR-1090 | PL |
| MLTX-02-005-PR-9990 |  | Material Delivery for Aggregate Base Course | 7d | 2026-07-07 A | 2026-07-07 A | MLTX-02-005-PR-9980 | 100% | 2026-06-20 | 2026-06-27 |  |  | Purchaser [150 h] | MOD-02-PR-9000 | MAK-01-PR-1100 | PL |
|  | 16 | **PACKAGE AC UNITS** |  | 2026-07-07 | 2026-07-07 |  |  |  |  |  |  |  |  |  |  |
| MLTX-02-005-PR-10450 |  | PO for Package AC Units | 5d | 2026-07-07 A | 2026-07-07 A | MLTX-02-005-PR-10370, MLTX-02-005-PR-10770, MLTX-02-005-EN-9960, MLTX-02-005-PR-10810, MLTX-02-005-PR-10790, MLTX-02-005-EN-9490, MLTX-02-005-PR-10090 | 100% | 2026-10-04 | 2026-10-08 |  |  | Purchaser [200 h] | MOD-02-PR-9130 | MAK-01-PR-1000 | PL |
| MLTX-02-005-PR-10460 |  | Material Delivery for Package AC Units | 15d | 2026-07-07 A | 2026-07-07 A | MLTX-02-005-PR-10450 | 100% | 2026-10-26 | 2026-11-11 |  |  | Purchaser [200 h] | MOD-02-PR-9150 | MAK-01-PR-1020 | PL |
|  | 17 | **AIR DIFUSSERS/GRILLS** |  | 2026-10-20 | 2026-12-05 |  |  |  |  |  |  |  |  |  |  |
| MLTX-02-005-PR-10470 |  | PO for Air Difussers/Grills | 15d | 2026-10-20 | 2026-11-05 | MLTX-02-005-PR-10370, MLTX-02-005-EN-9510, MLTX-02-005-PR-10230, MLTX-02-005-PR-10030 |  |  |  | -18d | 0d | Purchaser [200 h] | MOD-02-PR-9170 | MAK-01-PR-1000 | PL |
| MLTX-02-005-PR-10480 |  | Material Delivery for Air Difussers/Grills | 25d | 2026-11-07 | 2026-12-05 | MLTX-02-005-PR-10470, MLTX-02-005-PR-10450 |  |  |  | -18d | 0d | Purchaser [200 h] | MOD-02-PR-9190 | MAK-01-PR-1020 | PL |

| ID | WBS | Activity | Duration | Start | Finish | Predecessors | Complete | Planned start | Planned finish | Total float | Free float | Resources | New Activity ID | Old Activity ID - MK | Procurement |
| --- | --- | --- | --- | --- | --- | --- | --- | --- | --- | --- | --- | --- | --- | --- | --- |
|  | 2 | **BITUMINOUS BASE & WEARING COURSE** |  | 2026-09-15 | 2026-09-21 |  |  |  |  |  |  |  |  |  |  |
| MLTX-02-005-PR-10000 |  | PO for Bituminous Base & Wearing Course | 15d | 2026-09-15 A | 2026-09-15 A | MLTX-02-005-EN-9050 | 100% | 2026-06-10 | 2026-06-27 |  |  | Purchaser [150 h] | MOD-02-PR-9020 | MAK-01-PR-1120 | PL |
| MLTX-02-005-PR-10010 |  | Material Delivery for the Site | 27d | 2026-09-21 A | 2026-09-21 A | MLTX-02-005-PR-10000 | 100% | 2026-07-15 | 2026-08-15 |  |  | Purchaser [150 h] | MOD-02-PR-9030 | MAK-01-PR-1130 | PL |
|  | 3 | **INTERLOCKING PAVING** |  | 2026-09-15 | 2026-09-15 |  |  |  |  |  |  |  |  |  |  |
| MLTX-02-005-PR-10020 |  | PO for Interlocking Block Pavers | 15d | 2026-09-15 A | 2026-09-15 A | MLTX-02-005-EN-9110 | 100% | 2026-08-04 | 2026-08-20 |  |  | Purchaser [200 h] | MOD-02-PR-9050 | MAK-01-PR-1170 | PL |
| MLTX-02-005-PR-10030 |  | Material Delivery for Interlocking Block Pavers | 17d | 2026-09-15 A | 2026-09-15 A | MLTX-02-005-PR-10020, MLTX-02-005-PR-10010 | 100% | 2026-08-22 | 2026-09-09 |  |  | Purchaser [200 h] | MOD-02-PR-9070 | MAK-01-PR-1190 | PL |
|  | 4 | **MARKING PAINT** |  | 2026-10-20 | 2026-11-25 |  |  |  |  |  |  |  |  |  |  |
| MLTX-02-005-PR-10350 |  | PO for Marking Paint | 15d | 2026-10-20 | 2026-11-05 | MLTX-02-005-EN-9960, MLTX-02-005-PR-10000 |  |  |  | -10d | 0d | Purchaser [150 h] | MOD-02-PR-9090 | MAK-01-PR-1120 | PL |
| MLTX-02-005-PR-10360 |  | Material Delivery for Marking Paint | 17d | 2026-11-07 | 2026-11-25 | MLTX-02-005-PR-10350 |  |  |  | -10d | 41d | Purchaser [150 h] | MOD-02-PR-9110 | MAK-01-PR-1130 | PL |
|  | 18 | **GALVANIZED DUCTS** |  | 2026-10-20 | 2026-12-05 |  |  |  |  |  |  |  |  |  |  |
| MLTX-02-005-PR-10490 |  | PO for Galvanized Duct | 15d | 2026-10-20 | 2026-11-05 | MLTX-02-005-EN-9530, MLTX-02-005-PR-10370, MLTX-02-005-PR-10030 |  |  |  | -18d | 0d | Purchaser [150 h] | MOD-02-PR-9210 | MAK-01-PR-1000 | PL |
| MLTX-02-005-PR-10500 |  | Material Delivery for Galvanized Duct | 25d | 2026-11-07 | 2026-12-05 | MLTX-02-005-PR-10490, MLTX-02-005-PR-10470 |  |  |  | -18d | 33d | Purchaser [150 h] | MOD-02-PR-9230 | MAK-01-PR-1020 | PL |
|  | 19 | **EXHAUST FANS** |  | 2026-10-20 | 2026-12-05 |  |  |  |  |  |  |  |  |  |  |
| MLTX-02-005-PR-10510 |  | PO for Exhaust Fans | 15d | 2026-10-20 | 2026-11-05 | MLTX-02-005-EN-9550, MLTX-02-005-PR-10370, MLTX-02-005-PR-10030 |  |  |  | -20d | 0d | Purchaser [150 h] | MOD-02-PR-9250 | MAK-01-PR-1000 | PL |
| MLTX-02-005-PR-10520 |  | Material Delivery for Exhaust Fans | 25d | 2026-11-07 | 2026-12-05 | MLTX-02-005-PR-10510, MLTX-02-005-PR-10840 |  |  |  | -18d | 33d | Purchaser [150 h] | MOD-02-PR-9270 | MAK-01-PR-1020 | PL |
|  | 10 | **DISTRIBUTION BOARDS** |  | 2026-11-07 | 2026-11-29 |  |  |  |  |  |  |  |  |  |  |
| MLTX-02-005-PR-10630 |  | PO for Distribution Boards | 5d | 2026-11-07 | 2026-11-11 | MLTX-02-005-EN-9630, MLTX-02-005-PR-10370, MLTX-02-005-PR-10840, MLTX-02-005-PR-10450 |  |  |  | -18d | 0d | Purchaser [150 h] | MOD-02-PR-9290 | MAK-01-PR-1000 | PL |
| MLTX-02-005-PR-10640 |  | Material Delivery for Distribution Boards | 15d | 2026-11-12 | 2026-11-29 | MLTX-02-005-PR-10630, MLTX-02-005-PR-10450 |  |  |  | -13d | 38d | Purchaser [150 h] | MOD-02-PR-9310 | MAK-01-PR-1020 | PL |
|  | 11 | **POWER CABLES** |  | 2026-11-24 | 2027-01-03 |  |  |  |  |  |  |  |  |  |  |
| MLTX-02-005-PR-10650 |  | PO for Power Cables | 15d | 2026-11-24 | 2026-12-10 | MLTX-02-005-EN-9650, MLTX-02-005-PR-10630, MLTX-02-005-PR-10450, MLTX-02-005-PR-10820, MLTX-02-005-PR-10200 |  |  |  | -28d | 0d | Purchaser [150 h] | MOD-02-PR-9330 | MAK-01-PR-1000 | PL |
| MLTX-02-005-PR-10660 |  | Material Delivery for Power Cables | 20d | 2026-12-12 | 2027-01-03 | MLTX-02-005-PR-10650, MLTX-02-005-PR-10800 |  |  |  | -28d | 61d | Purchaser [150 h] | MOD-02-PR-9350 | MAK-01-PR-1020 | PL |
|  | 12 | **LIGHT FIXTURES** |  | 2026-07-07 | 2027-03-14 |  |  |  |  |  |  |  |  |  |  |
| MLTX-02-005-PR-10670 |  | PO for Light Fixtures | 5d | 2026-07-07 A | 2026-07-07 A | MLTX-02-005-EN-9650, MLTX-02-005-EN-9280, MLTX-02-005-EN-9670, MLTX-02-005-PR-9980 | 100% | 2026-06-28 | 2026-07-02 |  |  | Purchaser [150 h] | MOD-02-PR-9370 | MAK-01-PR-1000 | PL |
| MLTX-02-005-PR-10680 |  | Material Delivery for Light Fixtures | 20d | 2027-02-15 | 2027-03-14 | MLTX-02-005-PR-10670, MLTX-02-005-PR-10440, MLTX-02-005-PR-10650, MLTX-02-005-PR-10920 |  |  |  | -84d | 5d | Purchaser [150 h] | MOD-02-PR-9390 | MAK-01-PR-1020 | PL |

| ID | WBS | Activity | Duration | Start | Finish | Predecessors | Complete | Planned start | Planned finish | Total float | Free float | Resources | New Activity ID | Old Activity ID - MK | Procurement |
| --- | --- | --- | --- | --- | --- | --- | --- | --- | --- | --- | --- | --- | --- | --- | --- |
|  | 13 | **CCTV MATERIALS** |  | 2026-10-20 | 2027-01-30 |  |  |  |  |  |  |  |  |  |  |
| MLTX-02-005-PR-10690 |  | PO for CCTV | 15d | 2026-10-20 | 2026-11-05 | MLTX-02-005-EN-9690, MLTX-02-005-PR-10670, MLTX-02-005-PR-9980 |  |  |  | -67d | 17d | Purchaser [150 h] | MOD-02-PR-9410 | MAK-01-PR-1000 | PL |
| MLTX-02-005-PR-10700 |  | Material Delivery for CCTV | 15d | 2027-01-13 | 2027-01-30 | MLTX-02-005-PR-10640, MLTX-02-005-PR-10800, MLTX-02-005-PR-10460, MLTX-02-005-PR-10690, MLTX-02-005-PR-10820, MLTX-02-005-PR-10780, MLTX-02-005-PR-10520, MLTX-02-005-PR-10480, MLTX-02-005-PR-10360, MLTX-02-005-PR-10500, MLTX-02-005-PR-10720 |  |  |  | -51d | 38d | Purchaser [150 h] | MOD-02-PR-9430 | MAK-01-PR-1020 | PL |
|  | 14 | **POWER OUTLETS/SWITCHES** |  | 2026-11-26 | 2027-01-12 |  |  |  |  |  |  |  |  |  |  |
| MLTX-02-005-PR-10710 |  | PO for Power Outlets/Switches | 16d | 2026-11-26 | 2026-12-14 | MLTX-02-005-PR-10690, MLTX-02-005-PR-10380, MLTX-02-005-EN-9710, MLTX-02-005-PR-10320, MLTX-02-005-PR-10300 |  |  |  | -84d | 0d | Purchaser [150 h] | MOD-02-PR-9450 | MAK-01-PR-1000 | PL |
| MLTX-02-005-PR-10720 |  | Material Delivery for Power Outlets/Switches | 25d | 2026-12-15 | 2027-01-12 | MLTX-02-005-PR-10710, MLTX-02-005-PR-10100 |  |  |  | -51d | 0d | Purchaser [150 h] | MOD-02-PR-9470 | MAK-01-PR-1020 | PL |
|  | LSC | **LANDSCAPE WORKS** |  | 2026-05-16 | 2027-02-14 |  |  |  |  |  |  |  |  |  |  |
|  | 7 | **INTERLOCKING PAVING** |  | 2026-08-26 | 2026-08-26 |  |  |  |  |  |  |  |  |  |  |
| MLTX-02-005-PR-10750 |  | PO for Interlocking Block Pavers | 5d | 2026-08-26 A | 2026-08-26 A | MLTX-02-005-EN-9750 | 100% | 2026-06-10 | 2026-06-15 |  |  | Purchaser [150 h] | MOD-02-PR-9500 | MAK-01-PR-1170 | LS |
| MLTX-02-005-PR-10760 |  | Material Delivery for Interlocking Block Pavers | 12d | 2026-08-26 A | 2026-08-26 A | MLTX-02-005-PR-10750 | 100% | 2026-06-16 | 2026-06-29 |  |  | Purchaser [150 h] | MOD-02-PR-9520 | MAK-01-PR-1190 | LS |
|  | 9 | **CURBSTONE** |  | 2026-07-28 | 2026-07-28 |  |  |  |  |  |  |  |  |  |  |
| MLTX-02-005-PR-10890 |  | PO for Curbstone | 5d | 2026-07-28 A | 2026-07-28 A | MLTX-02-005-EN-9850 | 100% | 2026-08-31 | 2026-09-05 |  |  | Purchaser [150 h] | MOD-02-PR-9540 | MAK-01-PR-1260 | LS |
| MLTX-02-005-PR-10900 |  | Material Delivery for Curbstone | 12d | 2026-07-28 A | 2026-07-28 A | MLTX-02-005-PR-10890 | 100% | 2026-09-06 | 2026-09-19 |  |  | Purchaser [150 h] | MOD-02-PR-9560 | MAK-01-PR-1280 | LS |
|  | 1 | **PAVEMENT MARKING** |  | 2026-12-15 | 2027-01-21 |  |  |  |  |  |  |  |  |  |  |
| MLTX-02-005-PR-10040 |  | PO for Pavement Markings | 13d | 2026-12-15 | 2026-12-29 | MLTX-02-005-EN-9120, MLTX-02-005-PR-10710 |  |  |  | -84d | 0d | Purchaser [150 h] | MOD-02-PR-9580 | MAK-01-PR-1200 | LS |
| MLTX-02-005-PR-10050 |  | Material Delivery for Pavement Markings | 20d | 2026-12-30 | 2027-01-21 | MLTX-02-005-PR-10040, MLTX-02-005-PR-10100 |  |  |  | -36d | 53d | Purchaser [150 h] | MOD-02-PR-9600 | MAK-01-PR-1220 | LS |
|  | 2 | **TRAFFIC SIGNS** |  | 2026-12-30 | 2027-01-21 |  |  |  |  |  |  |  |  |  |  |
| MLTX-02-005-PR-10060 |  | PO for Traffic Signs | 15d | 2026-12-30 | 2027-01-16 | MLTX-02-005-PR-10040, MLTX-02-005-PR-10910, MLTX-02-005-EN-9090 |  |  |  | -84d | 0d | Purchaser [150 h] | MOD-02-PR-9620 | MAK-01-PR-1230 | LS |
| MLTX-02-005-PR-10080 |  | Material Delivery for Traffic Signs | 5d | 2027-01-17 | 2027-01-21 | MLTX-02-005-PR-10060 |  |  |  | -29d | 41d | Purchaser [150 h] | MOD-02-PR-9640 | MAK-01-PR-1250 | LS |
|  | 3 | **IRRIGATION PIPES/SPRINKLERS** |  | 2026-06-17 | 2026-07-21 |  |  |  |  |  |  |  |  |  |  |
| MLTX-02-005-PR-10090 |  | PO for Irrigation Pipes/Sprinkles | 5d | 2026-06-17 A | 2026-06-17 A | MLTX-02-005-PR-10250 | 100% | 2026-09-28 | 2026-10-03 |  |  | Purchaser [150 h] | MOD-02-PR-9660 | MAK-01-PR-1260 | LS |
| MLTX-02-005-PR-10100 |  | Material Delivery for Irrigation Pipes/Sprinkles | 8d | 2026-07-21 A | 2026-07-21 A | MLTX-02-005-PR-10090 | 100% | 2026-10-04 | 2026-10-12 |  |  | Purchaser [150 h] | MOD-02-PR-9680 | MAK-01-PR-1280 | LS |
|  | 5 | **AGRICULTURE SOIL** |  | 2026-10-01 | 2026-10-03 |  |  |  |  |  |  |  |  |  |  |
| MLTX-02-005-PR-10850 |  | PO for Agriculture Soil | 15d | 2026-10-01 A | 2026-10-01 A | MLTX-02-005-EN-9810, MLTX-02-005-PR-10870 | 100% | 2026-09-09 | 2026-09-27 |  |  | Purchaser [150 h] | MOD-02-PR-9700 | MAK-01-PR-1260 | LS |
| MLTX-02-005-PR-10860 |  | Material Delivery for Agriculture Soil | 22d | 2026-10-03 A | 2026-10-03 A | MLTX-02-005-PR-10850 | 100% | 2026-09-28 | 2026-10-22 |  |  | Purchaser [150 h] | MOD-02-PR-9720 | MAK-01-PR-1280 | LS |

| ID | WBS | Activity | Duration | Start | Finish | Predecessors | Complete | Planned start | Planned finish | Total float | Free float | Resources | New Activity ID | Old Activity ID - MK | Procurement |
| --- | --- | --- | --- | --- | --- | --- | --- | --- | --- | --- | --- | --- | --- | --- | --- |
|  | 8 | **TRACK SURFACE** |  | 2026-05-16 | 2026-12-31 |  |  |  |  |  |  |  |  |  |  |
| MLTX-02-005-PR-10870 |  | PO for Track Surface | 5d | 2026-05-16 A | 2026-05-19 A | MLTX-02-005-EN-8140, MLTX-02-005-EN-10850, MLTX-02-005-EN-9120 | 100% | 2026-08-23 | 2026-08-27 |  |  | Purchaser [150 h] | MOD-02-PR-9740 | MAK-01-PR-1260 | LS |
| MLTX-02-005-PR-10880 |  | Material Delivery for Track Surface | 2d | 2026-12-30 | 2026-12-31 | MLTX-02-005-PR-10980, MLTX-02-005-PR-10040, MLTX-02-005-EN-9830, MLTX-02-005-PR-10870 |  |  |  | -8d | 62d | Purchaser [150 h] | MOD-02-PR-9760 | MAK-01-PR-1280 | LS |
|  | 10 | **GRASS/TREES** |  | 2026-05-17 | 2027-02-14 |  |  |  |  |  |  |  |  |  |  |
| MLTX-02-005-PR-10910 |  | PO for Grass/Trees | 5d | 2026-05-17 A | 2026-05-20 A | MLTX-02-005-PR-10870, MLTX-02-005-EN-9870 | 100% | 2026-08-29 | 2026-09-02 |  |  | Purchaser [150 h] | MOD-02-PR-9780 | MAK-01-PR-1260 | LS |
| MLTX-02-005-PR-10920 |  | Material Delivery for Grass/Trees | 25d | 2027-01-17 | 2027-02-14 | MLTX-02-005-PR-10850, MLTX-02-005-PR-10910, MLTX-02-005-PR-10060 |  |  |  | -84d | 0d | Purchaser [150 h] | MOD-02-PR-9800 | MAK-01-PR-1280 | LS |
|  | 6 | **CABLES** |  | 2026-08-26 | 2026-08-26 |  |  |  |  |  |  |  |  |  |  |
| MLTX-02-005-PR-10730 |  | PO for Cables | 5d | 2026-08-26 A | 2026-08-26 A | MLTX-02-005-EN-9730 | 100% | 2026-06-10 | 2026-06-15 |  |  | Purchaser [150 h] | MOD-02-PR-9820 | MAK-01-PR-1200 | LS |
| MLTX-02-005-PR-10740 |  | Material Delivery for Cables | 15d | 2026-08-26 A | 2026-08-26 A | MLTX-02-005-PR-10730, MLTX-02-005-PR-10870 | 100% | 2026-08-29 | 2026-09-14 |  |  | Purchaser [150 h] | MOD-02-PR-9840 | MAK-01-PR-1220 | LS |
|  | LLI | **LONG LEAD ITEM** |  | 2026-07-07 | 2027-03-08 |  |  |  |  |  |  |  |  |  |  |
|  | PLG | **PLAYGROUND WORKS** |  | 2026-10-20 | 2027-03-08 |  |  |  |  |  |  |  |  |  |  |
|  | 6 | **STEEL TENSION CABLES** |  | 2026-12-28 | 2027-02-15 |  |  |  |  |  |  |  |  |  |  |
| MLTX-02-005-PR-10550 |  | PO for Steel Tension Cables | 7d | 2026-12-28 | 2027-01-04 | MLTX-02-005-EN-9880, MLTX-02-005-PR-10610 |  |  |  | -85d | 0d | Purchaser [230 h] | MOD-02-PR-8670 | MAK-01-PR-1120 | PL |
| MLTX-02-005-PR-10930 |  | Material Fabrication for Steel Tension Cables | 10d | 2027-01-05 | 2027-01-16 | MLTX-02-005-PR-10550, MLTX-02-005-PR-10610 |  |  |  | -85d | 0d | Purchaser [229.1 h] | MOD-02-PR-8680 | MAK-01-PR-1120 | PL |
| MLTX-02-005-PR-10560 |  | Material Delivery for Steel Tension Cables | 16d | 2027-01-17 | 2027-02-03 | MLTX-02-005-PR-10930, MLTX-02-005-PR-10590 |  |  |  | -85d | 0d | Purchaser [200 h] | MOD-02-PR-8690 | MAK-01-PR-1130 | PL |
| MLTX-02-005-PR-10970 |  | Staging time | 10d | 2027-02-04 | 2027-02-15 | MLTX-02-005-PR-10560, MLTX-02-005-PR-10960 |  |  |  | -85d | 0d | Purchaser [200 h] | MOD-02-PR-8690 | MAK-01-PR-1130 | PL |
|  | 7 | **EMERGENCY DOORS** |  | 2026-10-20 | 2026-12-28 |  |  |  |  |  |  |  |  |  |  |
| MLTX-02-005-PR-10570 |  | PO for Emergency Doors | 10d | 2026-10-20 | 2026-10-31 | MLTX-02-005-EN-9890, MLTX-02-005-PR-9970 |  |  |  | -7d | 0d | Purchaser [150 h] | MOD-02-PR-8710 | MAK-01-PR-1120 | PL |
| MLTX-02-005-PR-10940 |  | Material Fabrication for Emergency Doors | 20d | 2026-11-01 | 2026-11-23 | MLTX-02-005-PR-10570, MLTX-02-005-PR-9940 |  |  |  | -7d | 0d | Purchaser [150 h] | MOD-02-PR-8720 | MAK-01-PR-1120 | PL |
| MLTX-02-005-PR-10580 |  | Material Delivery for Emergency Doors | 25d | 2026-11-24 | 2026-12-22 | MLTX-02-005-PR-10940, MLTX-02-005-PR-10310 |  |  |  | -7d | 0d | Purchaser [150 h] | MOD-02-PR-8730 | MAK-01-PR-1130 | PL |
| MLTX-02-005-PR-10980 |  | Staging time | 5d | 2026-12-23 | 2026-12-28 | MLTX-02-005-PR-10580, MLTX-02-005-PR-9950 |  |  |  | -7d | 1d | Purchaser [150 h] | MOD-02-PR-8730 | MAK-01-PR-1130 | PL |
|  | 8 | **PRESSURE UNITS** |  | 2026-12-28 | 2027-03-08 |  |  |  |  |  |  |  |  |  |  |
| MLTX-02-005-PR-10590 |  | PO for Pressure Units | 10d | 2026-12-28 | 2027-01-07 | MLTX-02-005-EN-9900, MLTX-02-005-PR-10610 |  |  |  | -89d | 0d | Purchaser [150 h] | MOD-02-PR-8750 | MAK-01-PR-1120 | PL |
| MLTX-02-005-PR-10950 |  | Material Fabrication for Pressure Units | 20d | 2027-01-09 | 2027-01-31 | MLTX-02-005-PR-10590, MLTX-02-005-PR-9960 |  |  |  | -89d | 0d | Purchaser [150 h] | MOD-02-PR-8760 | MAK-01-PR-1120 | PL |
| MLTX-02-005-PR-10600 |  | Material Delivery for Pressure Units | 25d | 2027-02-01 | 2027-03-02 | MLTX-02-005-PR-10950, MLTX-02-005-PR-10960 |  |  |  | -89d | 0d | Purchaser [150 h] | MOD-02-PR-8770 | MAK-01-PR-1130 | PL |
| MLTX-02-005-PR-10990 |  | Staging time | 5d | 2027-03-03 | 2027-03-08 | MLTX-02-005-PR-10600, MLTX-02-005-PR-10620 |  |  |  | -89d | 0d | Purchaser [150 h] | MOD-02-PR-8770 | MAK-01-PR-1130 | PL |

| ID | WBS | Activity | Duration | Start | Finish | Predecessors | Complete | Planned start | Planned finish | Total float | Free float | Resources | New Activity ID | Old Activity ID - MK | Procurement |
| --- | --- | --- | --- | --- | --- | --- | --- | --- | --- | --- | --- | --- | --- | --- | --- |
|  | 9 | **AIR LOCK DOORS** |  | 2026-12-16 | 2027-02-24 |  |  |  |  |  |  |  |  |  |  |
| MLTX-02-005-PR-10610 |  | PO for Lock Doors | 10d | 2026-12-16 | 2026-12-27 | MLTX-02-005-EN-9910, MLTX-02-005-PR-10340 |  |  |  | -89d | 0d | Purchaser [150 h] | MOD-02-PR-8790 | MAK-01-PR-1120 | PL |
| MLTX-02-005-PR-10960 |  | Material Fabrication for Lock Doors | 20d | 2026-12-28 | 2027-01-19 | MLTX-02-005-PR-10610, MLTX-02-005-PR-9960 |  |  |  | -87d | 0d | Purchaser [150 h] | MOD-02-PR-8800 | MAK-01-PR-1120 | PL |
| MLTX-02-005-PR-10620 |  | Material Delivery for Lock Doors | 25d | 2027-01-20 | 2027-02-17 | MLTX-02-005-PR-10960, MLTX-02-005-PR-11010 |  |  |  | -87d | 0d | Purchaser [150 h] | MOD-02-PR-8810 | MAK-01-PR-1130 | PL |
| MLTX-02-005-PR-11000 |  | Staging time | 5d | 2027-02-18 | 2027-02-24 | MLTX-02-005-PR-10620, MLTX-02-005-PR-10920, MLTX-02-005-PR-10970 |  |  |  | -87d | 0d | Purchaser [150 h] | MOD-02-PR-8810 | MAK-01-PR-1130 | PL |
|  | LSC | **LANDSCAPE WORKS** |  | 2026-07-07 | 2026-09-20 |  |  |  |  |  |  |  |  |  |  |
|  | 4 | **LIGHT POLES** |  | 2026-07-07 | 2026-09-20 |  |  |  |  |  |  |  |  |  |  |
| MLTX-02-005-PR-9940 |  | PO for Lighting poles | 10d | 2026-07-07 A | 2026-07-07 A | MLTX-02-005-EN-8980, MLTX-02-005-EN-9730 | 100% | 2026-06-10 | 2026-06-21 |  |  | Purchaser [150 h] | MOD-02-PR-9860 | MAK-01-PR-LLI-1120 | LS |
| MLTX-02-005-PR-9950 |  | Material Fabrication for Lighting poles | 30d | 2026-08-26 A | 2026-08-26 A | MLTX-02-005-PR-9940, MLTX-02-005-PR-10760, MLTX-02-005-PR-10730 | 100% | 2026-06-30 | 2026-08-03 |  |  | Purchaser [150 h] | MOD-02-PR-9870 | MAK-01-PR-LLI-1130 | LS |
| MLTX-02-005-PR-11010 |  | Staging time | 15d | 2026-09-20 A | 2026-09-20 A | MLTX-02-005-PR-9960 | 100% | 2026-09-08 | 2026-09-26 |  |  | Purchaser [150 h] | MOD-02-PR-9880 | MAK-01-PR-LLI-1160 | LS |
| MLTX-02-005-PR-9960 |  | Material Delivery for Lighting poles | 30d | 2026-09-20 A | 2026-09-20 A | MLTX-02-005-PR-9950 | 100% | 2026-08-04 | 2026-09-07 |  |  | Purchaser [150 h] | MOD-02-PR-9880 | MAK-01-PR-LLI-1160 | LS |
|  | T & C | **TESTING & COMMISSIONING** |  | 2027-03-24 | 2027-04-19 |  |  |  |  |  |  |  |  |  |  |
| MLTX-02-005-TC-11910 |  | Testing and Commissioning for MEP Works for Landscape Works | 21d | 2027-03-24 | 2027-04-17 | MLTX-02-005-CN-11940, MLTX-02-005-CN-11910 FF, MLTX-02-005-CN-11920 FF, MLTX-02-005-CN-11930 FF, MLTX-02-005-CN-12040 FF, MLTX-02-005-CN-12480 FF, MLTX-02-005-CN-13220 FF, MLTX-02-005-CN-12270 FF, MLTX-02-005-EN-12090 |  |  |  | -86d | 0d | QA/QC Engineer [1392.9 h] | MOD-02-TC-11880 | T&C-1050 |  |
| MLTX-02-005-TC-11890 |  | Testing and Commissioning for MEP Works for Playground Area | 18d | 2027-03-30 | 2027-04-19 | MLTX-02-005-CN-13220, MLTX-02-005-CN-12340, MLTX-02-005-CN-12420, MLTX-02-005-CN-12310, MLTX-02-005-CN-12320, MLTX-02-005-CN-11960 FF, MLTX-02-005-CN-12270 FF, MLTX-02-005-CN-12170 FF, MLTX-02-005-CN-12220 FF, MLTX-02-005-CN-12210 FF, MLTX-02-005-CN-12150, MLTX-02-005-PR-10050, MLTX-02-005-CN-12120 |  |  |  | -89d | 0d | QA/QC Engineer [1400 h] | MOD-02-TC-11860 | T&C-1020 |  |
| MLTX-02-005-TC-11900 |  | Testing and Commissioning for MEP Works for Toilet/Service Building | 7d | 2027-04-10 | 2027-04-17 | MLTX-02-005-CN-12480, MLTX-02-005-CN-12700, MLTX-02-005-CN-12950, MLTX-02-005-CN-13160, MLTX-02-005-CN-12810, MLTX-02-005-CN-12960, MLTX-02-005-CN-12980, MLTX-02-005-CN-12730, MLTX-02-005-CN-12970, MLTX-02-005-CN-13270, MLTX-02-005-CN-12910, MLTX-02-005-CN-13180, MLTX-02-005-CN-13260, MLTX-02-005-CN-13220, MLTX-02-005-CN-12770, MLTX-02-005-CN-12820, MLTX-02-005-CN-12840, MLTX-02-005-CN-12890, MLTX-02-005-CN-12870, MLTX-02-005-CN-12990 FF, MLTX-02-005-CN-13040 FF, MLTX-02-005-CN-12670 FF, MLTX-02-005-CN-13060 FF, MLTX-02-005-CN-12710 FF, MLTX-02-005-CN-12270 FF, MLTX-02-005-CN-12800, MLTX-02-005-PR-10400, MLTX-02-005-PR-10420, MLTX-02-005-CN-12720, MLTX-02-005-CN-12780, MLTX-02-005-CN-12750, MLTX-02-005-PR-10440, MLTX-02-005-EN-11460, MLTX-02-005-EN-12060, MLTX-02-005-EN-11480, MLTX-02-005-CN-14740, MLTX-02-005-CN-12190, MLTX-02-005-CN-13030, MLTX-02-005-CN-13140, MLTX-02-005-PR-10220, MLTX-02-005-EN-11080, MLTX-02-005-CN-13120 |  |  |  | -86d | 0d | QA/QC Engineer [1400 h] | MOD-02-TC-11870 | T&C-1030 |  |
|  | 3 | **DAMMAM** |  | 2026-03-04 | 2027-03-15 |  |  |  |  |  |  |  |  |  |  |
|  | MOB | **MOBILIZATION** |  | 2026-03-04 | 2026-04-04 |  |  |  |  |  |  |  |  |  |  |
|  | SURV | **TOPOGRAPHIC SURVEY** |  | 2026-03-04 | 2026-03-08 |  |  |  |  |  |  |  |  |  |  |
| MLTX-02-005-MB-2100 |  | Site Survey Works | 5d | 2026-03-04 A | 2026-03-08 A | MLTX-02-005-MS-1010 | 100% | 2026-03-03 | 2026-03-08 |  |  | QA/QC Engineer [60 h] | MOD-02-MB-1320 | MAK-01-TPS-1000 |  |
|  | OFFICE | **SITE FACILITIES & OFFICES** |  | 2026-03-04 | 2026-04-02 |  |  |  |  |  |  |  |  |  |  |
| MLTX-02-005-MB-2010 |  | Site Layout Plan | 5d | 2026-03-04 A | 2026-03-08 A | MLTX-02-005-MS-1010 | 100% | 2026-03-03 | 2026-03-08 |  |  | Labor [230 h] | MOD-02-MB-1340 | MAK-01-MOB-1000 |  |
| MLTX-02-005-MB-2020 |  | Clear & Grub for Offices & Access Road | 3d | 2026-03-09 A | 2026-03-11 A | MLTX-02-005-MB-2010 | 100% |  |  |  |  | Labor [200 h] | MOD-02-MB-1350 | MAK-01-MOB-1010 |  |
| MLTX-02-005-MB-2030 |  | Construct Site Access Roads | 4d | 2026-03-09 A | 2026-03-12 A | MLTX-02-005-MB-2010 | 100% |  |  |  |  | Labor [200 h] | MOD-02-MB-1360 | MAK-01-MOB-1020 |  |
| MLTX-02-005-MB-2040 |  | Construct Temporary Fence | 7d | 2026-03-12 A | 2026-03-19 A | MLTX-02-005-MB-2020 | 100% |  |  |  |  | Labor [200 h] | MOD-02-MB-1370 | MAK-01-MOB-1030 |  |
| MLTX-02-005-MB-2050 |  | Construct Site Offices & Storage | 14d | 2026-03-14 A | 2026-04-01 A | MLTX-02-005-MB-2030, MLTX-02-005-MB-2040 | 100% | 2026-03-24 | 2026-04-08 |  |  | Labor [200 h] | MOD-02-MB-1380 | MAK-01-MOB-1040 |  |
| MLTX-02-005-MB-2060 |  | Install Project Signs | 8d | 2026-03-14 A | 2026-03-25 A | MLTX-02-005-MB-2030 | 100% |  |  |  |  | Labor [200 h] | MOD-02-MB-1390 | MAK-01-MOB-1050 |  |
| MLTX-02-005-MB-2070 |  | Install Site Facilities | 4d | 2026-03-24 A | 2026-03-28 A | MLTX-02-005-MB-2040 | 100% |  |  |  |  | Labor [300 h] | MOD-02-MB-1400 | MAK-01-MOB-1060 |  |
| MLTX-02-005-MB-2080 |  | Electrical Works & Connections | 6d | 2026-03-24 A | 2026-03-30 A | MLTX-02-005-MB-2040, MLTX-02-005-MB-2070 | 100% | 2026-03-29 | 2026-04-04 |  |  | Labor [300 h] | MOD-02-MB-1410 | MAK-01-MOB-1070 |  |
| MLTX-02-005-MB-2090 |  | Construct Parking Sheds | 6d | 2026-03-24 A | 2026-03-30 A | MLTX-02-005-MB-2040, MLTX-02-005-MB-2070 | 100% | 2026-03-29 | 2026-04-04 |  |  | Labor [300 h] | MOD-02-MB-1420 | MAK-01-MOB-1080 |  |
| MLTX-02-005-MB-1990 |  | Equipment Mobalization | 7d | 2026-03-26 A | 2026-04-02 A | MLTX-02-005-MB-2060 | 100% |  |  |  |  | Labor [282.9 h] | MOD-02-MB-1430 | MAK-01-MOB-1100 |  |
| MLTX-02-005-MB-1980 |  | Manpower Mobalization | 5d | 2026-03-29 A | 2026-04-02 A | MLTX-02-005-MB-2070 | 100% |  |  |  |  | Labor [250 h] | MOD-02-MB-1440 | MAK-01-MOB-1090 |  |

| ID | WBS | Activity | Duration | Start | Finish | Predecessors | Complete | Planned start | Planned finish | Resources | New Activity ID | Old Activity ID - MK | Shop Drawings |
| --- | --- | --- | --- | --- | --- | --- | --- | --- | --- | --- | --- | --- | --- |
|  | PRELI | **PRELIMINARY SUBMITTALS** |  | 2026-03-09 | 2026-04-04 |  |  |  |  |  |  |  |  |
|  | P&S | **PREPARATIONS & SUBMITTAL BY CONTRACTORS** |  | 2026-03-09 | 2026-03-19 |  |  |  |  |  |  |  |  |
| MLTX-02-005-MB-2000 |  | Preparation and Submittal of Detailed Work Order Programme (Baseline) | 10d | 2026-03-09 A | 2026-03-19 A | MLTX-02-005-MB-2010 | 100% |  |  | QA/QC Engineer [150 h] | MOD-02-MB-1540 | MAK-01-PS-1070 |  |
| MLTX-02-005-MB-2110 |  | Preparation and Submittal of Project Execution Plan | 8d | 2026-03-09 A | 2026-03-17 A | MLTX-02-005-MB-2010 | 100% |  |  | QA/QC Engineer [120 h] | MOD-02-MB-1550 | MAK-01-PS-1080 |  |
| MLTX-02-005-MB-2120 |  | Submission of Contractor Project Quality Plan | 8d | 2026-03-09 A | 2026-03-17 A | MLTX-02-005-MB-2010, MLTX-02-005-MB-2110 | 100% | 2026-03-18 | 2026-03-30 | QA/QC Engineer [120 h] | MOD-02-MB-1560 | MAK-01-PS-1090 |  |
| MLTX-02-005-MB-2130 |  | Submission of Construction Safety & Environmental Management Plan | 8d | 2026-03-09 A | 2026-03-17 A | MLTX-02-005-MB-2010, MLTX-02-005-MB-2110 | 100% | 2026-03-18 | 2026-03-30 | QA/QC Engineer [120 h] | MOD-02-MB-1570 | MAK-01-PS-1100 |  |
| MLTX-02-005-MB-2140 |  | Preparation and Submittal of Organization Chart | 8d | 2026-03-09 A | 2026-03-17 A | MLTX-02-005-MB-2010, MLTX-02-005-MB-2110 | 100% | 2026-03-18 | 2026-03-30 | QA/QC Engineer [120 h] | MOD-02-MB-1580 | MAK-01-PS-1110 |  |
| MLTX-02-005-MB-2150 |  | Preparation and Submittal of Communication Plan | 8d | 2026-03-09 A | 2026-03-17 A | MLTX-02-005-MB-2010, MLTX-02-005-MB-2110 | 100% | 2026-03-18 | 2026-03-30 | QA/QC Engineer [120 h] | MOD-02-MB-1590 | MAK-01-PS-1120 |  |
|  | APP | **APPROVALS BY EMPLOYERS** |  | 2026-03-18 | 2026-04-04 |  |  |  |  |  |  |  |  |
| MLTX-02-005-MB-2170 |  | Approval of Project Execution Plan | 10d | 2026-03-18 A | 2026-04-01 A | MLTX-02-005-MB-2110 | 100% |  |  | Consultant Staff [120 h] | MOD-02-MB-1690 | MAK-01-PS-1210 |  |
| MLTX-02-005-MB-2180 |  | Approval of Contractor Project Quality Plan | 10d | 2026-03-18 A | 2026-04-01 A | MLTX-02-005-MB-2120, MLTX-02-005-MB-2170 | 100% | 2026-04-02 | 2026-04-13 | Consultant Staff [120 h] | MOD-02-MB-1700 | MAK-01-PS-1220 |  |
| MLTX-02-005-MB-2190 |  | Approval of Construction Safety & Environmental Management Plan | 10d | 2026-03-18 A | 2026-04-01 A | MLTX-02-005-MB-2130, MLTX-02-005-MB-2170 | 100% | 2026-04-02 | 2026-04-13 | Consultant Staff [120 h] | MOD-02-MB-1710 | MAK-01-PS-1230 |  |
| MLTX-02-005-MB-2200 |  | Approval of Organization Chart | 10d | 2026-03-18 A | 2026-04-01 A | MLTX-02-005-MB-2140, MLTX-02-005-MB-2170 | 100% | 2026-04-02 | 2026-04-13 | Consultant Staff [120 h] | MOD-02-MB-1720 | MAK-01-PS-1240 |  |
| MLTX-02-005-MB-2210 |  | Approval of Communication Plan | 10d | 2026-03-18 A | 2026-04-01 A | MLTX-02-005-MB-2150, MLTX-02-005-MB-2170 | 100% | 2026-04-02 | 2026-04-13 | Consultant Staff [120 h] | MOD-02-MB-1730 | MAK-01-PS-1250 |  |
| MLTX-02-005-MB-2160 |  | Approval of Detailed Work Order Programme (Baseline) | 10d | 2026-03-24 A | 2026-04-04 A | MLTX-02-005-MB-2000 | 100% |  |  | Consultant Staff [120 h] | MOD-02-MB-1680 | MAK-01-PS-1200 |  |
|  | ENGG | **ENGINEERING** |  | 2026-03-08 | 2027-01-09 |  |  |  |  |  |  |  |  |
|  | SD | **SHOP DRAWINGS** |  | 2026-03-08 | 2027-01-09 |  |  |  |  |  |  |  |  |
|  | SUB | **SHOP DRAWINGS SUBMISSION** |  | 2026-03-08 | 2026-11-23 |  |  |  |  |  |  |  |  |
|  | 2 | **SHOP DRAWING SUBMITTALS FOR EARTHING WORKS** |  | 2026-03-09 | 2026-03-14 |  |  |  |  |  |  |  |  |
| MLTX-02-005-EN-12100 |  | Shop DWG Submittal for Layout Plan | 15d | 2026-03-09 A | 2026-03-14 A | MLTX-02-005-MB-2100 | 100% | 2026-03-09 | 2026-03-29 | Draftsman [18 h] | MOD-02-EN-1790 | MAK-01-EN-1010 | ER |
| MLTX-02-005-EN-12110 |  | Shop DWG Submittal for Setting Out | 15d | 2026-03-09 A | 2026-03-14 A | MLTX-02-005-MB-2100 | 100% | 2026-03-09 | 2026-03-29 | Draftsman [17.8 h] | MOD-02-EN-1800 | MAK-01-EN-1030 | ER |
| MLTX-02-005-EN-12120 |  | Shop DWG Submittal for Grading Layout Plan | 15d | 2026-03-09 A | 2026-03-14 A | MLTX-02-005-EN-15540, MLTX-02-005-MB-2100 | 100% | 2026-04-11 | 2026-04-27 | Draftsman [16.1 h] | MOD-02-EN-1810 | MAK-01-EN-1050 | ER |
| MLTX-02-005-EN-12130 |  | Shop DWG Submittal for Curb Setting Out Points | 15d | 2026-03-09 A | 2026-03-14 A | MLTX-02-005-MB-2100 | 100% | 2026-03-09 | 2026-03-29 | Draftsman [16.1 h] | MOD-02-EN-1820 | MAK-01-EN-1060 | ER |
| MLTX-02-005-EN-12140 |  | Shop DWG Submittal for Signing & Marking Layout Plan | 15d | 2026-03-09 A | 2026-03-14 A | MLTX-02-005-MB-2100 | 100% | 2026-03-09 | 2026-03-29 | Draftsman [16.1 h] | MOD-02-EN-1830 | MAK-01-EN-1070 | ER |
| MLTX-02-005-EN-12150 |  | Shop DWG Submittal for Standards Details | 15d | 2026-03-09 A | 2026-03-14 A | MLTX-02-005-MB-2100 | 100% | 2026-03-09 | 2026-03-29 | Draftsman [16.1 h] | MOD-02-EN-1840 | MAK-01-EN-1080 | ER |

| ID | WBS | Activity | Duration | Start | Finish | Predecessors | Complete | Planned start | Planned finish | Resources | New Activity Code | New Activity ID | Shop Drawings |
| --- | --- | --- | --- | --- | --- | --- | --- | --- | --- | --- | --- | --- | --- |
|  | ROAD | **SHOP DRAWING SUBMITTALS FOR SERVICE/TOILET WORKS** |  | 2026-03-09 | 2026-07-08 |  |  |  |  |  |  |  |  |
|  | 2 | **ARCHITECTURE WORKS** |  | 2026-03-09 | 2026-03-14 |  |  |  |  |  |  |  |  |
| MLTX-02-005-EN-12480 |  | Shop DWG Submittal for Floor Plan | 15d | 2026-03-09 A | 2026-03-14 A | MLTX-02-005-EN-12110 SS, MLTX-02-005-EN-12100 SS, MLTX-02-005-EN-12130 | 100% | 2026-03-30 | 2026-04-15 | Draftsman [16.1 h] | EN.MB.SD.AR.PR.1110 | MOD-02-EN-1870 | TO |
| MLTX-02-005-EN-12490 |  | Shop DWG Submittal for Elevations | 15d | 2026-03-09 A | 2026-03-14 A | MLTX-02-005-EN-12480 SS, MLTX-02-005-EN-12100 | 100% | 2026-03-30 | 2026-04-15 | Draftsman [16.1 h] | EN.MB.SD.AR.PR.1140 | MOD-02-EN-1880 | TO |
| MLTX-02-005-EN-12500 |  | Shop DWG Submittal for Sections | 15d | 2026-03-09 A | 2026-03-14 A | MLTX-02-005-EN-12490 SS, MLTX-02-005-EN-12120 SS | 100% | 2026-04-11 | 2026-04-27 | Draftsman [16.1 h] | EN.MB.SD.AR.PR.1150 | MOD-02-EN-1890 | TO |
| MLTX-02-005-EN-12510 |  | Shop DWG Submittal for Ceiling Plan | 15d | 2026-03-09 A | 2026-03-14 A | MLTX-02-005-EN-12500 SS | 100% | 2026-04-11 | 2026-04-27 | Draftsman [16.1 h] | EN.MB.SD.AR.PR.1160 | MOD-02-EN-1900 | TO |
| MLTX-02-005-EN-12520 |  | Shop DWG Submittal for Finishes Plan | 15d | 2026-03-09 A | 2026-03-14 A | MLTX-02-005-EN-12510 SS, MLTX-02-005-EN-15570 | 100% | 2026-04-11 | 2026-04-27 | Draftsman [16.1 h] | EN.MB.SD.AR.PR.1190 | MOD-02-EN-1910 | TO |
| MLTX-02-005-EN-12530 |  | Shop DWG Submittal for Toilet Details | 15d | 2026-03-09 A | 2026-03-14 A | MLTX-02-005-EN-12520 SS | 100% | 2026-04-11 | 2026-04-27 | Draftsman [16.1 h] | EN.MB.SD.AR.PR.1210 | MOD-02-EN-1920 | TO |
| MLTX-02-005-EN-12540 |  | Shop DWG Submittal for Doors/Windows Schedule | 15d | 2026-03-09 A | 2026-03-14 A | MLTX-02-005-EN-12530 SS | 100% | 2026-04-11 | 2026-04-27 | Draftsman [16.1 h] | EN.MB.SD.AR.PR.1220 | MOD-02-EN-1930 | TO |
|  | 1 | **STRUCTURE WORKS** |  | 2026-03-15 | 2026-03-19 |  |  |  |  |  |  |  |  |
| MLTX-02-005-EN-12550 |  | Shop DWG Submittal for Foundation Plan | 15d | 2026-03-15 A | 2026-03-19 A | MLTX-02-005-EN-12540, MLTX-02-005-EN-15580 | 100% | 2026-04-28 | 2026-05-14 | Draftsman [16.1 h] | EN.MB.SD.CV.PR.1460 | MOD-02-EN-1950 | TO |
| MLTX-02-005-EN-12560 |  | Shop DWG Submittal for Ground Floor Framing Plan | 21d | 2026-03-15 A | 2026-03-19 A | MLTX-02-005-EN-12550 SS | 100% | 2026-04-28 | 2026-05-21 | Draftsman [16.1 h] | EN.MB.SD.CV.PR.1480 | MOD-02-EN-1960 | TO |
| MLTX-02-005-EN-12570 |  | Shop DWG Submittal for Sections/Details | 21d | 2026-03-15 A | 2026-03-19 A | MLTX-02-005-EN-12540 | 100% | 2026-04-28 | 2026-05-21 | Draftsman [16.1 h] | EN.MB.SD.CV.PR.1530 | MOD-02-EN-1970 | TO |
|  | 3 | **MECHANCAL WORKS** |  | 2026-03-12 | 2026-07-08 |  |  |  |  |  |  |  |  |
| MLTX-02-005-EN-12620 |  | Shop DWG Submittal for Water Supply Layout | 21d | 2026-03-12 A | 2026-05-31 A | MLTX-02-005-EN-12540, MLTX-02-005-EN-12770 | 100% | 2026-08-11 | 2026-09-03 | Draftsman [16.1 h] | EN.MB.SD.MC.PR.1790 | MOD-02-EN-2070 | TO |
| MLTX-02-005-EN-12630 |  | Shop DWG Submittal for Water Supply Details | 21d | 2026-03-12 A | 2026-05-31 A | MLTX-02-005-EN-12540, MLTX-02-005-EN-12770 | 100% | 2026-08-11 | 2026-09-03 | Draftsman [16.1 h] | EN.MB.SD.MC.PR.1800 | MOD-02-EN-2080 | TO |
| MLTX-02-005-EN-12640 |  | Shop DWG Submittal for Drainage Layout | 21d | 2026-03-12 A | 2026-05-31 A | MLTX-02-005-EN-12540, MLTX-02-005-EN-12770 | 100% | 2026-08-11 | 2026-09-03 | Draftsman [16.1 h] | EN.MB.SD.MC.PR.1710 | MOD-02-EN-2020 | TO |
| MLTX-02-005-EN-12650 |  | Shop DWG Submittal for Drainage Details | 21d | 2026-03-12 A | 2026-05-31 A | MLTX-02-005-EN-12540, MLTX-02-005-EN-12770 | 100% | 2026-08-11 | 2026-09-03 | Draftsman [16.1 h] | EN.MB.SD.MC.PR.1720 | MOD-02-EN-2030 | TO |
| MLTX-02-005-EN-12580 |  | Shop DWG Submittal for HVAC Plan | 21d | 2026-07-08 A | 2026-07-08 A | MLTX-02-005-EN-12540, MLTX-02-005-EN-15550, MLTX-02-005-EN-12770 | 100% | 2026-08-13 | 2026-09-06 | Draftsman [16.1 h] | EN.MB.SD.MC.PR.1740 | MOD-02-EN-1990 | TO |
| MLTX-02-005-EN-12590 |  | Shop DWG Submittal for Exhaust Air Plan | 21d | 2026-07-08 A | 2026-07-08 A | MLTX-02-005-EN-12540, MLTX-02-005-EN-12770, MLTX-02-005-EN-13000, MLTX-02-005-EN-12190, MLTX-02-005-EN-12180 | 100% | 2026-08-11 | 2026-09-03 | Draftsman [16.1 h] | EN.MB.SD.MC.PR.1750 | MOD-02-EN-2000 | TO |
| MLTX-02-005-EN-12600 |  | Shop DWG Submittal for HVAC Equipment Schedule | 21d | 2026-07-08 A | 2026-07-08 A | MLTX-02-005-EN-12540, MLTX-02-005-EN-12770 | 100% | 2026-08-11 | 2026-09-03 | Draftsman [16.1 h] | EN.MB.SD.MC.PR.1770 | MOD-02-EN-2010 | TO |
| MLTX-02-005-EN-12610 |  | Shop DWG Submittal for Fire Fighting Layout | 21d | 2026-07-08 A | 2026-07-08 A | MLTX-02-005-EN-12540 | 100% | 2026-04-28 | 2026-05-21 | Draftsman [16.1 h] | EN.MB.SD.MC.PR.1780 | MOD-02-EN-2060 | TO |
| MLTX-02-005-EN-13190 |  | Shop DWG Submittal for Dut Routing Layout | 21d | 2026-07-08 A | 2026-07-08 A | MLTX-02-005-EN-12540, MLTX-02-005-EN-12770 | 100% | 2026-08-11 | 2026-09-03 | Draftsman [16.1 h] | EN.MB.SD.MC.PR.1770 | MOD-02-EN-2040 | TO |
| MLTX-02-005-EN-13200 |  | Shop DWG Submittal for Diffusers Layout | 21d | 2026-07-08 A | 2026-07-08 A | MLTX-02-005-EN-12540, MLTX-02-005-EN-12770 | 100% | 2026-08-11 | 2026-09-03 | Draftsman [16.1 h] | EN.MB.SD.MC.PR.1770 | MOD-02-EN-2050 | TO |

| ID | WBS | Activity | Duration | Start | Finish | Predecessors | Complete | Planned start | Planned finish | Resources | New Activity Code | New Activity ID | Shop Drawings |
| --- | --- | --- | --- | --- | --- | --- | --- | --- | --- | --- | --- | --- | --- |
|  | 4 | **ELECTRICAL WORKS** |  | 2026-03-12 | 2026-05-04 |  |  |  |  |  |  |  |  |
| MLTX-02-005-EN-12680 |  | Shop DWG Submittal for Power Single Line Diagram | 21d | 2026-03-12 A | 2026-05-04 A | MLTX-02-005-EN-12540, MLTX-02-005-EN-12970 | 100% | 2026-07-25 | 2026-08-17 | Draftsman [16.1 h] | EN.MB.SD.EL.PR.2020 | MOD-02-EN-2120 | TO |
| MLTX-02-005-EN-12690 |  | Shop DWG Submittal for Panel Board Schedules | 15d | 2026-03-12 A | 2026-05-04 A | MLTX-02-005-EN-12540 | 100% | 2026-04-28 | 2026-05-14 | Draftsman [16.1 h] | EN.MB.SD.EL.PR.2030 | MOD-02-EN-2130 | TO |
| MLTX-02-005-EN-12720 |  | Shop DWG Submittal for Cable Tray Installation Details | 15d | 2026-03-12 A | 2026-05-04 A | MLTX-02-005-EN-15560, MLTX-02-005-EN-12710 SS | 100% | 2026-04-28 | 2026-05-14 | Draftsman [16.1 h] | EN.MB.SD.EL.PR.2060 | MOD-02-EN-2160 | TO |
| MLTX-02-005-EN-12730 |  | Shop DWG Submittal for Manhole & Ductbank Details | 15d | 2026-03-12 A | 2026-05-04 A | MLTX-02-005-EN-12720 SS | 100% | 2026-04-28 | 2026-05-14 | Draftsman [16.1 h] | EN.MB.SD.EL.PR.2070 | MOD-02-EN-2170 | TO |
| MLTX-02-005-EN-12660 |  | Shop DWG Submittal for Lighting Layout | 21d | 2026-03-15 A | 2026-03-19 A | MLTX-02-005-EN-12540, MLTX-02-005-EN-12970 | 100% | 2026-07-25 | 2026-08-17 | Draftsman [16.1 h] | EN.MB.SD.EL.PR.1980 | MOD-02-EN-2100 | TO |
| MLTX-02-005-EN-12670 |  | Shop DWG Submittal for Power Layout | 21d | 2026-03-15 A | 2026-03-19 A | MLTX-02-005-EN-12540, MLTX-02-005-EN-12970 | 100% | 2026-07-25 | 2026-08-17 | Draftsman [16.1 h] | EN.MB.SD.EL.PR.2000 | MOD-02-EN-2110 | TO |
| MLTX-02-005-EN-12700 |  | Shop DWG Submittal for Lighting Installation Details | 21d | 2026-03-15 A | 2026-03-19 A | MLTX-02-005-EN-12710 SS, MLTX-02-005-EN-12970 | 100% | 2026-07-25 | 2026-08-17 | Draftsman [16.1 h] | EN.MB.SD.EL.PR.2040 | MOD-02-EN-2140 | TO |
| MLTX-02-005-EN-12710 |  | Shop DWG Submittal for Power Installation Details | 15d | 2026-03-15 A | 2026-03-19 A | MLTX-02-005-EN-12690 SS | 100% | 2026-04-28 | 2026-05-14 | Draftsman [16.1 h] | EN.MB.SD.EL.PR.2050 | MOD-02-EN-2150 | TO |
| MLTX-02-005-EN-12740 |  | Shop DWG Submittal for Grounding Details | 15d | 2026-03-15 A | 2026-03-19 A | MLTX-02-005-EN-12730 SS | 100% | 2026-04-28 | 2026-05-14 | Draftsman [16.1 h] | EN.MB.SD.EL.PR.2080 | MOD-02-EN-2180 | TO |
| MLTX-02-005-EN-12750 |  | Shop DWG Submittal for Lightning Protection Details | 15d | 2026-03-15 A | 2026-03-19 A | MLTX-02-005-EN-12740 SS | 100% | 2026-04-28 | 2026-05-14 | Draftsman [16.1 h] | EN.MB.SD.EL.PR.2110 | MOD-02-EN-2210 | TO |
| MLTX-02-005-EN-12760 |  | Shop DWG Submittal for Fire Alarm Installation Details | 15d | 2026-03-15 A | 2026-03-19 A | MLTX-02-005-EN-12750 SS | 100% | 2026-04-28 | 2026-05-14 | Draftsman [16.1 h] | EN.MB.SD.EL.PR.2090 | MOD-02-EN-2190 | TO |
| MLTX-02-005-EN-12770 |  | Shop DWG Submittal for CCTV Details | 15d | 2026-03-15 A | 2026-03-19 A | MLTX-02-005-EN-12760 SS, MLTX-02-005-EN-12970 | 100% | 2026-07-25 | 2026-08-10 | Draftsman [16.1 h] | EN.MB.SD.EL.PR.2140 | MOD-02-EN-2240 | TO |
| MLTX-02-005-EN-12780 |  | Shop DWG Submittal for Grounding Layout | 15d | 2026-03-15 A | 2026-03-19 A | MLTX-02-005-EN-12760, MLTX-02-005-EN-15530 | 100% | 2026-05-16 | 2026-06-04 | Draftsman [16.1 h] | EN.MB.SD.EL.PR.2170 | MOD-02-EN-2270 | TO |
| MLTX-02-005-EN-12790 |  | Shop DWG Submittal for Lightning Protection System Layout | 15d | 2026-03-15 A | 2026-03-19 A | MLTX-02-005-EN-12780 SS | 100% | 2026-05-16 | 2026-06-04 | Draftsman [16.1 h] | EN.MB.SD.EL.PR.2120 | MOD-02-EN-2220 | TO |
| MLTX-02-005-EN-12800 |  | Shop DWG Submittal for Fire Alarm Layout | 15d | 2026-03-15 A | 2026-03-19 A | MLTX-02-005-EN-12790 SS | 100% | 2026-05-16 | 2026-06-04 | Draftsman [16.1 h] | EN.MB.SD.EL.PR.2100 | MOD-02-EN-2200 | TO |
| MLTX-02-005-EN-12810 |  | Shop DWG Submittal for Fire Alarm Riser Diagram | 15d | 2026-03-15 A | 2026-03-19 A | MLTX-02-005-EN-12800 SS | 100% | 2026-05-16 | 2026-06-04 | Draftsman [16.1 h] | EN.MB.SD.EL.PR.2130 | MOD-02-EN-2230 | TO |
| MLTX-02-005-EN-12820 |  | Shop DWG Submittal for CCTV Layout | 15d | 2026-03-15 A | 2026-03-15 A | MLTX-02-005-EN-12810 SS, MLTX-02-005-EN-12970 | 100% | 2026-07-25 | 2026-08-10 | Draftsman [16.1 h] | EN.MB.SD.EL.PR.2150 | MOD-02-EN-2250 | TO |
| MLTX-02-005-EN-12840 |  | Shop DWG Submittal for Telephone & Data Layout | 21d | 2026-03-15 A | 2026-03-19 A | MLTX-02-005-EN-12810, MLTX-02-005-EN-12970 | 100% | 2026-07-25 | 2026-08-17 | Draftsman [16.1 h] | EN.MB.SD.EL.PR.2160 | MOD-02-EN-2260 | TO |
| MLTX-02-005-EN-12850 |  | Shop DWG Submittal for Telephone & Data Riser Diagram | 21d | 2026-03-15 A | 2026-03-19 A | MLTX-02-005-EN-12840 SS, MLTX-02-005-EN-12540, MLTX-02-005-EN-12970 | 100% | 2026-07-25 | 2026-08-17 | Draftsman [16.1 h] | EN.MB.SD.EL.PR.2190 | MOD-02-EN-2290 | TO |
| MLTX-02-005-EN-12830 |  | Shop DWG Submittal for CCTV Riser Diagram | 15d | 2026-03-24 A | 2026-04-04 A | MLTX-02-005-EN-12820 SS, MLTX-02-005-EN-12970 | 100% | 2026-07-25 | 2026-08-10 | Draftsman [16.1 h] | EN.MB.SD.EL.PR.2180 | MOD-02-EN-2280 | TO |
|  | ELE | **SHOP DRAWINGS SUBMITTALS FOR PLAYGROUND WORKS** |  | 2026-03-08 | 2026-11-23 |  |  |  |  |  |  |  |  |
|  | 3 | **ARCHITECTURE WORKS** |  | 2026-03-08 | 2026-05-24 |  |  |  |  |  |  |  |  |
| MLTX-02-005-EN-13090 |  | Shop DWG Submittal for Doors/Windows Schedule | 21d | 2026-03-08 A | 2026-05-24 A | MLTX-02-005-EN-13080 SS | 100% | 2026-03-09 | 2026-04-05 | Draftsman [16.1 h] | EN.MB.SD.AR.PR.1220 | MOD-02-EN-2360 | PL |
| MLTX-02-005-EN-13050 |  | Shop DWG Submittal for Playground Plan/Layout | 15d | 2026-03-09 A | 2026-03-14 A | MLTX-02-005-MB-2100 | 100% | 2026-03-09 | 2026-03-29 | Draftsman [16.1 h] | EN.MB.SD.AR.PR.1110 | MOD-02-EN-2320 | PL |
| MLTX-02-005-EN-13060 |  | Shop DWG Submittal for Furniture & Marking | 15d | 2026-03-09 A | 2026-03-14 A | MLTX-02-005-EN-13050 SS | 100% | 2026-03-09 | 2026-03-29 | Draftsman [16.1 h] | EN.MB.SD.AR.PR.1140 | MOD-02-EN-2330 | PL |
| MLTX-02-005-EN-13070 |  | Shop DWG Submittal for Sections | 15d | 2026-03-09 A | 2026-03-14 A | MLTX-02-005-EN-13060 SS | 100% | 2026-03-09 | 2026-03-29 | Draftsman [16.1 h] | EN.MB.SD.AR.PR.1150 | MOD-02-EN-2340 | PL |
| MLTX-02-005-EN-13080 |  | Shop DWG Submittal for Interlock Pattern Plan | 21d | 2026-03-09 A | 2026-03-14 A | MLTX-02-005-EN-13070 SS | 100% | 2026-03-09 | 2026-04-05 | Draftsman [16.1 h] | EN.MB.SD.AR.PR.1190 | MOD-02-EN-2350 | PL |
| MLTX-02-005-EN-13120 |  | Shop DWG Submittal for Dome Internal Layout | 21d | 2026-03-09 A | 2026-03-14 A | MLTX-02-005-EN-13090 SS | 100% | 2026-03-09 | 2026-04-05 | Draftsman [16.1 h] | EN.MB.SD.AR.PR.1110 | MOD-02-EN-2370 | PL |

| ID | WBS | Activity | Duration | Start | Finish | Predecessors | Complete | Planned start | Planned finish | Total float | Free float | Resources | New Activity Code | New Activity ID | Shop Drawings |
| --- | --- | --- | --- | --- | --- | --- | --- | --- | --- | --- | --- | --- | --- | --- | --- |
|  | 4 | **STRUCTURE WORKS** |  | 2026-03-14 | 2026-06-02 |  |  |  |  |  |  |  |  |  |  |
| MLTX-02-005-EN-13100 |  | Shop DWG Submittal for Air Dome System | 21d | 2026-03-14 A | 2026-05-10 A | MLTX-02-005-EN-13120 | 100% | 2026-04-06 | 2026-04-29 |  |  | Draftsman [16.1 h] | EN.MB.SD.AR.PR.1110 | MOD-02-EN-2390 | PL |
| MLTX-02-005-EN-13110 |  | Shop DWG Submittal for Foundation of Air Dome | 21d | 2026-03-14 A | 2026-06-02 A | MLTX-02-005-EN-13100 SS | 100% | 2026-04-06 | 2026-04-29 |  |  | Draftsman [16.1 h] | EN.MB.SD.AR.PR.1140 | MOD-02-EN-2400 | PL |
| MLTX-02-005-EN-13130 |  | Shop DWG Submittal for Anchor Bolt Layout of Air Dome | 21d | 2026-03-14 A | 2026-06-02 A | MLTX-02-005-EN-13110 SS | 100% | 2026-04-06 | 2026-04-29 |  |  | Draftsman [16.1 h] | EN.MB.SD.AR.PR.1140 | MOD-02-EN-2420 | PL |
|  | 5 | **AIR DOME SYSTEM** |  | 2026-03-14 | 2026-11-23 |  |  |  |  |  |  |  |  |  |  |
| MLTX-02-005-EN-13140 |  | Shop DWG Submittal for Air Dome Structural Layout | 21d | 2026-03-14 A | 2026-05-10 A | MLTX-02-005-EN-13130 SS | 100% | 2026-04-06 | 2026-04-29 |  |  | Draftsman [16.1 h] | EN.MB.SD.AR.PR.1110 | MOD-02-EN-2440 | PL |
| MLTX-02-005-EN-13150 |  | Shop DWG Submittal for Membrane Panel Layout | 21d | 2026-06-21 A | 2026-06-21 A | MLTX-02-005-EN-13140 SS | 100% | 2026-04-06 | 2026-04-29 |  |  | Draftsman [16.1 h] | EN.MB.SD.AR.PR.1140 | MOD-02-EN-2450 | PL |
| MLTX-02-005-EN-13160 |  | Shop DWG Submittal for Cable Tension Layout | 15d | 2026-10-20 | 2026-11-05 | MLTX-02-005-EN-13150 SS, MLTX-02-005-EN-12170 |  |  |  | 0d |  | Draftsman [16.1 h] | EN.MB.SD.AR.PR.1150 | MOD-02-EN-2460 | PL |
| MLTX-02-005-EN-13170 |  | Shop DWG Submittal for Airlock Door Details | 25d | 2026-10-20 | 2026-11-17 | MLTX-02-005-EN-13160 SS, MLTX-02-005-EN-13140 |  |  |  | 5d | 0d | Draftsman [16.1 h] | EN.MB.SD.AR.PR.1140 | MOD-02-EN-2470 | PL |
| MLTX-02-005-EN-13180 |  | Shop DWG Submittal for Emergency Exit Details | 30d | 2026-10-20 | 2026-11-23 | MLTX-02-005-EN-13170 SS, MLTX-02-005-EN-13140 |  |  |  | 15d |  | Draftsman [16.1 h] | EN.MB.SD.AR.PR.1140 | MOD-02-EN-2480 | PL |
|  | 6 | **SPORTS EQUIPMENT** |  | 2026-06-29 | 2026-06-29 |  |  |  |  |  |  |  |  |  |  |
| MLTX-02-005-EN-13210 |  | Shop DWG Submittal for Football Turf Installation | 21d | 2026-06-29 A | 2026-06-29 A | MLTX-02-005-EN-13140, MLTX-02-005-EN-16060 | 100% | 2026-04-30 | 2026-05-24 |  |  | Draftsman [16.1 h] | EN.MB.SD.EL.PR.2170 | MOD-02-EN-2500 | PL |
| MLTX-02-005-EN-13220 |  | Shop DWG Submittal for Basketball Court Marking | 21d | 2026-06-29 A | 2026-06-29 A | MLTX-02-005-EN-13210 SS | 100% | 2026-04-30 | 2026-05-24 |  |  | Draftsman [16.1 h] | EN.MB.SD.EL.PR.2180 | MOD-02-EN-2510 | PL |
| MLTX-02-005-EN-13230 |  | Shop DWG Submittal for Padel Court Structure | 21d | 2026-06-29 A | 2026-06-29 A | MLTX-02-005-EN-13220 SS | 100% | 2026-04-30 | 2026-05-24 |  |  | Draftsman [16.1 h] | EN.MB.SD.EL.PR.2160 | MOD-02-EN-2520 | PL |
|  | 1 | **MECHANCAL WORKS** |  | 2026-10-20 | 2026-11-05 |  |  |  |  |  |  |  |  |  |  |
| MLTX-02-005-EN-13030 |  | Shop DWG Submittal for HVAC Plan | 15d | 2026-10-20 | 2026-11-05 | MLTX-02-005-EN-13230 SS |  |  |  | -18d | 0d | Draftsman [16.1 h] | EN.MB.SD.MC.PR.1740 | MOD-02-EN-2540 | PL |
| MLTX-02-005-EN-13040 |  | Shop DWG Submittal for Exhaust Air Plan | 15d | 2026-10-20 | 2026-11-05 | MLTX-02-005-EN-13030 SS, MLTX-02-005-EN-12990 |  |  |  | 7d | 25d | Draftsman [16.1 h] | EN.MB.SD.MC.PR.1750 | MOD-02-EN-2550 | PL |
|  | 2 | **ELECTRICAL WORKS** |  | 2026-03-14 | 2026-11-23 |  |  |  |  |  |  |  |  |  |  |
| MLTX-02-005-EN-12990 |  | Shop DWG Submittal for Fire Alarm Layout | 21d | 2026-03-14 A | 2026-05-04 A | MLTX-02-005-EN-13140 | 100% | 2026-04-30 | 2026-05-24 |  |  | Draftsman [16.1 h] | EN.MB.SD.EL.PR.2100 | MOD-02-EN-2610 | PL |
| MLTX-02-005-EN-13000 |  | Shop DWG Submittal for Fire Alarm Riser Diagram | 21d | 2026-03-14 A | 2026-05-04 A | MLTX-02-005-EN-13140 | 100% | 2026-07-02 | 2026-07-26 |  |  | Draftsman [16.1 h] | EN.MB.SD.EL.PR.2130 | MOD-02-EN-2640 | PL |
| MLTX-02-005-EN-12920 |  | Shop DWG Submittal for Lighting Layout | 21d | 2026-08-25 A | 2026-08-25 A | MLTX-02-005-EN-13210 | 100% | 2026-05-25 | 2026-06-21 |  |  | Draftsman [16.1 h] | EN.MB.SD.EL.PR.1980 | MOD-02-EN-2570 | PL |
| MLTX-02-005-EN-12970 |  | Shop DWG Submittal for Fire Alarm Installation Details | 21d | 2026-08-25 A | 2026-08-25 A | MLTX-02-005-EN-12920, MLTX-02-005-EN-15940, MLTX-02-005-EN-15960, MLTX-02-005-EN-15950, MLTX-02-005-EN-15760 | 100% | 2026-06-30 | 2026-07-23 |  |  | Draftsman [16.1 h] | EN.MB.SD.EL.PR.2090 | MOD-02-EN-2600 | PL |
| MLTX-02-005-EN-12980 |  | Shop DWG Submittal for CCTV Details | 21d | 2026-08-25 A | 2026-08-25 A | MLTX-02-005-EN-12920 SS | 100% | 2026-05-25 | 2026-06-21 |  |  | Draftsman [16.1 h] | EN.MB.SD.EL.PR.2140 | MOD-02-EN-2650 | PL |
| MLTX-02-005-EN-13010 |  | Shop DWG Submittal for CCTV Layout | 21d | 2026-08-25 A | 2026-08-25 A | MLTX-02-005-EN-13000 SS, MLTX-02-005-EN-12970 | 100% | 2026-07-25 | 2026-08-17 |  |  | Draftsman [16.1 h] | EN.MB.SD.EL.PR.2150 | MOD-02-EN-2660 | PL |
| MLTX-02-005-EN-13020 |  | Shop DWG Submittal for CCTV Riser Diagram | 21d | 2026-08-25 A | 2026-08-25 A | MLTX-02-005-EN-13010 SS | 100% | 2026-07-25 | 2026-08-17 |  |  | Draftsman [16.1 h] | EN.MB.SD.EL.PR.2180 | MOD-02-EN-2670 | PL |
| MLTX-02-005-EN-12930 |  | Shop DWG Submittal for Power Layout | 25d | 2026-10-20 | 2026-11-17 | MLTX-02-005-EN-12980 SS |  |  |  | 2d | 5d | Draftsman [16.1 h] | EN.MB.SD.EL.PR.2000 | MOD-02-EN-2580 | PL |
| MLTX-02-005-EN-12940 |  | Shop DWG Submittal for Power Single Line Diagram | 25d | 2026-10-20 | 2026-11-17 | MLTX-02-005-EN-12980 SS |  |  |  | 2d | 0d | Draftsman [16.1 h] | EN.MB.SD.EL.PR.2020 | MOD-02-EN-2620 | PL |
| MLTX-02-005-EN-12950 |  | Shop DWG Submittal for Panel Board Schedules | 25d | 2026-10-20 | 2026-11-17 | MLTX-02-005-EN-12940 SS |  |  |  | 2d | 0d | Draftsman [16.1 h] | EN.MB.SD.EL.PR.2030 | MOD-02-EN-2630 | PL |
| MLTX-02-005-EN-12960 |  | Shop DWG Submittal for Power Installation Details | 30d | 2026-10-20 | 2026-11-23 | MLTX-02-005-EN-12950 SS |  |  |  | 7d | 25d | Draftsman [16.1 h] | EN.MB.SD.EL.PR.2050 | MOD-02-EN-2590 | PL |

| ID | WBS | Activity | Duration | Start | Finish | Predecessors | Complete | Planned start | Planned finish | Resources | New Activity ID | Old Activity ID - MK | Shop Drawings | New Activity Code |
| --- | --- | --- | --- | --- | --- | --- | --- | --- | --- | --- | --- | --- | --- | --- |
|  | EAR | **SHOP DRAWINGS SUBMITTALS FOR LANDSCAPE WORKS** |  | 2026-03-08 | 2026-07-30 |  |  |  |  |  |  |  |  |  |
|  | 3 | **ARCHITECTURE WORKS** |  | 2026-03-09 | 2026-03-19 |  |  |  |  |  |  |  |  |  |
| MLTX-02-005-EN-12860 |  | Shop DWG Submittal for Landscape Layout | 21d | 2026-03-09 A | 2026-03-14 A | MLTX-02-005-MB-2100, MLTX-02-005-EN-12890 | 100% | 2026-03-30 | 2026-04-22 | Draftsman [16.1 h] | MOD-02-EN-2700 | MAK-01-EN-1120 | LS |  |
| MLTX-02-005-EN-12870 |  | Shop DWG Submittal for Hardscape Plan | 21d | 2026-03-09 A | 2026-03-14 A | MLTX-02-005-MB-2100 | 100% | 2026-03-09 | 2026-04-05 | Draftsman [16.1 h] | MOD-02-EN-2710 | MAK-01-EN-1130 | LS |  |
| MLTX-02-005-EN-12890 |  | Shop DWG Submittal for Landscape Details | 15d | 2026-03-09 A | 2026-03-14 A | MLTX-02-005-MB-2100 | 100% | 2026-03-09 | 2026-03-29 | Draftsman [16.1 h] | MOD-02-EN-2730 | MAK-01-EN-1150 | LS |  |
| MLTX-02-005-EN-12880 |  | Shop DWG Submittal for Planting Plan | 15d | 2026-03-15 A | 2026-03-19 A | MLTX-02-005-EN-12890, MLTX-02-005-EN-12860 | 100% | 2026-04-23 | 2026-05-10 | Draftsman [16.1 h] | MOD-02-EN-2720 | MAK-01-EN-1140 | LS |  |
|  | 1 | **MECHANCAL WORKS** |  | 2026-03-08 | 2026-06-04 |  |  |  |  |  |  |  |  |  |
| MLTX-02-005-EN-12900 |  | Shop DWG Submittal for Irrigation Details | 21d | 2026-03-08 A | 2026-06-04 A | MLTX-02-005-MB-2100 | 100% | 2026-03-09 | 2026-04-05 | Draftsman [16.1 h] | MOD-02-EN-2770 | MAK-01-EN-1140 | LS |  |
| MLTX-02-005-EN-12910 |  | Shop DWG Submittal for Irrigation Layout | 21d | 2026-03-08 A | 2026-06-04 A | MLTX-02-005-MB-2100 | 100% | 2026-03-09 | 2026-04-05 | Draftsman [16.1 h] | MOD-02-EN-2810 | MAK-01-EN-1140 | LS |  |
|  | 2 | **ELECTRICAL WORKS** |  | 2026-07-30 | 2026-07-30 |  |  |  |  |  |  |  |  |  |
| MLTX-02-005-EN-12160 |  | Shop DWG Submittal for Lighting General Arrangement | 30d | 2026-07-30 A | 2026-07-30 A | MLTX-02-005-MB-2100 | 100% | 2026-07-13 | 2026-08-16 | Draftsman [16.1 h] | MOD-02-EN-2860 | MAK-01-EN-1120 | LS |  |
| MLTX-02-005-EN-12170 |  | Shop DWG Submittal for Lighting Network Layout | 30d | 2026-07-30 A | 2026-07-30 A | MLTX-02-005-MB-2100 | 100% | 2026-03-09 | 2026-04-15 | Draftsman [16.1 h] | MOD-02-EN-2870 | MAK-01-EN-1130 | LS |  |
| MLTX-02-005-EN-12180 |  | Shop DWG Submittal for Lighting Details | 30d | 2026-07-30 A | 2026-07-30 A | MLTX-02-005-MB-2100, MLTX-02-005-EN-12920 | 100% | 2026-06-22 | 2026-07-26 | Draftsman [16.1 h] | MOD-02-EN-2840 | MAK-01-EN-1140 | LS |  |
| MLTX-02-005-EN-12190 |  | Shop DWG Submittal for Lighting Single Line Diagram | 30d | 2026-07-30 A | 2026-07-30 A | MLTX-02-005-MB-2100, MLTX-02-005-EN-12920 | 100% | 2026-06-22 | 2026-07-26 | Draftsman [16.1 h] | MOD-02-EN-2850 | MAK-01-EN-1150 | LS |  |
|  | APP | **SHOP DRAWINGS APPROVALS** |  | 2026-03-14 | 2027-01-09 |  |  |  |  |  |  |  |  |  |
|  | 2 | **SHOP DRAWING APPROVAL FOR EARTHING WORKS** |  | 2026-03-15 | 2026-03-29 |  |  |  |  |  |  |  |  |  |
| MLTX-02-005-EN-15530 |  | Shop DWG Approval for Layout Plan | 21d | 2026-03-15 A | 2026-03-29 A | MLTX-02-005-EN-12100 | 100% | 2026-03-30 | 2026-04-22 | Draftsman [12.71 h]; Consultant Staff [3.39 h] | MOD-02-EN-2900 | MAK-01-EN-1010 | ER |  |
| MLTX-02-005-EN-15540 |  | Shop DWG Approval for Setting Out | 10d | 2026-03-15 A | 2026-03-29 A | MLTX-02-005-EN-12110 | 100% | 2026-03-30 | 2026-04-09 | Draftsman [12.71 h]; Consultant Staff [3.39 h] | MOD-02-EN-2910 | MAK-01-EN-1030 | ER |  |
| MLTX-02-005-EN-15550 |  | Shop DWG Approval for Grading Layout Plan | 16d | 2026-03-15 A | 2026-03-29 A | MLTX-02-005-EN-12120 | 100% | 2026-07-26 | 2026-08-12 | Draftsman [12.71 h]; Consultant Staff [3.39 h] | MOD-02-EN-2920 | MAK-01-EN-1050 | ER |  |
| MLTX-02-005-EN-15560 |  | Shop DWG Approval for Curb Setting Out Points | 21d | 2026-03-15 A | 2026-03-29 A | MLTX-02-005-EN-12130 | 100% | 2026-03-30 | 2026-04-22 | Draftsman [12.71 h]; Consultant Staff [3.39 h] | MOD-02-EN-2930 | MAK-01-EN-1060 | ER |  |
| MLTX-02-005-EN-15570 |  | Shop DWG Approval for Signing & Marking Layout Plan | 10d | 2026-03-15 A | 2026-03-29 A | MLTX-02-005-EN-12140 | 100% | 2026-03-30 | 2026-04-09 | Draftsman [12.71 h]; Consultant Staff [3.39 h] | MOD-02-EN-2940 | MAK-01-EN-1070 | ER |  |
| MLTX-02-005-EN-15580 |  | Shop DWG Approval for Standards Details | 15d | 2026-03-15 A | 2026-03-29 A | MLTX-02-005-EN-12150 | 100% | 2026-03-30 | 2026-04-15 | Draftsman [12.71 h]; Consultant Staff [3.39 h] | MOD-02-EN-2950 | MAK-01-EN-1080 | ER |  |
|  | ROAD | **SHOP DRAWING APPROVAL FOR SERVICE/TOILET WORKS** |  | 2026-03-15 | 2026-07-28 |  |  |  |  |  |  |  |  |  |
|  | 2 | **ARCHITECTURE WORKS** |  | 2026-03-15 | 2026-03-29 |  |  |  |  |  |  |  |  |  |
| MLTX-02-005-EN-15630 |  | Shop DWG Approval for Floor Plan | 30d | 2026-03-15 A | 2026-03-29 A | MLTX-02-005-EN-12480, MLTX-02-005-EN-15880, MLTX-02-005-EN-15890, MLTX-02-005-EN-15910 | 100% | 2026-06-13 | 2026-07-16 | Draftsman [12.71 h]; Consultant Staff [3.39 h] | MOD-02-EN-2980 |  | TO | EN.MB.SD.AR.PR.1110 |
| MLTX-02-005-EN-15640 |  | Shop DWG Approval for Elevations | 30d | 2026-03-15 A | 2026-03-29 A | MLTX-02-005-EN-12490, MLTX-02-005-EN-15650 | 100% | 2026-06-08 | 2026-07-12 | Draftsman [12.71 h]; Consultant Staff [3.39 h] | MOD-02-EN-2990 |  | TO | EN.MB.SD.AR.PR.1140 |
| MLTX-02-005-EN-15650 |  | Shop DWG Approval for Sections | 30d | 2026-03-15 A | 2026-03-29 A | MLTX-02-005-EN-12500, MLTX-02-005-EN-16210 | 100% | 2026-04-30 | 2026-06-07 | Draftsman [12.71 h]; Consultant Staff [3.39 h] | MOD-02-EN-3000 |  | TO | EN.MB.SD.AR.PR.1150 |
| MLTX-02-005-EN-15660 |  | Shop DWG Approval for Ceiling Plan | 30d | 2026-03-15 A | 2026-03-29 A | MLTX-02-005-EN-12510, MLTX-02-005-EN-15650 | 100% | 2026-06-08 | 2026-07-12 | Draftsman [12.71 h]; Consultant Staff [3.39 h] | MOD-02-EN-3010 |  | TO | EN.MB.SD.AR.PR.1160 |
| MLTX-02-005-EN-15670 |  | Shop DWG Approval for Finishes Plan | 30d | 2026-03-15 A | 2026-03-29 A | MLTX-02-005-EN-12520, MLTX-02-005-EN-15650 | 100% | 2026-06-08 | 2026-07-12 | Draftsman [12.71 h]; Consultant Staff [3.39 h] | MOD-02-EN-3020 |  | TO | EN.MB.SD.AR.PR.1190 |
| MLTX-02-005-EN-15680 |  | Shop DWG Approval for Toilet Details | 30d | 2026-03-15 A | 2026-03-29 A | MLTX-02-005-EN-12530, MLTX-02-005-EN-15650 | 100% | 2026-06-08 | 2026-07-12 | Draftsman [12.71 h]; Consultant Staff [3.39 h] | MOD-02-EN-3030 |  | TO | EN.MB.SD.AR.PR.1210 |
| MLTX-02-005-EN-15690 |  | Shop DWG Approval for Doors/Windows Schedule | 30d | 2026-03-15 A | 2026-03-29 A | MLTX-02-005-EN-12540, MLTX-02-005-EN-15650 | 100% | 2026-06-08 | 2026-07-12 | Draftsman [12.71 h]; Consultant Staff [3.39 h] | MOD-02-EN-3040 |  | TO | EN.MB.SD.AR.PR.1220 |

| ID | WBS | Activity | Duration | Start | Finish | Predecessors | Complete | Planned start | Planned finish | Resources | New Activity Code | New Activity ID | Shop Drawings |
| --- | --- | --- | --- | --- | --- | --- | --- | --- | --- | --- | --- | --- | --- |
|  | 1 | **STRUCTURE WORKS** |  | 2026-03-24 | 2026-04-04 |  |  |  |  |  |  |  |  |
| MLTX-02-005-EN-15700 |  | Shop DWG Approval for Foundation Plan | 15d | 2026-03-24 A | 2026-04-04 A | MLTX-02-005-EN-12550, MLTX-02-005-EN-15650 | 100% | 2026-06-08 | 2026-06-24 | Draftsman [12.71 h]; Consultant Staff [3.39 h] | EN.MB.SD.CV.PR.1460 | MOD-02-EN-3060 | TO |
| MLTX-02-005-EN-15710 |  | Shop DWG Approval for Ground Floor Framing Plan | 21d | 2026-03-24 A | 2026-04-04 A | MLTX-02-005-EN-12560 | 100% | 2026-05-23 | 2026-06-18 | Draftsman [12.71 h]; Consultant Staff [3.39 h] | EN.MB.SD.CV.PR.1480 | MOD-02-EN-3070 | TO |
| MLTX-02-005-EN-15720 |  | Shop DWG Approval for Sections/Details | 21d | 2026-03-24 A | 2026-04-04 A | MLTX-02-005-EN-12570 | 100% | 2026-05-23 | 2026-06-18 | Draftsman [12.71 h]; Consultant Staff [3.39 h] | EN.MB.SD.CV.PR.1530 | MOD-02-EN-3080 | TO |
|  | 3 | **MECHANCAL WORKS** |  | 2026-03-18 | 2026-07-11 |  |  |  |  |  |  |  |  |
| MLTX-02-005-EN-15770 |  | Shop DWG Approval for Water Supply Layout | 21d | 2026-03-18 A | 2026-06-03 A | MLTX-02-005-EN-12620, MLTX-02-005-EN-15930 | 100% | 2026-09-05 | 2026-09-29 | Draftsman [12.71 h]; Consultant Staff [3.39 h] | EN.MB.SD.MC.PR.1790 | MOD-02-EN-3180 | TO |
| MLTX-02-005-EN-15780 |  | Shop DWG Approval for Water Supply Details | 21d | 2026-03-18 A | 2026-06-03 A | MLTX-02-005-EN-12630, MLTX-02-005-EN-15930 | 100% | 2026-09-05 | 2026-09-29 | Draftsman [12.71 h]; Consultant Staff [3.39 h] | EN.MB.SD.MC.PR.1800 | MOD-02-EN-3190 | TO |
| MLTX-02-005-EN-15790 |  | Shop DWG Approval for Drainage Layout | 21d | 2026-03-18 A | 2026-06-03 A | MLTX-02-005-EN-12640, MLTX-02-005-EN-15930, MLTX-02-005-EN-16140, MLTX-02-005-EN-16130, MLTX-02-005-EN-15810, MLTX-02-005-EN-15850 | 100% | 2026-09-12 | 2026-10-06 | Draftsman [12.71 h]; Consultant Staff [3.39 h] | EN.MB.SD.MC.PR.1710 | MOD-02-EN-3130 | TO |
| MLTX-02-005-EN-15800 |  | Shop DWG Approval for Drainage Details | 21d | 2026-03-18 A | 2026-06-03 A | MLTX-02-005-EN-12650, MLTX-02-005-EN-15930 | 100% | 2026-09-05 | 2026-09-29 | Draftsman [12.71 h]; Consultant Staff [3.39 h] | EN.MB.SD.MC.PR.1720 | MOD-02-EN-3140 | TO |
| MLTX-02-005-EN-15730 |  | Shop DWG Approval for HVAC Plan | 21d | 2026-07-11 A | 2026-07-11 A | MLTX-02-005-EN-12580, MLTX-02-005-EN-15930 | 100% | 2026-09-07 | 2026-10-01 | Draftsman [12.71 h]; Consultant Staff [3.39 h] | EN.MB.SD.MC.PR.1740 | MOD-02-EN-3100 | TO |
| MLTX-02-005-EN-15740 |  | Shop DWG Approval for Exhaust Air Plan | 21d | 2026-07-11 A | 2026-07-11 A | MLTX-02-005-EN-12590, MLTX-02-005-EN-15930, MLTX-02-005-EN-16180, MLTX-02-005-EN-15600, MLTX-02-005-EN-12640 | 100% | 2026-09-05 | 2026-09-29 | Draftsman [12.71 h]; Consultant Staff [3.39 h] | EN.MB.SD.MC.PR.1750 | MOD-02-EN-3110 | TO |
| MLTX-02-005-EN-15750 |  | Shop DWG Approval for HVAC Equipment Schedule | 21d | 2026-07-11 A | 2026-07-11 A | MLTX-02-005-EN-12600, MLTX-02-005-EN-15930 | 100% | 2026-09-05 | 2026-09-29 | Draftsman [12.71 h]; Consultant Staff [3.39 h] | EN.MB.SD.MC.PR.1770 | MOD-02-EN-3120 | TO |
| MLTX-02-005-EN-15760 |  | Shop DWG Approval for Fire Fighting Layout | 21d | 2026-07-11 A | 2026-07-11 A | MLTX-02-005-EN-12610 | 100% | 2026-05-23 | 2026-06-18 | Draftsman [12.71 h]; Consultant Staff [3.39 h] | EN.MB.SD.MC.PR.1780 | MOD-02-EN-3170 | TO |
| MLTX-02-005-EN-16320 |  | Shop DWG Approval for Duct Routing Layout | 21d | 2026-07-11 A | 2026-07-11 A | MLTX-02-005-EN-13190, MLTX-02-005-EN-15930 | 100% | 2026-09-05 | 2026-09-29 | Draftsman [12.71 h]; Consultant Staff [3.39 h] | EN.MB.SD.MC.PR.1770 | MOD-02-EN-3150 | TO |
| MLTX-02-005-EN-16330 |  | Shop DWG Approval for Diffusers Layout | 21d | 2026-07-11 A | 2026-07-11 A | MLTX-02-005-EN-13200, MLTX-02-005-EN-15930 | 100% | 2026-09-05 | 2026-09-29 | Draftsman [12.71 h]; Consultant Staff [3.39 h] | EN.MB.SD.MC.PR.1770 | MOD-02-EN-3160 | TO |
|  | 4 | **ELECTRICAL WORKS** |  | 2026-03-18 | 2026-07-28 |  |  |  |  |  |  |  |  |
| MLTX-02-005-EN-15830 |  | Shop DWG Approval for Power Single Line Diagram | 21d | 2026-03-18 A | 2026-05-07 A | MLTX-02-005-EN-12680, MLTX-02-005-EN-12840 | 100% | 2026-08-18 | 2026-09-10 | Draftsman [12.71 h]; Consultant Staff [3.39 h] | EN.MB.SD.EL.PR.2020 | MOD-02-EN-3230 | TO |
| MLTX-02-005-EN-15840 |  | Shop DWG Approval for Panel Board Schedules | 21d | 2026-03-18 A | 2026-05-07 A | MLTX-02-005-EN-12690, MLTX-02-005-EN-12660 | 100% | 2026-08-18 | 2026-09-10 | Draftsman [12.71 h]; Consultant Staff [3.39 h] | EN.MB.SD.EL.PR.2030 | MOD-02-EN-3240 | TO |
| MLTX-02-005-EN-15870 |  | Shop DWG Approval for Cable Tray Installation Details | 21d | 2026-03-18 A | 2026-05-07 A | MLTX-02-005-EN-12720, MLTX-02-005-EN-12840 | 100% | 2026-08-18 | 2026-09-10 | Draftsman [12.71 h]; Consultant Staff [3.39 h] | EN.MB.SD.EL.PR.2060 | MOD-02-EN-3270 | TO |
| MLTX-02-005-EN-15880 |  | Shop DWG Approval for Manhole & Ductbank Details | 21d | 2026-03-18 A | 2026-05-07 A | MLTX-02-005-EN-12730 | 100% | 2026-05-16 | 2026-06-11 | Draftsman [12.71 h]; Consultant Staff [3.39 h] | EN.MB.SD.EL.PR.2070 | MOD-02-EN-3280 | TO |
| MLTX-02-005-EN-15810 |  | Shop DWG Approval for Lighting Layout | 21d | 2026-03-24 A | 2026-04-04 A | MLTX-02-005-EN-12660, MLTX-02-005-EN-12680 | 100% | 2026-08-18 | 2026-09-10 | Draftsman [12.71 h]; Consultant Staff [3.39 h] | EN.MB.SD.EL.PR.1980 | MOD-02-EN-3210 | TO |
| MLTX-02-005-EN-15820 |  | Shop DWG Approval for Power Layout | 21d | 2026-03-24 A | 2026-04-04 A | MLTX-02-005-EN-12670, MLTX-02-005-EN-12660 | 100% | 2026-08-18 | 2026-09-10 | Draftsman [12.71 h]; Consultant Staff [3.39 h] | EN.MB.SD.EL.PR.2000 | MOD-02-EN-3220 | TO |
| MLTX-02-005-EN-15850 |  | Shop DWG Approval for Lighting Installation Details | 21d | 2026-03-24 A | 2026-04-04 A | MLTX-02-005-EN-12700, MLTX-02-005-EN-12660 | 100% | 2026-08-18 | 2026-09-10 | Draftsman [12.71 h]; Consultant Staff [3.39 h] | EN.MB.SD.EL.PR.2040 | MOD-02-EN-3250 | TO |
| MLTX-02-005-EN-15860 |  | Shop DWG Approval for Power Installation Details | 21d | 2026-03-24 A | 2026-04-04 A | MLTX-02-005-EN-12710, MLTX-02-005-EN-12660 | 100% | 2026-08-18 | 2026-09-10 | Draftsman [12.71 h]; Consultant Staff [3.39 h] | EN.MB.SD.EL.PR.2050 | MOD-02-EN-3260 | TO |
| MLTX-02-005-EN-15890 |  | Shop DWG Approval for Grounding Details | 21d | 2026-03-24 A | 2026-04-04 A | MLTX-02-005-EN-12740 | 100% | 2026-05-16 | 2026-06-11 | Draftsman [12.71 h]; Consultant Staff [3.39 h] | EN.MB.SD.EL.PR.2080 | MOD-02-EN-3290 | TO |
| MLTX-02-005-EN-15900 |  | Shop DWG Approval for Lightning Protection Details | 21d | 2026-03-24 A | 2026-04-04 A | MLTX-02-005-EN-12750, MLTX-02-005-EN-12840 | 100% | 2026-08-18 | 2026-09-10 | Draftsman [12.71 h]; Consultant Staff [3.39 h] | EN.MB.SD.EL.PR.2110 | MOD-02-EN-3320 | TO |
| MLTX-02-005-EN-15910 |  | Shop DWG Approval for Fire Alarm Installation Details | 21d | 2026-03-24 A | 2026-04-04 A | MLTX-02-005-EN-12760 | 100% | 2026-05-16 | 2026-06-11 | Draftsman [12.71 h]; Consultant Staff [3.39 h] | EN.MB.SD.EL.PR.2090 | MOD-02-EN-3300 | TO |
| MLTX-02-005-EN-15930 |  | Shop DWG Approval for Grounding Layout | 21d | 2026-03-24 A | 2026-04-04 A | MLTX-02-005-EN-12780, MLTX-02-005-EN-12820 | 100% | 2026-08-11 | 2026-09-03 | Draftsman [12.71 h]; Consultant Staff [3.39 h] | EN.MB.SD.EL.PR.2170 | MOD-02-EN-3380 | TO |
| MLTX-02-005-EN-15940 |  | Shop DWG Approval for Lightning Protection System Layout | 21d | 2026-03-24 A | 2026-04-04 A | MLTX-02-005-EN-12790 | 100% | 2026-06-06 | 2026-06-29 | Draftsman [12.71 h]; Consultant Staff [3.39 h] | EN.MB.SD.EL.PR.2120 | MOD-02-EN-3330 | TO |
| MLTX-02-005-EN-15950 |  | Shop DWG Approval for Fire Alarm Layout | 21d | 2026-03-24 A | 2026-04-04 A | MLTX-02-005-EN-12800 | 100% | 2026-06-06 | 2026-06-29 | Draftsman [12.71 h]; Consultant Staff [3.39 h] | EN.MB.SD.EL.PR.2100 | MOD-02-EN-3310 | TO |
| MLTX-02-005-EN-15960 |  | Shop DWG Approval for Fire Alarm Riser Diagram | 21d | 2026-03-24 A | 2026-04-04 A | MLTX-02-005-EN-12810 | 100% | 2026-06-06 | 2026-06-29 | Draftsman [12.71 h]; Consultant Staff [3.39 h] | EN.MB.SD.EL.PR.2130 | MOD-02-EN-3340 | TO |
| MLTX-02-005-EN-15970 |  | Shop DWG Approval for CCTV Layout | 30d | 2026-03-24 A | 2026-04-04 A | MLTX-02-005-EN-12820, MLTX-02-005-EN-12830 | 100% | 2026-08-11 | 2026-09-14 | Draftsman [12.71 h]; Consultant Staff [3.39 h] | EN.MB.SD.EL.PR.2150 | MOD-02-EN-3360 | TO |
| MLTX-02-005-EN-15980 |  | Shop DWG Approval for CCTV Riser Diagram | 30d | 2026-03-24 A | 2026-04-04 A | MLTX-02-005-EN-12830, MLTX-02-005-EN-13010 | 100% | 2026-08-18 | 2026-09-21 | Draftsman [12.71 h]; Consultant Staff [3.39 h] | EN.MB.SD.EL.PR.2180 | MOD-02-EN-3390 | TO |
| MLTX-02-005-EN-15990 |  | Shop DWG Approval for Telephone & Data Layout | 21d | 2026-03-24 A | 2026-04-04 A | MLTX-02-005-EN-12840, MLTX-02-005-EN-12850 | 100% | 2026-08-18 | 2026-09-10 | Draftsman [12.71 h]; Consultant Staff [3.39 h] | EN.MB.SD.EL.PR.2160 | MOD-02-EN-3370 | TO |
| MLTX-02-005-EN-16000 |  | Shop DWG Approval for Telephone & Data Riser Diagram | 21d | 2026-03-24 A | 2026-04-04 A | MLTX-02-005-EN-12850, MLTX-02-005-EN-13010 | 100% | 2026-08-18 | 2026-09-10 | Draftsman [12.71 h]; Consultant Staff [3.39 h] | EN.MB.SD.EL.PR.2190 | MOD-02-EN-3400 | TO |
| MLTX-02-005-EN-15920 |  | Shop DWG Approval for CCTV Details | 30d | 2026-07-28 A | 2026-07-28 A | MLTX-02-005-EN-12770, MLTX-02-005-EN-12820 | 100% | 2026-08-11 | 2026-09-14 | Draftsman [12.71 h]; Consultant Staff [3.39 h] | EN.MB.SD.EL.PR.2140 | MOD-02-EN-3350 | TO |

| ID | WBS | Activity | Duration | Start | Finish | Predecessors | Complete | Planned start | Planned finish | Total float | Free float | Resources | New Activity Code | New Activity ID | Shop Drawings |
| --- | --- | --- | --- | --- | --- | --- | --- | --- | --- | --- | --- | --- | --- | --- | --- |
|  | ELE | **SHOP DRAWINGS APPROVAL FOR PLAYGROUND WORKS** |  | 2026-03-14 | 2027-01-09 |  |  |  |  |  |  |  |  |  |  |
|  | 3 | **ARCHITECTURE WORKS** |  | 2026-03-14 | 2026-05-19 |  |  |  |  |  |  |  |  |  |  |
| MLTX-02-005-EN-16170 |  | Shop DWG Approval for Playground Plan/Layout | 15d | 2026-03-14 A | 2026-05-19 A | MLTX-02-005-EN-13050 | 100% | 2026-03-30 | 2026-04-15 |  |  | Draftsman [12.71 h]; Consultant Staff [3.39 h] | EN.MB.SD.AR.PR.1110 | MOD-02-EN-3430 | PL |
| MLTX-02-005-EN-16180 |  | Shop DWG Approval for Furniture & Marking | 30d | 2026-03-14 A | 2026-05-19 A | MLTX-02-005-EN-13060 | 100% | 2026-07-26 | 2026-08-29 |  |  | Draftsman [12.71 h]; Consultant Staff [3.39 h] | EN.MB.SD.AR.PR.1140 | MOD-02-EN-3440 | PL |
| MLTX-02-005-EN-16190 |  | Shop DWG Approval for Sections | 15d | 2026-03-14 A | 2026-05-19 A | MLTX-02-005-EN-13070 | 100% | 2026-03-30 | 2026-04-15 |  |  | Draftsman [12.71 h]; Consultant Staff [3.39 h] | EN.MB.SD.AR.PR.1150 | MOD-02-EN-3450 | PL |
| MLTX-02-005-EN-16200 |  | Shop DWG Approval for Interlock Pattern Plan | 21d | 2026-03-14 A | 2026-05-19 A | MLTX-02-005-EN-13080 | 100% | 2026-08-03 | 2026-08-26 |  |  | Draftsman [12.71 h]; Consultant Staff [3.39 h] | EN.MB.SD.AR.PR.1190 | MOD-02-EN-3460 | PL |
| MLTX-02-005-EN-16210 |  | Shop DWG Approval for Doors/Windows Schedule | 21d | 2026-03-14 A | 2026-05-19 A | MLTX-02-005-EN-13090 | 100% | 2026-04-06 | 2026-04-29 |  |  | Draftsman [12.71 h]; Consultant Staff [3.39 h] | EN.MB.SD.AR.PR.1220 | MOD-02-EN-3470 | PL |
| MLTX-02-005-EN-16250 |  | Shop DWG Approval for Dome Internal Layout | 21d | 2026-03-14 A | 2026-05-19 A | MLTX-02-005-EN-13120, MLTX-02-005-EN-16210 | 100% | 2026-04-30 | 2026-05-24 |  |  | Draftsman [12.71 h]; Consultant Staff [3.39 h] | EN.MB.SD.AR.PR.1110 | MOD-02-EN-3480 | PL |
|  | 4 | **STRUCTURE WORKS** |  | 2026-07-16 | 2026-07-16 |  |  |  |  |  |  |  |  |  |  |
| MLTX-02-005-EN-16220 |  | Shop DWG Approval for Air Dome System | 21d | 2026-07-16 A | 2026-07-16 A | MLTX-02-005-EN-13100, MLTX-02-005-EN-16200 | 100% | 2026-08-27 | 2026-09-20 |  |  | Draftsman [12.71 h]; Consultant Staff [3.39 h] | EN.MB.SD.AR.PR.1110 | MOD-02-EN-3500 | PL |
| MLTX-02-005-EN-16230 |  | Shop DWG Approval for Foundation of Air Dome | 21d | 2026-07-16 A | 2026-07-16 A | MLTX-02-005-EN-13110, MLTX-02-005-EN-16200 | 100% | 2026-08-27 | 2026-09-20 |  |  | Draftsman [12.71 h]; Consultant Staff [3.39 h] | EN.MB.SD.AR.PR.1140 | MOD-02-EN-3510 | PL |
| MLTX-02-005-EN-16240 |  | Shop DWG Approval for Foundation of Air Dome | 21d | 2026-07-16 A | 2026-07-16 A | MLTX-02-005-EN-16230 SS, MLTX-02-005-EN-16200 | 100% | 2026-08-27 | 2026-09-20 |  |  | Draftsman [12.71 h]; Consultant Staff [3.39 h] | EN.MB.SD.AR.PR.1150 | MOD-02-EN-3520 | PL |
| MLTX-02-005-EN-16260 |  | Shop DWG Approval for Anchor Bolt Layout of Air Dome | 21d | 2026-07-16 A | 2026-07-16 A | MLTX-02-005-EN-13130, MLTX-02-005-EN-16200 | 100% | 2026-08-27 | 2026-09-20 |  |  | Draftsman [12.71 h]; Consultant Staff [3.39 h] | EN.MB.SD.AR.PR.1140 | MOD-02-EN-3530 | PL |
|  | 5 | **AIR DOME SYSTEM** |  | 2026-10-20 | 2026-12-28 |  |  |  |  |  |  |  |  |  |  |
| MLTX-02-005-EN-16270 |  | Shop DWG Approval for Air Dome Structural Layout | 15d | 2026-10-20 | 2026-11-05 | MLTX-02-005-EN-13140, MLTX-02-005-EN-15530, MLTX-02-005-EN-16020 |  |  |  | 0d |  | Draftsman [12.71 h]; Consultant Staff [3.39 h] | EN.MB.SD.AR.PR.1110 | MOD-02-EN-3550 | PL |
| MLTX-02-005-EN-16280 |  | Shop DWG Approval for Membrane Panel Layout | 15d | 2026-11-07 | 2026-11-23 | MLTX-02-005-EN-16270, MLTX-02-005-EN-13150, MLTX-02-005-EN-16010 |  |  |  | 0d |  | Draftsman [12.71 h]; Consultant Staff [3.39 h] | EN.MB.SD.AR.PR.1140 | MOD-02-EN-3560 | PL |
| MLTX-02-005-EN-16290 |  | Shop DWG Approval for Cable Tension Layout | 15d | 2026-11-07 | 2026-11-23 | MLTX-02-005-EN-13160, MLTX-02-005-EN-16280 SS, MLTX-02-005-EN-16280 FF |  |  |  | 0d |  | Draftsman [12.71 h]; Consultant Staff [3.39 h] | EN.MB.SD.AR.PR.1150 | MOD-02-EN-3570 | PL |
| MLTX-02-005-EN-16300 |  | Shop DWG Approval for Airlock Door Details | 15d | 2026-11-24 | 2026-12-10 | MLTX-02-005-EN-16290, MLTX-02-005-EN-13170 |  |  |  | 0d |  | Draftsman [12.71 h]; Consultant Staff [3.39 h] | EN.MB.SD.AR.PR.1140 | MOD-02-EN-3580 | PL |
| MLTX-02-005-EN-16310 |  | Shop DWG Approval for Emergency Exit Details | 15d | 2026-12-12 | 2026-12-28 | MLTX-02-005-EN-16300, MLTX-02-005-EN-13180, MLTX-02-005-EN-16350, MLTX-02-005-EN-16360 |  |  |  | 0d | 10d | Draftsman [12.71 h]; Consultant Staff [3.39 h] | EN.MB.SD.AR.PR.1140 | MOD-02-EN-3590 | PL |
|  | 6 | **SPORTS EQUIPMENT** |  | 2026-07-20 | 2026-11-23 |  |  |  |  |  |  |  |  |  |  |
| MLTX-02-005-EN-16360 |  | Shop DWG Approval for Padel Court Structure | 21d | 2026-07-20 A | 2026-07-20 A | MLTX-02-005-EN-13230 | 100% | 2026-05-25 | 2026-06-21 |  |  | Draftsman [12.71 h]; Consultant Staff [3.39 h] | EN.MB.SD.EL.PR.2160 | MOD-02-EN-3630 | PL |
| MLTX-02-005-EN-16350 |  | Shop DWG Approval for Basketball Court Marking | 21d | 2026-08-25 A | 2026-08-25 A | MLTX-02-005-EN-13220 | 100% | 2026-05-25 | 2026-06-21 |  |  | Draftsman [12.71 h]; Consultant Staff [3.39 h] | EN.MB.SD.EL.PR.2180 | MOD-02-EN-3620 | PL |
| MLTX-02-005-EN-16340 |  | Shop DWG Approval for Football Turf Installation | 30d | 2026-10-20 | 2026-11-23 | MLTX-02-005-EN-13210, MLTX-02-005-EN-16250, MLTX-02-005-EN-16070 |  |  |  | -3d | 0d | Draftsman [12.71 h]; Consultant Staff [3.39 h] | EN.MB.SD.EL.PR.2170 | MOD-02-EN-3610 | PL |
|  | 1 | **MECHANCAL WORKS** |  | 2026-11-07 | 2026-12-22 |  |  |  |  |  |  |  |  |  |  |
| MLTX-02-005-EN-16150 |  | Shop DWG Approval for HVAC Plan | 25d | 2026-11-07 | 2026-12-05 | MLTX-02-005-EN-13030 |  |  |  | -18d | 0d | Draftsman [12.71 h]; Consultant Staff [3.39 h] | EN.MB.SD.MC.PR.1740 | MOD-02-EN-3650 | PL |
| MLTX-02-005-EN-16160 |  | Shop DWG Approval for Exhaust Air Plan | 15d | 2026-12-06 | 2026-12-22 | MLTX-02-005-EN-13040, MLTX-02-005-EN-16150 |  |  |  | -18d | 0d | Draftsman [12.71 h]; Consultant Staff [3.39 h] | EN.MB.SD.MC.PR.1750 | MOD-02-EN-3660 | PL |

| ID | WBS | Activity | Duration | Start | Finish | Predecessors | Complete | Planned start | Planned finish | Total float | Free float | Resources | New Activity Code | New Activity ID | Shop Drawings | Old Activity ID - MK |
| --- | --- | --- | --- | --- | --- | --- | --- | --- | --- | --- | --- | --- | --- | --- | --- | --- |
|  | 2 | **ELECTRICAL WORKS** |  | 2026-03-19 | 2027-01-09 |  |  |  |  |  |  |  |  |  |  |  |
| MLTX-02-005-EN-16070 |  | Shop DWG Approval for Lighting Layout | 21d | 2026-03-19 A | 2026-05-18 A | MLTX-02-005-EN-13140 | 100% | 2026-04-30 | 2026-05-24 |  |  | Draftsman [12.71 h]; Consultant Staff [3.39 h] | EN.MB.SD.EL.PR.1980 | MOD-02-EN-3680 | PL |  |
| MLTX-02-005-EN-16120 |  | Shop DWG Approval for CCTV Details | 21d | 2026-08-25 A | 2026-08-25 A | MLTX-02-005-EN-12980 | 100% | 2026-06-22 | 2026-07-15 |  |  | Draftsman [12.71 h]; Consultant Staff [3.39 h] | EN.MB.SD.EL.PR.2140 | MOD-02-EN-3760 | PL |  |
| MLTX-02-005-EN-16130 |  | Shop DWG Approval for CCTV Layout | 21d | 2026-08-25 A | 2026-08-25 A | MLTX-02-005-EN-13010 | 100% | 2026-08-18 | 2026-09-10 |  |  | Draftsman [12.71 h]; Consultant Staff [3.39 h] | EN.MB.SD.EL.PR.2150 | MOD-02-EN-3770 | PL |  |
| MLTX-02-005-EN-16140 |  | Shop DWG Approval for CCTV Riser Diagram | 21d | 2026-08-25 A | 2026-08-25 A | MLTX-02-005-EN-13020 | 100% | 2026-08-18 | 2026-09-10 |  |  | Draftsman [12.71 h]; Consultant Staff [3.39 h] | EN.MB.SD.EL.PR.2180 | MOD-02-EN-3780 | PL |  |
| MLTX-02-005-EN-16090 |  | Shop DWG Approval for Power Single Line Diagram | 25d | 2026-11-18 | 2026-12-16 | MLTX-02-005-EN-12940 |  |  |  | 2d | 20d | Draftsman [12.71 h]; Consultant Staff [3.39 h] | EN.MB.SD.EL.PR.2020 | MOD-02-EN-3730 | PL |  |
| MLTX-02-005-EN-16100 |  | Shop DWG Approval for Panel Board Schedules | 25d | 2026-11-18 | 2026-12-16 | MLTX-02-005-EN-12950 |  |  |  | 2d | 20d | Draftsman [12.71 h]; Consultant Staff [3.39 h] | EN.MB.SD.EL.PR.2030 | MOD-02-EN-3740 | PL |  |
| MLTX-02-005-EN-16080 |  | Shop DWG Approval for Power Layout | 25d | 2026-11-24 | 2026-12-22 | MLTX-02-005-EN-12930, MLTX-02-005-EN-16340 |  |  |  | -3d | 15d | Draftsman [12.71 h]; Consultant Staff [3.39 h] | EN.MB.SD.EL.PR.2000 | MOD-02-EN-3690 | PL |  |
| MLTX-02-005-EN-16110 |  | Shop DWG Approval for Power Installation Details | 15d | 2026-12-23 | 2027-01-09 | MLTX-02-005-EN-12960, MLTX-02-005-EN-16160, MLTX-02-005-EN-16120 |  |  |  | -18d | 0d | Draftsman [12.71 h]; Consultant Staff [3.39 h] | EN.MB.SD.EL.PR.2050 | MOD-02-EN-3700 | PL |  |
|  | EAR | **SHOP DRAWINGS APPROVAL FOR LANDSCAPE WORKS** |  | 2026-03-14 | 2026-07-30 |  |  |  |  |  |  |  |  |  |  |  |
|  | 3 | **ARCHITECTURE WORKS** |  | 2026-03-14 | 2026-05-06 |  |  |  |  |  |  |  |  |  |  |  |
| MLTX-02-005-EN-16010 |  | Shop DWG Approval for Landscape Layout | 21d | 2026-03-14 A | 2026-04-14 A | MLTX-02-005-EN-12860, MLTX-02-005-EN-16040, MLTX-02-005-EN-15580 | 100% | 2026-04-23 | 2026-05-17 |  |  | Draftsman [12.71 h]; Consultant Staff [3.39 h] |  | MOD-02-EN-3810 | LS | MAK-01-EN-1120 |
| MLTX-02-005-EN-16020 |  | Shop DWG Approval for Hardscape Plan | 21d | 2026-03-14 A | 2026-04-14 A | MLTX-02-005-EN-12870 | 100% | 2026-04-06 | 2026-04-29 |  |  | Draftsman [12.71 h]; Consultant Staff [3.39 h] |  | MOD-02-EN-3820 | LS | MAK-01-EN-1130 |
| MLTX-02-005-EN-16040 |  | Shop DWG Approval for Landscape Details | 21d | 2026-03-14 A | 2026-04-14 A | MLTX-02-005-EN-12890 | 100% | 2026-03-30 | 2026-04-22 |  |  | Draftsman [12.71 h]; Consultant Staff [3.39 h] |  | MOD-02-EN-3840 | LS | MAK-01-EN-1150 |
| MLTX-02-005-EN-16030 |  | Shop DWG Approval for Planting Plan | 15d | 2026-03-19 A | 2026-05-06 A | MLTX-02-005-EN-12880, MLTX-02-005-EN-16020 | 100% | 2026-05-11 | 2026-05-31 |  |  | Draftsman [12.71 h]; Consultant Staff [3.39 h] |  | MOD-02-EN-3830 | LS | MAK-01-EN-1140 |
|  | 1 | **MECHANCAL WORKS** |  | 2026-07-30 | 2026-07-30 |  |  |  |  |  |  |  |  |  |  |  |
| MLTX-02-005-EN-16050 |  | Shop DWG Approval for Irrigation Details | 21d | 2026-07-30 A | 2026-07-30 A | MLTX-02-005-EN-12900 | 100% | 2026-04-06 | 2026-04-29 |  |  | Draftsman [12.71 h]; Consultant Staff [3.39 h] |  | MOD-02-EN-3880 | LS | MAK-01-EN-1140 |
| MLTX-02-005-EN-16060 |  | Shop DWG Approval for Irrigation Layout | 21d | 2026-07-30 A | 2026-07-30 A | MLTX-02-005-EN-12910 | 100% | 2026-04-06 | 2026-04-29 |  |  | Draftsman [12.71 h]; Consultant Staff [3.39 h] |  | MOD-02-EN-3920 | LS | MAK-01-EN-1140 |
|  | 2 | **ELECTRICAL WORKS** |  | 2026-07-30 | 2026-07-30 |  |  |  |  |  |  |  |  |  |  |  |
| MLTX-02-005-EN-15590 |  | Shop DWG Approval for Lighting General Arrangement | 30d | 2026-07-30 A | 2026-07-30 A | MLTX-02-005-EN-12160, MLTX-02-005-EN-13010 | 100% | 2026-08-18 | 2026-09-21 |  |  | Draftsman [12.71 h]; Consultant Staff [3.39 h] |  | MOD-02-EN-3970 | LS | MAK-01-EN-1120 |
| MLTX-02-005-EN-15600 |  | Shop DWG Approval for Lighting Network Layout | 30d | 2026-07-30 A | 2026-07-30 A | MLTX-02-005-EN-12170 | 100% | 2026-07-26 | 2026-08-29 |  |  | Draftsman [12.71 h]; Consultant Staff [3.39 h] |  | MOD-02-EN-3980 | LS | MAK-01-EN-1130 |
| MLTX-02-005-EN-15610 |  | Shop DWG Approval for Lighting Details | 30d | 2026-07-30 A | 2026-07-30 A | MLTX-02-005-EN-12180 | 100% | 2026-08-01 | 2026-09-03 |  |  | Draftsman [12.71 h]; Consultant Staff [3.39 h] |  | MOD-02-EN-3950 | LS | MAK-01-EN-1140 |
| MLTX-02-005-EN-15620 |  | Shop DWG Approval for Lighting Single Line Diagram | 30d | 2026-07-30 A | 2026-07-30 A | MLTX-02-005-EN-12190 | 100% | 2026-08-01 | 2026-09-03 |  |  | Draftsman [12.71 h]; Consultant Staff [3.39 h] |  | MOD-02-EN-3960 | LS | MAK-01-EN-1150 |
|  | MTS | **METHOD STATEMENTS** |  | 2026-03-08 | 2026-09-12 |  |  |  |  |  |  |  |  |  |  |  |
|  | 1 | **METHOD STATEMENT SUBMITTAL** |  | 2026-03-08 | 2026-06-04 |  |  |  |  |  |  |  |  |  |  |  |
|  | 4 | **CIVIL WORKS** |  | 2026-03-09 | 2026-03-14 |  |  |  |  |  |  |  |  |  |  |  |
| MLTX-02-005-EN-12200 |  | Preparation & Submission of Method Statement for Earthwork | 15d | 2026-03-09 A | 2026-03-14 A | MLTX-02-005-MB-2010 | 100% | 2026-03-09 | 2026-03-29 |  |  | QA/QC Engineer [16.1 h] |  | MOD-02-EN-4020 |  | A1010 |
| MLTX-02-005-EN-12210 |  | Preparation & Submission of Method Statement for Concrete Works | 21d | 2026-03-09 A | 2026-03-14 A | MLTX-02-005-MB-2010, MLTX-02-005-EN-12220 | 100% | 2026-04-06 | 2026-04-29 |  |  | QA/QC Engineer [16.1 h] |  | MOD-02-EN-4030 |  | A1020 |
| MLTX-02-005-EN-12220 |  | Preparation & Submission of Method Statement for Waterproofing | 21d | 2026-03-09 A | 2026-03-14 A | MLTX-02-005-MB-2010 | 100% | 2026-03-09 | 2026-04-05 |  |  | QA/QC Engineer [16.1 h] |  | MOD-02-EN-4040 |  |  |

| ID | WBS | Activity | Duration | Start | Finish | Predecessors | Complete | Planned start | Planned finish | Resources | New Activity ID | Old Activity ID - MK |
| --- | --- | --- | --- | --- | --- | --- | --- | --- | --- | --- | --- | --- |
|  | 1 | **ARCHITECTURE WORKS** |  | 2026-03-08 | 2026-06-02 |  |  |  |  |  |  |  |
| MLTX-02-005-EN-12260 |  | Preparation & Submission of Method Statement for Masonary Works | 21d | 2026-03-08 A | 2026-05-17 A | MLTX-02-005-MB-2010, MLTX-02-005-EN-12210 | 100% | 2026-04-30 | 2026-05-24 | QA/QC Engineer [16.1 h] | MOD-02-EN-4070 | A1020 |
| MLTX-02-005-EN-12270 |  | Preparation & Submission of Method Statement for Tilling Works | 21d | 2026-03-08 A | 2026-05-25 A | MLTX-02-005-MB-2010 | 100% | 2026-07-26 | 2026-08-18 | QA/QC Engineer [16.1 h] | MOD-02-EN-4080 |  |
| MLTX-02-005-EN-12280 |  | Preparation & Submission of Method Statement for Seats/Benches Works | 21d | 2026-03-08 A | 2026-06-02 A | MLTX-02-005-MB-2010, MLTX-02-005-EN-12270 | 100% | 2026-08-19 | 2026-09-12 | QA/QC Engineer [16.1 h] | MOD-02-EN-4090 | A1010 |
| MLTX-02-005-EN-12290 |  | Preparation & Submission of Method Statement for Doors/Windows Works | 21d | 2026-03-08 A | 2026-06-02 A | MLTX-02-005-MB-2010, MLTX-02-005-EN-12420 | 100% | 2026-10-08 | 2026-11-01 | QA/QC Engineer [16.1 h] | MOD-02-EN-4100 | A1020 |
| MLTX-02-005-EN-12300 |  | Preparation & Submission of Method Statement for Interlock/Curbstone Works | 21d | 2026-03-08 A | 2026-05-25 A | MLTX-02-005-MB-2010, MLTX-02-005-EN-12340 | 100% | 2026-06-29 | 2026-07-22 | QA/QC Engineer [16.1 h] | MOD-02-EN-4110 |  |
| MLTX-02-005-EN-12310 |  | Preparation & Submission of Method Statement for Parking Works | 21d | 2026-03-08 A | 2026-05-25 A | MLTX-02-005-MB-2010, MLTX-02-005-EN-12250 | 100% | 2026-08-10 | 2026-09-02 | QA/QC Engineer [16.1 h] | MOD-02-EN-4120 |  |
| MLTX-02-005-EN-12320 |  | Preparation & Submission of Method Statement for Soft Scape Works | 21d | 2026-03-08 A | 2026-06-02 A | MLTX-02-005-MB-2010, MLTX-02-005-EN-15480, MLTX-02-005-EN-15320 | 100% | 2026-06-29 | 2026-07-22 | QA/QC Engineer [16.1 h] | MOD-02-EN-4130 |  |
| MLTX-02-005-EN-12330 |  | Preparation & Submission of Method Statement for Fence Works | 30d | 2026-03-08 A | 2026-06-02 A | MLTX-02-005-MB-2010 | 100% | 2026-03-09 | 2026-04-15 | QA/QC Engineer [16.1 h] | MOD-02-EN-4140 |  |
| MLTX-02-005-EN-12340 |  | Preparation & Submission of Method Statement for Air Dome Works | 30d | 2026-03-08 A | 2026-06-02 A | MLTX-02-005-MB-2010, MLTX-02-005-EN-12430 | 100% | 2026-05-21 | 2026-06-28 | QA/QC Engineer [16.1 h] | MOD-02-EN-4150 |  |
| MLTX-02-005-EN-12350 |  | Preparation & Submission of Method Statement for Metal Works | 21d | 2026-03-08 A | 2026-06-02 A | MLTX-02-005-MB-2010, MLTX-02-005-EN-15480 | 100% | 2026-06-29 | 2026-07-22 | QA/QC Engineer [16.1 h] | MOD-02-EN-4160 |  |
| MLTX-02-005-EN-12360 |  | Preparation & Submission of Method Statement for Partitions Works | 21d | 2026-03-08 A | 2026-06-02 A | MLTX-02-005-MB-2010, MLTX-02-005-EN-15480 | 100% | 2026-06-29 | 2026-07-22 | QA/QC Engineer [16.1 h] | MOD-02-EN-4170 |  |
| MLTX-02-005-EN-12370 |  | Preparation & Submission of Method Statement for Gypsum Board Works | 21d | 2026-03-08 A | 2026-06-02 A | MLTX-02-005-MB-2010 | 100% | 2026-03-09 | 2026-04-05 | QA/QC Engineer [16.1 h] | MOD-02-EN-4180 |  |
| MLTX-02-005-EN-12250 |  | Preparation & Submission of Method Statement for Plastering Works | 15d | 2026-03-09 A | 2026-03-14 A | MLTX-02-005-MB-2010, MLTX-02-005-EN-12320 | 100% | 2026-07-23 | 2026-08-09 | QA/QC Engineer [16.1 h] | MOD-02-EN-4060 | A1010 |
|  | 2 | **MECHANICAL WORKS** |  | 2026-03-14 | 2026-06-04 |  |  |  |  |  |  |  |
| MLTX-02-005-EN-12380 |  | Preparation & Submission of Method Statement for Sewage/Drainage System | 21d | 2026-03-14 A | 2026-05-04 A | MLTX-02-005-EN-12200, MLTX-02-005-EN-12440 | 100% | 2026-08-03 | 2026-08-26 | QA/QC Engineer [16.1 h] | MOD-02-EN-4200 | A1010 |
| MLTX-02-005-EN-12390 |  | Preparation & Submission of Method Statement for Water Supply System | 21d | 2026-03-14 A | 2026-05-04 A | MLTX-02-005-EN-12210, MLTX-02-005-EN-12970 | 100% | 2026-07-25 | 2026-08-17 | QA/QC Engineer [16.1 h] | MOD-02-EN-4210 | A1020 |
| MLTX-02-005-EN-12400 |  | Preparation & Submission of Method Statement for Fire Fighting System | 21d | 2026-03-14 A | 2026-06-04 A | MLTX-02-005-EN-12220, MLTX-02-005-EN-15340 | 100% | 2026-10-08 | 2026-11-01 | QA/QC Engineer [16.1 h] | MOD-02-EN-4220 |  |
| MLTX-02-005-EN-12410 |  | Preparation & Submission of Method Statement for Irrigation System | 15d | 2026-03-14 A | 2026-06-04 A | MLTX-02-005-EN-12250, MLTX-02-005-EN-15340 | 100% | 2026-10-08 | 2026-10-25 | QA/QC Engineer [16.1 h] | MOD-02-EN-4230 | A1010 |
| MLTX-02-005-EN-12420 |  | Preparation & Submission of Method Statement for HVAC System | 21d | 2026-03-14 A | 2026-06-04 A | MLTX-02-005-EN-12260, MLTX-02-005-EN-12280 | 100% | 2026-09-13 | 2026-10-07 | QA/QC Engineer [16.1 h] | MOD-02-EN-4240 | A1020 |
|  | 5 | **ELECTRICAL WORKS** |  | 2026-03-14 | 2026-05-11 |  |  |  |  |  |  |  |
| MLTX-02-005-EN-12230 |  | Preparation & Submission of Method Statement for Electrical Conduits/Pulling Works | 21d | 2026-03-14 A | 2026-05-11 A | MLTX-02-005-EN-12300, MLTX-02-005-EN-12440 | 100% | 2026-08-03 | 2026-08-26 | QA/QC Engineer [16.1 h] | MOD-02-EN-4310 |  |
| MLTX-02-005-EN-12240 |  | Preparation & Submission of Method Statement for Lighting Poles Installation | 21d | 2026-03-14 A | 2026-05-11 A | MLTX-02-005-EN-12320, MLTX-02-005-EN-12360 | 100% | 2026-07-23 | 2026-08-16 | QA/QC Engineer [16.1 h] | MOD-02-EN-4330 |  |
| MLTX-02-005-EN-12430 |  | Preparation & Submission of Method Statement for Telecommunication & Data System | 30d | 2026-03-14 A | 2026-05-11 A | MLTX-02-005-EN-12330 | 100% | 2026-04-16 | 2026-05-20 | QA/QC Engineer [16.1 h] | MOD-02-EN-4260 |  |
| MLTX-02-005-EN-12440 |  | Preparation & Submission of Method Statement for CCTV System | 30d | 2026-03-14 A | 2026-05-11 A | MLTX-02-005-EN-12340, MLTX-02-005-EN-15480 | 100% | 2026-06-29 | 2026-08-02 | QA/QC Engineer [16.1 h] | MOD-02-EN-4270 |  |
| MLTX-02-005-EN-12450 |  | Preparation & Submission of Method Statement for Lighting Works | 21d | 2026-03-14 A | 2026-05-11 A | MLTX-02-005-EN-12350, MLTX-02-005-EN-12320 | 100% | 2026-07-23 | 2026-08-16 | QA/QC Engineer [16.1 h] | MOD-02-EN-4280 |  |
| MLTX-02-005-EN-12460 |  | Preparation & Submission of Method Statement for Earthing/Lightning Works | 21d | 2026-03-14 A | 2026-05-11 A | MLTX-02-005-EN-12360, MLTX-02-005-EN-16120 | 100% | 2026-07-23 | 2026-08-16 | QA/QC Engineer [16.1 h] | MOD-02-EN-4290 |  |
| MLTX-02-005-EN-12470 |  | Preparation & Submission of Method Statement for Panel Boards Works | 21d | 2026-03-14 A | 2026-05-11 A | MLTX-02-005-EN-12370 | 100% | 2026-04-06 | 2026-04-29 | QA/QC Engineer [16.1 h] | MOD-02-EN-4300 |  |

| ID | WBS | Activity | Duration | Start | Finish | Predecessors | Complete | Planned start | Planned finish | Resources | New Activity ID | Old Activity ID - MK |
| --- | --- | --- | --- | --- | --- | --- | --- | --- | --- | --- | --- | --- |
|  | 2 | **METHOD STATEMENT APPROVAL** |  | 2026-03-14 | 2026-09-12 |  |  |  |  |  |  |  |
|  | 4 | **CIVIL WORKS** |  | 2026-03-15 | 2026-03-29 |  |  |  |  |  |  |  |
| MLTX-02-005-EN-15260 |  | Approval of Method Statement for Earthwork | 15d | 2026-03-15 A | 2026-03-29 A | MLTX-02-005-EN-12200 | 100% | 2026-03-30 | 2026-04-15 | Consultant Staff [16.1 h] | MOD-02-EN-4360 | A1010 |
| MLTX-02-005-EN-15270 |  | Approval of Method Statement for Concrete Works | 30d | 2026-03-15 A | 2026-03-29 A | MLTX-02-005-EN-12210, MLTX-02-005-EN-15280 | 100% | 2026-04-30 | 2026-06-07 | Consultant Staff [16.1 h] | MOD-02-EN-4370 | A1020 |
| MLTX-02-005-EN-15280 |  | Approval of Method Statement for Waterproofing | 21d | 2026-03-15 A | 2026-03-29 A | MLTX-02-005-EN-12220 | 100% | 2026-04-06 | 2026-04-29 | Consultant Staff [16.1 h] | MOD-02-EN-4380 |  |
|  | 1 | **ARCHITECTURE WORKS** |  | 2026-03-14 | 2026-09-12 |  |  |  |  |  |  |  |
| MLTX-02-005-EN-15320 |  | Approval of Method Statement for Masonary Works | 21d | 2026-03-14 A | 2026-05-21 A | MLTX-02-005-EN-12260, MLTX-02-005-EN-15520 | 100% | 2026-05-25 | 2026-06-21 | Consultant Staff [16.1 h] | MOD-02-EN-4410 | A1020 |
| MLTX-02-005-EN-15330 |  | Approval of Method Statement for Tilling Works | 21d | 2026-03-14 A | 2026-05-21 A | MLTX-02-005-EN-12270, MLTX-02-005-EN-16200, MLTX-02-005-EN-12380 | 100% | 2026-08-27 | 2026-09-20 | Consultant Staff [16.1 h] | MOD-02-EN-4420 |  |
| MLTX-02-005-EN-15310 |  | Approval of Method Statement for Plastering Works | 30d | 2026-03-15 A | 2026-03-29 A | MLTX-02-005-EN-12250, MLTX-02-005-EN-12240 | 100% | 2026-08-17 | 2026-09-20 | Consultant Staff [16.1 h] | MOD-02-EN-4400 | A1010 |
| MLTX-02-005-EN-15370 |  | Approval of Method Statement for Parking Works | 21d | 2026-05-15 A | 2026-05-15 A | MLTX-02-005-EN-12310, MLTX-02-005-EN-15300 | 100% | 2026-09-10 | 2026-10-05 | Consultant Staff [16.1 h] | MOD-02-EN-4460 |  |
| MLTX-02-005-EN-15400 |  | Approval of Method Statement for Air Dome Works | 30d | 2026-07-12 A | 2026-07-12 A | MLTX-02-005-EN-12340, MLTX-02-005-EN-15300 | 100% | 2026-09-10 | 2026-10-15 | Consultant Staff [16.1 h] | MOD-02-EN-4490 |  |
| MLTX-02-005-EN-15390 |  | Approval of Method Statement for Fence Works | 30d | 2026-07-16 A | 2026-07-16 A | MLTX-02-005-EN-12330, MLTX-02-005-EN-15340 | 100% | 2026-10-08 | 2026-11-11 | Consultant Staff [16.1 h] | MOD-02-EN-4480 |  |
| MLTX-02-005-EN-15360 |  | Approval of Method Statement for Interlock/Curbstone Works | 21d | 2026-08-10 A | 2026-08-10 A | MLTX-02-005-EN-12300, MLTX-02-005-EN-12320 | 100% | 2026-07-23 | 2026-08-16 | Consultant Staff [16.1 h] | MOD-02-EN-4450 |  |
| MLTX-02-005-EN-15420 |  | Approval of Method Statement for Gypsum Board Works | 21d | 2026-08-20 A | 2026-08-20 A | MLTX-02-005-EN-12370, MLTX-02-005-EN-15340 | 100% | 2026-10-08 | 2026-11-01 | Consultant Staff [16.1 h] | MOD-02-EN-4520 |  |
| MLTX-02-005-EN-15340 |  | Approval of Method Statement for Seats/Benches Works | 21d | 2026-09-12 A | 2026-09-12 A | MLTX-02-005-EN-12280, MLTX-02-005-EN-15300, MLTX-02-005-EN-15440, MLTX-02-005-EN-15500 | 100% | 2026-09-13 | 2026-10-07 | Consultant Staff [16.1 h] | MOD-02-EN-4430 | A1010 |
| MLTX-02-005-EN-15350 |  | Approval of Method Statement for Doors/Windows Works | 21d | 2026-09-12 A | 2026-09-12 A | MLTX-02-005-EN-12290, MLTX-02-005-EN-15400, MLTX-02-005-EN-15390 | 100% | 2026-11-12 | 2026-12-06 | Consultant Staff [16.1 h] | MOD-02-EN-4440 | A1020 |
| MLTX-02-005-EN-15380 |  | Approval of Method Statement for Soft Scape Works | 21d | 2026-09-12 A | 2026-09-12 A | MLTX-02-005-EN-12320, MLTX-02-005-EN-15410, MLTX-02-005-EN-15400 | 100% | 2026-10-25 | 2026-11-17 | Consultant Staff [16.1 h] | MOD-02-EN-4470 |  |
| MLTX-02-005-EN-15410 |  | Approval of Method Statement for Partitions Works | 21d | 2026-09-12 A | 2026-09-12 A | MLTX-02-005-EN-12360, MLTX-02-005-EN-15740, MLTX-02-005-EN-15330, MLTX-02-005-EN-15800, MLTX-02-005-EN-15310 | 100% | 2026-09-30 | 2026-10-24 | Consultant Staff [16.1 h] | MOD-02-EN-4510 |  |
|  | 2 | **MECHANICAL WORKS** |  | 2026-06-24 | 2026-08-26 |  |  |  |  |  |  |  |
| MLTX-02-005-EN-15430 |  | Approval of Method Statement for Sewage/Drainage System | 21d | 2026-06-24 A | 2026-06-24 A | MLTX-02-005-EN-12380, MLTX-02-005-EN-15300 | 100% | 2026-09-10 | 2026-10-05 | Consultant Staff [16.1 h] | MOD-02-EN-4540 | A1010 |
| MLTX-02-005-EN-15440 |  | Approval of Method Statement for Water Supply System | 21d | 2026-07-12 A | 2026-07-18 A | MLTX-02-005-EN-12390, MLTX-02-005-EN-12160 | 100% | 2026-08-18 | 2026-09-10 | Consultant Staff [16.1 h] | MOD-02-EN-4550 | A1020 |
| MLTX-02-005-EN-15470 |  | Approval of Method Statement for HVAC System | 21d | 2026-08-18 A | 2026-08-18 A | MLTX-02-005-EN-12420, MLTX-02-005-EN-15340 | 100% | 2026-10-08 | 2026-11-01 | Consultant Staff [16.1 h] | MOD-02-EN-4580 | A1020 |
| MLTX-02-005-EN-15460 |  | Approval of Method Statement for Irrigation System | 15d | 2026-08-25 A | 2026-08-25 A | MLTX-02-005-EN-12410, MLTX-02-005-EN-15400 | 100% | 2026-10-26 | 2026-11-11 | Consultant Staff [16.1 h] | MOD-02-EN-4570 | A1010 |
| MLTX-02-005-EN-15450 |  | Approval of Method Statement for Fire Fighting System | 21d | 2026-08-26 A | 2026-08-26 A | MLTX-02-005-EN-12400, MLTX-02-005-EN-15380, MLTX-02-005-EN-15470, MLTX-02-005-EN-15420, MLTX-02-005-EN-12290 | 100% | 2026-11-18 | 2026-12-12 | Consultant Staff [16.1 h] | MOD-02-EN-4560 |  |

| ID | WBS | Activity | Duration | Start | Finish | Predecessors | Complete | Planned start | Planned finish | Resources | New Activity ID | Old Activity ID - MK |
| --- | --- | --- | --- | --- | --- | --- | --- | --- | --- | --- | --- | --- |
|  | 5 | **ELECTRICAL WORKS** |  | 2026-07-14 | 2026-08-26 |  |  |  |  |  |  |  |
| MLTX-02-005-EN-15290 |  | Approval of Method Statement for Electrical Conduits/Pulling Works | 21d | 2026-07-14 A | 2026-07-14 A | MLTX-02-005-EN-12230, MLTX-02-005-EN-12240 | 100% | 2026-08-27 | 2026-09-20 | Consultant Staff [16.1 h] | MOD-02-EN-4600 |  |
| MLTX-02-005-EN-15500 |  | Approval of Method Statement for Lighting Works | 21d | 2026-07-14 A | 2026-07-14 A | MLTX-02-005-EN-12450, MLTX-02-005-EN-12240 | 100% | 2026-08-17 | 2026-09-09 | Consultant Staff [16.1 h] | MOD-02-EN-4650 |  |
| MLTX-02-005-EN-15510 |  | Approval of Method Statement for Earthing/Lightning Works | 21d | 2026-07-14 A | 2026-07-14 A | MLTX-02-005-EN-12460, MLTX-02-005-EN-12390 | 100% | 2026-08-18 | 2026-09-10 | Consultant Staff [16.1 h] | MOD-02-EN-4660 |  |
| MLTX-02-005-EN-15520 |  | Approval of Method Statement for Panel Boards Works | 21d | 2026-07-14 A | 2026-07-14 A | MLTX-02-005-EN-12470 | 100% | 2026-04-30 | 2026-05-24 | Consultant Staff [16.1 h] | MOD-02-EN-4670 |  |
| MLTX-02-005-EN-15480 |  | Approval of Method Statement for Telecommunication & Data System | 30d | 2026-07-28 A | 2026-07-28 A | MLTX-02-005-EN-12430 | 100% | 2026-05-21 | 2026-06-28 | Consultant Staff [16.1 h] | MOD-02-EN-4630 |  |
| MLTX-02-005-EN-15490 |  | Approval of Method Statement for CCTV System | 30d | 2026-07-28 A | 2026-07-28 A | MLTX-02-005-EN-12440, MLTX-02-005-EN-12240 | 100% | 2026-08-17 | 2026-09-20 | Consultant Staff [16.1 h] | MOD-02-EN-4640 |  |
| MLTX-02-005-EN-15300 |  | Approval of Method Statement for Lighting Poles Installation | 21d | 2026-08-26 A | 2026-08-26 A | MLTX-02-005-EN-12240, MLTX-02-005-EN-12460 | 100% | 2026-08-17 | 2026-09-09 | Consultant Staff [16.1 h] | MOD-02-EN-4620 |  |
|  | PREQ | **PRE-QUALIFICATION & MATERIAL** |  | 2026-03-08 | 2026-09-12 |  |  |  |  |  |  |  |
|  | PRE | **PRE-QUALIFICATION** |  | 2026-03-08 | 2026-06-07 |  |  |  |  |  |  |  |
|  | TOI | **TOILET/SERVICE WORKS** |  | 2026-03-08 | 2026-06-07 |  |  |  |  |  |  |  |
|  | 1 | **STEEL REINFORCEMENT** |  | 2026-03-09 | 2026-03-19 |  |  |  |  |  |  |  |
| MLTX-02-005-EN-14260 |  | Pre-Qualification Submittal for Steel Reinforcement | 15d | 2026-03-09 A | 2026-03-11 A | MLTX-02-005-MB-2010 | 100% | 2026-03-09 | 2026-03-29 | QA/QC Engineer [16.1 h] | MOD-02-EN-4720 | MAK-01-PR-1000 |
| MLTX-02-005-EN-14380 |  | Pre-Qualification Approval for Steel Reinforcement | 15d | 2026-03-12 A | 2026-03-19 A | MLTX-02-005-EN-14260 | 100% | 2026-03-30 | 2026-04-15 | Consultant Staff [16.1 h] | MOD-02-EN-4730 | MAK-01-PR-1010 |
|  | 2 | **READY MIX CONCRETE** |  | 2026-03-09 | 2026-03-19 |  |  |  |  |  |  |  |
| MLTX-02-005-EN-14270 |  | Pre-Qualification Submittal for Ready Mixed Concrete | 15d | 2026-03-09 A | 2026-03-11 A | MLTX-02-005-MB-2010, MLTX-02-005-EN-14260 SS | 100% | 2026-03-09 | 2026-03-29 | QA/QC Engineer [16.1 h] | MOD-02-EN-4750 | MAK-01-PR-1040 |
| MLTX-02-005-EN-14280 |  | Pre-Qualification Approval of Ready Mixed Concrete | 15d | 2026-03-12 A | 2026-03-19 A | MLTX-02-005-EN-14270 | 100% | 2026-03-30 | 2026-04-15 | Consultant Staff [16.1 h] | MOD-02-EN-4760 | MAK-01-PR-1050 |
|  | 3 | **CONCRETE BLOCKS** |  | 2026-03-09 | 2026-03-19 |  |  |  |  |  |  |  |
| MLTX-02-005-EN-14480 |  | Pre-Qualification Submittal for Concrete Blocks | 15d | 2026-03-09 A | 2026-03-11 A | MLTX-02-005-EN-14270 SS, MLTX-02-005-MB-2010 | 100% | 2026-03-09 | 2026-03-29 | QA/QC Engineer [16.1 h] | MOD-02-EN-4780 | MAK-01-PR-1000 |
| MLTX-02-005-EN-14490 |  | Pre-Qualification Approval for Concrete Blocks | 15d | 2026-03-12 A | 2026-03-19 A | MLTX-02-005-EN-14480, MLTX-02-005-EN-14280 | 100% | 2026-04-16 | 2026-05-03 | Consultant Staff [16.1 h] | MOD-02-EN-4790 | MAK-01-PR-1010 |
|  | 4 | **WATER PROOFING** |  | 2026-03-09 | 2026-03-19 |  |  |  |  |  |  |  |
| MLTX-02-005-EN-14290 |  | Pre-Qualification Submittal for Water Proofing | 15d | 2026-03-09 A | 2026-03-11 A | MLTX-02-005-EN-14480 SS, MLTX-02-005-MB-2010 | 100% | 2026-03-09 | 2026-03-29 | QA/QC Engineer [16.1 h] | MOD-02-EN-4810 | MAK-01-PR-1060 |
| MLTX-02-005-EN-14390 |  | Pre-Qualification Approval for Water Proofing | 21d | 2026-03-12 A | 2026-03-19 A | MLTX-02-005-EN-14290 | 100% | 2026-03-30 | 2026-04-22 | Consultant Staff [16.1 h] | MOD-02-EN-4820 | MAK-01-PR-1070 |
|  | 6 | **FLOOR/WALL TILES** |  | 2026-03-08 | 2026-05-10 |  |  |  |  |  |  |  |
| MLTX-02-005-EN-14500 |  | Pre-Qualification Submittal for Tilling Materials | 15d | 2026-03-08 A | 2026-05-06 A | MLTX-02-005-EN-14290 SS, MLTX-02-005-MB-2010 | 100% | 2026-03-09 | 2026-03-29 | QA/QC Engineer [16.1 h] | MOD-02-EN-4840 | MAK-01-PR-1000 |
| MLTX-02-005-EN-14510 |  | Pre-Qualification Approval for Tailling Material | 15d | 2026-03-11 A | 2026-05-10 A | MLTX-02-005-EN-14500, MLTX-02-005-EN-14280 | 100% | 2026-04-16 | 2026-05-03 | Consultant Staff [16.1 h] | MOD-02-EN-4850 | MAK-01-PR-1010 |

| ID | WBS | Activity | Duration | Start | Finish | Predecessors | Complete | Planned start | Planned finish | Resources | New Activity ID | Old Activity ID - MK |
| --- | --- | --- | --- | --- | --- | --- | --- | --- | --- | --- | --- | --- |
|  | 7 | **SUSPENDED CEILING** |  | 2026-03-09 | 2026-03-19 |  |  |  |  |  |  |  |
| MLTX-02-005-EN-14520 |  | Pre-Qualification Submittal for Suspend Ceiling | 15d | 2026-03-09 A | 2026-03-11 A | MLTX-02-005-EN-14500 SS, MLTX-02-005-MB-2010 | 100% | 2026-03-09 | 2026-03-29 | QA/QC Engineer [16.1 h] | MOD-02-EN-4870 | MAK-01-PR-1000 |
| MLTX-02-005-EN-14530 |  | Pre-Qualification Approval for Suspend Ceiling | 15d | 2026-03-12 A | 2026-03-19 A | MLTX-02-005-EN-14520, MLTX-02-005-EN-14640 | 100% | 2026-05-21 | 2026-06-10 | Consultant Staff [16.1 h] | MOD-02-EN-4880 | MAK-01-PR-1010 |
|  | 8 | **DOORS/WINDOWS** |  | 2026-03-09 | 2026-03-19 |  |  |  |  |  |  |  |
| MLTX-02-005-EN-14540 |  | Pre-Qualification Submittal for Doors/Windows | 15d | 2026-03-09 A | 2026-03-11 A | MLTX-02-005-EN-14520 SS, MLTX-02-005-MB-2010 | 100% | 2026-03-09 | 2026-03-29 | QA/QC Engineer [16.1 h] | MOD-02-EN-4900 | MAK-01-PR-1000 |
| MLTX-02-005-EN-14550 |  | Pre-Qualification Approval for Doors/Windows | 15d | 2026-03-12 A | 2026-03-19 A | MLTX-02-005-EN-14540, MLTX-02-005-EN-14730 | 100% | 2026-05-21 | 2026-06-10 | Consultant Staff [16.1 h] | MOD-02-EN-4910 | MAK-01-PR-1010 |
|  | 9 | **FURNITURES** |  | 2026-03-08 | 2026-05-12 |  |  |  |  |  |  |  |
| MLTX-02-005-EN-14660 |  | Pre-Qualification Submittal for Furnitures | 15d | 2026-03-08 A | 2026-05-07 A | MLTX-02-005-EN-14540 SS, MLTX-02-005-MB-2010 | 100% | 2026-03-09 | 2026-03-29 | QA/QC Engineer [16.1 h] | MOD-02-EN-4930 | MAK-01-PR-1000 |
| MLTX-02-005-EN-14670 |  | Pre-Qualification Approval for Furnitures | 15d | 2026-03-11 A | 2026-05-12 A | MLTX-02-005-EN-14660, MLTX-02-005-EN-14280 | 100% | 2026-04-16 | 2026-05-03 | Consultant Staff [16.1 h] | MOD-02-EN-4940 | MAK-01-PR-1010 |
|  | 10 | **SANITARY FIXTURES** |  | 2026-03-08 | 2026-05-10 |  |  |  |  |  |  |  |
| MLTX-02-005-EN-14560 |  | Pre-Qualification Submittal for Sanitary Fixtures | 15d | 2026-03-08 A | 2026-05-06 A | MLTX-02-005-MB-2010, MLTX-02-005-EN-14660 SS | 100% | 2026-03-09 | 2026-03-29 | QA/QC Engineer [16.1 h] | MOD-02-EN-4960 | MAK-01-PR-1000 |
| MLTX-02-005-EN-14570 |  | Pre-Qualification Approval for Sanitary Fixtures | 15d | 2026-03-11 A | 2026-05-10 A | MLTX-02-005-EN-14560 | 100% | 2026-03-30 | 2026-04-15 | Consultant Staff [16.1 h] | MOD-02-EN-4970 | MAK-01-PR-1010 |
|  | 11 | **WATER SUPPLY PIPES** |  | 2026-03-08 | 2026-06-07 |  |  |  |  |  |  |  |
| MLTX-02-005-EN-14580 |  | Pre-Qualification Submittal for Water Supply Pipes | 15d | 2026-03-08 A | 2026-05-25 A | MLTX-02-005-EN-14560 SS, MLTX-02-005-MB-2010 | 100% | 2026-03-09 | 2026-03-29 | QA/QC Engineer [16.1 h] | MOD-02-EN-4990 | MAK-01-PR-1000 |
| MLTX-02-005-EN-14590 |  | Pre-Qualification Approval for Water Supply Pipes | 15d | 2026-03-11 A | 2026-06-07 A | MLTX-02-005-EN-14580, MLTX-02-005-EN-14730 | 100% | 2026-05-21 | 2026-06-10 | Consultant Staff [16.1 h] | MOD-02-EN-5000 | MAK-01-PR-1010 |
|  | 12 | **SEWAGE/DRAINAGE PIPES** |  | 2026-03-08 | 2026-06-07 |  |  |  |  |  |  |  |
| MLTX-02-005-EN-14600 |  | Pre-Qualification Submittal for Sewage/Drainage Pipes | 15d | 2026-03-08 A | 2026-05-25 A | MLTX-02-005-EN-14580 SS | 100% | 2026-03-09 | 2026-03-29 | QA/QC Engineer [16.1 h] | MOD-02-EN-5020 | MAK-01-PR-1000 |
| MLTX-02-005-EN-14610 |  | Pre-Qualification Approval for Sewage/Drainage Pipes | 15d | 2026-03-11 A | 2026-06-07 A | MLTX-02-005-EN-14600, MLTX-02-005-EN-13240 | 100% | 2026-07-16 | 2026-08-02 | Consultant Staff [16.1 h] | MOD-02-EN-5030 | MAK-01-PR-1010 |
|  | 16 | **PACKAGE AC UNITS** |  | 2026-03-11 | 2026-06-07 |  |  |  |  |  |  |  |
| MLTX-02-005-EN-14690 |  | Pre-Qualification Submittal for Package AC Units | 15d | 2026-03-11 A | 2026-05-25 A | MLTX-02-005-EN-14260 | 100% | 2026-03-30 | 2026-04-15 | QA/QC Engineer [16.1 h] | MOD-02-EN-5050 | MAK-01-PR-1000 |
| MLTX-02-005-EN-14700 |  | Pre-Qualification Approval for Package AC Units | 15d | 2026-03-15 A | 2026-06-07 A | MLTX-02-005-EN-14690 | 100% | 2026-04-16 | 2026-05-03 | Consultant Staff [16.1 h] | MOD-02-EN-5060 | MAK-01-PR-1010 |
|  | 17 | **AIR DIFUSSERS/GRILLS** |  | 2026-03-11 | 2026-06-07 |  |  |  |  |  |  |  |
| MLTX-02-005-EN-14710 |  | Pre-Qualification Submittal for Air Diffusers/Grills | 15d | 2026-03-11 A | 2026-05-25 A | MLTX-02-005-EN-14270, MLTX-02-005-EN-14450 | 100% | 2026-05-04 | 2026-05-20 | QA/QC Engineer [16.1 h] | MOD-02-EN-5080 | MAK-01-PR-1000 |
| MLTX-02-005-EN-14720 |  | Pre-Qualification Approval for Air Diffusers/Grills | 15d | 2026-03-15 A | 2026-06-07 A | MLTX-02-005-EN-14710, MLTX-02-005-EN-14640 | 100% | 2026-05-21 | 2026-06-10 | Consultant Staff [16.1 h] | MOD-02-EN-5090 | MAK-01-PR-1010 |

| ID | WBS | Activity | Duration | Start | Finish | Predecessors | Complete | Planned start | Planned finish | Resources | New Activity ID | Old Activity ID - MK |
| --- | --- | --- | --- | --- | --- | --- | --- | --- | --- | --- | --- | --- |
|  | 18 | **GALVANIZED DUCTS** |  | 2026-03-11 | 2026-04-30 |  |  |  |  |  |  |  |
| MLTX-02-005-EN-14730 |  | Pre-Qualification Submittal for Galvanized Ducts | 15d | 2026-03-11 A | 2026-04-25 A | MLTX-02-005-EN-14480, MLTX-02-005-EN-14450 | 100% | 2026-05-04 | 2026-05-20 | QA/QC Engineer [16.1 h] | MOD-02-EN-5110 | MAK-01-PR-1000 |
| MLTX-02-005-EN-14740 |  | Pre-Qualification Approval for Galvanized Ducts | 15d | 2026-03-15 A | 2026-04-30 A | MLTX-02-005-EN-14730, MLTX-02-005-EN-14300 | 100% | 2026-05-21 | 2026-06-10 | Consultant Staff [16.1 h] | MOD-02-EN-5120 | MAK-01-PR-1010 |
|  | 19 | **EXHAUST FANS** |  | 2026-03-11 | 2026-06-07 |  |  |  |  |  |  |  |
| MLTX-02-005-EN-14750 |  | Pre-Qualification Submittal for Exhaust Fans | 15d | 2026-03-11 A | 2026-05-25 A | MLTX-02-005-EN-14290 | 100% | 2026-03-30 | 2026-04-15 | QA/QC Engineer [16.1 h] | MOD-02-EN-5140 | MAK-01-PR-1000 |
| MLTX-02-005-EN-14760 |  | Pre-Qualification Approval for Exhaust Fans | 15d | 2026-03-15 A | 2026-06-07 A | MLTX-02-005-EN-14750 | 100% | 2026-04-16 | 2026-05-03 | Consultant Staff [16.1 h] | MOD-02-EN-5150 | MAK-01-PR-1010 |
|  | 13 | **LIGHTING FIXTURES** |  | 2026-03-11 | 2026-06-07 |  |  |  |  |  |  |  |
| MLTX-02-005-EN-14620 |  | Pre-Qualification Submittal for Lighting Fixtures | 15d | 2026-03-11 A | 2026-05-25 A | MLTX-02-005-EN-14500, MLTX-02-005-EN-14390 | 100% | 2026-04-23 | 2026-05-10 | QA/QC Engineer [16.1 h] | MOD-02-EN-5170 | MAK-01-PR-1000 |
| MLTX-02-005-EN-14630 |  | Pre-Qualification Approval for Lighting Fixtures | 15d | 2026-03-15 A | 2026-06-07 A | MLTX-02-005-EN-14620, MLTX-02-005-EN-14640 | 100% | 2026-05-21 | 2026-06-10 | Consultant Staff [16.1 h] | MOD-02-EN-5180 | MAK-01-PR-1010 |
|  | 14 | **SWITCHES/SOCKETS** |  | 2026-03-11 | 2026-06-07 |  |  |  |  |  |  |  |
| MLTX-02-005-EN-14640 |  | Pre-Qualification Submittal for Switches/Sockets | 15d | 2026-03-11 A | 2026-05-25 A | MLTX-02-005-EN-14520, MLTX-02-005-EN-14450 | 100% | 2026-05-04 | 2026-05-20 | QA/QC Engineer [16.1 h] | MOD-02-EN-5200 | MAK-01-PR-1000 |
| MLTX-02-005-EN-14650 |  | Pre-Qualification Approval for Switches/Sockets | 15d | 2026-03-15 A | 2026-06-07 A | MLTX-02-005-EN-14640, MLTX-02-005-EN-14730 | 100% | 2026-05-21 | 2026-06-10 | Consultant Staff [16.1 h] | MOD-02-EN-5210 | MAK-01-PR-1010 |
|  | 15 | **EARTHING SYSTEM** |  | 2026-03-11 | 2026-05-11 |  |  |  |  |  |  |  |
| MLTX-02-005-EN-14440 |  | Pre-Qualification Submittal for Earthing System | 15d | 2026-03-11 A | 2026-05-09 A | MLTX-02-005-EN-14540 | 100% | 2026-03-30 | 2026-04-15 | QA/QC Engineer [16.1 h] | MOD-02-EN-5230 | MAK-01-PR-1290 |
| MLTX-02-005-EN-14450 |  | Pre-Qualification Approval for Earthing System | 15d | 2026-03-15 A | 2026-05-11 A | MLTX-02-005-EN-14440 | 100% | 2026-04-16 | 2026-05-03 | Consultant Staff [16.1 h] | MOD-02-EN-5240 | MAK-01-PR-1300 |
|  | 5 | **DISTRIBUTION PANNELS** |  | 2026-03-11 | 2026-06-07 |  |  |  |  |  |  |  |
| MLTX-02-005-EN-14460 |  | Pre-Qualification Submittal for Distribution Panels | 15d | 2026-03-11 A | 2026-05-25 A | MLTX-02-005-EN-14660, MLTX-02-005-EN-14610 | 100% | 2026-08-03 | 2026-08-19 | QA/QC Engineer [16.1 h] | MOD-02-EN-5260 | MAK-01-PR-LLI-1060 |
| MLTX-02-005-EN-14470 |  | Pre-Qualification Approval for Distribution Panels | 15d | 2026-03-15 A | 2026-06-07 A | MLTX-02-005-EN-14460, MLTX-02-005-EN-13580 | 100% | 2026-08-20 | 2026-09-06 | Consultant Staff [16.1 h] | MOD-02-EN-5270 | MAK-01-PR-LLI-1070 |
|  | PLG | **PLAYGROUND WORKS** |  | 2026-03-08 | 2026-06-07 |  |  |  |  |  |  |  |
|  | 5 | **PVC MEMBRANE** |  | 2026-03-08 | 2026-05-24 |  |  |  |  |  |  |  |
| MLTX-02-005-EN-14850 |  | Pre-Qualification Submittal for PVC Membrane | 15d | 2026-03-08 A | 2026-05-20 A | MLTX-02-005-EN-14600 SS | 100% | 2026-03-09 | 2026-03-29 | QA/QC Engineer [16.1 h] | MOD-02-EN-5300 | MAK-01-PR-1120 |
| MLTX-02-005-EN-14860 |  | Pre-Qualification Approval for PVC Membrane | 15d | 2026-03-11 A | 2026-05-24 A | MLTX-02-005-EN-14850 | 100% | 2026-03-30 | 2026-04-15 | Consultant Staff [16.1 h] | MOD-02-EN-5310 | MAK-01-PR-1130 |
|  | 6 | **STEEL TENSION CABLES** |  | 2026-03-08 | 2026-05-24 |  |  |  |  |  |  |  |
| MLTX-02-005-EN-14870 |  | Pre-Qualification Submittal for Steel Tension Cables | 15d | 2026-03-08 A | 2026-05-20 A | MLTX-02-005-EN-14850 SS | 100% | 2026-03-09 | 2026-03-29 | QA/QC Engineer [16.1 h] | MOD-02-EN-5330 | MAK-01-PR-1120 |
| MLTX-02-005-EN-15170 |  | Pre-Qualification Approval for Steel Tension Cables | 15d | 2026-03-11 A | 2026-05-24 A | MLTX-02-005-EN-14870 | 100% | 2026-03-30 | 2026-04-15 | Consultant Staff [16.1 h] | MOD-02-EN-5340 | MAK-01-PR-1120 |

| ID | WBS | Activity | Duration | Start | Finish | Predecessors | Complete | Planned start | Planned finish | Resources | New Activity ID | Old Activity ID - MK |
| --- | --- | --- | --- | --- | --- | --- | --- | --- | --- | --- | --- | --- |
|  | 7 | **EMERGENCY DOORS** |  | 2026-03-08 | 2026-05-24 |  |  |  |  |  |  |  |
| MLTX-02-005-EN-14880 |  | Pre-Qualification Submittal for Emergency Doors | 15d | 2026-03-08 A | 2026-05-20 A | MLTX-02-005-MB-2010 | 100% | 2026-03-09 | 2026-03-29 | QA/QC Engineer [16.1 h] | MOD-02-EN-5360 | MAK-01-PR-1120 |
| MLTX-02-005-EN-15180 |  | Pre-Qualification Approval for Emergency Doors | 15d | 2026-03-11 A | 2026-05-24 A | MLTX-02-005-EN-14880 | 100% | 2026-03-30 | 2026-04-15 | Consultant Staff [16.1 h] | MOD-02-EN-5370 | MAK-01-PR-1120 |
|  | 8 | **PRESSURE UNITS** |  | 2026-03-08 | 2026-05-24 |  |  |  |  |  |  |  |
| MLTX-02-005-EN-14890 |  | Pre-Qualification Submittal for Pressure Units | 15d | 2026-03-08 A | 2026-05-20 A | MLTX-02-005-MB-2010, MLTX-02-005-EN-14320 | 100% | 2026-04-16 | 2026-05-03 | QA/QC Engineer [16.1 h] | MOD-02-EN-5390 | MAK-01-PR-1120 |
| MLTX-02-005-EN-15190 |  | Pre-Qualification Approval for Pressure Units | 15d | 2026-03-11 A | 2026-05-24 A | MLTX-02-005-EN-14890, MLTX-02-005-EN-14300 | 100% | 2026-05-18 | 2026-06-07 | Consultant Staff [16.1 h] | MOD-02-EN-5400 | MAK-01-PR-1120 |
|  | 9 | **AIR LOCK DOORS** |  | 2026-03-08 | 2026-05-24 |  |  |  |  |  |  |  |
| MLTX-02-005-EN-14900 |  | Pre-Qualification Submittal for Lock Doors | 15d | 2026-03-08 A | 2026-05-20 A | MLTX-02-005-MB-2010 | 100% | 2026-03-09 | 2026-03-29 | QA/QC Engineer [16.1 h] | MOD-02-EN-5420 | MAK-01-PR-1120 |
| MLTX-02-005-EN-15200 |  | Pre-Qualification Approval for Lock Doors | 15d | 2026-03-11 A | 2026-05-24 A | MLTX-02-005-EN-14900, MLTX-02-005-EN-14310 | 100% | 2026-06-08 | 2026-06-24 | Consultant Staff [16.1 h] | MOD-02-EN-5430 | MAK-01-PR-1120 |
|  | 15 | **ARTIFICIAL TURF** |  | 2026-03-08 | 2026-05-10 |  |  |  |  |  |  |  |
| MLTX-02-005-EN-15050 |  | Pre-Qualification Submittal for Artificial TURF | 15d | 2026-03-08 A | 2026-05-06 A | MLTX-02-005-MB-2010 | 100% | 2026-03-09 | 2026-03-29 | QA/QC Engineer [16.1 h] | MOD-02-EN-5450 | MAK-01-PR-1120 |
| MLTX-02-005-EN-15210 |  | Pre-Qualification Approval for Artificial TURF | 15d | 2026-03-11 A | 2026-05-10 A | MLTX-02-005-EN-15050 | 100% | 2026-03-30 | 2026-04-15 | Consultant Staff [16.1 h] | MOD-02-EN-5460 | MAK-01-PR-1120 |
|  | 20 | **RUBBER GRANULES** |  | 2026-03-08 | 2026-05-11 |  |  |  |  |  |  |  |
| MLTX-02-005-EN-15060 |  | Pre-Qualification Submittal for Rubber Granules | 15d | 2026-03-08 A | 2026-05-06 A | MLTX-02-005-MB-2010 | 100% | 2026-03-09 | 2026-03-29 | QA/QC Engineer [16.1 h] | MOD-02-EN-5480 | MAK-01-PR-1120 |
| MLTX-02-005-EN-15220 |  | Pre-Qualification Approval for Rubber Granules | 15d | 2026-03-11 A | 2026-05-11 A | MLTX-02-005-EN-15060 | 100% | 2026-03-30 | 2026-04-15 | Consultant Staff [16.1 h] | MOD-02-EN-5490 | MAK-01-PR-1120 |
|  | 21 | **PADEL GLASS** |  | 2026-03-08 | 2026-05-11 |  |  |  |  |  |  |  |
| MLTX-02-005-EN-15070 |  | Pre-Qualification Submittal for Padel Glass | 15d | 2026-03-08 A | 2026-05-06 A | MLTX-02-005-MB-2010 | 100% | 2026-03-09 | 2026-03-29 | QA/QC Engineer [16.1 h] | MOD-02-EN-5510 | MAK-01-PR-1120 |
| MLTX-02-005-EN-15230 |  | Pre-Qualification Approval for Padel Glass | 15d | 2026-03-11 A | 2026-05-11 A | MLTX-02-005-EN-15070 | 100% | 2026-03-30 | 2026-04-15 | Consultant Staff [16.1 h] | MOD-02-EN-5520 | MAK-01-PR-1120 |
|  | 22 | **PADEL WIRE MESH/STEEL SETS** |  | 2026-03-08 | 2026-05-11 |  |  |  |  |  |  |  |
| MLTX-02-005-EN-15080 |  | Pre-Qualification Submittal for Wire Mesh/Steel Sets | 15d | 2026-03-08 A | 2026-05-06 A | MLTX-02-005-MB-2010 | 100% | 2026-03-09 | 2026-03-29 | QA/QC Engineer [16.1 h] | MOD-02-EN-5540 | MAK-01-PR-1120 |
| MLTX-02-005-EN-15240 |  | Pre-Qualification Approval for Wire Mesh/Steel Sets | 15d | 2026-03-11 A | 2026-05-11 A | MLTX-02-005-EN-15080 | 100% | 2026-03-30 | 2026-04-15 | Consultant Staff [16.1 h] | MOD-02-EN-5550 | MAK-01-PR-1120 |
|  | 1 | **AGGREGATE BASE COURSE** |  | 2026-03-08 | 2026-04-30 |  |  |  |  |  |  |  |
| MLTX-02-005-EN-14300 |  | Pre-Qualification Submittal for Aggregate Base Course | 15d | 2026-03-08 A | 2026-04-26 A | MLTX-02-005-MB-2010, MLTX-02-005-EN-16050 | 100% | 2026-04-30 | 2026-05-17 | QA/QC Engineer [16.1 h] | MOD-02-EN-5570 | MAK-01-PR-1090 |
| MLTX-02-005-EN-14310 |  | Pre-Qualification Approval for Aggregate Base Course | 15d | 2026-03-11 A | 2026-04-30 A | MLTX-02-005-EN-14300 | 100% | 2026-05-18 | 2026-06-07 | Consultant Staff [16.1 h] | MOD-02-EN-5580 | MAK-01-PR-1100 |

| ID | WBS | Activity | Duration | Start | Finish | Predecessors | Complete | Planned start | Planned finish | Resources | New Activity ID | Old Activity ID - MK |
| --- | --- | --- | --- | --- | --- | --- | --- | --- | --- | --- | --- | --- |
|  | 16 | **PACKAGE AC UNITS** |  | 2026-03-11 | 2026-06-07 |  |  |  |  |  |  |  |
| MLTX-02-005-EN-14770 |  | Pre-Qualification Submittal for Package AC Units | 15d | 2026-03-11 A | 2026-05-25 A | MLTX-02-005-EN-14890, MLTX-02-005-EN-14330 | 100% | 2026-05-04 | 2026-05-20 | QA/QC Engineer [16.1 h] | MOD-02-EN-5690 | MAK-01-PR-1000 |
| MLTX-02-005-EN-14780 |  | Pre-Qualification Approval for Package AC Units | 15d | 2026-03-15 A | 2026-06-07 A | MLTX-02-005-EN-14770, MLTX-02-005-EN-14300 | 100% | 2026-05-21 | 2026-06-10 | Consultant Staff [16.1 h] | MOD-02-EN-5700 | MAK-01-PR-1010 |
|  | 17 | **AIR DIFUSSERS/GRILLS** |  | 2026-03-11 | 2026-06-07 |  |  |  |  |  |  |  |
| MLTX-02-005-EN-14790 |  | Pre-Qualification Submittal for Air Difussers/Grills | 15d | 2026-03-11 A | 2026-05-25 A | MLTX-02-005-EN-14900, MLTX-02-005-EN-14300 | 100% | 2026-05-18 | 2026-06-07 | QA/QC Engineer [16.1 h] | MOD-02-EN-5720 | MAK-01-PR-1000 |
| MLTX-02-005-EN-14800 |  | Pre-Qualification Approval for Air Difussers/Grills | 15d | 2026-03-15 A | 2026-06-07 A | MLTX-02-005-EN-14790, MLTX-02-005-EN-14310 | 100% | 2026-06-08 | 2026-06-24 | Consultant Staff [16.1 h] | MOD-02-EN-5730 | MAK-01-PR-1010 |
|  | 2 | **BITUMINOUS BASE & WEARING COURSE** |  | 2026-03-11 | 2026-04-30 |  |  |  |  |  |  |  |
| MLTX-02-005-EN-14320 |  | Pre-Qualification Submittal for Bituminous Base & Wearing Cource | 15d | 2026-03-11 A | 2026-04-26 A | MLTX-02-005-EN-14850 | 100% | 2026-03-30 | 2026-04-15 | QA/QC Engineer [16.1 h] | MOD-02-EN-5600 | MAK-01-PR-1120 |
| MLTX-02-005-EN-14330 |  | Pre-Qualification Approval for the Site | 15d | 2026-03-15 A | 2026-04-30 A | MLTX-02-005-EN-14320 | 100% | 2026-04-16 | 2026-05-03 | Consultant Staff [16.1 h] | MOD-02-EN-5610 | MAK-01-PR-1130 |
|  | 3 | **INTERLOCKING PAVING** |  | 2026-03-11 | 2026-05-04 |  |  |  |  |  |  |  |
| MLTX-02-005-EN-14340 |  | Pre-Qualification Submittal for Interlocking Block Pavers | 15d | 2026-03-11 A | 2026-04-30 A | MLTX-02-005-EN-14870, MLTX-02-005-EN-14330 | 100% | 2026-05-04 | 2026-05-20 | QA/QC Engineer [16.1 h] | MOD-02-EN-5630 | MAK-01-PR-1170 |
| MLTX-02-005-EN-14400 |  | Pre-Qualification Approval for Interlocking Block Pavers | 15d | 2026-03-15 A | 2026-05-04 A | MLTX-02-005-EN-14340, MLTX-02-005-EN-14300 | 100% | 2026-05-21 | 2026-06-10 | Consultant Staff [16.1 h] | MOD-02-EN-5640 | MAK-01-PR-1180 |
|  | 4 | **MARKING PAINT** |  | 2026-03-11 | 2026-05-09 |  |  |  |  |  |  |  |
| MLTX-02-005-EN-14680 |  | Pre-Qualification Submittal for Marking Paint | 15d | 2026-03-11 A | 2026-05-05 A | MLTX-02-005-EN-14880 | 100% | 2026-03-30 | 2026-04-15 | QA/QC Engineer [16.1 h] | MOD-02-EN-5660 | MAK-01-PR-1120 |
| MLTX-02-005-EN-15250 |  | Pre-Qualification Approval for Marking Paint | 15d | 2026-03-15 A | 2026-05-09 A | MLTX-02-005-EN-14680 | 100% | 2026-04-16 | 2026-05-03 | Consultant Staff [16.1 h] | MOD-02-EN-5670 | MAK-01-PR-1120 |
|  | 18 | **GALVANIZED DUCTS** |  | 2026-03-11 | 2026-04-30 |  |  |  |  |  |  |  |
| MLTX-02-005-EN-14810 |  | Pre-Qualification Submittal for Galvanized Duct | 15d | 2026-03-11 A | 2026-04-25 A | MLTX-02-005-EN-14790 SS, MLTX-02-005-EN-14300, MLTX-02-005-EN-14770 | 100% | 2026-05-21 | 2026-06-10 | QA/QC Engineer [16.1 h] | MOD-02-EN-5750 | MAK-01-PR-1000 |
| MLTX-02-005-EN-14820 |  | Pre-Qualification Approval for Galvanized Duct | 15d | 2026-03-15 A | 2026-04-30 A | MLTX-02-005-EN-14810, MLTX-02-005-EN-14310 | 100% | 2026-06-11 | 2026-06-28 | Consultant Staff [16.1 h] | MOD-02-EN-5760 | MAK-01-PR-1010 |
|  | 19 | **EXHAUST FANS** |  | 2026-03-11 | 2026-06-07 |  |  |  |  |  |  |  |
| MLTX-02-005-EN-14830 |  | Pre-Qualification Submittal for Exhaust Fans | 15d | 2026-03-11 A | 2026-05-25 A | MLTX-02-005-EN-15050 | 100% | 2026-03-30 | 2026-04-15 | QA/QC Engineer [16.1 h] | MOD-02-EN-5780 | MAK-01-PR-1000 |
| MLTX-02-005-EN-14840 |  | Pre-Qualification Approval for Exhaust Fans | 15d | 2026-03-15 A | 2026-06-07 A | MLTX-02-005-EN-14830 | 100% | 2026-04-16 | 2026-05-03 | Consultant Staff [16.1 h] | MOD-02-EN-5790 | MAK-01-PR-1010 |
|  | 10 | **DISTRIBUTION BOARDS** |  | 2026-03-11 | 2026-06-07 |  |  |  |  |  |  |  |
| MLTX-02-005-EN-14910 |  | Pre-Qualification Submittal for Distribution Boards | 15d | 2026-03-11 A | 2026-05-25 A | MLTX-02-005-EN-14900 | 100% | 2026-03-30 | 2026-04-15 | QA/QC Engineer [16.1 h] | MOD-02-EN-5810 | MAK-01-PR-1000 |
| MLTX-02-005-EN-14920 |  | Pre-Qualification Approval for Distribution Boards | 15d | 2026-03-15 A | 2026-06-07 A | MLTX-02-005-EN-14910 | 100% | 2026-04-16 | 2026-05-03 | Consultant Staff [16.1 h] | MOD-02-EN-5820 | MAK-01-PR-1010 |

| ID | WBS | Activity | Duration | Start | Finish | Predecessors | Complete | Planned start | Planned finish | Resources | New Activity ID | Old Activity ID - MK |
| --- | --- | --- | --- | --- | --- | --- | --- | --- | --- | --- | --- | --- |
|  | 11 | **POWER CABLES** |  | 2026-03-11 | 2026-05-11 |  |  |  |  |  |  |  |
| MLTX-02-005-EN-14930 |  | Pre-Qualification Submittal for Power Cables | 15d | 2026-03-11 A | 2026-05-09 A | MLTX-02-005-EN-15080 | 100% | 2026-03-30 | 2026-04-15 | QA/QC Engineer [16.1 h] | MOD-02-EN-5840 | MAK-01-PR-1000 |
| MLTX-02-005-EN-14940 |  | Pre-Qualification Approval for Power Cables | 15d | 2026-03-15 A | 2026-05-11 A | MLTX-02-005-EN-14930 | 100% | 2026-04-16 | 2026-05-03 | Consultant Staff [16.1 h] | MOD-02-EN-5850 | MAK-01-PR-1010 |
|  | 12 | **LIGHT FIXTURES** |  | 2026-03-11 | 2026-06-07 |  |  |  |  |  |  |  |
| MLTX-02-005-EN-14950 |  | Pre-Qualification Submittal for Light Fixtures | 15d | 2026-03-11 A | 2026-05-25 A | MLTX-02-005-EN-15060, MLTX-02-005-EN-14330 | 100% | 2026-05-04 | 2026-05-20 | QA/QC Engineer [16.1 h] | MOD-02-EN-5870 | MAK-01-PR-1000 |
| MLTX-02-005-EN-14960 |  | Pre-Qualification Approval for Light Fixtures | 15d | 2026-03-15 A | 2026-06-07 A | MLTX-02-005-EN-14950, MLTX-02-005-EN-14300 | 100% | 2026-05-21 | 2026-06-10 | Consultant Staff [16.1 h] | MOD-02-EN-5880 | MAK-01-PR-1010 |
|  | 13 | **CCTV MATERIALS** |  | 2026-03-11 | 2026-06-07 |  |  |  |  |  |  |  |
| MLTX-02-005-EN-14970 |  | Pre-Qualification Submittal for CCTV | 15d | 2026-03-11 A | 2026-05-25 A | MLTX-02-005-EN-15070, MLTX-02-005-EN-14330 | 100% | 2026-05-04 | 2026-05-20 | QA/QC Engineer [16.1 h] | MOD-02-EN-5900 | MAK-01-PR-1000 |
| MLTX-02-005-EN-14980 |  | Pre-Qualification Approval for CCTV | 15d | 2026-03-15 A | 2026-06-07 A | MLTX-02-005-EN-14970, MLTX-02-005-EN-14300 | 100% | 2026-05-21 | 2026-06-10 | Consultant Staff [16.1 h] | MOD-02-EN-5910 | MAK-01-PR-1010 |
|  | 14 | **POWER OUTLETS/SWITCHES** |  | 2026-03-11 | 2026-06-07 |  |  |  |  |  |  |  |
| MLTX-02-005-EN-14990 |  | Pre-Qualification Submittal for Power Outlets/Switches | 15d | 2026-03-11 A | 2026-05-25 A | MLTX-02-005-EN-14300 | 100% | 2026-05-18 | 2026-06-07 | QA/QC Engineer [16.1 h] | MOD-02-EN-5930 | MAK-01-PR-1000 |
| MLTX-02-005-EN-15000 |  | Pre-Qualification Approval for Power Outlets/Switches | 15d | 2026-03-15 A | 2026-06-07 A | MLTX-02-005-EN-14990 | 100% | 2026-06-08 | 2026-06-24 | Consultant Staff [16.1 h] | MOD-02-EN-5940 | MAK-01-PR-1010 |
|  | LSC | **LANDSCAPE WORKS** |  | 2026-03-11 | 2026-05-21 |  |  |  |  |  |  |  |
|  | 7 | **INTERLOCKING PAVING** |  | 2026-03-12 | 2026-03-24 |  |  |  |  |  |  |  |
| MLTX-02-005-EN-15030 |  | Pre-Qualification Submittal for Interlocking Block Pavers | 15d | 2026-03-12 A | 2026-03-15 A | MLTX-02-005-EN-14300 | 100% | 2026-05-18 | 2026-06-07 | QA/QC Engineer [16.1 h] | MOD-02-EN-5970 | MAK-01-PR-1170 |
| MLTX-02-005-EN-15040 |  | Pre-Qualification Approval for Interlocking Block Pavers | 15d | 2026-03-16 A | 2026-03-24 A | MLTX-02-005-EN-15030 | 100% | 2026-06-08 | 2026-06-24 | Consultant Staff [16.1 h] | MOD-02-EN-5980 | MAK-01-PR-1180 |
|  | 9 | **CURBSTONE** |  | 2026-03-12 | 2026-03-24 |  |  |  |  |  |  |  |
| MLTX-02-005-EN-15130 |  | Pre-Qualification Submittal for Curbstone | 15d | 2026-03-12 A | 2026-03-15 A | MLTX-02-005-EN-14300 | 100% | 2026-05-18 | 2026-06-07 | QA/QC Engineer [16.1 h] | MOD-02-EN-6000 | MAK-01-PR-1260 |
| MLTX-02-005-EN-15140 |  | Pre-Qualification Approval for Curbstone | 15d | 2026-03-16 A | 2026-03-24 A | MLTX-02-005-EN-15130 | 100% | 2026-06-08 | 2026-06-24 | Consultant Staff [16.1 h] | MOD-02-EN-6010 | MAK-01-PR-1270 |
|  | 1 | **PAVEMENT MARKING** |  | 2026-03-11 | 2026-05-09 |  |  |  |  |  |  |  |
| MLTX-02-005-EN-14350 |  | Pre-Qualification Submittal for Pavement Markings | 15d | 2026-03-11 A | 2026-05-05 A | MLTX-02-005-EN-14300, MLTX-02-005-EN-14620 | 100% | 2026-05-18 | 2026-06-07 | QA/QC Engineer [16.1 h] | MOD-02-EN-6030 | MAK-01-PR-1200 |
| MLTX-02-005-EN-14410 |  | Pre-Qualification Approval for Pavement Markings | 15d | 2026-03-15 A | 2026-05-09 A | MLTX-02-005-EN-14350, MLTX-02-005-EN-15270 | 100% | 2026-06-08 | 2026-06-24 | Consultant Staff [16.1 h] | MOD-02-EN-6040 | MAK-01-PR-1210 |
|  | 2 | **TRAFFIC SIGNS** |  | 2026-03-11 | 2026-05-09 |  |  |  |  |  |  |  |
| MLTX-02-005-EN-14360 |  | Pre-Qualification Submittal for Traffic Signs | 15d | 2026-03-11 A | 2026-05-05 A | MLTX-02-005-EN-14300 | 100% | 2026-05-18 | 2026-06-07 | QA/QC Engineer [16.1 h] | MOD-02-EN-6060 | MAK-01-PR-1230 |
| MLTX-02-005-EN-14370 |  | Pre-Qualification Approval for Traffic Signs | 15d | 2026-03-15 A | 2026-05-09 A | MLTX-02-005-EN-14360 | 100% | 2026-06-08 | 2026-06-24 | Consultant Staff [16.1 h] | MOD-02-EN-6070 | MAK-01-PR-1240 |

| ID | WBS | Activity | Duration | Start | Finish | Predecessors | Complete | Planned start | Planned finish | Resources | New Activity ID | Old Activity ID - MK |
| --- | --- | --- | --- | --- | --- | --- | --- | --- | --- | --- | --- | --- |
|  | 3 | **IRRIGATION PIPES/SPRINKLERS** |  | 2026-03-11 | 2026-05-21 |  |  |  |  |  |  |  |
| MLTX-02-005-EN-14420 |  | Pre-Qualification Submittal for Irrigation Pipes/Sprinkles | 15d | 2026-03-11 A | 2026-05-20 A | MLTX-02-005-EN-14300 | 100% | 2026-05-18 | 2026-06-07 | QA/QC Engineer [16.1 h] | MOD-02-EN-6090 | MAK-01-PR-1260 |
| MLTX-02-005-EN-14430 |  | Pre-Qualification Approval for Irrigation Pipes/Sprinkles | 15d | 2026-03-15 A | 2026-05-21 A | MLTX-02-005-EN-14420 | 100% | 2026-06-08 | 2026-06-24 | Consultant Staff [16.1 h] | MOD-02-EN-6100 | MAK-01-PR-1270 |
|  | 5 | **AGRICULTURE SOIL** |  | 2026-03-11 | 2026-05-21 |  |  |  |  |  |  |  |
| MLTX-02-005-EN-15090 |  | Pre-Qualification Submittal for Agriculture Soil | 15d | 2026-03-11 A | 2026-05-20 A | MLTX-02-005-EN-14300 | 100% | 2026-05-18 | 2026-06-07 | QA/QC Engineer [16.1 h] | MOD-02-EN-6120 | MAK-01-PR-1260 |
| MLTX-02-005-EN-15100 |  | Pre-Qualification Approval for Agriculture Soil | 15d | 2026-03-15 A | 2026-05-21 A | MLTX-02-005-EN-15090 | 100% | 2026-06-08 | 2026-06-24 | Consultant Staff [16.1 h] | MOD-02-EN-6130 | MAK-01-PR-1270 |
|  | 8 | **TRACK SURFACE** |  | 2026-03-11 | 2026-05-21 |  |  |  |  |  |  |  |
| MLTX-02-005-EN-15110 |  | Pre-Qualification Submittal for Track Surface | 15d | 2026-03-11 A | 2026-05-20 A | MLTX-02-005-EN-14300 | 100% | 2026-05-18 | 2026-06-07 | QA/QC Engineer [30 h] | MOD-02-EN-6150 | MAK-01-PR-1260 |
| MLTX-02-005-EN-15120 |  | Pre-Qualification Approval for Track Surface | 15d | 2026-03-15 A | 2026-05-21 A | MLTX-02-005-EN-15110 | 100% | 2026-06-08 | 2026-06-24 | Consultant Staff [30 h] | MOD-02-EN-6160 | MAK-01-PR-1270 |
|  | 10 | **GRASS/TREES** |  | 2026-03-11 | 2026-05-21 |  |  |  |  |  |  |  |
| MLTX-02-005-EN-15150 |  | Pre-Qualification Submittal for Grass/Trees | 15d | 2026-03-11 A | 2026-05-20 A | MLTX-02-005-EN-14300 | 100% | 2026-05-18 | 2026-06-07 | QA/QC Engineer [30 h] | MOD-02-EN-6180 | MAK-01-PR-1260 |
| MLTX-02-005-EN-15160 |  | Pre-Qualification Approval for Grass/Trees | 15d | 2026-03-15 A | 2026-05-21 A | MLTX-02-005-EN-15150 | 100% | 2026-06-08 | 2026-06-24 | Consultant Staff [30 h] | MOD-02-EN-6190 | MAK-01-PR-1270 |
|  | 6 | **CABLES** |  | 2026-03-11 | 2026-05-11 |  |  |  |  |  |  |  |
| MLTX-02-005-EN-15010 |  | Pre-Qualification Submittal for Cables | 15d | 2026-03-11 A | 2026-05-09 A | MLTX-02-005-EN-14300 | 100% | 2026-05-18 | 2026-06-07 | QA/QC Engineer [30 h] | MOD-02-EN-6210 | MAK-01-PR-1200 |
| MLTX-02-005-EN-15020 |  | Pre-Qualification Approval for Cables | 15d | 2026-03-15 A | 2026-05-11 A | MLTX-02-005-EN-15010 | 100% | 2026-06-08 | 2026-06-24 | Consultant Staff [30 h] | MOD-02-EN-6220 | MAK-01-PR-1210 |
|  | 4 | **LIGHT POLES** |  | 2026-03-11 | 2026-05-20 |  |  |  |  |  |  |  |
| MLTX-02-005-EN-14240 |  | Pre-Qualification Submittal for Lighting poles | 15d | 2026-03-11 A | 2026-05-17 A | MLTX-02-005-EN-14300, MLTX-02-005-EN-14340 | 100% | 2026-05-21 | 2026-06-10 | QA/QC Engineer [30 h] | MOD-02-EN-6240 | MAK-01-PR-LLI-1120 |
| MLTX-02-005-EN-14250 |  | Pre-Qualification Approval for Lighting poles | 15d | 2026-03-15 A | 2026-05-20 A | MLTX-02-005-EN-14240 | 100% | 2026-06-11 | 2026-06-28 | Consultant Staff [26.8 h] | MOD-02-EN-6250 | MAK-01-PR-LLI-1130 |
|  | MAT | **MATERIAL SUBMITTAL** |  | 2026-03-19 | 2026-09-12 |  |  |  |  |  |  |  |
|  | TOI | **TOILET/SERVICE WORKS** |  | 2026-03-19 | 2026-07-30 |  |  |  |  |  |  |  |
|  | 1 | **STEEL REINFORCEMENT** |  | 2026-03-19 | 2026-04-12 |  |  |  |  |  |  |  |
| MLTX-02-005-EN-13260 |  | Material Submittal for Steel Reinforcement | 15d | 2026-03-19 A | 2026-04-07 A | MLTX-02-005-EN-14380 | 100% | 2026-04-16 | 2026-05-03 | QA/QC Engineer [16.1 h] | MOD-02-EN-6290 | MAK-01-PR-1000 |
| MLTX-02-005-EN-13370 |  | Material Approval for Steel Reinforcement | 15d | 2026-03-26 A | 2026-04-12 A | MLTX-02-005-EN-13260 | 100% | 2026-05-04 | 2026-05-20 | Consultant Staff [16.1 h] | MOD-02-EN-6300 | MAK-01-PR-1010 |
|  | 2 | **READY MIX CONCRETE** |  | 2026-03-19 | 2026-04-12 |  |  |  |  |  |  |  |
| MLTX-02-005-EN-13270 |  | Material Submittal for Ready Mixed Concrete | 15d | 2026-03-19 A | 2026-04-07 A | MLTX-02-005-EN-14280 | 100% | 2026-04-16 | 2026-05-03 | QA/QC Engineer [16.1 h] | MOD-02-EN-6320 | MAK-01-PR-1040 |
| MLTX-02-005-EN-13280 |  | Material Approval of Ready Mixed Concrete | 15d | 2026-03-26 A | 2026-04-12 A | MLTX-02-005-EN-13270 | 100% | 2026-05-04 | 2026-05-20 | Consultant Staff [16.1 h] | MOD-02-EN-6330 | MAK-01-PR-1050 |

| ID | WBS | Activity | Duration | Start | Finish | Predecessors | Complete | Planned start | Planned finish | Resources | New Activity ID | Old Activity ID - MK |
| --- | --- | --- | --- | --- | --- | --- | --- | --- | --- | --- | --- | --- |
|  | 3 | **CONCRETE BLOCKS** |  | 2026-03-19 | 2026-05-11 |  |  |  |  |  |  |  |
| MLTX-02-005-EN-13460 |  | Material Submittal for Concrete Blocks | 15d | 2026-03-19 A | 2026-05-06 A | MLTX-02-005-EN-14490, MLTX-02-005-EN-13260 | 100% | 2026-05-04 | 2026-05-20 | QA/QC Engineer [16.1 h] | MOD-02-EN-6350 | MAK-01-PR-1000 |
| MLTX-02-005-EN-13470 |  | Material Approval for Concrete Blocks | 15d | 2026-03-26 A | 2026-05-11 A | MLTX-02-005-EN-13460, MLTX-02-005-EN-13280 | 100% | 2026-05-21 | 2026-06-10 | Consultant Staff [16.1 h] | MOD-02-EN-6360 | MAK-01-PR-1010 |
|  | 6 | **FLOOR/WALL TILES** |  | 2026-03-19 | 2026-05-17 |  |  |  |  |  |  |  |
| MLTX-02-005-EN-13480 |  | Material Submittal for Tilling Materials | 15d | 2026-03-19 A | 2026-05-13 A | MLTX-02-005-EN-14510, MLTX-02-005-EN-13260 | 100% | 2026-05-04 | 2026-05-20 | QA/QC Engineer [16.1 h] | MOD-02-EN-6410 | MAK-01-PR-1000 |
| MLTX-02-005-EN-13490 |  | Material Approval for Tilling Material | 15d | 2026-03-26 A | 2026-05-17 A | MLTX-02-005-EN-13480, MLTX-02-005-EN-13280 | 100% | 2026-05-21 | 2026-06-10 | Consultant Staff [16.1 h] | MOD-02-EN-6420 | MAK-01-PR-1010 |
|  | 7 | **SUSPENDED CEILING** |  | 2026-03-19 | 2026-05-13 |  |  |  |  |  |  |  |
| MLTX-02-005-EN-13500 |  | Material Submittal for Suspend Ceiling | 15d | 2026-03-19 A | 2026-05-10 A | MLTX-02-005-EN-14530, MLTX-02-005-EN-13430, MLTX-02-005-EN-13490 | 100% | 2026-06-11 | 2026-06-28 | QA/QC Engineer [16.1 h] | MOD-02-EN-6440 | MAK-01-PR-1000 |
| MLTX-02-005-EN-13510 |  | Material Approval for Suspend Ceiling | 15d | 2026-03-26 A | 2026-05-13 A | MLTX-02-005-EN-13500, MLTX-02-005-EN-13520 | 100% | 2026-06-29 | 2026-07-15 | Consultant Staff [16.1 h] | MOD-02-EN-6450 | MAK-01-PR-1010 |
|  | 8 | **DOORS/WINDOWS** |  | 2026-03-19 | 2026-05-12 |  |  |  |  |  |  |  |
| MLTX-02-005-EN-13520 |  | Material Submittal for Doors/Windows | 15d | 2026-03-19 A | 2026-05-07 A | MLTX-02-005-EN-14550, MLTX-02-005-EN-13430 | 100% | 2026-06-11 | 2026-06-28 | QA/QC Engineer [16.1 h] | MOD-02-EN-6470 | MAK-01-PR-1000 |
| MLTX-02-005-EN-13530 |  | Material Approval for Doors/Windows | 15d | 2026-03-26 A | 2026-05-12 A | MLTX-02-005-EN-13520, MLTX-02-005-EN-13710 | 100% | 2026-06-29 | 2026-07-15 | Consultant Staff [16.1 h] | MOD-02-EN-6480 | MAK-01-PR-1010 |
|  | 9 | **FURNITURES** |  | 2026-03-19 | 2026-05-20 |  |  |  |  |  |  |  |
| MLTX-02-005-EN-13640 |  | Material Submittal for Furnitures | 15d | 2026-03-19 A | 2026-05-14 A | MLTX-02-005-EN-14670, MLTX-02-005-EN-13260 | 100% | 2026-05-04 | 2026-05-20 | QA/QC Engineer [16.1 h] | MOD-02-EN-6500 | MAK-01-PR-1000 |
| MLTX-02-005-EN-13650 |  | Material Approval for Furnitures | 15d | 2026-03-26 A | 2026-05-20 A | MLTX-02-005-EN-13640, MLTX-02-005-EN-13280 | 100% | 2026-05-21 | 2026-06-10 | Consultant Staff [16.1 h] | MOD-02-EN-6510 | MAK-01-PR-1010 |
|  | 10 | **SANITARY FIXTURES** |  | 2026-03-19 | 2026-05-19 |  |  |  |  |  |  |  |
| MLTX-02-005-EN-13540 |  | Material Submittal for Sanitary Fixtures | 15d | 2026-03-19 A | 2026-05-14 A | MLTX-02-005-EN-14570 | 100% | 2026-04-16 | 2026-05-03 | QA/QC Engineer [16.1 h] | MOD-02-EN-6530 | MAK-01-PR-1000 |
| MLTX-02-005-EN-13550 |  | Material Approval for Sanitary Fixtures | 15d | 2026-03-26 A | 2026-05-19 A | MLTX-02-005-EN-13540 | 100% | 2026-05-04 | 2026-05-20 | Consultant Staff [16.1 h] | MOD-02-EN-6540 | MAK-01-PR-1010 |
|  | 11 | **WATER SUPPLY PIPES** |  | 2026-03-19 | 2026-05-11 |  |  |  |  |  |  |  |
| MLTX-02-005-EN-13560 |  | Material Submittal for Water Supply Pipes | 15d | 2026-03-19 A | 2026-05-06 A | MLTX-02-005-EN-14590, MLTX-02-005-EN-13430 | 100% | 2026-06-11 | 2026-06-28 | QA/QC Engineer [16.1 h] | MOD-02-EN-6560 | MAK-01-PR-1000 |
| MLTX-02-005-EN-13570 |  | Material Approval for Water Supply Pipes | 15d | 2026-03-26 A | 2026-05-11 A | MLTX-02-005-EN-13560, MLTX-02-005-EN-13520 | 100% | 2026-06-29 | 2026-07-15 | Consultant Staff [16.1 h] | MOD-02-EN-6570 | MAK-01-PR-1010 |
|  | 12 | **SEWAGE/DRAINAGE PIPES** |  | 2026-03-19 | 2026-05-11 |  |  |  |  |  |  |  |
| MLTX-02-005-EN-13580 |  | Material Submittal for Sewage/Drainage Pipes | 15d | 2026-03-19 A | 2026-05-06 A | MLTX-02-005-EN-14610, MLTX-02-005-EN-13250 | 100% | 2026-08-03 | 2026-08-19 | QA/QC Engineer [16.1 h] | MOD-02-EN-6590 | MAK-01-PR-1000 |
| MLTX-02-005-EN-13590 |  | Material Approval for Sewage/Drainage Pipes | 15d | 2026-03-26 A | 2026-05-11 A | MLTX-02-005-EN-13580, MLTX-02-005-EN-12770 | 100% | 2026-08-20 | 2026-09-06 | Consultant Staff [16.1 h] | MOD-02-EN-6600 | MAK-01-PR-1010 |

| ID | WBS | Activity | Duration | Start | Finish | Predecessors | Complete | Planned start | Planned finish | Resources | New Activity ID | Old Activity ID - MK |
| --- | --- | --- | --- | --- | --- | --- | --- | --- | --- | --- | --- | --- |
|  | 16 | **PACKAGE AC UNITS** |  | 2026-07-07 | 2026-07-07 |  |  |  |  |  |  |  |
| MLTX-02-005-EN-13670 |  | Material Submittal for Package AC Units | 15d | 2026-07-07 A | 2026-07-07 A | MLTX-02-005-EN-14700 | 100% | 2026-05-04 | 2026-05-20 | QA/QC Engineer [16.1 h] | MOD-02-EN-6620 | MAK-01-PR-1000 |
| MLTX-02-005-EN-13680 |  | Material Approval for Package AC Units | 15d | 2026-07-07 A | 2026-07-07 A | MLTX-02-005-EN-13670 | 100% | 2026-05-21 | 2026-06-10 | Consultant Staff [16.1 h] | MOD-02-EN-6630 | MAK-01-PR-1010 |
|  | 17 | **AIR DIFUSSERS/GRILLS** |  | 2026-07-28 | 2026-07-30 |  |  |  |  |  |  |  |
| MLTX-02-005-EN-13690 |  | Material Submittal for Air Diffusers/Grills | 15d | 2026-07-28 A | 2026-07-28 A | MLTX-02-005-EN-14720, MLTX-02-005-EN-13430 | 100% | 2026-06-11 | 2026-06-28 | QA/QC Engineer [16.1 h] | MOD-02-EN-6650 | MAK-01-PR-1000 |
| MLTX-02-005-EN-13700 |  | Material Approval for Air Diffusers/Grills | 15d | 2026-07-30 A | 2026-07-30 A | MLTX-02-005-EN-13690, MLTX-02-005-EN-13500 | 100% | 2026-06-29 | 2026-07-15 | Consultant Staff [16.1 h] | MOD-02-EN-6660 | MAK-01-PR-1010 |
|  | 18 | **GALVANIZED DUCTS** |  | 2026-03-24 | 2026-04-30 |  |  |  |  |  |  |  |
| MLTX-02-005-EN-13710 |  | Material Submittal for Galvanized Ducts | 15d | 2026-03-24 A | 2026-04-25 A | MLTX-02-005-EN-14740, MLTX-02-005-EN-13430 | 100% | 2026-06-11 | 2026-06-28 | QA/QC Engineer [16.1 h] | MOD-02-EN-6680 | MAK-01-PR-1000 |
| MLTX-02-005-EN-13720 |  | Material Approval for Galvanized Ducts | 15d | 2026-03-28 A | 2026-04-30 A | MLTX-02-005-EN-13710, MLTX-02-005-EN-13290 | 100% | 2026-06-29 | 2026-07-15 | Consultant Staff [16.1 h] | MOD-02-EN-6690 | MAK-01-PR-1010 |
|  | 19 | **EXHAUST FANS** |  | 2026-07-28 | 2026-07-30 |  |  |  |  |  |  |  |
| MLTX-02-005-EN-13730 |  | Material Submittal for Exhaust Fans | 15d | 2026-07-28 A | 2026-07-28 A | MLTX-02-005-EN-14760 | 100% | 2026-05-04 | 2026-05-20 | QA/QC Engineer [16.1 h] | MOD-02-EN-6710 | MAK-01-PR-1000 |
| MLTX-02-005-EN-13740 |  | Material Approval for Exhaust Fans | 15d | 2026-07-30 A | 2026-07-30 A | MLTX-02-005-EN-13730 | 100% | 2026-05-21 | 2026-06-10 | Consultant Staff [16.1 h] | MOD-02-EN-6720 | MAK-01-PR-1010 |
|  | 13 | **LIGHTING FIXTURES** |  | 2026-07-07 | 2026-07-07 |  |  |  |  |  |  |  |
| MLTX-02-005-EN-13600 |  | Material Submittal for Lighting Fixtures | 15d | 2026-07-07 A | 2026-07-07 A | MLTX-02-005-EN-14630, MLTX-02-005-EN-13430 | 100% | 2026-06-11 | 2026-06-28 | QA/QC Engineer [16.1 h] | MOD-02-EN-6740 | MAK-01-PR-1000 |
| MLTX-02-005-EN-13610 |  | Material Approval for Lighting Fixtures | 15d | 2026-07-07 A | 2026-07-07 A | MLTX-02-005-EN-13600, MLTX-02-005-EN-13500 | 100% | 2026-06-29 | 2026-07-15 | Consultant Staff [16.1 h] | MOD-02-EN-6750 | MAK-01-PR-1010 |
|  | 14 | **SWITCHES/SOCKETS** |  | 2026-07-28 | 2026-07-30 |  |  |  |  |  |  |  |
| MLTX-02-005-EN-13620 |  | Material Submittal for Switches/Sockets | 15d | 2026-07-28 A | 2026-07-28 A | MLTX-02-005-EN-14650, MLTX-02-005-EN-13430 | 100% | 2026-06-11 | 2026-06-28 | QA/QC Engineer [16.1 h] | MOD-02-EN-6770 | MAK-01-PR-1000 |
| MLTX-02-005-EN-13630 |  | Material Approval for Switches/Sockets | 15d | 2026-07-30 A | 2026-07-30 A | MLTX-02-005-EN-13620, MLTX-02-005-EN-13520 | 100% | 2026-06-29 | 2026-07-15 | Consultant Staff [16.1 h] | MOD-02-EN-6780 | MAK-01-PR-1010 |
|  | 15 | **EARTHING SYSTEM** |  | 2026-03-24 | 2026-05-18 |  |  |  |  |  |  |  |
| MLTX-02-005-EN-13420 |  | Material Submittal for Earthing System | 15d | 2026-03-24 A | 2026-05-14 A | MLTX-02-005-EN-14450 | 100% | 2026-05-04 | 2026-05-20 | QA/QC Engineer [16.1 h] | MOD-02-EN-6800 | MAK-01-PR-1290 |
| MLTX-02-005-EN-13430 |  | Material Approval for Earthing System | 15d | 2026-03-28 A | 2026-05-18 A | MLTX-02-005-EN-13420, MLTX-02-005-EN-13550 | 100% | 2026-05-21 | 2026-06-10 | Consultant Staff [16.1 h] | MOD-02-EN-6810 | MAK-01-PR-1300 |
|  | 5 | **DISTRIBUTION PANNELS** |  | 2026-07-28 | 2026-07-30 |  |  |  |  |  |  |  |
| MLTX-02-005-EN-13440 |  | Material Submittal for Distribution Panels | 15d | 2026-07-28 A | 2026-07-28 A | MLTX-02-005-EN-14470, MLTX-02-005-EN-13590 | 100% | 2026-09-07 | 2026-09-24 | QA/QC Engineer [16.1 h] | MOD-02-EN-6830 | MAK-01-PR-LLI-1060 |
| MLTX-02-005-EN-13450 |  | Material Approval for Distribution Panels | 15d | 2026-07-30 A | 2026-07-30 A | MLTX-02-005-EN-13440, MLTX-02-005-EN-15300, MLTX-02-005-EN-15970, MLTX-02-005-EN-15920 | 100% | 2026-09-26 | 2026-10-12 | Consultant Staff [16.1 h] | MOD-02-EN-6840 | MAK-01-PR-LLI-1070 |

| ID | WBS | Activity | Duration | Start | Finish | Predecessors | Complete | Planned start | Planned finish | Resources | New Activity ID | Old Activity ID - MK |
| --- | --- | --- | --- | --- | --- | --- | --- | --- | --- | --- | --- | --- |
|  | PLG | **PLAYGROUND WORKS** |  | 2026-03-19 | 2026-09-12 |  |  |  |  |  |  |  |
|  | 5 | **PVC MEMBRANE** |  | 2026-08-26 | 2026-08-26 |  |  |  |  |  |  |  |
| MLTX-02-005-EN-13830 |  | Material Submittal for PVC Membrane | 15d | 2026-08-26 A | 2026-08-26 A | MLTX-02-005-EN-14860 | 100% | 2026-04-16 | 2026-05-03 | QA/QC Engineer [16.1 h] | MOD-02-EN-6870 | MAK-01-PR-1120 |
| MLTX-02-005-EN-13840 |  | Material Approval for PVC Membrane | 15d | 2026-08-26 A | 2026-08-26 A | MLTX-02-005-EN-13830 | 100% | 2026-05-04 | 2026-05-20 | Consultant Staff [16.1 h] | MOD-02-EN-6880 | MAK-01-PR-1130 |
|  | 6 | **STEEL TENSION CABLES** |  | 2026-08-26 | 2026-08-26 |  |  |  |  |  |  |  |
| MLTX-02-005-EN-13850 |  | Material Submittal for Steel Tension Cables | 15d | 2026-08-26 A | 2026-08-26 A | MLTX-02-005-EN-15170 | 100% | 2026-04-16 | 2026-05-03 | QA/QC Engineer [16.1 h] | MOD-02-EN-6900 | MAK-01-PR-1120 |
| MLTX-02-005-EN-14150 |  | Material Approval for Steel Tension Cables | 15d | 2026-08-26 A | 2026-08-26 A | MLTX-02-005-EN-13850 | 100% | 2026-05-04 | 2026-05-20 | Consultant Staff [16.1 h] | MOD-02-EN-6910 | MAK-01-PR-1120 |
|  | 7 | **EMERGENCY DOORS** |  | 2026-08-26 | 2026-09-12 |  |  |  |  |  |  |  |
| MLTX-02-005-EN-13860 |  | Material Submittal for Emergency Doors | 15d | 2026-08-26 A | 2026-08-26 A | MLTX-02-005-EN-15180 | 100% | 2026-04-16 | 2026-05-03 | QA/QC Engineer [16.1 h] | MOD-02-EN-6930 | MAK-01-PR-1120 |
| MLTX-02-005-EN-14160 |  | Material Approval for Emergency Doors | 15d | 2026-09-12 A | 2026-09-12 A | MLTX-02-005-EN-13860 | 100% | 2026-05-04 | 2026-05-20 | Consultant Staff [16.1 h] | MOD-02-EN-6940 | MAK-01-PR-1120 |
|  | 8 | **PRESSURE UNITS** |  | 2026-09-12 | 2026-09-12 |  |  |  |  |  |  |  |
| MLTX-02-005-EN-13870 |  | Material Submittal for Pressure Units | 15d | 2026-09-12 A | 2026-09-12 A | MLTX-02-005-EN-15190, MLTX-02-005-EN-13320 | 100% | 2026-06-11 | 2026-06-28 | QA/QC Engineer [16.1 h] | MOD-02-EN-6960 | MAK-01-PR-1120 |
| MLTX-02-005-EN-14170 |  | Material Approval for Pressure Units | 15d | 2026-09-12 A | 2026-09-12 A | MLTX-02-005-EN-13870, MLTX-02-005-EN-13290 | 100% | 2026-06-29 | 2026-07-15 | Consultant Staff [16.1 h] | MOD-02-EN-6970 | MAK-01-PR-1120 |
|  | 9 | **AIR LOCK DOORS** |  | 2026-08-26 | 2026-09-12 |  |  |  |  |  |  |  |
| MLTX-02-005-EN-13880 |  | Material Submittal for Lock Doors | 15d | 2026-08-26 A | 2026-08-26 A | MLTX-02-005-EN-15200, MLTX-02-005-EN-13290 | 100% | 2026-06-25 | 2026-07-12 | QA/QC Engineer [16.1 h] | MOD-02-EN-6990 | MAK-01-PR-1120 |
| MLTX-02-005-EN-14180 |  | Material Approval for Lock Doors | 15d | 2026-09-12 A | 2026-09-12 A | MLTX-02-005-EN-13880, MLTX-02-005-EN-13300 | 100% | 2026-07-13 | 2026-07-29 | Consultant Staff [16.1 h] | MOD-02-EN-7000 | MAK-01-PR-1120 |
|  | 15 | **ARTIFICIAL TURF** |  | 2026-03-19 | 2026-05-19 |  |  |  |  |  |  |  |
| MLTX-02-005-EN-14030 |  | Material Submittal for Artificial TURF | 15d | 2026-03-19 A | 2026-05-14 A | MLTX-02-005-EN-15210 | 100% | 2026-04-16 | 2026-05-03 | QA/QC Engineer [16.1 h] | MOD-02-EN-7020 | MAK-01-PR-1120 |
| MLTX-02-005-EN-14190 |  | Material Approval for Artificial TURF | 15d | 2026-03-26 A | 2026-05-19 A | MLTX-02-005-EN-14030 | 100% | 2026-05-04 | 2026-05-20 | Consultant Staff [16.1 h] | MOD-02-EN-7030 | MAK-01-PR-1120 |
|  | 20 | **RUBBER GRANULES** |  | 2026-03-19 | 2026-05-19 |  |  |  |  |  |  |  |
| MLTX-02-005-EN-14040 |  | Material Submittal for Rubber Granules | 15d | 2026-03-19 A | 2026-05-14 A | MLTX-02-005-EN-15220 | 100% | 2026-04-16 | 2026-05-03 | QA/QC Engineer [16.1 h] | MOD-02-EN-7050 | MAK-01-PR-1120 |
| MLTX-02-005-EN-14200 |  | Material Approval for Rubber Granules | 15d | 2026-03-26 A | 2026-05-19 A | MLTX-02-005-EN-14040 | 100% | 2026-05-04 | 2026-05-20 | Consultant Staff [16.1 h] | MOD-02-EN-7060 | MAK-01-PR-1120 |
|  | 21 | **PADEL GLASS** |  | 2026-03-19 | 2026-05-19 |  |  |  |  |  |  |  |
| MLTX-02-005-EN-14050 |  | Material Submittal for Padel Glass | 15d | 2026-03-19 A | 2026-05-14 A | MLTX-02-005-EN-15230 | 100% | 2026-04-16 | 2026-05-03 | QA/QC Engineer [16.1 h] | MOD-02-EN-7080 | MAK-01-PR-1120 |
| MLTX-02-005-EN-14210 |  | Material Approval for Padel Glass | 15d | 2026-03-26 A | 2026-05-19 A | MLTX-02-005-EN-14050 | 100% | 2026-05-04 | 2026-05-20 | Consultant Staff [16.1 h] | MOD-02-EN-7090 | MAK-01-PR-1120 |

| ID | WBS | Activity | Duration | Start | Finish | Predecessors | Complete | Planned start | Planned finish | Resources | New Activity ID | Old Activity ID - MK |
| --- | --- | --- | --- | --- | --- | --- | --- | --- | --- | --- | --- | --- |
|  | 22 | **PADEL WIRE MESH/STEEL SETS** |  | 2026-03-19 | 2026-05-19 |  |  |  |  |  |  |  |
| MLTX-02-005-EN-14060 |  | Material Submittal for Wire Mesh/Steel Sets | 15d | 2026-03-19 A | 2026-05-14 A | MLTX-02-005-EN-15240 | 100% | 2026-04-16 | 2026-05-03 | QA/QC Engineer [16.1 h] | MOD-02-EN-7110 | MAK-01-PR-1120 |
| MLTX-02-005-EN-14220 |  | Material Approval for Wire Mesh/Steel Sets | 15d | 2026-03-26 A | 2026-05-19 A | MLTX-02-005-EN-14060 | 100% | 2026-05-04 | 2026-05-20 | Consultant Staff [16.1 h] | MOD-02-EN-7120 | MAK-01-PR-1120 |
|  | 1 | **AGGREGATE BASE COURSE** |  | 2026-03-19 | 2026-05-10 |  |  |  |  |  |  |  |
| MLTX-02-005-EN-13290 |  | Material Submittal for Aggregate Base Course | 15d | 2026-03-19 A | 2026-05-05 A | MLTX-02-005-EN-14310 | 100% | 2026-06-08 | 2026-06-24 | QA/QC Engineer [16.1 h] | MOD-02-EN-7140 | MAK-01-PR-1090 |
| MLTX-02-005-EN-13300 |  | Material Approval for Aggregate Base Course | 15d | 2026-03-26 A | 2026-05-10 A | MLTX-02-005-EN-13290, MLTX-02-005-EN-13820, MLTX-02-005-EN-13920 | 100% | 2026-06-25 | 2026-07-12 | Consultant Staff [16.1 h] | MOD-02-EN-7150 | MAK-01-PR-1100 |
|  | 16 | **PACKAGE AC UNITS** |  | 2026-07-07 | 2026-07-07 |  |  |  |  |  |  |  |
| MLTX-02-005-EN-13750 |  | Material Submittal for Package AC Units | 15d | 2026-07-07 A | 2026-07-07 A | MLTX-02-005-EN-14780, MLTX-02-005-EN-13320 | 100% | 2026-06-11 | 2026-06-28 | QA/QC Engineer [16.1 h] | MOD-02-EN-7260 | MAK-01-PR-1000 |
| MLTX-02-005-EN-13760 |  | Material Approval for Package AC Units | 15d | 2026-07-07 A | 2026-07-07 A | MLTX-02-005-EN-13750, MLTX-02-005-EN-13290 | 100% | 2026-06-29 | 2026-07-15 | Consultant Staff [16.1 h] | MOD-02-EN-7270 | MAK-01-PR-1010 |
|  | 17 | **AIR DIFUSSERS/GRILLS** |  | 2026-09-12 | 2026-09-12 |  |  |  |  |  |  |  |
| MLTX-02-005-EN-13770 |  | Material Submittal for Air Difussers/Grills | 15d | 2026-09-12 A | 2026-09-12 A | MLTX-02-005-EN-14800, MLTX-02-005-EN-13290 | 100% | 2026-06-25 | 2026-07-12 | QA/QC Engineer [16.1 h] | MOD-02-EN-7290 | MAK-01-PR-1000 |
| MLTX-02-005-EN-13780 |  | Material Approval for Air Difussers/Grills | 15d | 2026-09-12 A | 2026-09-12 A | MLTX-02-005-EN-13770, MLTX-02-005-EN-13300 | 100% | 2026-07-13 | 2026-07-29 | Consultant Staff [16.1 h] | MOD-02-EN-7300 | MAK-01-PR-1010 |
|  | 2 | **BITUMINOUS BASE & WEARING COURSE** |  | 2026-03-24 | 2026-05-10 |  |  |  |  |  |  |  |
| MLTX-02-005-EN-13310 |  | Material Submittal for Bituminous Base & Wearing Cource | 15d | 2026-03-24 A | 2026-05-05 A | MLTX-02-005-EN-14330 | 100% | 2026-05-04 | 2026-05-20 | QA/QC Engineer [16.1 h] | MOD-02-EN-7170 | MAK-01-PR-1120 |
| MLTX-02-005-EN-13320 |  | Material Approval for the Site | 15d | 2026-03-28 A | 2026-05-10 A | MLTX-02-005-EN-13310 | 100% | 2026-05-21 | 2026-06-10 | Consultant Staff [16.1 h] | MOD-02-EN-7180 | MAK-01-PR-1130 |
|  | 3 | **INTERLOCKING PAVING** |  | 2026-03-24 | 2026-05-13 |  |  |  |  |  |  |  |
| MLTX-02-005-EN-13330 |  | Material Submittal for Interlocking Block Pavers | 15d | 2026-03-24 A | 2026-05-07 A | MLTX-02-005-EN-14400, MLTX-02-005-EN-13320 | 100% | 2026-06-11 | 2026-06-28 | QA/QC Engineer [16.1 h] | MOD-02-EN-7200 | MAK-01-PR-1170 |
| MLTX-02-005-EN-13380 |  | Material Approval for Interlocking Block Pavers | 15d | 2026-03-28 A | 2026-05-13 A | MLTX-02-005-EN-13330, MLTX-02-005-EN-13290 | 100% | 2026-06-29 | 2026-07-15 | Consultant Staff [16.1 h] | MOD-02-EN-7210 | MAK-01-PR-1180 |
|  | 4 | **MARKING PAINT** |  | 2026-03-24 | 2026-05-18 |  |  |  |  |  |  |  |
| MLTX-02-005-EN-13660 |  | Material Submittal for Marking Paint | 15d | 2026-03-24 A | 2026-05-12 A | MLTX-02-005-EN-15250 | 100% | 2026-05-04 | 2026-05-20 | QA/QC Engineer [16.1 h] | MOD-02-EN-7230 | MAK-01-PR-1120 |
| MLTX-02-005-EN-14230 |  | Material Approval for Marking Paint | 15d | 2026-03-28 A | 2026-05-18 A | MLTX-02-005-EN-13660 | 100% | 2026-05-21 | 2026-06-10 | Consultant Staff [16.1 h] | MOD-02-EN-7240 | MAK-01-PR-1120 |
|  | 18 | **GALVANIZED DUCTS** |  | 2026-03-24 | 2026-05-10 |  |  |  |  |  |  |  |
| MLTX-02-005-EN-13790 |  | Material Submittal for Galvanized Duct | 15d | 2026-03-24 A | 2026-05-06 A | MLTX-02-005-EN-14820, MLTX-02-005-EN-13290 | 100% | 2026-06-29 | 2026-07-15 | QA/QC Engineer [16.1 h] | MOD-02-EN-7320 | MAK-01-PR-1000 |
| MLTX-02-005-EN-13800 |  | Material Approval for Galvanized Duct | 15d | 2026-03-28 A | 2026-05-10 A | MLTX-02-005-EN-13790, MLTX-02-005-EN-13300 | 100% | 2026-07-16 | 2026-08-02 | Consultant Staff [16.1 h] | MOD-02-EN-7330 | MAK-01-PR-1010 |

| ID | WBS | Activity | Duration | Start | Finish | Predecessors | Complete | Planned start | Planned finish | Resources | New Activity ID | Old Activity ID - MK |
| --- | --- | --- | --- | --- | --- | --- | --- | --- | --- | --- | --- | --- |
|  | 19 | **EXHAUST FANS** |  | 2026-09-12 | 2026-09-12 |  |  |  |  |  |  |  |
| MLTX-02-005-EN-13810 |  | Material Submittal for Exhaust Fans | 15d | 2026-09-12 A | 2026-09-12 A | MLTX-02-005-EN-14840 | 100% | 2026-05-04 | 2026-05-20 | QA/QC Engineer [16.1 h] | MOD-02-EN-7350 | MAK-01-PR-1000 |
| MLTX-02-005-EN-13820 |  | Material Approval for Exhaust Fans | 15d | 2026-09-12 A | 2026-09-12 A | MLTX-02-005-EN-13810 | 100% | 2026-05-21 | 2026-06-10 | Consultant Staff [16.1 h] | MOD-02-EN-7360 | MAK-01-PR-1010 |
|  | 10 | **DISTRIBUTION BOARDS** |  | 2026-08-26 | 2026-08-26 |  |  |  |  |  |  |  |
| MLTX-02-005-EN-13890 |  | Material Submittal for Distribution Boards | 15d | 2026-08-26 A | 2026-08-26 A | MLTX-02-005-EN-14920 | 100% | 2026-05-04 | 2026-05-20 | QA/QC Engineer [16.1 h] | MOD-02-EN-7380 | MAK-01-PR-1000 |
| MLTX-02-005-EN-13900 |  | Material Approval for Distribution Boards | 15d | 2026-08-26 A | 2026-08-26 A | MLTX-02-005-EN-13890 | 100% | 2026-05-21 | 2026-06-10 | Consultant Staff [16.1 h] | MOD-02-EN-7390 | MAK-01-PR-1010 |
|  | 11 | **POWER CABLES** |  | 2026-03-24 | 2026-05-19 |  |  |  |  |  |  |  |
| MLTX-02-005-EN-13910 |  | Material Submittal for Power Cables | 15d | 2026-03-24 A | 2026-05-14 A | MLTX-02-005-EN-14940 | 100% | 2026-05-04 | 2026-05-20 | QA/QC Engineer [16.1 h] | MOD-02-EN-7410 | MAK-01-PR-1000 |
| MLTX-02-005-EN-13920 |  | Material Approval for Power Cables | 15d | 2026-03-28 A | 2026-05-19 A | MLTX-02-005-EN-13910 | 100% | 2026-05-21 | 2026-06-10 | Consultant Staff [16.1 h] | MOD-02-EN-7420 | MAK-01-PR-1010 |
|  | 12 | **LIGHT FIXTURES** |  | 2026-07-07 | 2026-07-07 |  |  |  |  |  |  |  |
| MLTX-02-005-EN-13930 |  | Material Submittal for Light Fixtures | 15d | 2026-07-07 A | 2026-07-07 A | MLTX-02-005-EN-14960, MLTX-02-005-EN-13320 | 100% | 2026-06-11 | 2026-06-28 | QA/QC Engineer [16.1 h] | MOD-02-EN-7440 | MAK-01-PR-1000 |
| MLTX-02-005-EN-13940 |  | Material Approval for Light Fixtures | 15d | 2026-07-07 A | 2026-07-07 A | MLTX-02-005-EN-13930, MLTX-02-005-EN-13290 | 100% | 2026-06-29 | 2026-07-15 | Consultant Staff [16.1 h] | MOD-02-EN-7450 | MAK-01-PR-1010 |
|  | 13 | **CCTV MATERIALS** |  | 2026-08-26 | 2026-09-12 |  |  |  |  |  |  |  |
| MLTX-02-005-EN-13950 |  | Material Submittal for CCTV | 15d | 2026-08-26 A | 2026-08-26 A | MLTX-02-005-EN-14980, MLTX-02-005-EN-13320 | 100% | 2026-06-11 | 2026-06-28 | QA/QC Engineer [16.1 h] | MOD-02-EN-7470 | MAK-01-PR-1000 |
| MLTX-02-005-EN-13960 |  | Material Approval for CCTV | 15d | 2026-09-12 A | 2026-09-12 A | MLTX-02-005-EN-13950, MLTX-02-005-EN-13290 | 100% | 2026-06-29 | 2026-07-15 | Consultant Staff [16.1 h] | MOD-02-EN-7480 | MAK-01-PR-1010 |
|  | 14 | **POWER OUTLETS/SWITCHES** |  | 2026-09-12 | 2026-09-12 |  |  |  |  |  |  |  |
| MLTX-02-005-EN-13970 |  | Material Submittal for Power Outlets/Switches | 15d | 2026-09-12 A | 2026-09-12 A | MLTX-02-005-EN-15000 | 100% | 2026-06-25 | 2026-07-12 | QA/QC Engineer [16.1 h] | MOD-02-EN-7500 | MAK-01-PR-1000 |
| MLTX-02-005-EN-13980 |  | Material Approval for Power Outlets/Switches | 15d | 2026-09-12 A | 2026-09-12 A | MLTX-02-005-EN-13970 | 100% | 2026-07-13 | 2026-07-29 | Consultant Staff [16.1 h] | MOD-02-EN-7510 | MAK-01-PR-1010 |
|  | LSC | **LANDSCAPE WORKS** |  | 2026-03-24 | 2026-07-30 |  |  |  |  |  |  |  |
|  | 7 | **INTERLOCKING PAVING** |  | 2026-03-24 | 2026-05-13 |  |  |  |  |  |  |  |
| MLTX-02-005-EN-14010 |  | Material Submittal for Interlocking Block Pavers | 15d | 2026-03-24 A | 2026-05-07 A | MLTX-02-005-EN-15040 | 100% | 2026-06-25 | 2026-07-12 | QA/QC Engineer [16.1 h] | MOD-02-EN-7540 | MAK-01-PR-1170 |
| MLTX-02-005-EN-14020 |  | Material Approval for Interlocking Block Pavers | 15d | 2026-03-28 A | 2026-05-13 A | MLTX-02-005-EN-14010 | 100% | 2026-07-13 | 2026-07-29 | Consultant Staff [16.1 h] | MOD-02-EN-7550 | MAK-01-PR-1180 |
|  | 9 | **CURBSTONE** |  | 2026-03-24 | 2026-05-13 |  |  |  |  |  |  |  |
| MLTX-02-005-EN-14110 |  | Material Submittal for Curbstone | 15d | 2026-03-24 A | 2026-05-07 A | MLTX-02-005-EN-15140 | 100% | 2026-06-25 | 2026-07-12 | QA/QC Engineer [16.1 h] | MOD-02-EN-7570 | MAK-01-PR-1260 |
| MLTX-02-005-EN-14120 |  | Material Approval for Curbstone | 15d | 2026-03-28 A | 2026-05-13 A | MLTX-02-005-EN-14110 | 100% | 2026-07-13 | 2026-07-29 | Consultant Staff [16.1 h] | MOD-02-EN-7580 | MAK-01-PR-1270 |

| ID | WBS | Activity | Duration | Start | Finish | Predecessors | Complete | Planned start | Planned finish | Resources | New Activity ID | Old Activity ID - MK |
| --- | --- | --- | --- | --- | --- | --- | --- | --- | --- | --- | --- | --- |
|  | 1 | **PAVEMENT MARKING** |  | 2026-03-24 | 2026-05-18 |  |  |  |  |  |  |  |
| MLTX-02-005-EN-13340 |  | Material Submittal for Pavement Markings | 15d | 2026-03-24 A | 2026-05-12 A | MLTX-02-005-EN-14410 | 100% | 2026-06-25 | 2026-07-12 | QA/QC Engineer [16.1 h] | MOD-02-EN-7600 | MAK-01-PR-1200 |
| MLTX-02-005-EN-13390 |  | Material Approval for Pavement Markings | 15d | 2026-03-28 A | 2026-05-18 A | MLTX-02-005-EN-13340 | 100% | 2026-07-13 | 2026-07-29 | Consultant Staff [16.1 h] | MOD-02-EN-7610 | MAK-01-PR-1210 |
|  | 2 | **TRAFFIC SIGNS** |  | 2026-03-24 | 2026-05-18 |  |  |  |  |  |  |  |
| MLTX-02-005-EN-13350 |  | Material Submittal for Traffic Signs | 15d | 2026-03-24 A | 2026-05-12 A | MLTX-02-005-EN-14370 | 100% | 2026-06-25 | 2026-07-12 | QA/QC Engineer [16.1 h] | MOD-02-EN-7630 | MAK-01-PR-1230 |
| MLTX-02-005-EN-13360 |  | Material Approval for Traffic Signs | 15d | 2026-03-28 A | 2026-05-18 A | MLTX-02-005-EN-13350 | 100% | 2026-07-13 | 2026-07-29 | Consultant Staff [16.1 h] | MOD-02-EN-7640 | MAK-01-PR-1240 |
|  | 3 | **IRRIGATION PIPES/SPRINKLERS** |  | 2026-07-28 | 2026-07-30 |  |  |  |  |  |  |  |
| MLTX-02-005-EN-13400 |  | Material Submittal for Irrigation Pipes/Sprinkles | 15d | 2026-07-28 A | 2026-07-28 A | MLTX-02-005-EN-14430 | 100% | 2026-06-25 | 2026-07-12 | QA/QC Engineer [16.1 h] | MOD-02-EN-7660 | MAK-01-PR-1260 |
| MLTX-02-005-EN-13410 |  | Material Approval for Irrigation Pipes/Sprinkles | 15d | 2026-07-30 A | 2026-07-30 A | MLTX-02-005-EN-13400 | 100% | 2026-07-13 | 2026-07-29 | Consultant Staff [16.1 h] | MOD-02-EN-7670 | MAK-01-PR-1270 |
|  | 5 | **AGRICULTURE SOIL** |  | 2026-03-24 | 2026-05-21 |  |  |  |  |  |  |  |
| MLTX-02-005-EN-14070 |  | Material Submittal for Agriculture Soil | 15d | 2026-03-24 A | 2026-05-16 A | MLTX-02-005-EN-15100 | 100% | 2026-06-25 | 2026-07-12 | QA/QC Engineer [16.1 h] | MOD-02-EN-7690 | MAK-01-PR-1260 |
| MLTX-02-005-EN-14080 |  | Material Approval for Agriculture Soil | 15d | 2026-03-28 A | 2026-05-21 A | MLTX-02-005-EN-14070 | 100% | 2026-07-13 | 2026-07-29 | Consultant Staff [16.1 h] | MOD-02-EN-7700 | MAK-01-PR-1270 |
|  | 8 | **TRACK SURFACE** |  | 2026-07-28 | 2026-07-30 |  |  |  |  |  |  |  |
| MLTX-02-005-EN-14090 |  | Material Submittal for Track Surface | 15d | 2026-07-28 A | 2026-07-28 A | MLTX-02-005-EN-15120 | 100% | 2026-06-25 | 2026-07-12 | QA/QC Engineer [16.1 h] | MOD-02-EN-7720 | MAK-01-PR-1260 |
| MLTX-02-005-EN-14100 |  | Material Approval for Track Surface | 15d | 2026-07-30 A | 2026-07-30 A | MLTX-02-005-EN-14090, MLTX-02-005-EN-13240 | 100% | 2026-07-16 | 2026-08-02 | Consultant Staff [16.1 h] | MOD-02-EN-7730 | MAK-01-PR-1270 |
|  | 10 | **GRASS/TREES** |  | 2026-03-24 | 2026-05-21 |  |  |  |  |  |  |  |
| MLTX-02-005-EN-14130 |  | Material Submittal for Grass/Trees | 15d | 2026-03-24 A | 2026-05-16 A | MLTX-02-005-EN-15160 | 100% | 2026-06-25 | 2026-07-12 | QA/QC Engineer [16.1 h] | MOD-02-EN-7750 | MAK-01-PR-1260 |
| MLTX-02-005-EN-14140 |  | Material Approval for Grass/Trees | 15d | 2026-03-28 A | 2026-05-21 A | MLTX-02-005-EN-14130 | 100% | 2026-07-13 | 2026-07-29 | Consultant Staff [16.1 h] | MOD-02-EN-7760 | MAK-01-PR-1270 |
|  | 6 | **CABLES** |  | 2026-03-24 | 2026-05-19 |  |  |  |  |  |  |  |
| MLTX-02-005-EN-13990 |  | Material Submittal for Cables | 15d | 2026-03-24 A | 2026-05-14 A | MLTX-02-005-EN-15020 | 100% | 2026-06-25 | 2026-07-12 | QA/QC Engineer [16.1 h] | MOD-02-EN-7780 | MAK-01-PR-1200 |
| MLTX-02-005-EN-14000 |  | Material Approval for Cables | 15d | 2026-03-28 A | 2026-05-19 A | MLTX-02-005-EN-13990 | 100% | 2026-07-13 | 2026-07-29 | Consultant Staff [16.1 h] | MOD-02-EN-7790 | MAK-01-PR-1210 |
|  | 4 | **LIGHT POLES** |  | 2026-07-07 | 2026-07-07 |  |  |  |  |  |  |  |
| MLTX-02-005-EN-13240 |  | Material Submittal for Lighting poles | 15d | 2026-07-07 A | 2026-07-07 A | MLTX-02-005-EN-14250 | 100% | 2026-06-29 | 2026-07-15 | QA/QC Engineer [16.1 h] | MOD-02-EN-7810 | MAK-01-PR-LLI-1120 |
| MLTX-02-005-EN-13250 |  | Material Approval for Lighting poles | 15d | 2026-07-07 A | 2026-07-07 A | MLTX-02-005-EN-13240 | 100% | 2026-07-16 | 2026-08-02 | Consultant Staff [16.1 h] | MOD-02-EN-7820 | MAK-01-PR-LLI-1130 |

| ID | WBS | Activity | Duration | Start | Finish | Predecessors | Complete | Planned start | Planned finish | Total float | Free float | Resources | Cost | Actual cost | New Activity ID | Construction |
| --- | --- | --- | --- | --- | --- | --- | --- | --- | --- | --- | --- | --- | --- | --- | --- | --- |
|  | CONST | **CONSTRUCTION PHASE** |  | 2026-04-04 | 2027-03-15 |  |  |  |  |  |  |  |  |  |  |  |
|  | SW | **SITE WORKS** |  | 2026-04-04 | 2027-02-20 |  |  |  |  |  |  |  |  |  |  |  |
|  | 1 | **EARTH WORKS** |  | 2026-04-04 | 2026-08-13 |  |  |  |  |  |  |  |  |  |  |  |
| MLTX-02-005-CN-13320 |  | Excavation (in all types of soil) including Compaction (Service/Toilet Building) | 9d | 2026-04-04 A | 2026-08-02 A | MLTX-02-005-EN-15260 | 100% | 2026-04-16 | 2026-04-26 |  |  | Labor [290 h]; Driver [80 h]; Excavator [60 h]; Loader [60 h]; Water Tanker [60 h]; Dump Truck [80 h]; Milling machine [20 h]; Excavation in any type of soil from existing level [205.9] | 14,053.5 |  | MOD-02-CN-9940 | ER |
| MLTX-02-005-CN-13310 |  | Excavation (in all types of soil) including Compaction (Playground Area) | 12d | 2026-04-06 A | 2026-04-12 A | MLTX-02-005-EN-16170, MLTX-02-005-CN-13320 SS, MLTX-02-005-EN-16190 | 100% | 2026-04-16 | 2026-04-29 |  |  | Labor [300 h]; Driver [380 h]; Excavator [180 h]; Loader [50 h]; Water Tanker [120 h]; Dump Truck [240 h]; Milling machine [60 h]; Excavation in any type of soil from existing level [1441.3] | 98,374.53 |  | MOD-02-CN-9930 | ER |
| MLTX-02-005-CN-13330 |  | Excavation (in all types of soil) including Compaction (Landscape Area) | 7d | 2026-04-06 A | 2026-08-05 A | MLTX-02-005-EN-16020, MLTX-02-005-CN-13310, MLTX-02-005-EN-16040, MLTX-02-005-EN-16010, MLTX-02-005-EN-16030, MLTX-02-005-CN-13510 | 100% | 2026-06-01 | 2026-06-08 |  |  | Labor [400 h]; Driver [200 h]; Excavator [210 h]; Loader [150 h]; Water Tanker [150 h]; Dump Truck [280 h]; Milling machine [70 h]; Excavation in any type of soil from existing level [926.55] | 63,240.77 |  | MOD-02-CN-9950 | ER |
| MLTX-02-005-CN-13350 |  | Backfilling on Layers (Selected Soil) including Compaction (Service/Toilet Building) | 20d | 2026-04-06 A | 2026-04-08 A | MLTX-02-005-CN-13320 SS, MLTX-02-005-CN-13310 | 100% | 2026-04-30 | 2026-05-23 |  |  | Labor [300 h]; Driver [140 h]; Loader [90 h]; Water Tanker [90 h]; Compactor [60 h]; Backfilling with selected fill material [205.32] | 7,005.52 |  | MOD-02-CN-9970 | ER |
| MLTX-02-005-CN-13340 |  | Backfilling on Layers (Selected Soil) including Compaction (Playground Area) | 10d | 2026-04-13 A | 2026-04-30 A | MLTX-02-005-MS-1050, MLTX-02-005-CN-13310, MLTX-02-005-MS-1060 | 100% | 2026-04-30 | 2026-05-11 |  |  | Labor [550 h]; Driver [300 h]; Loader [120 h]; Water Tanker [150 h]; Compactor [200 h]; Backfilling with selected fill material [1437.24] | 49,038.63 |  | MOD-02-CN-9960 | ER |
| MLTX-02-005-CN-13360 |  | Backfilling on Layers (Selected Soil) including Compaction (Landscape Area) | 8d | 2026-04-21 A | 2026-08-13 A | MLTX-02-005-CN-13330 SS, MLTX-02-005-CN-13320 SS, MLTX-02-005-CN-13310, MLTX-02-005-CN-13320 FF, MLTX-02-005-CN-13330 FF, MLTX-02-005-CN-13510 | 100% | 2026-06-01 | 2026-06-09 |  |  | Labor [600 h]; Driver [300 h]; Loader [60 h]; Water Tanker [150 h]; Compactor [200 h]; Backfilling with selected fill material [923.94] | 31,524.83 |  | MOD-02-CN-9980 | ER |
|  | 4 | **LANDSCAPE WORKS** |  | 2026-05-19 | 2027-02-20 |  |  |  |  |  |  |  |  |  |  |  |
|  | 4 | **PLAYGROUND AREA** |  | 2026-05-19 | 2027-02-16 |  |  |  |  |  |  |  |  |  |  |  |
|  | 6 | **FOOTBALL PLAYGROUND** |  | 2026-05-19 | 2027-01-17 |  |  |  |  |  |  |  |  |  |  |  |
| MLTX-02-005-CN-13510 |  | Preparation and Proofing for Subgrade (Football Playground) | 10d | 2026-05-19 A | 2026-05-31 A | MLTX-02-005-CN-13340 | 100% | 2026-05-12 | 2026-05-23 |  |  | Labor [500 h]; Skilled Labor [200 h]; Driver [300 h]; Forklift [270 h]; Football playground [250] | 79,212.5 | 79,212.5 | MOD-02-CN-10020 | PL |
| MLTX-02-005-CN-13520 |  | Backfilling and Compaction of Base Layers (Football Playground) | 16d | 2026-06-01 A | 2026-06-18 A | MLTX-02-005-PR-11070, MLTX-02-005-CN-13510, MLTX-02-005-EN-13320 | 100% | 2026-07-30 | 2026-08-17 |  |  | Labor [700 h]; Skilled Labor [250 h]; Driver [350 h]; Loader [150 h]; Dump Truck [440 h]; Compactor [220 h]; Football playground [50] | 15,842.5 | 15,842.5 | MOD-02-CN-10030 | PL |
| MLTX-02-005-CN-14770 |  | Aggregate basecourse layer (Football Playground) | 21d | 2026-06-20 A | 2026-06-28 A | MLTX-02-005-CN-13520 | 100% | 2026-08-18 | 2026-09-10 |  |  | Football playground [50] | 15,842.5 |  |  | PL |
| MLTX-02-005-CN-13530 |  | Finishing Asphalt & Concrete Surface (Football Playground) | 20d | 2026-11-28 | 2026-12-20 | MLTX-02-005-PR-11880, MLTX-02-005-PR-11860, MLTX-02-005-CN-13980 |  |  |  | 1d | 17d | Labor [800 h]; Skilled Labor [150 h]; Driver [100 h]; Forklift [390 h]; Football playground [500] | 158,424.99 |  | MOD-02-CN-10040 | PL |
| MLTX-02-005-CN-13550 |  | Surface Marking and Painting (Football Playground) | 2d | 2027-01-10 | 2027-01-11 | MLTX-02-005-PR-11440, MLTX-02-005-CN-13530, MLTX-02-005-CN-13750 |  |  |  | -16d | 0d | Skilled Labor [250 h]; Painter [240 h]; Football playground [50] | 15,842.5 |  | MOD-02-CN-10060 | PL |
| MLTX-02-005-CN-13540 |  | Install Sport Equipments - Goal / Nets - (Football Playground) | 5d | 2027-01-12 | 2027-01-17 | MLTX-02-005-CN-13530, MLTX-02-005-CN-13550, MLTX-02-005-EN-16340 |  |  |  | -16d | 21d | Labor [390 h]; Skilled Labor [150 h]; Driver [100 h]; Crane [140 h]; Football playground [100] | 31,685 |  | MOD-02-CN-10050 | PL |
|  | 7 | **PADEL PLAYGROUND** |  | 2026-05-19 | 2027-02-10 |  |  |  |  |  |  |  |  |  |  |  |
| MLTX-02-005-CN-13560 |  | Preparation and Proofing for Subgrade (Padel Playground) | 7d | 2026-05-19 A | 2026-05-31 A | MLTX-02-005-CN-13510 | 100% | 2026-05-24 | 2026-06-03 |  |  | Labor [300 h]; Skilled Labor [150 h]; Driver [200 h]; Forklift [180 h]; Padel playgound [70] | 81,894.4 | 81,894.4 | MOD-02-CN-10080 | PL |
| MLTX-02-005-CN-13570 |  | Backfilling and Compaction of Base Layers (Padel Playground) | 16d | 2026-06-01 A | 2026-06-18 A | MLTX-02-005-CN-13560, MLTX-02-005-PR-11070, MLTX-02-005-EN-13320, MLTX-02-005-CN-13620 | 100% | 2026-08-19 | 2026-09-06 |  |  | Labor [550 h]; Skilled Labor [200 h]; Driver [280 h]; Loader [150 h]; Dump Truck [360 h]; Compactor [180 h]; Padel playgound [10] | 11,699.2 | 11,699.2 | MOD-02-CN-10090 | PL |
| MLTX-02-005-CN-14780 |  | Aggregate basecourse layer (Padel Playground) | 21d | 2026-06-20 A | 2026-06-28 A | MLTX-02-005-CN-14770, MLTX-02-005-CN-13570 | 100% | 2026-09-22 | 2026-10-17 |  |  | Padel playgound [10] | 11,699.2 | 11,699.2 |  | PL |
| MLTX-02-005-CN-13580 |  | Finishing Asphalt & Concrete Surface (Padel Playground) | 21d | 2026-08-24 A | 2026-08-25 A | MLTX-02-005-CN-13630 | 100% | 2026-09-13 | 2026-10-07 |  |  | Labor [720 h]; Skilled Labor [200 h]; Driver [90 h]; Forklift [270 h]; Padel playgound [50] | 58,496 | 58,496 | MOD-02-CN-10100 | PL |
| MLTX-02-005-CN-13590 |  | Install Sport Equipments - Goal / Nets - (Padel Playground) | 5d | 2027-02-06 | 2027-02-10 | MLTX-02-005-CN-13580, MLTX-02-005-EN-16360, MLTX-02-005-CN-13540 SS, MLTX-02-005-CN-13810, MLTX-02-005-CN-14790, MLTX-02-005-CN-14780 |  |  |  | -37d | 0d | Labor [950 h]; Skilled Labor [440 h]; Driver [260 h]; Crane [160 h]; Padel playgound [50] | 58,496 |  | MOD-02-CN-10110 | PL |
| MLTX-02-005-CN-13600 |  | Surface Marking and Painting (Padel Playground) | 5d | 2027-02-06 | 2027-02-10 | MLTX-02-005-CN-13590 SS, MLTX-02-005-PR-11440, MLTX-02-005-CN-13550, MLTX-02-005-CN-13530 |  |  |  | -37d | 0d | Skilled Labor [500 h]; Painter [240 h]; Padel playgound [10] | 11,699.2 |  | MOD-02-CN-10120 | PL |

| ID | WBS | Activity | Duration | Start | Finish | Predecessors | Complete | Planned start | Planned finish | Total float | Free float | Resources | Cost | Actual cost | New Activity ID | Construction | AIR DOME WORKS |
| --- | --- | --- | --- | --- | --- | --- | --- | --- | --- | --- | --- | --- | --- | --- | --- | --- | --- |
|  | 8 | **BASKETBALL PLAYGROUND** |  | 2026-05-19 | 2027-02-13 |  |  |  |  |  |  |  |  |  |  |  |  |
| MLTX-02-005-CN-13610 |  | Preparation and Proofing for Subgrade (Basketball Playground) | 10d | 2026-05-19 A | 2026-05-31 A | MLTX-02-005-CN-13560, MLTX-02-005-CN-13860 | 100% | 2026-07-26 | 2026-08-05 |  |  | Labor [550 h]; Skilled Labor [200 h]; Driver [280 h]; Forklift [270 h]; Basketball playground [146.62] | 92,913.27 | 92,913.27 | MOD-02-CN-10180 | PL |  |
| MLTX-02-005-CN-13620 |  | Backfilling and Compaction of Base Layers (Basketball Playground) | 11d | 2026-06-01 A | 2026-06-18 A | MLTX-02-005-PR-11070, MLTX-02-005-EN-14230, MLTX-02-005-EN-13320, MLTX-02-005-CN-13610, MLTX-02-005-PR-11230 | 100% | 2026-08-06 | 2026-08-18 |  |  | Labor [400 h]; Skilled Labor [200 h]; Driver [300 h]; Loader [150 h]; Dump Truck [400 h]; Compactor [200 h]; Basketball playground [24.93] | 15,795.26 | 15,795.26 | MOD-02-CN-10190 | PL |  |
| MLTX-02-005-CN-14790 |  | Aggregate basecourse layer (Basketball Playground) | 21d | 2026-06-20 A | 2026-06-28 A | MLTX-02-005-CN-14780 | 100% | 2026-10-18 | 2026-11-10 |  |  | Basketball playground [24.93] | 15,795.26 | 15,795.26 |  | PL |  |
| MLTX-02-005-CN-13630 |  | Finishing Asphalt & Concrete Surface (Basketball Playground) | 21d | 2026-08-20 A | 2026-08-25 A | MLTX-02-005-CN-13620 | 100% | 2026-08-19 | 2026-09-12 |  |  | Labor [740 h]; Skilled Labor [150 h]; Driver [100 h]; Forklift [360 h]; Basketball playground [152.49] | 96,629.8 | 96,629.8 | MOD-02-CN-10200 | PL |  |
| MLTX-02-005-CN-13640 |  | Install Sport Equipments - Goal / Nets - (Basketball Playground) | 2d | 2027-02-11 | 2027-02-13 | MLTX-02-005-CN-13630, MLTX-02-005-CN-13540, MLTX-02-005-CN-13590, MLTX-02-005-EN-16350, MLTX-02-005-CN-14790, MLTX-02-005-CN-14270 |  |  |  | -37d | 0d | Labor [200 h]; Skilled Labor [90 h]; Driver [100 h]; Crane [140 h]; Basketball playground [127.5] | 80,796.75 |  | MOD-02-CN-10210 | PL |  |
| MLTX-02-005-CN-13650 |  | Surface Marking and Painting (Basketball Playground) | 2d | 2027-02-11 | 2027-02-13 | MLTX-02-005-CN-13600, MLTX-02-005-CN-13640 SS, MLTX-02-005-PR-11440, MLTX-02-005-CN-13550 |  |  |  | -37d | 6d | Skilled Labor [250 h]; Painter [240 h]; Basketball playground [25.5] | 16,159.35 |  | MOD-02-CN-10220 | PL |  |
|  | 9 | **PADEL FENCE** |  | 2026-08-08 | 2027-01-17 |  |  |  |  |  |  |  |  |  |  |  |  |
| MLTX-02-005-CN-13660 |  | Excavation for Fence | 8d | 2026-08-08 A | 2026-08-08 A | MLTX-02-005-CN-13570, MLTX-02-005-CN-13620, MLTX-02-005-CN-13630, MLTX-02-005-CN-14790 | 100% | 2026-11-25 | 2026-12-03 |  |  | Labor [250 h]; Driver [160 h]; Excavator [120 h]; Dump Truck [160 h]; Supply and install of padel playground fence [0.01] | 414.35 |  | MOD-02-CN-10240 | PL |  |
| MLTX-02-005-CN-13670 |  | Concrete Foundation for Fence including Posts Fixation | 7d | 2026-08-15 A | 2026-08-23 A | MLTX-02-005-CN-13660 SS, MLTX-02-005-EN-15390, MLTX-02-005-CN-13660 FF, MLTX-02-005-CN-13630, MLTX-02-005-CN-14790 | 100% | 2026-11-26 | 2026-12-03 |  |  | Skilled Labor [150 h]; Driver [100 h]; Steel Fixer [140 h]; Supply and install of padel playground fence [0.01] | 828.69 |  | MOD-02-CN-10250 | PL |  |
| MLTX-02-005-CN-13671 |  | Backfilling and Reinstatement for Concrete Foundation | 2d | 2026-10-13 A | 2026-10-13 A | MLTX-02-005-CN-13670 | 100% | 2027-01-09 | 2027-01-10 |  |  | Skilled Labor [257.14 h]; Driver [342.86 h]; Loader [180 h]; Dump Truck [240 h]; Compactor [120 h]; Supply and install of padel playground fence [0.05] | 3,834.68 |  | MOD-02-CN-10290 | PL |  |
| MLTX-02-005-CN-13680 |  | Tempered Glass Fenc Installation and Fixation | 25d | 2026-12-09 | 2027-01-06 | MLTX-02-005-CN-13670 SS, MLTX-02-005-PR-11900, MLTX-02-005-CN-13670 FF, MLTX-02-005-CN-13630, MLTX-02-005-CN-14790 |  |  |  | -5d | 0d | Skilled Labor [250 h]; Driver [180 h]; Crane [240 h]; Supply and install of padel playground fence [0.37] | 30,677.48 |  | MOD-02-CN-10260 | PL |  |
| MLTX-02-005-CN-13690 |  | Chain Link Fence Installation and Fixation | 25d | 2026-12-09 | 2027-01-06 | MLTX-02-005-CN-13680 SS, MLTX-02-005-CN-13680 FF, MLTX-02-005-PR-11920, MLTX-02-005-CN-13630, MLTX-02-005-CN-14790 |  |  |  | -5d | 9d | Labor [200 h]; Skilled Labor [150 h]; Driver [150 h]; Crane [200 h]; Supply and install of padel playground fence [0.19] | 15,338.75 |  | MOD-02-CN-10270 | PL |  |
| MLTX-02-005-CN-13700 |  | Install of Fence Gates | 5d | 2027-01-12 | 2027-01-17 | MLTX-02-005-CN-13690 FF, MLTX-02-005-CN-13690 SS, MLTX-02-005-CN-13550 |  |  |  | -14d | 29d | Labor [380 h]; Skilled Labor [90 h]; Driver [100 h]; Crane [120 h]; Supply and install of padel playground fence [0.05] | 3,834.68 |  | MOD-02-CN-10280 | PL |  |
|  | 1 | **CURBSTOEN/INTERLOCK** |  | 2026-08-10 | 2027-02-16 |  |  |  |  |  |  |  |  |  |  |  |  |
| MLTX-02-005-CN-13450 |  | Concrete Works Under Curbstone | 3d | 2026-08-10 A | 2026-08-10 A | MLTX-02-005-EN-15360, MLTX-02-005-EN-16200, MLTX-02-005-CN-13520 | 100% | 2026-08-27 | 2026-08-30 |  |  | Skilled Labor [200 h]; Kerb type K1A [151]; Kerb type K1B [15]; Kerb type K4 [908] | 54,535.3 | 54,535.3 | MOD-02-CN-10150 | PL |  |
| MLTX-02-005-CN-13460 |  | Curbstone Installation | 4d | 2026-08-11 A | 2026-08-13 A | MLTX-02-005-PR-11980, MLTX-02-005-CN-13450 | 100% | 2026-09-06 | 2026-09-09 |  |  | Labor [940 h]; Skilled Labor [440 h]; Driver [340 h]; Forklift [240 h]; Kerb type K1A [352.33]; Kerb type K1B [35]; Kerb type K4 [2118.67] | 127,249.04 | 6,824.65 | MOD-02-CN-10160 | PL |  |
| MLTX-02-005-CN-13390 |  | Interlock Installation (Grey Scale) for LandScape (Including Finishing Works) | 6d | 2027-02-10 | 2027-02-16 | MLTX-02-005-PR-11130, MLTX-02-005-PR-11110, MLTX-02-005-PR-11840, MLTX-02-005-CN-13460 |  |  |  | -40d | 3d | Labor [1000 h]; Skilled Labor [440 h]; Driver [540 h]; Forklift [330 h]; Interlock tiles grey scale with black marble chips 600*300*60mm zero joint [1683.33] | 180,520.67 |  | MOD-02-CN-10140 | PL |  |
|  | 10 | **AIR DOME** |  | 2026-07-14 | 2027-02-04 |  |  |  |  |  |  |  |  |  |  |  |  |
|  | 1 | **CIVIL WORKS** |  | 2026-07-14 | 2027-01-09 |  |  |  |  |  |  |  |  |  |  |  |  |
| MLTX-02-005-CN-13710 |  | Excavation for Foundation (Air Dome) | 10d | 2026-07-14 A | 2026-08-02 A | MLTX-02-005-EN-16220, MLTX-02-005-CN-13620, MLTX-02-005-EN-16240, MLTX-02-005-CN-13570, MLTX-02-005-EN-16230, MLTX-02-005-EN-16260, MLTX-02-005-CN-13520, MLTX-02-005-CN-14770 | 100% | 2026-09-21 | 2026-10-03 |  |  | Labor [200 h]; Driver [80 h]; Excavator [120 h]; Water Tanker [120 h]; Compactor [80 h]; Design, supply, install, testing and commissioning of air dome [0.03] | 167,650.3 |  | MOD-02-CN-10320 | PL | CVL |
| MLTX-02-005-CN-13720 |  | Concrete Works for Foundations including Anchor Bolts (Air Dome) | 15d | 2026-08-10 A | 2026-09-21 A | MLTX-02-005-CN-13710 | 100% | 2026-10-04 | 2026-10-20 |  |  | Skilled Labor [200 h]; Steel Fixer [180 h]; Design, supply, install, testing and commissioning of air dome [0.04] | 228,008.77 |  | MOD-02-CN-10330 | PL | CVL |
| MLTX-02-005-CN-13730 |  | Cable System Installation (Air Dome) | 8d | 2026-09-21 A | 2026-09-21 A | MLTX-02-005-EN-13840 | 100% | 2026-06-18 | 2026-06-27 |  |  | Labor [700 h]; Skilled Labor [250 h]; Driver [250 h]; Crane [300 h]; Design, supply, install, testing and commissioning of air dome | 350,921.95 |  | MOD-02-CN-10340 | PL | CVL |
| MLTX-02-005-CN-13860 |  | Perimeter Clamping System Installation | 8d | 2026-09-21 A | 2026-09-28 A | MLTX-02-005-CN-13730 FF, MLTX-02-005-CN-13730 SS+10d | 100% | 2026-06-30 | 2026-07-08 |  |  | Design, supply, install, testing and commissioning of air dome [0.1] | 552,946.49 |  |  | PL | CVL |
| MLTX-02-005-CN-13740 |  | Install of Membrane Covering System (Air Dome) | 20d | 2026-12-17 | 2027-01-09 | MLTX-02-005-PR-11740, MLTX-02-005-CN-13860, MLTX-02-005-CN-11740, MLTX-02-005-CN-13720, MLTX-02-005-PR-12050, MLTX-02-005-EN-15400, MLTX-02-005-CN-14780, MLTX-02-005-CN-13420, MLTX-02-005-CN-14790 |  |  |  | -26d | 0d | Labor [500 h]; Skilled Labor [90 h]; Driver [100 h]; Crane [160 h]; Design, supply, install, testing and commissioning of air dome [0.17] | 942,830.33 |  | MOD-02-CN-10360 | PL | CVL |
| MLTX-02-005-CN-13750 |  | Thermal Insulation Works (Air Dome) | 20d | 2026-12-17 | 2027-01-09 | MLTX-02-005-CN-13740 SS, MLTX-02-005-CN-11740, MLTX-02-005-CN-13740 FF |  |  |  | -26d | 0d | Labor [500 h]; Skilled Labor [240 h]; Driver [100 h]; Crane [160 h]; Design, supply, install, testing and commissioning of air dome [0.08] | 448,471.57 |  | MOD-02-CN-10370 | PL | CVL |

| ID | WBS | Activity | Duration | Start | Finish | Predecessors | Complete | Planned start | Planned finish | Total float | Free float | Resources | Cost | Actual cost | New Activity ID | Construction | AIR DOME WORKS | New Activity Code |
| --- | --- | --- | --- | --- | --- | --- | --- | --- | --- | --- | --- | --- | --- | --- | --- | --- | --- | --- |
|  | 3 | **MECHANICAL WORKS** |  | 2027-01-25 | 2027-01-30 |  |  |  |  |  |  |  |  |  |  |  |  |  |
| MLTX-02-005-CN-13780 |  | Air Ducts and Grills Installation (Air Dome) | 4d | 2027-01-25 | 2027-01-28 | MLTX-02-005-EN-16150, MLTX-02-005-PR-11560, MLTX-02-005-PR-12070, MLTX-02-005-PR-12080, MLTX-02-005-CN-13750, MLTX-02-005-PR-11580 |  |  |  | -39d | 0d | Labor [876.9 h]; Skilled Labor [353.8 h]; Crane [120 h]; Mechanical [269.2 h]; Design, supply, install, testing and commissioning of air dome [0.13] | 728,766.3 |  | MOD-02-CN-10410 | PL | MEC |  |
| MLTX-02-005-CN-13790 |  | Air Units Installation (Air Dome) | 5d | 2027-01-25 | 2027-01-30 | MLTX-02-005-CN-13780 FF, MLTX-02-005-CN-13780 SS, MLTX-02-005-PR-11540 |  |  |  | -39d | 0d | Labor [800 h]; Skilled Labor [440 h]; Driver [420 h]; Forklift [240 h]; Mechanical [160 h]; Design, supply, install, testing and commissioning of air dome [0.06] | 336,353.67 |  | MOD-02-CN-10420 | PL | MEC |  |
| MLTX-02-005-CN-13800 |  | Exhaust Fans and Ducts Installation (Air Dome) | 5d | 2027-01-25 | 2027-01-30 | MLTX-02-005-CN-13780 FF, MLTX-02-005-CN-13790 SS, MLTX-02-005-CN-13780 SS, MLTX-02-005-PR-11600, MLTX-02-005-CN-13790 FF |  |  |  | -37d | 0d | Labor [700 h]; Skilled Labor [300 h]; Driver [370 h]; Forklift [210 h]; Mechanical [140 h]; Design, supply, install, testing and commissioning of air dome [0.03] | 168,176.84 |  | MOD-02-CN-10430 | PL | MEC |  |
|  | 4 | **ELECTRICAL WORKS** |  | 2027-01-25 | 2027-02-04 |  |  |  |  |  |  |  |  |  |  |  |  |  |
| MLTX-02-005-CN-13810 |  | Light Fixture Works (Air Dome) | 10d | 2027-01-25 | 2027-02-04 | MLTX-02-005-CN-13800 SS, MLTX-02-005-PR-11760, MLTX-02-005-PR-11740, MLTX-02-005-CN-13800 FF, MLTX-02-005-CN-13790 FF, MLTX-02-005-CN-13790 SS |  |  |  | -37d | 0d | Skilled Labor [440 h]; Electrician [300 h]; Design, supply, install, testing and commissioning of air dome [0.04] | 224,235.78 |  | MOD-02-CN-10450 | PL | ELE |  |
| MLTX-02-005-CN-13820 |  | Distribution Board and Electrical Works (Air Dome) | 7d | 2027-01-28 | 2027-02-04 | MLTX-02-005-EN-16070, MLTX-02-005-EN-16080, MLTX-02-005-PR-11800, MLTX-02-005-EN-16090, MLTX-02-005-EN-16100, MLTX-02-005-CN-13810 SS, MLTX-02-005-EN-16110, MLTX-02-005-EN-12920, MLTX-02-005-PR-11740, MLTX-02-005-PR-11720, MLTX-02-005-CN-13810 FF |  |  |  | -34d | 0d | Skilled Labor [300 h]; Electrician [120 h]; Design, supply, install, testing and commissioning of air dome [0.03] | 168,176.84 |  | MOD-02-CN-10460 | PL | ELE |  |
| MLTX-02-005-CN-13830 |  | External Electrical Connection Works (Air Dome) | 6d | 2027-01-30 | 2027-02-04 | MLTX-02-005-CN-13820 FF, MLTX-02-005-CN-13820 SS |  |  |  | -34d | 0d | Skilled Labor [350 h]; Electrician [200 h]; Design, supply, install, testing and commissioning of air dome [0.03] | 168,176.84 |  | MOD-02-CN-10470 | PL | ELE |  |
| MLTX-02-005-CN-13840 |  | Emergency Generator Installation (Air Dome) | 4d | 2027-02-01 | 2027-02-04 | MLTX-02-005-CN-13830 FF, MLTX-02-005-EN-13000, MLTX-02-005-EN-12990, MLTX-02-005-CN-13830 SS, MLTX-02-005-EN-12970 |  |  |  | -34d | 0d | Skilled Labor [300 h]; Electrician [220 h]; Design, supply, install, testing and commissioning of air dome [0.09] | 504,530.51 |  | MOD-02-CN-10480 | PL | ELE |  |
| MLTX-02-005-CN-13850 |  | Control System Installation (Air Dome) | 3d | 2027-02-02 | 2027-02-04 | MLTX-02-005-EN-16120, MLTX-02-005-EN-16130, MLTX-02-005-EN-16140, MLTX-02-005-CN-13840 SS, MLTX-02-005-PR-11780, MLTX-02-005-CN-13840 FF |  |  |  | -34d | 8d | Skilled Labor [900 h]; Electrician [500 h]; Design, supply, install, testing and commissioning of air dome | 448,471.57 |  | MOD-02-CN-10490 | PL | ELE |  |
|  | 2 | **FINISHES WORKS** |  | 2027-01-28 | 2027-02-01 |  |  |  |  |  |  |  |  |  |  |  |  |  |
| MLTX-02-005-CN-13760 |  | Doors Installation Including Emergency, Entrance doors (Air Dome) | 2d | 2027-01-28 | 2027-01-30 | MLTX-02-005-PR-12060, MLTX-02-005-CN-13790 FF, MLTX-02-005-EN-16210 |  |  |  | -39d | 0d | Labor [400 h]; Skilled Labor [200 h]; Forklift [150 h]; Design, supply, install, testing and commissioning of air dome [0.02] | 112,117.89 |  | MOD-02-CN-10380 | PL | FIN |  |
| MLTX-02-005-CN-13770 |  | Logo and Signs Installation (Air Dome) | 2d | 2027-01-31 | 2027-02-01 | MLTX-02-005-CN-13760 |  |  |  | -31d | 11d | Labor [1300 h]; Skilled Labor [900 h]; Driver [340 h]; Crane [120 h]; Design, supply, install, testing and commissioning of air dome [0.01] | 56,058.95 |  | MOD-02-CN-10390 | PL | FIN |  |
|  | 1 | **IRRIGATION NETWORK** |  | 2026-08-24 | 2027-01-24 |  |  |  |  |  |  |  |  |  |  |  |  |  |
| MLTX-02-005-CN-14620 |  | Installing of HDPE Pipes for Irrigation Network (Main Line) | 3d | 2026-08-24 A | 2026-09-14 A | MLTX-02-005-EN-16060, MLTX-02-005-CN-13460, MLTX-02-005-EN-16050 | 100% | 2026-09-10 | 2026-09-13 |  |  | Labor [1000 h]; Driver [540 h]; Crane [220 h]; Mechanical [320 h]; Plumber [300 h]; HDPE Pipes pipe line O.D 90 mm PN 10, in depth 0 to 1.5 m [250] | 53,620 | 53,620 | MOD-02-CN-11430 | LS |  | CN.MB.D15.1950 |
| MLTX-02-005-CN-14630 |  | Installing of HDPE Pipes for Irrigation Network (Branch Lines) | 3d | 2026-09-19 A | 2026-09-29 A | MLTX-02-005-CN-14620 | 100% | 2026-09-14 | 2026-09-16 |  |  | Labor [800 h]; Driver [240 h]; Crane [140 h]; Mechanical [240 h]; Plumber [240 h]; HDPE Pipes pipe line O.D 50 mm PN 10, in depth 0 to 1.5 m [116.67]; HDPE Pipes pipe line O.D 32 mm PN 10, in depth 0 to 1.5 m [250]; HDPE Pipes pipe line O.D 25 mm PN 10, in depth 0 to 1.5 m [683.33] | 50,127.83 | 20,150 | MOD-02-CN-11440 | LS |  | CN.MB.D15.1960 |
| MLTX-02-005-CN-14640 |  | Installing of Valves and fittings for Irrigation Network | 3d | 2026-09-19 A | 2026-10-13 A | MLTX-02-005-CN-14630 | 100% | 2026-09-17 | 2026-09-20 |  |  | Labor [950 h]; Mechanical [160 h]; Plumber [260 h]; Gate valve 100 mm PN16 [0.67]; Gate valve 50 mm PN16 [3.67]; Gate valve 32 mm PN16 [4.67]; Flushing Bronze gate valve dia 1.5" inside PVC box [2]; Air release valve 1.5" inside PVC box [2] | 23,560.84 | 6,824.52 | MOD-02-CN-11450 | LS |  | CN.MB.D15.1970 |
| MLTX-02-005-CN-14650 |  | Installing of Bubblers and Spreyers | 2d | 2027-01-23 | 2027-01-24 | MLTX-02-005-PR-11180, MLTX-02-005-CN-14640, MLTX-02-005-CN-13880, MLTX-02-005-EN-15460, MLTX-02-005-CN-13410, MLTX-02-005-CN-14590 |  |  |  | -43d | 0d | Labor [1300 h]; Mechanical [240 h]; Plumber [240 h]; Pressure�compensating bubblers 110 Lit/Hr [5]; Pressure� bubblers 60 Lit/Hr [165]; Pop up sprayer 90?- 210?, Radius 3.0 mtr [200]; Pop up sprayer 360?,Radius 3.0 mtr. [310] | 25,106.2 |  | MOD-02-CN-11460 | LS |  | CN.MB.D15.1980 |
|  | 5 | **NATURAL GROUND** |  | 2026-10-20 | 2026-11-23 |  |  |  |  |  |  |  |  |  |  |  |  |  |
| MLTX-02-005-CN-13420 |  | Compacted Natural Ground Soil Installation Works for Landscape | 15d | 2026-10-20 | 2026-11-05 | MLTX-02-005-CN-14350, MLTX-02-005-PR-8870 |  |  |  | -6d | 0d | Labor [1800 h]; Skilled Labor [1900 h]; Driver [370 h]; Water Tanker [270 h]; Dump Truck [360 h]; Compactor [180 h]; Compacted Natural ground soil [3333.33] | 65,000 |  | MOD-02-CN-10550 | LS |  |  |
| MLTX-02-005-CN-13410 |  | Tartan Floor Installation Works for Landscape (Including Finishing Works) | 15d | 2026-11-07 | 2026-11-23 | MLTX-02-005-CN-13420, MLTX-02-005-CN-13720 |  |  |  | -6d | 29d | Labor [1400 h]; Skilled Labor [1300 h]; Driver [240 h]; Water Tanker [210 h]; Dump Truck [280 h]; Compactor [140 h]; Tartan floor [200] | 126,740 |  | MOD-02-CN-10540 | LS |  |  |
|  | 2 | **PLANTING** |  | 2027-01-25 | 2027-02-20 |  |  |  |  |  |  |  |  |  |  |  |  |  |
| MLTX-02-005-CN-13480 |  | Placement of Sweet/Agricultural Soil (Including Levelling and Grading) | 6d | 2027-01-25 | 2027-01-31 | MLTX-02-005-PR-11940, MLTX-02-005-EN-15380, MLTX-02-005-CN-13410, MLTX-02-005-CN-14650, MLTX-02-005-CN-13880 |  |  |  | -43d | 0d | Labor [1850 h]; Driver [380 h]; Dump Truck [500 h]; Bobcat [280 h]; Cassia Glauca [25.5]; Plumeria Alba [25.5]; Neem [1.5]; Lawn [890] | 104,175.44 |  | MOD-02-CN-10570 | LS |  |  |
| MLTX-02-005-CN-13500 |  | Placement and Fixation of Trees | 10d | 2027-02-01 | 2027-02-11 | MLTX-02-005-PR-12000, MLTX-02-005-CN-13480, MLTX-02-005-CN-13740 |  |  |  | -42d | 0d | Labor [2250 h]; Skilled Labor [1500 h]; Driver [500 h]; Water Tanker [250 h]; Cassia Glauca [59.5]; Plumeria Alba [59.5]; Neem [3.5] | 101,343.52 |  | MOD-02-CN-10590 | LS |  |  |
| MLTX-02-005-CN-13490 |  | Placement of Lawn Ground Cover (Rolling and Compaction) | 7d | 2027-02-13 | 2027-02-20 | MLTX-02-005-CN-13500, MLTX-02-005-CN-13740 |  |  |  | -42d | 0d | Labor [2500 h]; Skilled Labor [1550 h]; Driver [540 h]; Water Tanker [250 h]; Lawn [2076.67] | 141,732.5 |  | MOD-02-CN-10580 | LS |  |  |

| ID | WBS | Activity | Duration | Start | Finish | Predecessors | Complete | Remaining | Planned start | Planned finish | Total float | Free float | Resources | Cost | Actual cost | New Activity ID | Construction | New Activity Code |
| --- | --- | --- | --- | --- | --- | --- | --- | --- | --- | --- | --- | --- | --- | --- | --- | --- | --- | --- |
|  | 3 | **WALKING/BIKE PATHS** |  | 2026-07-19 | 2026-09-16 |  |  |  |  |  |  |  |  |  |  |  |  |  |
| MLTX-02-005-CN-13430 |  | Bike Path Preparation and Installation Works | 10d | 2026-07-19 A | 2026-09-16 A | MLTX-02-005-PR-11070 | 100% |  | 2026-09-22 | 2026-10-04 |  |  | Skilled Labor [850 h]; Driver [460 h]; Bobcat [180 h]; Bike path [627.13] | 140,620.76 |  | MOD-02-CN-10510 | LS |  |
| MLTX-02-005-CN-13440 |  | Walking Path Preparation and Installation Works | 10d | 2026-07-19 A | 2026-09-16 A | MLTX-02-005-CN-13430 SS, MLTX-02-005-CN-14780, MLTX-02-005-PR-9840 | 100% |  | 2026-10-18 | 2026-10-28 |  |  | Skilled Labor [850 h]; Driver [460 h]; Bobcat [180 h]; Walking path [593.79] | 133,146.44 |  | MOD-02-CN-10520 | LS |  |
|  | 6 | **GENERAL/FURNITURE** |  | 2026-09-20 | 2027-02-20 |  |  |  |  |  |  |  |  |  |  |  |  |  |
| MLTX-02-005-CN-14350 |  | Preleminary Works for Site Light Poles Including Cable and Bases Works | 13d | 2026-09-20 A | 2026-09-30 A | MLTX-02-005-EN-15590, MLTX-02-005-EN-15620, MLTX-02-005-EN-15300, MLTX-02-005-EN-15610, MLTX-02-005-CN-13460, MLTX-02-005-PR-11820, MLTX-02-005-EN-16180, MLTX-02-005-EN-15600 | 100% |  | 2026-09-22 | 2026-10-07 |  |  | Labor [950 h]; Driver [340 h]; Electrician [460 h]; Forklift [240 h]; Supply, install, testing, and commissioning of ground mounted decorated landscape LED lighting with 6.0m height pole [12] | 75,459.6 | 75,459.6 | MOD-02-CN-11710 | LS | CN.MB.D16.2130 |
| MLTX-02-005-CN-14360 |  | Installing of Site Light Poles | 20d | 2026-10-15 A | 2026-11-11 | MLTX-02-005-CN-14350, MLTX-02-005-PR-12090 | 45% | 20d | 2026-12-27 | 2027-01-18 | 29d | 71d | Skilled Labor [700 h]; Electrician [500 h]; Crane [140 h]; Supply, install, testing, and commissioning of ground mounted decorated landscape LED lighting with 6.0m height pole [28] | 176,072.4 |  | MOD-02-CN-11800 | LS | CN.MB.D16.2140 |
| MLTX-02-005-CN-13870 |  | Fixation and Installation of Steel Frame for Benches | 18d | 2026-11-18 | 2026-12-08 | MLTX-02-005-CN-13430, MLTX-02-005-EN-15340, MLTX-02-005-CN-14350, MLTX-02-005-CN-13580, MLTX-02-005-PR-9330 |  |  |  |  | -43d | 0d | Skilled Labor [850 h]; Driver [420 h]; Crane [160 h]; Supply and install playground benches consists of 6 seats [1] | 17,274.79 |  | MOD-02-CN-10630 | LS |  |
| MLTX-02-005-CN-13400 |  | Stamped Concrete Works for LandScape (Including Finishing Works) | 18d | 2026-12-09 | 2026-12-29 | MLTX-02-005-CN-13440, MLTX-02-005-CN-14350, MLTX-02-005-CN-13870 |  |  |  |  | -43d | 0d | Skilled Labor [850 h]; Steel Fixer [320 h]; Stamped concrete floor [600] | 93,594 |  | MOD-02-CN-10610 | LS |  |
| MLTX-02-005-CN-13880 |  | Fixation and Installation of Benches | 20d | 2026-12-30 | 2027-01-21 | MLTX-02-005-CN-13870, MLTX-02-005-CN-14350, MLTX-02-005-CN-13400 |  |  |  |  | -43d | 0d | Skilled Labor [700 h]; Driver [420 h]; Crane [160 h]; Supply and install playground benches consists of 6 seats [2.33] | 40,307.84 |  | MOD-02-CN-10640 | LS |  |
| MLTX-02-005-CN-13890 |  | Fixation and Installation of Precast Concrete Seats (Rectangular) | 20d | 2026-12-30 | 2027-01-21 | MLTX-02-005-CN-13880 SS, MLTX-02-005-CN-13880 FF, MLTX-02-005-CN-14350 |  |  |  |  | -35d | 0d | Skilled Labor [700 h]; Driver [420 h]; Crane [160 h]; Supply and install recycled precast concrete rectangular seats [28] | 32,757.76 |  | MOD-02-CN-10650 | LS |  |
| MLTX-02-005-CN-13900 |  | Fixation and Installation of Precast Concrete Seats (Circular) | 20d | 2026-12-30 | 2027-01-21 | MLTX-02-005-CN-13890 SS, MLTX-02-005-CN-13890 FF, MLTX-02-005-CN-14350 |  |  |  |  | -35d | 0d | Skilled Labor [700 h]; Driver [420 h]; Crane [160 h]; Supply and install recycled precast concrete circular seats [24] | 12,869.04 |  | MOD-02-CN-10660 | LS |  |
| MLTX-02-005-CN-13910 |  | Fixation and Installation of Precast Concrete Trash Bins | 18d | 2027-01-23 | 2027-02-11 | MLTX-02-005-CN-13900, MLTX-02-005-CN-13370, MLTX-02-005-CN-14350 |  |  |  |  | -35d | 7d | Skilled Labor [400 h]; Driver [320 h]; Crane [160 h]; Supply and install recycled precast concrete trash bins [8.33] | 12,186.67 |  | MOD-02-CN-10670 | LS |  |
| MLTX-02-005-CN-13470 |  | Traffic Signs Posts and Poles Installation | 15d | 2027-02-03 | 2027-02-20 | MLTX-02-005-PR-11160, MLTX-02-005-CN-13900, MLTX-02-005-CN-14360, MLTX-02-005-CN-13370, MLTX-02-005-CN-13760 |  |  |  |  | -42d | 0d | Skilled Labor [240 h]; Driver [160 h]; Excavator [240 h]; Traffic signs aluminum sheet, (breakaway) Single post I.P.E. [2] | 9,749.3 |  | MOD-02-CN-10620 | LS |  |
|  | 2 | **PARKING** |  | 2026-07-18 | 2026-09-19 |  |  |  |  |  |  |  |  |  |  |  |  |  |
| MLTX-02-005-CN-13380 |  | Site Preparation & Compaction Under Interlock for Parking Area | 4d | 2026-07-18 A | 2026-07-18 A | MLTX-02-005-EN-15370, MLTX-02-005-CN-13430, MLTX-02-005-PR-9840 | 100% |  | 2026-10-14 | 2026-10-18 |  |  | Labor [1000 h]; Driver [120 h]; Water Tanker [90 h]; Compactor [60 h]; Supply and install interlock tiles for parking 8cm [200] | 17,548 | 17,548 | MOD-02-CN-10700 | LS |  |
| MLTX-02-005-CN-13370 |  | Interlock Installation (8 Cm) for Parking Area (Including Finishing Works) | 11d | 2026-09-10 A | 2026-09-19 A | MLTX-02-005-CN-13380 | 100% |  | 2026-10-19 | 2026-10-31 |  |  | Labor [2000 h]; Skilled Labor [700 h]; Driver [400 h]; Forklift [300 h]; Supply and install interlock tiles for parking 8cm [466.67] | 40,945.33 |  | MOD-02-CN-10690 | LS |  |
|  | TO | **TOILET/SERVICE BUILDING** |  | 2026-05-23 | 2027-03-15 |  |  |  |  |  |  |  |  |  |  |  |  |  |
|  | 13 | **STRUCTURE WORKS** |  | 2026-05-23 | 2026-08-02 |  |  |  |  |  |  |  |  |  |  |  |  |  |
|  | 2 | **CONCRETE WORKS** |  | 2026-05-25 | 2026-06-27 |  |  |  |  |  |  |  |  |  |  |  |  |  |
|  | 1 | **SUB-STRUCTURE** |  | 2026-05-25 | 2026-06-07 |  |  |  |  |  |  |  |  |  |  |  |  |  |
| MLTX-02-005-CN-13920 |  | Plain Concrete Under Footing | 4d | 2026-05-25 A | 2026-05-31 A | MLTX-02-005-CN-14000, MLTX-02-005-EN-13280, MLTX-02-005-EN-15710, MLTX-02-005-EN-15720, MLTX-02-005-EN-15270, MLTX-02-005-CN-13980, MLTX-02-005-EN-15700 | 100% |  | 2026-06-25 | 2026-06-29 |  |  | Labor [100 h]; Skilled Labor [60 h]; lean concrete under foundation [1.5] | 1,462.39 |  | MOD-02-CN-10750 | TO | CN.MB.D01.1500 |
| MLTX-02-005-CN-13950 |  | Reinforced Concrete Works for Slab on Grade Including Steel Fixing | 5d | 2026-06-03 A | 2026-06-07 A | MLTX-02-005-PR-11150, MLTX-02-005-CN-13920 | 100% |  | 2026-06-30 | 2026-07-05 |  |  | Labor [300 h]; Skilled Labor [100 h]; Steel Fixer [120 h]; Provide and cast 35 Mpa concrete floor slab on grade [15] | 36,559.95 | 36,559.95 | MOD-02-CN-10800 | TO | CN.MB.D01.1590 |
|  | 2 | **SUPER-STRUCTURE** |  | 2026-06-20 | 2026-06-27 |  |  |  |  |  |  |  |  |  |  |  |  |  |
| MLTX-02-005-CN-13930 |  | AAC Panels Works for Walls | 7d | 2026-06-20 A | 2026-06-20 A | MLTX-02-005-CN-14030, MLTX-02-005-EN-15630, MLTX-02-005-EN-15690, MLTX-02-005-EN-15650, MLTX-02-005-EN-15660, MLTX-02-005-EN-15670, MLTX-02-005-EN-15680, MLTX-02-005-EN-15640 | 100% |  | 2026-07-18 | 2026-07-25 |  |  | Labor [500 h]; Skilled Labor [200 h]; Driver [280 h]; Crane [160 h]; The autoclaved aerated panel for slabs, external and internal walls and parapet [150] | 48,259.5 | 48,259.5 | MOD-02-CN-10820 | TO | CN.MB.D01.1550 |
| MLTX-02-005-CN-13960 |  | AAC Panels Works for Slabs | 4d | 2026-06-21 A | 2026-06-24 A | MLTX-02-005-CN-13930 | 100% |  | 2026-07-26 | 2026-07-29 |  |  | Labor [250 h]; Skilled Labor [100 h]; Driver [200 h]; Crane [100 h]; The autoclaved aerated panel for slabs, external and internal walls and parapet [50] | 16,086.5 | 16,086.5 | MOD-02-CN-10830 | TO | CN.MB.D01.1600 |
| MLTX-02-005-CN-13940 |  | Parpet Works and Lintels | 3d | 2026-06-25 A | 2026-06-27 A | MLTX-02-005-CN-13960, MLTX-02-005-CN-14520 | 100% |  | 2026-07-30 | 2026-08-02 |  |  | Labor [200 h]; Skilled Labor [60 h]; Driver [100 h]; Crane [60 h]; The autoclaved aerated panel for slabs, external and internal walls and parapet [50] | 16,086.5 | 16,086.5 | MOD-02-CN-10840 | TO | CN.MB.D01.1570 |

| ID | WBS | Activity | Duration | Start | Finish | Predecessors | Complete | Remaining | Planned start | Planned finish | Total float | Free float | Resources | Cost | Actual cost | New Activity Code | New Activity ID | Construction |
| --- | --- | --- | --- | --- | --- | --- | --- | --- | --- | --- | --- | --- | --- | --- | --- | --- | --- | --- |
|  | 1 | **UNDER GROUND SEPTIC TANK** |  | 2026-06-01 | 2026-07-06 |  |  |  |  |  |  |  |  |  |  |  |  |  |
| MLTX-02-005-CN-14510 |  | Plain Concrete Under Footing | 3d | 2026-06-01 A | 2026-06-06 A | MLTX-02-005-CN-13990, MLTX-02-005-CN-13970, MLTX-02-005-CN-13510 | 100% |  | 2026-06-02 | 2026-06-04 |  |  | Labor [100 h]; Skilled Labor [40 h]; lean concrete under foundation [1.5] | 1,462.39 |  | CN.MB.D01.1500 | MOD-02-CN-10860 | TO |
| MLTX-02-005-CN-14530 |  | Reinforced Concrete Works for Tank Foundation Including Shuttering and Steel Fixing | 8d | 2026-06-09 A | 2026-06-13 A | MLTX-02-005-CN-14510, MLTX-02-005-CN-13510, MLTX-02-005-CN-13560 | 100% |  | 2026-06-06 | 2026-06-14 |  |  | Labor [350 h]; Skilled Labor [100 h]; Steel Fixer [120 h]; Tank foundation [3] | 7,604.46 | 7,604.46 | CN.MB.D01.1530 | MOD-02-CN-10870 | TO |
| MLTX-02-005-CN-14540 |  | Reinforced Concrete Works for Tank Walls Including Steel Fixing | 10d | 2026-06-18 A | 2026-07-05 A | MLTX-02-005-CN-14530, MLTX-02-005-CN-13920 | 100% |  | 2026-06-30 | 2026-07-11 |  |  | Labor [600 h]; Skilled Labor [200 h]; Steel Fixer [200 h]; Tank Walls [6] | 16,366.86 | 16,366.86 | CN.MB.D01.1590 | MOD-02-CN-10880 | TO |
| MLTX-02-005-CN-14520 |  | Reinforced Concrete Works for Tank Slab Including Shuttering and Steel Fixing | 10d | 2026-07-06 A | 2026-07-06 A | MLTX-02-005-CN-14540, MLTX-02-005-CN-13920 | 100% |  | 2026-07-12 | 2026-07-22 |  |  | Labor [700 h]; Skilled Labor [360 h]; Steel Fixer [240 h]; Tank Slab [3] | 8,774.37 | 8,774.37 | CN.MB.D01.1520 | MOD-02-CN-10890 | TO |
|  | 3 | **THERMAL & MOISTER PROTECTION** |  | 2026-05-23 | 2026-08-02 |  |  |  |  |  |  |  |  |  |  |  |  |  |
|  | 1 | **ANTI TERMIT CONTROL** |  | 2026-05-23 | 2026-06-03 |  |  |  |  |  |  |  |  |  |  |  |  |  |
| MLTX-02-005-CN-14000 |  | Anti Termite Works Under Slab on Grade and Grade Beams | 1d | 2026-05-23 A | 2026-05-24 A | MLTX-02-005-CN-14530, MLTX-02-005-CN-13560 | 100% |  | 2026-06-15 | 2026-06-15 |  |  | Labor [50 h]; Skilled Labor [30 h]; Supply and apply anti termite under all concrete in contact with soil. [54] | 2,632.5 | 2,632.5 | CN.MB.D01.1650 | MOD-02-CN-10930 | TO |
| MLTX-02-005-CN-13990 |  | Anti Termite Works Under Foundation | 1d | 2026-05-31 A | 2026-06-03 A | MLTX-02-005-CN-13360 SS, MLTX-02-005-CN-13350, MLTX-02-005-CN-13510 | 100% |  | 2026-06-01 | 2026-06-01 |  |  | Labor [40 h]; Skilled Labor [20 h]; Supply and apply anti termite under all concrete in contact with soil. [36] | 1,755 | 1,755 | CN.MB.D01.1640 | MOD-02-CN-10920 | TO |
|  | 2 | **POLYETHYLENE SHEET** |  | 2026-05-24 | 2026-06-04 |  |  |  |  |  |  |  |  |  |  |  |  |  |
| MLTX-02-005-CN-13980 |  | Water Proofing Under Slab on Grade (Polythelen Sheet) | 1d | 2026-05-24 A | 2026-05-25 A | MLTX-02-005-CN-14000 SS, MLTX-02-005-EN-14390, MLTX-02-005-CN-13560 | 100% |  | 2026-06-15 | 2026-06-15 |  |  | Labor [50 h]; Skilled Labor [30 h]; Supply and lay 250 micron thk polyethylene sheet under grade slab [54] | 1,315.98 | 1,315.98 | CN.MB.D01.1630 | MOD-02-CN-10960 | TO |
| MLTX-02-005-CN-13970 |  | Water Proofing Under Blinding Concrete (Polythelen Sheet) | 1d | 2026-05-31 A | 2026-06-04 A | MLTX-02-005-CN-13990 SS, MLTX-02-005-EN-15280, MLTX-02-005-EN-14390, MLTX-02-005-CN-13510 | 100% |  | 2026-06-01 | 2026-06-01 |  |  | Labor [40 h]; Skilled Labor [20 h]; Supply and lay 250 micron thk polyethylene sheet under grade slab [36] | 877.32 | 877.32 | CN.MB.D01.1620 | MOD-02-CN-10950 | TO |
|  | 4 | **EPOXY** |  | 2026-07-11 | 2026-08-02 |  |  |  |  |  |  |  |  |  |  |  |  |  |
| MLTX-02-005-CN-14010 |  | Surface Preparation for Epoxy Coating | 3d | 2026-07-11 A | 2026-07-11 A | MLTX-02-005-CN-14520, MLTX-02-005-CN-13950 | 100% |  | 2026-07-23 | 2026-07-26 |  |  | Labor [200 h]; Skilled Labor [90 h]; Provide and lay epoxy 2 coating for inner surfaces for RC walls, RC footings and bottom of the roof [7.5] | 1,096.8 | 1,096.8 | CN.MB.D01.1660 | MOD-02-CN-11000 | TO |
| MLTX-02-005-CN-14020 |  | Epoxy Coating for Walls and Slab of Tank | 5d | 2026-08-02 A | 2026-08-02 A | MLTX-02-005-CN-14010, MLTX-02-005-CN-13930 | 100% |  | 2026-07-27 | 2026-08-01 |  |  | Labor [300 h]; Skilled Labor [150 h]; Provide and lay epoxy 2 coating for inner surfaces for RC walls, RC footings and bottom of the roof [17.5] | 2,559.2 | 2,559.2 | CN.MB.D01.1670 | MOD-02-CN-11010 | TO |
|  | 5 | **MASONARY WORK** |  | 2026-07-06 | 2026-07-08 |  |  |  |  |  |  |  |  |  |  |  |  |  |
| MLTX-02-005-CN-14030 |  | CMU Masonary Works Including all Accessories | 5d | 2026-07-06 A | 2026-07-08 A | MLTX-02-005-CN-13950, MLTX-02-005-PR-11240, MLTX-02-005-EN-15320 | 100% |  | 2026-07-06 | 2026-07-11 |  |  | Labor [300 h]; Mason [150 h]; Concrete masonry unit, 100 mm thick wall [45] | 12,284.1 | 12,284.1 | CN.MB.D04.1690 | MOD-02-CN-11030 | TO |
|  | 3 | **THERMAL & MOISTER PROTECTION** |  | 2026-08-25 | 2026-10-28 |  |  |  |  |  |  |  |  |  |  |  |  |  |
| MLTX-02-005-CN-14050 |  | Preparing Surface and Preliminary Works for Toilets Waterproofing | 2d | 2026-08-25 A | 2026-08-25 A | MLTX-02-005-CN-13940, MLTX-02-005-CN-14020 | 100% |  | 2026-08-03 | 2026-08-04 |  |  | Labor [120 h]; Skilled Labor [60 h]; Plumber [20 h]; Supply and install liquid applied waterproofing membrane for toilets according to drawings and specifications. [14.4] | 2,105.86 |  | CN.MB.D07.1770 | MOD-02-CN-11050 | TO |
| MLTX-02-005-CN-14060 |  | Finalize Water Proofing Works for Toilets | 5d | 2026-08-25 A | 2026-08-29 A | MLTX-02-005-CN-14050 | 100% |  | 2026-08-05 | 2026-08-10 |  |  | Labor [280 h]; Skilled Labor [150 h]; Supply and install liquid applied waterproofing membrane for toilets according to drawings and specifications. [33.6] | 4,913.66 |  | CN.MB.D07.1780 | MOD-02-CN-11070 | TO |
| MLTX-02-005-CN-14070 |  | Preparing Surface and Preliminary Works for Roofing and Wet Areas Insulation | 6d | 2026-09-05 A | 2026-09-05 A | MLTX-02-005-CN-14060 | 100% |  | 2026-08-11 | 2026-08-17 |  |  | Labor [250 h]; Skilled Labor [150 h]; Plumber [60 h]; Supply and cast in place foam concrete screed 50mm thk minimum laid to fall and cross fall [28]; Supply and install 4mm thick APP modified bituminous membrane for roof insulation [28]; Supply and install 300 micron polyethylene sheet [28]; Supply and install 50mm thk rigid insulation (extruded polystyrene) with density of 35 kg./m3 [28]; Supply and install 50mm thk loose gravel toppings [28]; Supplying and fixing 3mm thk extruded aluminum flashing [13.6]; Provide and lay 2 layers of waterproofing membrane 4mm [8] | 11,071.52 | 11,071.52 | CN.MB.D07.1790 | MOD-02-CN-11060 | TO |
| MLTX-02-005-CN-14080 |  | Finalize Water Proofing Works for Roofing and Wet Areas | 8d | 2026-09-06 A | 2026-10-28 | MLTX-02-005-CN-14070 | 90% | 8d | 2026-08-18 | 2026-08-26 | -35d | 0d | Labor [300 h]; Skilled Labor [200 h]; Supply and cast in place foam concrete screed 50mm thk minimum laid to fall and cross fall [42]; Supply and install 4mm thick APP modified bituminous membrane for roof insulation [42]; Supply and install 300 micron polyethylene sheet [42]; Supply and install 50mm thk rigid insulation (extruded polystyrene) with density of 35 kg./m3 [42]; Supply and install 50mm thk loose gravel toppings [42]; Supplying and fixing 3mm thk extruded aluminum flashing [20.4]; Provide and lay 2 layers of waterproofing membrane 4mm [12] | 16,607.28 |  | CN.MB.D07.1800 | MOD-02-CN-11080 | TO |
|  | 11 | **MECHANICAL WORK** |  | 2026-07-12 | 2027-01-19 |  |  |  |  |  |  |  |  |  |  |  |  |  |
|  | 4 | **HVAC SYSTEM** |  | 2026-07-12 | 2026-10-03 |  |  |  |  |  |  |  |  |  |  |  |  |  |
| MLTX-02-005-CN-14150 |  | Preliminary HVAC and Ventilation Works | 3d | 2026-07-12 A | 2026-07-12 A | MLTX-02-005-EN-15740, MLTX-02-005-EN-13720, MLTX-02-005-EN-15750, MLTX-02-005-EN-16320, MLTX-02-005-EN-13550, MLTX-02-005-EN-15330, MLTX-02-005-EN-15730, MLTX-02-005-EN-16330 | 100% |  | 2026-10-03 | 2026-10-05 |  |  | Labor [240 h]; Skilled Labor [90 h]; Mechanical [60 h]; Square Exhaust Diffuser 6"X6 " [6]; Supply, install, test and commission indoor ductwork [100]; Door Grilles 18"X6 " [1] | 9,359.69 | 9,359.69 | CN.MB.D15.1920 | MOD-02-CN-11480 | TO |
| MLTX-02-005-CN-14170 |  | Exhaust, Air Ducts Installation with all Accessories | 6d | 2026-08-18 A | 2026-08-23 A | MLTX-02-005-CN-14450 | 100% |  | 2026-09-17 | 2026-09-24 |  |  | Labor [200 h]; Skilled Labor [180 h]; Driver [60 h]; Crane [120 h]; Mechanical [120 h]; Supply, install, test and commission inline exhaust fans duct [1] | 3,899.72 | 3,899.72 | CN.MB.D15.1940 | MOD-02-CN-11490 | TO |
| MLTX-02-005-CN-14160 |  | Install and Finish HVAC and Ventilation Works Including Split Air Units | 13d | 2026-10-03 A | 2026-10-03 A | MLTX-02-005-CN-14170 FF, MLTX-02-005-PR-11460 | 100% |  | 2026-09-09 | 2026-09-24 |  |  | Labor [150 h]; Skilled Labor [90 h]; Driver [60 h]; Crane [60 h]; Mechanical [60 h]; Supply and install split air conditioning unit (DX-MINI SPLIT UNIT) [1] | 14,623.96 | 14,623.96 | CN.MB.D15.1930 | MOD-02-CN-11500 | TO |

| ID | WBS | Activity | Duration | Start | Finish | Predecessors | Complete | Planned start | Planned finish | Total float | Free float | Resources | Cost | Actual cost | New Activity Code | New Activity ID | Construction |
| --- | --- | --- | --- | --- | --- | --- | --- | --- | --- | --- | --- | --- | --- | --- | --- | --- | --- |
|  | 2 | **WATER SUPPLY SYSTEM** |  | 2026-07-19 | 2026-10-12 |  |  |  |  |  |  |  |  |  |  |  |  |
| MLTX-02-005-CN-14180 |  | Installing of PPR Pipes and Fittings for Water Network | 3d | 2026-07-19 A | 2026-07-22 A | MLTX-02-005-EN-15440, MLTX-02-005-EN-15770, MLTX-02-005-EN-15780, MLTX-02-005-PR-11340 | 100% | 2026-10-04 | 2026-10-06 |  |  | Labor [100 h]; Plumber [60 h]; PPR Pipe with 65 mm ? Cold water [6]; PPR Pipe with 50 mm ? Cold water [4]; PPR Pipe with 40 mm ? Cold water [1]; PPR Pipe with 32 mm ? Cold water [2]; PPR Pipe with 25 mm ? Cold water [4]; PPR Pipe with 20 mm ? Cold water [7]; PPR Pipe with 20 mm ? Hot water [22] | 6,921.94 | 6,921.94 | CN.MB.D15.1950 | MOD-02-CN-11540 | TO |
| MLTX-02-005-CN-14600 |  | Installing of Valves and Fittings | 2d | 2026-09-05 A | 2026-09-05 A | MLTX-02-005-CN-14180 | 100% | 2026-10-07 | 2026-10-08 |  |  | Labor [100 h]; Plumber [40 h]; SERVICE CONNECTIONS 50 mm ? [13.33] | 6,499.6 | 6,499.6 | CN.MB.D15.1950 | MOD-02-CN-11520 | TO |
| MLTX-02-005-CN-14210 |  | Installing of GRP Tanks | 8d | 2026-09-06 A | 2026-09-14 A | MLTX-02-005-CN-14170, MLTX-02-005-EN-15340 | 100% | 2026-10-08 | 2026-10-17 |  |  | Skilled Labor [120 h]; Driver [100 h]; Crane [160 h]; Plumber [140 h]; Hot Press GRP Sectional Panel Water Tanks (4x3x3m) [0.33] | 64,995.36 |  | CN.MB.D15.1980 | MOD-02-CN-11560 | TO |
| MLTX-02-005-CN-14690 |  | Installing of Water Heater | 4d | 2026-09-15 A | 2026-09-15 A | MLTX-02-005-CN-14120, MLTX-02-005-CN-14210 | 100% | 2026-10-18 | 2026-10-21 |  |  | Labor [100 h]; Plumber [20 h]; 50 Liter Capacity [1] | 1,754.87 | 1,754.87 | CN.MB.D15.1980 | MOD-02-CN-11560 | TO |
| MLTX-02-005-CN-14190 |  | Installing of HDPE Pipes and Valves for Water Supply Network | 6d | 2026-09-19 A | 2026-10-12 A | MLTX-02-005-PR-11300 | 100% | 2026-10-04 | 2026-10-10 |  |  | Labor [250 h]; Plumber [100 h]; SERVICE CONNECTIONS 50 mm ? [53.33] | 25,998.4 | 25,998.4 | CN.MB.D15.1960 | MOD-02-CN-11530 | TO |
| MLTX-02-005-CN-14200 |  | Installing of Booster Pump Units Including fittings and accessories | 20d | 2026-10-04 A | 2026-10-04 A | MLTX-02-005-CN-14660 | 100% | 2026-09-15 | 2026-10-08 |  |  | Labor [200 h]; Plumber [80 h]; (2W+1S Pumps) - flow of each pump 5 L/S @ 30 Meters [0.33] | 48,746.52 |  | CN.MB.D15.1970 | MOD-02-CN-11550 | TO |
|  | 1 | **SEWER/DRAINAGE SYSTEM** |  | 2026-07-20 | 2026-10-15 |  |  |  |  |  |  |  |  |  |  |  |  |
| MLTX-02-005-CN-14220 |  | Installing UPVC Pipes for Sewage Network | 2d | 2026-07-20 A | 2026-07-22 A | MLTX-02-005-EN-15430, MLTX-02-005-PR-11360, MLTX-02-005-EN-15800, MLTX-02-005-EN-15790, MLTX-02-005-CN-14260, MLTX-02-005-CN-14600, MLTX-02-005-CN-14690, MLTX-02-005-CN-14200, MLTX-02-005-CN-14700, MLTX-02-005-PR-9930 | 100% | 2026-10-22 | 2026-10-24 |  |  | Skilled Labor [150 h]; Plumber [60 h]; uPVC Sewer pipes Pipe with ? 4" (110mm) [21]; uPVC Sewer pipes Pipe Pipe with ? 3" (75mm) [13]; uPVC Sewer pipes Pipe Pipe with ? 2" (50mm) [20]; uPVC Sewer pipes Pipe Pipe with ? 1" (25mm) [5] | 11,767.4 | 11,767.4 | CN.MB.D15.1990 | MOD-02-CN-11590 | TO |
| MLTX-02-005-CN-14610 |  | Installing UPVC Pipes for External Connection for Sewage Network | 3d | 2026-09-26 A | 2026-09-26 A | MLTX-02-005-CN-14680, MLTX-02-005-CN-14370 | 100% | 2026-10-01 | 2026-10-04 |  |  | Skilled Labor [90 h]; Plumber [30 h]; Supply and install 150 mm uPVC pipes to external wastewater network [16.67] | 14,217.67 |  | CN.MB.D15.1990 | MOD-02-CN-11580 | TO |
| MLTX-02-005-CN-14680 |  | Installing Inspection Chamber for Sewage Network | 4d | 2026-09-26 A | 2026-09-26 A | MLTX-02-005-CN-14370 | 100% | 2026-09-27 | 2026-09-30 |  |  | Driver [80 h]; Crane [80 h]; Plumber [80 h]; Supply, installation, testing and commissioning of Inspection chamber [1] | 12,186.63 | 12,186.63 | CN.MB.D15.1990 | MOD-02-CN-11590 | TO |
| MLTX-02-005-CN-14230 |  | Installing of Plumping Fixtures and Accessories | 4d | 2026-10-04 A | 2026-10-15 A | MLTX-02-005-CN-14500, MLTX-02-005-CN-14610, MLTX-02-005-CN-14150, MLTX-02-005-PR-8870 | 100% | 2026-10-10 | 2026-10-13 |  |  | Skilled Labor [120 h]; Plumber [80 h]; galvanized iron vent stack Vent Cap with 3" ? [1]; Supply and installation of Floor drain [9]; FCO 4" ? (110mm) [1]; FCO 3" ? (75mm) [1]; Supply, installation,testing and commissioning of Gully Traps [1] | 10,358.68 | 10,358.68 | CN.MB.D15.2000 | MOD-02-CN-11600 | TO |
| MLTX-02-005-CN-14700 |  | Installing of Toilet Fixtures and Accessories Such as Closets and Basins | 24d | 2026-10-08 A | 2026-10-12 A | MLTX-02-005-CN-14070 | 100% | 2026-09-10 | 2026-10-08 |  |  | Skilled Labor [120 h]; Plumber [80 h]; Supply and installation of western water closet [3]; Supply and installation of western water closet [1]; Supply and installation of Bib tap with Perenial Hose (BPH) [4]; Supply, installation, testing and commissioning of Lavatory / wash basin [1]; Supply, installation, testing and commissioning of wall hung Lavatory / wash basin [1]; Supply and install Complete stainless steel 316 Handicap Rails Grab Bars [1]; Supply and install roof drain (RD) dome typ [1]; Supply and install shower mixer [4] | 31,392.79 | 31,392.79 | CN.MB.D15.2000 | MOD-02-CN-11600 | TO |
|  | 3 | **FIRE PROTECTION** |  | 2027-01-06 | 2027-01-19 |  |  |  |  |  |  |  |  |  |  |  |  |
| MLTX-02-005-CN-14240 |  | Installing of Fire Fighting Extinguisher and accessories (PFE-1, PFE-2) | 12d | 2027-01-06 | 2027-01-19 | MLTX-02-005-CN-14710, MLTX-02-005-EN-15450, MLTX-02-005-EN-15760, MLTX-02-005-CN-14670, MLTX-02-005-CN-14160, MLTX-02-005-CN-14120, MLTX-02-005-CN-14480, MLTX-02-005-PR-11520, MLTX-02-005-PR-11500, MLTX-02-005-PR-11480, MLTX-02-005-EN-15470, MLTX-02-005-CN-14590, MLTX-02-005-CN-14570 |  |  |  | -18d | 40d | Labor [100 h]; Mechanical [40 h]; Supply and install, PFE-1, Portable dry powder fire extinguisher 4.5 Kg capacity [1]; Supply and install, PFE-2, Portable Carbon Dioxide fire extinguisher. [1] | 1,949.87 |  | CN.MB.D15.2010 | MOD-02-CN-11620 | TO |
|  | 12 | **ELECTRICAL WORKS** |  | 2026-07-14 | 2027-02-17 |  |  |  |  |  |  |  |  |  |  |  |  |
|  | 1 | **ROUGH-IN WORKS** |  | 2026-07-14 | 2026-08-17 |  |  |  |  |  |  |  |  |  |  |  |  |
| MLTX-02-005-CN-14280 |  | Preleminary Works for Cable Works | 3d | 2026-07-14 A | 2026-07-14 A | MLTX-02-005-EN-15500, MLTX-02-005-EN-15880, MLTX-02-005-CN-13940, MLTX-02-005-EN-15850, MLTX-02-005-EN-15290, MLTX-02-005-EN-15810 | 100% | 2026-09-28 | 2026-09-30 |  |  | Labor [210 h]; Electrician [60 h]; Recessed mounted LED downlight luminaire 40 watt with reflector; IP44 ,230V , 4000k, 4200 LUMEN ,CRI > 80; Low glare [12]; LED flood light outdoor type 96 watt, 4000k, 12720 LUMEN [0.4]; Wall mounted emergency LED luminaire, 230V, 60 Hz., 3 hour back up time 1800 lumen,CRI>80, 2*18 watt, IP 65 [1.6]; LED Exit light fixture 4.5 watt with battery for 3 hours, and a visibility of 30 meters [0.4]; Wall mounted outdoor LED luminaire, 17 watt, 2000 lumens, with light emission from two sides [0.4]; Wall mounted outdoor LED luminaire, 13 watt, 1000 LUMEN, CR>80, for roof lighting [5] | 12,488.92 | 9,291.14 | CN.MB.D16.2050 | MOD-02-CN-11670 | TO |
| MLTX-02-005-CN-14290 |  | Preleminary Works for Sockets and Power Points | 2d | 2026-07-14 A | 2026-07-14 A | MLTX-02-005-CN-13940, MLTX-02-005-CN-14660 | 100% | 2026-09-15 | 2026-09-16 |  |  | Labor [140 h]; Electrician [40 h]; 1 way, One Gang Switch [0.8]; 1 way, Two Gang Switch [3]; 1 way, One Gang Switch, weatherproof [0.4]; Exaust fan DP switch weatherproof [0.4]; Indoor AC DP switch weatherproof [0.4]; High level Single Receptacle outlet [3]; Duplex Receptacle outlet [6]; Hand Dryer switch weatherproof [0.4]; Water heater switch [0.4]; Outdoor Disconnect Switch for air conditioiner [0.9]; Outdoor Disconnect Switch for exhaust fans [0.4] | 15,990.55 | 10,725.21 | CN.MB.D16.2070 | MOD-02-CN-11680 | TO |
| MLTX-02-005-CN-14260 |  | Preleminary Works for Panel Boards | 2d | 2026-07-15 A | 2026-07-22 A | MLTX-02-005-EN-15820, MLTX-02-005-EN-15830, MLTX-02-005-EN-15860, MLTX-02-005-CN-13940, MLTX-02-005-EN-15520, MLTX-02-005-EN-15840, MLTX-02-005-EN-15870, MLTX-02-005-CN-14660 | 100% | 2026-09-15 | 2026-09-16 |  |  | Labor [140 h]; Electrician [40 h]; Main Distribution Board including all related works to install power meter (power meter is excluded) [0.4]; Power Panel for pump room [0.13]; Power Panel for street lighting [0.4] | 68,245.12 | 54,596.1 | CN.MB.D16.2030 | MOD-02-CN-11660 | TO |
| MLTX-02-005-CN-14310 |  | Preleminary Works for Lightning Works | 2d | 2026-07-28 A | 2026-08-17 A | MLTX-02-005-EN-15510, MLTX-02-005-CN-13940, MLTX-02-005-EN-15940, MLTX-02-005-EN-15900, MLTX-02-005-CN-14660 | 100% | 2026-09-15 | 2026-09-16 |  |  | Labor [140 h]; Electrician [40 h]; For Building [0.9] | 21,935.93 |  | CN.MB.D16.2090 | MOD-02-CN-11690 | TO |
| MLTX-02-005-CN-14330 |  | Preleminary Works for Data & Telecommunication System | 2d | 2026-07-28 A | 2026-08-17 A | MLTX-02-005-EN-15480, MLTX-02-005-EN-12830, MLTX-02-005-EN-16000, MLTX-02-005-EN-15990, MLTX-02-005-CN-13940, MLTX-02-005-CN-14660 | 100% | 2026-09-15 | 2026-09-16 |  |  | Labor [140 h]; Electrician [40 h]; Wall telephone outlet [1.2]; Wall mounted data outlet [1.2]; Telecom/IT rack complete with switch, router and patch Panel [0.9]; AV floor box outlet (1 HDMI) [0.4]; AV wall outlet (1 HDMI) [0.4] | 24,470.75 | 584.96 | CN.MB.D16.2110 | MOD-02-CN-11700 | TO |
| MLTX-02-005-CN-14370 |  | Preleminary Works for Security and Access Control System | 3d | 2026-07-28 A | 2026-08-17 A | MLTX-02-005-EN-15980, MLTX-02-005-EN-15970, MLTX-02-005-CN-13940, MLTX-02-005-EN-15920, MLTX-02-005-EN-15490, MLTX-02-005-CN-14660 | 100% | 2026-09-22 | 2026-09-26 |  |  | Labor [210 h]; Electrician [60 h]; 1 CCTV cabinet (Rack) [0.9]; NVR [0.9]; 21" LED monitor [0.4]; Indoor dome type Camera IP-20 ,IK-10, POE type with infra red feature, minimum coverage 20 meters, ONVIF supported [5]; Outdoor fixed camera weahter proof IP-65, POE type [3]; Pull box for fiber optic cable pulling from provider [0.4] | 30,913.59 | 13,649.03 | CN.MB.D16.2150 | MOD-02-CN-11720 | TO |
| MLTX-02-005-CN-14660 |  | Preleminary Works for Earthing Works | 3d | 2026-07-28 A | 2026-08-17 A | MLTX-02-005-EN-15890, MLTX-02-005-CN-13940, MLTX-02-005-EN-12770, MLTX-02-005-EN-15510, MLTX-02-005-PR-11200, MLTX-02-005-EN-15930 | 100% | 2026-09-12 | 2026-09-14 |  |  | Labor [210 h]; Electrician [60 h]; Distribution boards, panelboards, lighting installations and wiring accessories [0.9]; Telecom equipment [0.9]; KWHM [1.5] | 32,172.69 | 32,172.69 | CN.MB.D16.2090 | MOD-02-CN-11650 | TO |

| ID | WBS | Activity | Duration | Start | Finish | Predecessors | Complete | Planned start | Planned finish | Total float | Free float | Resources | Cost | Actual cost | New Activity Code | New Activity ID | Construction |
| --- | --- | --- | --- | --- | --- | --- | --- | --- | --- | --- | --- | --- | --- | --- | --- | --- | --- |
|  | 2 | **FIXTURE WORKS** |  | 2027-01-06 | 2027-02-17 |  |  |  |  |  |  |  |  |  |  |  |  |
| MLTX-02-005-CN-14270 |  | Installing and Finish Works of Panel Boards | 21d | 2027-01-06 | 2027-01-30 | MLTX-02-005-PR-11220, MLTX-02-005-CN-14570, MLTX-02-005-CN-14260, MLTX-02-005-CN-14670, MLTX-02-005-PR-11940, MLTX-02-005-CN-14590 |  |  |  | -27d | 10d | Labor [350 h]; Electrician [100 h]; Main Distribution Board including all related works to install power meter (power meter is excluded) [0.6]; Power Panel for pump room [0.2]; Power Panel for street lighting [0.6] | 102,367.69 |  | CN.MB.D16.2040 | MOD-02-CN-11740 | TO |
| MLTX-02-005-CN-14380 |  | Installing and Finalize Works of Security and Access Control System | 14d | 2027-01-06 | 2027-01-21 | MLTX-02-005-CN-14570, MLTX-02-005-CN-14370, MLTX-02-005-CN-13630, MLTX-02-005-PR-12060, MLTX-02-005-CN-14790 |  |  |  | -35d | 0d | Labor [80 h]; Electrician [80 h]; 1 CCTV cabinet (Rack) [0.1]; NVR [0.1]; 21" LED monitor [0.6]; Indoor dome type Camera IP-20 ,IK-10, POE type with infra red feature, minimum coverage 20 meters, ONVIF supported [1]; Outdoor fixed camera weahter proof IP-65, POE type [1]; Pull box for fiber optic cable pulling from provider [0.6] | 7,250.09 |  | CN.MB.D16.2170 | MOD-02-CN-11830 | TO |
| MLTX-02-005-CN-14390 |  | Installing and Finalize Works of Earthing Works | 23d | 2027-01-06 | 2027-02-01 | MLTX-02-005-CN-14570, MLTX-02-005-CN-14660, MLTX-02-005-CN-14590 |  |  |  | -29d | 29d | Labor [60 h]; Electrician [60 h]; Distribution boards, panelboards, lighting installations and wiring accessories [0.1]; Telecom equipment [0.1]; KWHM [0.5] | 6,824.51 |  | CN.MB.D16.2190 | MOD-02-CN-11770 | TO |
| MLTX-02-005-CN-14250 |  | Installing of Fire automation and Fire Alarm System | 15d | 2027-01-23 | 2027-02-08 | MLTX-02-005-EN-15960, MLTX-02-005-EN-15910, MLTX-02-005-CN-14160, MLTX-02-005-EN-15950, MLTX-02-005-CN-14380, MLTX-02-005-CN-14120, MLTX-02-005-CN-14480, MLTX-02-005-PR-11520, MLTX-02-005-PR-11500, MLTX-02-005-PR-11480, MLTX-02-005-EN-15470, MLTX-02-005-CN-14590, MLTX-02-005-CN-14570 |  |  |  | -35d | 23d | Labor [200 h]; Electrician [80 h]; Analog addressable fire alarm control panel [1]; Intelligent Photoelectric smoke and heat detector with base [12]; Addressable Manual Pull Station, wall mounted [2]; Addressable Fire Alarm Strobe with Sounder, wall mounted [1]; Addressable Fire Alarm Strobe with Sounder, wall mounted water proof IP66 [1] | 34,317.53 |  | CN.MB.D15.2020 | MOD-02-CN-11780 | TO |
| MLTX-02-005-CN-14300 |  | Installing and Finalize Works of Sockets and Power Points | 13d | 2027-01-23 | 2027-02-06 | MLTX-02-005-CN-14290, MLTX-02-005-CN-14670, MLTX-02-005-PR-11400, MLTX-02-005-CN-14380, MLTX-02-005-CN-14570, MLTX-02-005-CN-14590 |  |  |  | -33d | 25d | Labor [60 h]; Electrician [60 h]; 1 way, One Gang Switch [1.2]; 1 way, Two Gang Switch [1]; 1 way, One Gang Switch, weatherproof [0.6]; Exaust fan DP switch weatherproof [0.6]; Indoor AC DP switch weatherproof [0.6]; High level Single Receptacle outlet [1]; Duplex Receptacle outlet [1]; Hand Dryer switch weatherproof [0.6]; Water heater switch [0.6]; Outdoor Disconnect Switch for air conditioiner [0.1]; Outdoor Disconnect Switch for exhaust fans [0.6] | 7,085.1 |  | CN.MB.D16.2080 | MOD-02-CN-11760 | TO |
| MLTX-02-005-CN-14320 |  | Installing and Finalize Works of Lighting Works including Light Fixtures | 14d | 2027-01-23 | 2027-02-07 | MLTX-02-005-PR-11380, MLTX-02-005-CN-14280, MLTX-02-005-CN-14670, MLTX-02-005-CN-14380, MLTX-02-005-CN-14570, MLTX-02-005-CN-14590 |  |  |  | -34d | 24d | Labor [80 h]; Electrician [80 h]; Recessed mounted LED downlight luminaire 40 watt with reflector; IP44 ,230V , 4000k, 4200 LUMEN ,CRI > 80; Low glare [18]; LED flood light outdoor type 96 watt, 4000k, 12720 LUMEN [0.6]; Wall mounted emergency LED luminaire, 230V, 60 Hz., 3 hour back up time 1800 lumen,CRI>80, 2*18 watt, IP 65 [2.4]; LED Exit light fixture 4.5 watt with battery for 3 hours, and a visibility of 30 meters [0.6]; Wall mounted outdoor LED luminaire, 17 watt, 2000 lumens, with light emission from two sides [0.6]; Wall mounted outdoor LED luminaire, 13 watt, 1000 LUMEN, CR>80, for roof lighting [1] | 14,259.43 |  | CN.MB.D16.2100 | MOD-02-CN-11790 | TO |
| MLTX-02-005-CN-14340 |  | Installing Data and Telecommunication System with all Accessories | 14d | 2027-01-23 | 2027-02-07 | MLTX-02-005-CN-14690, MLTX-02-005-CN-14670, MLTX-02-005-CN-14330, MLTX-02-005-CN-14380, MLTX-02-005-CN-14180, MLTX-02-005-CN-14460, MLTX-02-005-CN-14570, MLTX-02-005-CN-14590 |  |  |  | -34d | 24d | Labor [80 h]; Electrician [80 h]; Wall telephone outlet [1.8]; Wall mounted data outlet [1.8]; Telecom/IT rack complete with switch, router and patch Panel [0.1]; AV floor box outlet (1 HDMI) [0.6]; AV wall outlet (1 HDMI) [0.6] | 6,239.59 |  | CN.MB.D16.2120 | MOD-02-CN-11750 | TO |
| MLTX-02-005-CN-14400 |  | Installing and Finalize Works of Lightning Protection System | 15d | 2027-02-01 | 2027-02-17 | MLTX-02-005-CN-14570, MLTX-02-005-CN-14310, MLTX-02-005-CN-14380, MLTX-02-005-CN-14710, MLTX-02-005-CN-13480, MLTX-02-005-CN-14730, MLTX-02-005-PR-11280, MLTX-02-005-EN-15420 |  |  |  | -43d | 15d | Labor [100 h]; Electrician [100 h]; For Building [0.1] | 2,437.33 |  | CN.MB.D16.2200 | MOD-02-CN-11820 | TO |
|  | 7 | **DOORS/WINDOWS** |  | 2026-09-17 | 2027-02-07 |  |  |  |  |  |  |  |  |  |  |  |  |
| MLTX-02-005-CN-14090 |  | Preliminary Works For Doors | 13d | 2026-09-17 A | 2026-09-26 A | MLTX-02-005-CN-13940, MLTX-02-005-PR-11300, MLTX-02-005-CN-14310, MLTX-02-005-CN-14330, MLTX-02-005-CN-14260, MLTX-02-005-CN-14290 | 100% | 2026-09-19 | 2026-10-04 |  |  | Labor [180 h]; Skilled Labor [60 h]; Metal Door D2 : [0.8] | 7,799.44 | 7,799.44 | CN.MB.D08.1810 | MOD-02-CN-11110 | TO |
| MLTX-02-005-CN-14100 |  | Finalize Metal Doors for Toilets Building | 13d | 2026-09-29 A | 2026-09-29 A | MLTX-02-005-CN-14160 | 100% | 2026-09-26 | 2026-10-10 |  |  | Labor [240 h]; Skilled Labor [90 h]; Metal Door D2 : [0.2] | 1,949.86 | 1,949.86 | CN.MB.D08.1820 | MOD-02-CN-11120 | TO |
| MLTX-02-005-CN-14550 |  | Preliminary Works For Windows/Curtain Wall | 12d | 2026-10-20 | 2026-11-02 | MLTX-02-005-PR-11300, MLTX-02-005-CN-13940 |  |  |  | -3d | 0d | Labor [120 h]; Skilled Labor [40 h]; Supply and install curtain wall with structural glass [0.9] | 52,646.24 |  | CN.MB.D08.1810 | MOD-02-CN-11100 | TO |
| MLTX-02-005-CN-14470 |  | Finalize Glazzed Curtain Wall Works | 14d | 2027-01-23 | 2027-02-07 | MLTX-02-005-CN-14570, MLTX-02-005-CN-14550, MLTX-02-005-CN-14380 |  |  |  | -32d | 27d | Labor [320 h]; Skilled Labor [120 h]; Supply and install curtain wall with structural glass [0.1] | 5,849.58 |  | CN.MB.D08.1840 | MOD-02-CN-11130 | TO |
|  | 4 | **METAL WORKS** |  | 2026-09-05 | 2026-12-14 |  |  |  |  |  |  |  |  |  |  |  |  |
| MLTX-02-005-CN-14420 |  | Installation of Galvanized Steel Roof Scupper | 4d | 2026-09-05 A | 2026-09-05 A | MLTX-02-005-CN-14670 | 100% | 2026-09-26 | 2026-09-29 |  |  | Labor [200 h]; Skilled Labor [120 h]; Plumber [80 h]; Supply and install and testing of overflow galvanized steel roof scupper [1] | 3,899.72 | 3,899.72 | CN.MB.D05.1810 | MOD-02-CN-11170 | TO |
| MLTX-02-005-CN-14040 |  | Installation of Galvanized Steel Ladder | 14d | 2026-11-12 | 2026-11-28 | MLTX-02-005-CN-14580 |  |  |  | -35d | 0d | Skilled Labor [120 h]; Driver [80 h]; Crane [80 h]; Supply and install Galvanized steel ladder [1] | 5,849.58 |  | CN.MB.D05.1760 | MOD-02-CN-11150 | TO |
| MLTX-02-005-CN-14410 |  | Installation of DI Cover for Tank | 14d | 2026-11-29 | 2026-12-14 | MLTX-02-005-EN-12350, MLTX-02-005-CN-14040, MLTX-02-005-CN-14020, MLTX-02-005-PR-9330 |  |  |  | -35d | 0d | Skilled Labor [120 h]; Driver [80 h]; Crane [80 h]; Supply and install heavy duty ductile iron steel cover [1] | 3,899.72 |  | CN.MB.D05.1770 | MOD-02-CN-11160 | TO |
|  | 6 | **FINISHING WORKS** |  | 2026-08-17 | 2027-01-21 |  |  |  |  |  |  |  |  |  |  |  |  |
|  | 1 | **FLOOR FINISHES** |  | 2026-09-01 | 2027-01-21 |  |  |  |  |  |  |  |  |  |  |  |  |
| MLTX-02-005-CN-14110 |  | Creamic Tiles Floor Finish Works | 4d | 2026-09-01 A | 2026-09-03 A | MLTX-02-005-CN-14180, MLTX-02-005-PR-11260, MLTX-02-005-CN-14120, MLTX-02-005-EN-15330, MLTX-02-005-CN-14090, MLTX-02-005-PR-9840 | 100% | 2026-10-12 | 2026-10-15 |  |  | Labor [200 h]; Tile Fixer [80 h]; Floor Finishes Anti-slip glazed grey ceramic tiles, 600*600 mm [13]; Floor Finishes Light grey Ceramic tiles, 300*300 mm [48] | 11,894.39 | 11,894.39 | CN.MB.D09.1840 | MOD-02-CN-11200 | TO |
| MLTX-02-005-CN-14500 |  | Ceramic Skirting Tiles Finish Works | 2d | 2026-09-26 A | 2026-09-26 A | MLTX-02-005-PR-11300 | 100% | 2026-10-04 | 2026-10-05 |  |  | Labor [300 h]; Tile Fixer [40 h]; Floor Finishes Anti-slip glazed ceramic skirting tiles 600*100*10 mm [12] | 1,169.88 | 1,169.88 | CN.MB.D09.1980 | MOD-02-CN-11230 | TO |
| MLTX-02-005-CN-14480 |  | Granite Tiles Floor Finish Works | 4d | 2026-11-03 | 2026-11-07 | MLTX-02-005-CN-14110, MLTX-02-005-CN-14550, MLTX-02-005-CN-14730, MLTX-02-005-CN-14440, MLTX-02-005-CN-14430, MLTX-02-005-CN-14100 |  |  |  | -3d | 32d | Labor [200 h]; Tile Fixer [80 h]; Floor Finishes Anti-slip granite tiles for entrance [6] | 2,924.82 |  | CN.MB.D09.1960 | MOD-02-CN-11210 | TO |
| MLTX-02-005-CN-14490 |  | Epoxy Coat on Concrete Floor | 14d | 2027-01-06 | 2027-01-21 | MLTX-02-005-CN-14570, MLTX-02-005-CN-14670, MLTX-02-005-PR-11940, MLTX-02-005-CN-14590 |  |  |  | -18d | 41d | Labor [160 h]; Skilled Labor [60 h]; Floor Finishes Epoxy paint on concrete slab on grade [6] | 1,169.94 |  | CN.MB.D09.1970 | MOD-02-CN-11220 | TO |

| ID | WBS | Activity | Duration | Start | Finish | Predecessors | Complete | Remaining | Planned start | Planned finish | Total float | Free float | Resources | Cost | Actual cost | New Activity Code | New Activity ID | Construction | Old Activity ID - MK | Procurement |
| --- | --- | --- | --- | --- | --- | --- | --- | --- | --- | --- | --- | --- | --- | --- | --- | --- | --- | --- | --- | --- |
|  | 2 | **WALL FINISHES** |  | 2026-08-17 | 2027-01-05 |  |  |  |  |  |  |  |  |  |  |  |  |  |  |  |
| MLTX-02-005-CN-14120 |  | Preliminary Works for Wall Finish Works including Plastering (Internal) | 3d | 2026-08-17 A | 2026-08-19 A | MLTX-02-005-CN-14290, MLTX-02-005-CN-14370, MLTX-02-005-CN-14330, MLTX-02-005-CN-14280, MLTX-02-005-EN-15310, MLTX-02-005-CN-14660, MLTX-02-005-CN-14260, MLTX-02-005-CN-14310, MLTX-02-005-CN-14720, MLTX-02-005-CN-14420 | 100% |  | 2026-10-01 | 2026-10-04 |  |  | Labor [100 h]; Skilled Labor [60 h]; Wall Finishes Supply and install plastering to walls [157] | 18,315.62 | 18,315.62 | CN.MB.D09.1870 | MOD-02-CN-11280 | TO |  |  |
| MLTX-02-005-CN-14430 |  | Preliminary Works for Wall Finish Works (External) | 4d | 2026-08-17 A | 2026-08-19 A | MLTX-02-005-CN-14260, MLTX-02-005-CN-14120, MLTX-02-005-PR-9840 | 100% |  | 2026-10-12 | 2026-10-15 |  |  | Labor [200 h]; Skilled Labor [80 h]; Wall Finishes Supply and install acrylic paint for external elevations [37.33] | 6,551.63 |  | CN.MB.D09.1900 | MOD-02-CN-11290 | TO |  |  |
| MLTX-02-005-CN-14450 |  | Ceramic Finish Works for Walls | 6d | 2026-08-20 A | 2026-08-23 A | MLTX-02-005-PR-11250 | 100% |  | 2026-09-10 | 2026-09-16 |  |  | Labor [200 h]; Driver [100 h]; Forklift [180 h]; Tile Fixer [120 h]; Wall Finishes Supply and install 300*300 mm ceramic [115] | 15,696.35 | 15,696.35 | CN.MB.D09.1920 | MOD-02-CN-11310 | TO |  |  |
| MLTX-02-005-CN-14670 |  | Painting Finish Works for Internal Walls | 12d | 2026-09-19 A | 2026-09-26 A | MLTX-02-005-CN-14070 | 100% |  | 2026-09-10 | 2026-09-24 |  |  | Labor [160 h]; Skilled Labor [40 h]; Wall Finishes Supply and install 2 coats of acrylic paint at internal walls and columns [120] | 2,340 | 2,340 | CN.MB.D09.1910 | MOD-02-CN-11300 | TO |  |  |
| MLTX-02-005-CN-14440 |  | Painting Finish Works for External Walls | 3d | 2026-09-21 A | 2026-09-26 A | MLTX-02-005-CN-14120 | 100% |  | 2026-10-05 | 2026-10-07 |  |  | Labor [200 h]; Skilled Labor [60 h]; Wall Finishes Supply and install acrylic paint for external elevations [56]; Wall Finishes Supply and spray decorative paint ( profile ) for external elevations [0.67] | 35,825.58 | 35,825.58 | CN.MB.D09.1910 | MOD-02-CN-11300 | TO |  |  |
| MLTX-02-005-CN-14560 |  | Stone Cladding Finish Works for External Walls | 5d | 2026-09-29 A | 2026-09-29 A | MLTX-02-005-CN-14120 | 100% |  | 2026-10-05 | 2026-10-10 |  |  | Labor [300 h]; Driver [80 h]; Forklift [150 h]; Tile Fixer [100 h]; Wall Finishes Supply and install Riyadh stone cladding (300x600mm) [46.67] | 2,275 | 2,275 | CN.MB.D09.1920 | MOD-02-CN-11250 | TO |  |  |
| MLTX-02-005-CN-14580 |  | Granite Capping for Parpet | 12d | 2026-10-29 | 2026-11-11 | MLTX-02-005-CN-14080 |  |  |  |  | -35d | 0d | Labor [160 h]; Driver [40 h]; Forklift [60 h]; Tile Fixer [40 h]; Wall Finishes Supply and install granite capping for parapet [38] | 8,150.24 |  | CN.MB.D09.1930 | MOD-02-CN-11270 | TO |  |  |
| MLTX-02-005-CN-14460 |  | Phenolic Partitions for Toilets | 11d | 2026-12-15 | 2026-12-27 | MLTX-02-005-CN-14500, MLTX-02-005-CN-14720, MLTX-02-005-CN-14130, MLTX-02-005-CN-14560, MLTX-02-005-CN-13370, MLTX-02-005-PR-11210, MLTX-02-005-CN-14440, MLTX-02-005-CN-14480, MLTX-02-005-CN-14150, MLTX-02-005-CN-14190, MLTX-02-005-EN-12420, MLTX-02-005-CN-14220, MLTX-02-005-CN-14430, MLTX-02-005-CN-14120 |  |  |  |  | -35d | 0d | Labor [700 h]; Driver [340 h]; Forklift [330 h]; Tile Fixer [220 h]; Wall Finishes Supply and install solid phenolic toilets partition board [40] | 31,197.6 |  | CN.MB.D09.1930 | MOD-02-CN-11320 | TO |  |  |
| MLTX-02-005-CN-14570 |  | Glass Partitions including all accessories and doors | 6d | 2026-12-30 | 2027-01-05 | MLTX-02-005-CN-14460, MLTX-02-005-EN-15410, MLTX-02-005-CN-14590 |  |  |  |  | -35d | 0d | Labor [350 h]; Skilled Labor [120 h]; Wall Finishes Supply and install 12 mm glass partition [7] | 13,649.02 |  | CN.MB.D09.1930 | MOD-02-CN-11260 | TO |  |  |
|  | 3 | **CELLING FINISHES** |  | 2026-09-15 | 2026-09-26 |  |  |  |  |  |  |  |  |  |  |  |  |  |  |  |
| MLTX-02-005-CN-14730 |  | Preliminary Works for Ceiling Painting Works | 3d | 2026-09-15 A | 2026-09-15 A | MLTX-02-005-CN-14120, MLTX-02-005-CN-14710 | 100% |  | 2026-10-05 | 2026-10-07 |  |  | Labor [200 h]; Skilled Labor [90 h]; CEILING FINISHES Supply and install 12.5mm thk, moisture resistant gypsum board suspended ceiling; CEILING FINISHES Supply and install 12.5mm thk, gypsum board suspended ceiling | 5,771.51 |  | CN.MB.D09.1890 | MOD-02-CN-11340 | TO |  |  |
| MLTX-02-005-CN-14720 |  | Gypsum Board Suspended Ceiling Finish Works For Ceiling | 6d | 2026-09-16 A | 2026-09-16 A | MLTX-02-005-CN-14450 | 100% |  | 2026-09-17 | 2026-09-24 |  |  | Labor [400 h]; Skilled Labor [120 h]; CEILING FINISHES Supply and install 12.5mm thk, moisture resistant gypsum board suspended ceiling; CEILING FINISHES Supply and install 12.5mm thk, gypsum board suspended ceiling | 5,771.52 |  | CN.MB.D09.1950 | MOD-02-CN-11360 | TO |  |  |
| MLTX-02-005-CN-14710 |  | Painting Finish Works for Ceiling | 15d | 2026-09-26 A | 2026-09-26 A | MLTX-02-005-CN-14070 | 100% |  | 2026-09-10 | 2026-09-28 |  |  | Labor [200 h]; Skilled Labor [60 h]; CEILING FINISHES Supply and install 2 coats of acrylic paint at under side slab | 1,357.11 |  | CN.MB.D09.1940 | MOD-02-CN-11350 | TO |  |  |
|  | 8 | **SPECIALTIES WORK** |  | 2026-10-12 | 2027-03-15 |  |  |  |  |  |  |  |  |  |  |  |  |  |  |  |
| MLTX-02-005-CN-14130 |  | Sanitary Fixtures and Accessories Works | 4d | 2026-10-12 A | 2026-12-14 | MLTX-02-005-CN-14230 SS, MLTX-02-005-PR-11320, MLTX-02-005-CN-14410 FF, MLTX-02-005-PR-11270, MLTX-02-005-CN-14220, MLTX-02-005-CN-14480 FF | 80% | 4d | 2027-01-13 | 2027-01-17 | -35d | 0d | Plumber [100 h]; Supply and install toilet Accessories [1] | 14,623.96 |  | CN.MB.D10.1890 | MOD-02-CN-11390 | TO |  |  |
| MLTX-02-005-CN-14590 |  | Installation of Phenolic Locker | 2d | 2026-12-28 | 2026-12-29 | MLTX-02-005-CN-14460, MLTX-02-005-CN-13410 |  |  |  |  | -35d | 0d | Labor [100 h]; Skilled Labor [60 h]; phenolic locker Size 2400*550*2200 mm [1]; phenolic locker Size 3500*550*2200 mm [1] | 24,373.26 |  | CN.MB.D10.1900 | MOD-02-CN-11380 | TO |  |  |
| MLTX-02-005-CN-14140 |  | Installation of MODON Logo on the entrance | 15d | 2027-02-23 | 2027-03-15 | MLTX-02-005-PR-11420, MLTX-02-005-CN-14670, MLTX-02-005-CN-14160, MLTX-02-005-PR-8930, MLTX-02-005-CN-14120, MLTX-02-005-CN-14480, MLTX-02-005-PR-11520, MLTX-02-005-PR-11500, MLTX-02-005-PR-11480, MLTX-02-005-EN-15470, MLTX-02-005-CN-14590, MLTX-02-005-CN-14570 |  |  |  |  | -59d | 0d | Labor [250 h]; Driver [100 h]; Electrician [100 h]; Crane [100 h]; Supply and install MODON logo [1] | 19,498.61 |  | CN.MB.D10.1900 | MOD-02-CN-11400 | TO |  |  |
|  | PRO | **PROCUREMENT** |  | 2026-04-04 | 2027-02-09 |  |  |  |  |  |  |  |  |  |  |  |  |  |  |  |
|  | SLI | **SHORT LEAD ITEM** |  | 2026-04-04 | 2027-02-09 |  |  |  |  |  |  |  |  |  |  |  |  |  |  |  |
|  | TOI | **TOILET/SERVICE WORKS** |  | 2026-04-04 | 2026-12-06 |  |  |  |  |  |  |  |  |  |  |  |  |  |  |  |
|  | 1 | **STEEL REINFORCEMENT** |  | 2026-04-04 | 2026-05-19 |  |  |  |  |  |  |  |  |  |  |  |  |  |  |  |
| MLTX-02-005-PR-11050 |  | PO for Steel Reinforcement | 5d | 2026-04-04 A | 2026-05-18 A | MLTX-02-005-EN-13370 | 100% |  | 2026-05-21 | 2026-05-30 |  |  | Purchaser [150 h] |  |  |  | MOD-02-PR-7880 |  | MAK-01-PR-1000 | TO |
| MLTX-02-005-PR-11150 |  | Material Delivery of Steel Reinforcement | 5d | 2026-04-09 A | 2026-05-19 A | MLTX-02-005-PR-11050, MLTX-02-005-PR-11250 | 100% |  | 2026-06-23 | 2026-06-28 |  |  | Purchaser [156.8 h] |  |  |  | MOD-02-PR-7900 |  | MAK-01-PR-1020 | TO |

| ID | WBS | Activity | Duration | Start | Finish | Predecessors | Complete | Planned start | Planned finish | Resources | New Activity ID | Old Activity ID - MK | Procurement |
| --- | --- | --- | --- | --- | --- | --- | --- | --- | --- | --- | --- | --- | --- |
|  | 3 | **CONCRETE BLOCKS** |  | 2026-04-09 | 2026-07-07 |  |  |  |  |  |  |  |  |
| MLTX-02-005-PR-11230 |  | PO for Concrete Blocks | 5d | 2026-04-09 A | 2026-05-18 A | MLTX-02-005-EN-13470, MLTX-02-005-PR-11050, MLTX-02-005-EN-13280 | 100% | 2026-06-11 | 2026-06-16 | Purchaser [150 h] | MOD-02-PR-7950 | MAK-01-PR-1000 | TO |
| MLTX-02-005-PR-11240 |  | Material Delivery of Concrete Blocks | 8d | 2026-07-07 A | 2026-07-07 A | MLTX-02-005-PR-11230, MLTX-02-005-PR-11250 | 100% | 2026-06-23 | 2026-07-01 | Purchaser [150 h] | MOD-02-PR-7970 | MAK-01-PR-1020 | TO |
|  | 6 | **FLOOR/WALL TILES** |  | 2026-08-18 | 2026-08-18 |  |  |  |  |  |  |  |  |
| MLTX-02-005-PR-11250 |  | PO for Tilling Materials | 5d | 2026-08-18 A | 2026-08-18 A | MLTX-02-005-EN-13490, MLTX-02-005-PR-11230 | 100% | 2026-06-17 | 2026-06-22 | Purchaser [150 h] | MOD-02-PR-8030 | MAK-01-PR-1000 | TO |
| MLTX-02-005-PR-11260 |  | Material Delivery of Tailling Material | 13d | 2026-08-18 A | 2026-08-18 A | MLTX-02-005-PR-11250, MLTX-02-005-PR-11300 | 100% | 2026-09-19 | 2026-10-04 | Purchaser [150 h] | MOD-02-PR-8050 | MAK-01-PR-1020 | TO |
|  | 7 | **SUSPENDED CEILING** |  | 2026-08-18 | 2026-08-18 |  |  |  |  |  |  |  |  |
| MLTX-02-005-PR-11270 |  | PO for Suspend Ceiling | 5d | 2026-08-18 A | 2026-08-18 A | MLTX-02-005-PR-11250, MLTX-02-005-EN-13510 | 100% | 2026-10-19 | 2026-10-24 | Purchaser [150 h] | MOD-02-PR-8070 | MAK-01-PR-1000 | TO |
| MLTX-02-005-PR-11280 |  | Material Delivery of Suspend Ceiling | 13d | 2026-08-18 A | 2026-08-18 A | MLTX-02-005-PR-11270 | 100% | 2026-10-25 | 2026-11-08 | Purchaser [150 h] | MOD-02-PR-8090 | MAK-01-PR-1020 | TO |
|  | 8 | **DOORS/WINDOWS** |  | 2026-09-15 | 2026-09-15 |  |  |  |  |  |  |  |  |
| MLTX-02-005-PR-11290 |  | PO for Doors/Windows | 15d | 2026-09-15 A | 2026-09-15 A | MLTX-02-005-EN-13960, MLTX-02-005-EN-14120, MLTX-02-005-EN-13250, MLTX-02-005-PR-11250, MLTX-02-005-EN-13700, MLTX-02-005-EN-13940, MLTX-02-005-EN-14080, MLTX-02-005-EN-13570, MLTX-02-005-EN-13900, MLTX-02-005-EN-14170, MLTX-02-005-EN-14180, MLTX-02-005-EN-14100, MLTX-02-005-EN-13760, MLTX-02-005-EN-13510, MLTX-02-005-EN-13380, MLTX-02-005-EN-13800, MLTX-02-005-EN-14000, MLTX-02-005-EN-13410, MLTX-02-005-EN-13920, MLTX-02-005-EN-13360, MLTX-02-005-EN-13610, MLTX-02-005-EN-13530, MLTX-02-005-EN-13820, MLTX-02-005-EN-14140, MLTX-02-005-EN-13650, MLTX-02-005-EN-13630, MLTX-02-005-EN-13720, MLTX-02-005-EN-13780, MLTX-02-005-EN-14020, MLTX-02-005-EN-14160, MLTX-02-005-EN-13390, MLTX-02-005-EN-13980 | 100% | 2026-08-03 | 2026-08-19 | Purchaser [150 h] | MOD-02-PR-8110 | MAK-01-PR-1000 | TO |
| MLTX-02-005-PR-11300 |  | Material Delivery for Doors/Windows | 25d | 2026-09-15 A | 2026-09-15 A | MLTX-02-005-PR-11290 | 100% | 2026-08-20 | 2026-09-17 | Purchaser [150 h] | MOD-02-PR-8130 | MAK-01-PR-1020 | TO |
|  | 11 | **WATER SUPPLY PIPES** |  | 2026-07-07 | 2026-07-07 |  |  |  |  |  |  |  |  |
| MLTX-02-005-PR-11330 |  | PO for Water Supply Pipes | 5d | 2026-07-07 A | 2026-07-07 A | MLTX-02-005-EN-13720, MLTX-02-005-EN-13570, MLTX-02-005-PR-11300 | 100% | 2026-09-19 | 2026-09-24 | Purchaser [150 h] | MOD-02-PR-8230 | MAK-01-PR-1000 | TO |
| MLTX-02-005-PR-11340 |  | Material Delivery for Water Supply Pipes | 7d | 2026-07-07 A | 2026-07-07 A | MLTX-02-005-PR-11330, MLTX-02-005-PR-11300 | 100% | 2026-09-26 | 2026-10-03 | Purchaser [150 h] | MOD-02-PR-8250 | MAK-01-PR-1020 | TO |
|  | 12 | **SEWAGE/DRAINAGE PIPES** |  | 2026-06-02 | 2026-06-10 |  |  |  |  |  |  |  |  |
| MLTX-02-005-PR-11350 |  | PO for Sewage/Drainage Pipes | 5d | 2026-06-02 A | 2026-06-02 A | MLTX-02-005-EN-13590, MLTX-02-005-PR-11300 | 100% | 2026-09-19 | 2026-09-24 | Purchaser [150 h] | MOD-02-PR-8270 | MAK-01-PR-1000 | TO |
| MLTX-02-005-PR-11360 |  | Material Delivery for Sewage/Drainage Pipes | 7d | 2026-06-10 A | 2026-06-10 A | MLTX-02-005-PR-11350, MLTX-02-005-PR-11300, MLTX-02-005-PR-11310 | 100% | 2026-10-01 | 2026-10-08 | Purchaser [150 h] | MOD-02-PR-8290 | MAK-01-PR-1020 | TO |
|  | 10 | **SANITARY FIXTURES** |  | 2026-08-18 | 2026-08-18 |  |  |  |  |  |  |  |  |
| MLTX-02-005-PR-11310 |  | PO for Sanitary Fixtures | 5d | 2026-08-18 A | 2026-08-18 A | MLTX-02-005-PR-11350, MLTX-02-005-EN-13550, MLTX-02-005-PR-11300 | 100% | 2026-09-26 | 2026-09-30 | Purchaser [150 h] | MOD-02-PR-8190 | MAK-01-PR-1000 | TO |
| MLTX-02-005-PR-11320 |  | Material Delivery for Sanitary Fixtures | 13d | 2026-08-18 A | 2026-08-18 A | MLTX-02-005-PR-11310, MLTX-02-005-PR-11330 | 100% | 2026-10-01 | 2026-10-15 | Purchaser [150 h] | MOD-02-PR-8210 | MAK-01-PR-1020 | TO |
|  | 16 | **PACKAGE AC UNITS** |  | 2026-07-07 | 2026-07-07 |  |  |  |  |  |  |  |  |
| MLTX-02-005-PR-11450 |  | PO for Package AC Units | 5d | 2026-07-07 A | 2026-07-07 A | MLTX-02-005-EN-13680, MLTX-02-005-EN-13550 | 100% | 2026-06-11 | 2026-06-16 | Purchaser [150 h] | MOD-02-PR-8310 | MAK-01-PR-1000 | TO |
| MLTX-02-005-PR-11460 |  | Material Delivery for Package AC Units | 15d | 2026-07-07 A | 2026-07-07 A | MLTX-02-005-PR-11450 | 100% | 2026-07-21 | 2026-08-06 | Purchaser [150 h] | MOD-02-PR-8330 | MAK-01-PR-1020 | TO |

| ID | WBS | Activity | Duration | Start | Finish | Predecessors | Complete | Planned start | Planned finish | Total float | Free float | Resources | New Activity ID | Old Activity ID - MK | Procurement |
| --- | --- | --- | --- | --- | --- | --- | --- | --- | --- | --- | --- | --- | --- | --- | --- |
|  | 17 | **AIR DIFUSSERS/GRILLS** |  | 2026-08-18 | 2026-08-18 |  |  |  |  |  |  |  |  |  |  |
| MLTX-02-005-PR-11470 |  | PO for Air Diffusers/Grills | 5d | 2026-08-18 A | 2026-08-18 A | MLTX-02-005-EN-13700, MLTX-02-005-PR-11320 | 100% | 2026-10-17 | 2026-10-21 |  |  | Purchaser [150 h] | MOD-02-PR-8350 | MAK-01-PR-1000 | TO |
| MLTX-02-005-PR-11480 |  | Material Delivery for Air Diffusers/Grills | 15d | 2026-08-18 A | 2026-08-18 A | MLTX-02-005-PR-11470, MLTX-02-005-PR-11320 | 100% | 2026-10-22 | 2026-11-08 |  |  | Purchaser [150 h] | MOD-02-PR-8370 | MAK-01-PR-1020 | TO |
|  | 18 | **GALVANIZED DUCTS** |  | 2026-08-18 | 2026-08-18 |  |  |  |  |  |  |  |  |  |  |
| MLTX-02-005-PR-11490 |  | PO for Galvanized Ducts | 5d | 2026-08-18 A | 2026-08-18 A | MLTX-02-005-EN-13720, MLTX-02-005-PR-11270 | 100% | 2026-10-25 | 2026-10-29 |  |  | Purchaser [150 h] | MOD-02-PR-8390 | MAK-01-PR-1000 | TO |
| MLTX-02-005-PR-11500 |  | Material Delivery for Galvanized Ducts | 15d | 2026-08-18 A | 2026-08-18 A | MLTX-02-005-PR-11490, MLTX-02-005-PR-11270 | 100% | 2026-10-31 | 2026-11-16 |  |  | Purchaser [150 h] | MOD-02-PR-8410 | MAK-01-PR-1020 | TO |
|  | 19 | **EXHAUST FANS** |  | 2026-08-18 | 2026-08-18 |  |  |  |  |  |  |  |  |  |  |
| MLTX-02-005-PR-11510 |  | PO for Exhaust Fans | 5d | 2026-08-18 A | 2026-08-18 A | MLTX-02-005-EN-13740 | 100% | 2026-06-11 | 2026-06-16 |  |  | Purchaser [150 h] | MOD-02-PR-8430 | MAK-01-PR-1000 | TO |
| MLTX-02-005-PR-11520 |  | Material Delivery for Exhaust Fans | 10d | 2026-08-18 A | 2026-08-18 A | MLTX-02-005-PR-11510, MLTX-02-005-PR-11270 | 100% | 2026-10-25 | 2026-11-04 |  |  | Purchaser [150 h] | MOD-02-PR-8450 | MAK-01-PR-1020 | TO |
|  | 13 | **LIGHTING FIXTURES** |  | 2026-07-07 | 2026-12-03 |  |  |  |  |  |  |  |  |  |  |
| MLTX-02-005-PR-11370 |  | PO for Lighting Fixtures | 5d | 2026-07-07 A | 2026-07-07 A | MLTX-02-005-EN-13610, MLTX-02-005-EN-13550, MLTX-02-005-PR-11200 | 100% | 2026-07-16 | 2026-07-21 |  |  | Purchaser [150 h] | MOD-02-PR-8470 | MAK-01-PR-1000 | TO |
| MLTX-02-005-PR-11380 |  | Material Delivery for Lighting Fixtures | 10d | 2026-11-23 | 2026-12-03 | MLTX-02-005-PR-11510, MLTX-02-005-PR-11370, MLTX-02-005-PR-11420 |  |  |  | -40d | 2d | Purchaser [150 h] | MOD-02-PR-8490 | MAK-01-PR-1020 | TO |
|  | 14 | **SWITCHES/SOCKETS** |  | 2026-11-23 | 2026-12-06 |  |  |  |  |  |  |  |  |  |  |
| MLTX-02-005-PR-11390 |  | PO for Switches/Sockets | 5d | 2026-11-23 | 2026-11-28 | MLTX-02-005-EN-13630, MLTX-02-005-PR-11370, MLTX-02-005-PR-11420 |  |  |  | -42d | 0d | Purchaser [150 h] | MOD-02-PR-8510 | MAK-01-PR-1000 | TO |
| MLTX-02-005-PR-11400 |  | Material Delivery for Switches/Sockets | 7d | 2026-11-29 | 2026-12-06 | MLTX-02-005-PR-11390, MLTX-02-005-PR-11420 |  |  |  | -42d | 0d | Purchaser [150 h] | MOD-02-PR-8530 | MAK-01-PR-1020 | TO |
|  | 15 | **EARTHING SYSTEM** |  | 2026-07-12 | 2026-07-12 |  |  |  |  |  |  |  |  |  |  |
| MLTX-02-005-PR-11190 |  | PO for Earthing System | 5d | 2026-07-12 A | 2026-07-12 A | MLTX-02-005-EN-13430 | 100% | 2026-06-11 | 2026-06-16 |  |  | Purchaser [150 h] | MOD-02-PR-8550 | MAK-01-PR-1290 | TO |
| MLTX-02-005-PR-11200 |  | Material Delivery for Earthing System | 15d | 2026-07-12 A | 2026-07-12 A | MLTX-02-005-PR-11190 | 100% | 2026-06-17 | 2026-07-04 |  |  | Purchaser [150 h] | MOD-02-PR-8570 | MAK-01-PR-1310 | TO |
|  | 5 | **DISTRIBUTION PANNELS** |  | 2026-10-20 | 2026-12-05 |  |  |  |  |  |  |  |  |  |  |
| MLTX-02-005-PR-11210 |  | PO for Distribution Panels | 15d | 2026-10-20 | 2026-11-05 | MLTX-02-005-EN-13450, MLTX-02-005-PR-11310 |  |  |  | -2d | 0d | Purchaser [150 h] | MOD-02-PR-8590 | MAK-01-PR-LLI-1060 | TO |
| MLTX-02-005-PR-11220 |  | Material Delivery for Distribution Panels | 25d | 2026-11-07 | 2026-12-05 | MLTX-02-005-PR-11210, MLTX-02-005-PR-11270 |  |  |  | 0d | 27d | Purchaser [150 h] | MOD-02-PR-8610 | MAK-01-PR-LLI-1100 | TO |
|  | 9 | **FURNITURES** |  | 2026-10-20 | 2026-11-22 |  |  |  |  |  |  |  |  |  |  |
| MLTX-02-005-PR-11410 |  | PO for Furnitures | 9d | 2026-10-20 | 2026-10-29 | MLTX-02-005-EN-13650, MLTX-02-005-PR-11510 |  |  |  | -42d | 0d | Purchaser [150 h] | MOD-02-PR-8150 | MAK-01-PR-1000 | TO |
| MLTX-02-005-PR-11420 |  | Material Delivery for Furnitures | 20d | 2026-10-31 | 2026-11-22 | MLTX-02-005-PR-11410 |  |  |  | -42d | 0d | Purchaser [150 h] | MOD-02-PR-8170 | MAK-01-PR-1020 | TO |

| ID | WBS | Activity | Duration | Start | Finish | Predecessors | Complete | Planned start | Planned finish | Total float | Free float | Resources | New Activity ID | Old Activity ID - MK | Procurement |
| --- | --- | --- | --- | --- | --- | --- | --- | --- | --- | --- | --- | --- | --- | --- | --- |
|  | PLG | **PLAYGROUND WORKS** |  | 2026-04-04 | 2027-02-09 |  |  |  |  |  |  |  |  |  |  |
|  | 5 | **PVC MEMBRANE** |  | 2026-04-04 | 2026-11-12 |  |  |  |  |  |  |  |  |  |  |
| MLTX-02-005-PR-11610 |  | PO for PVC Membrane | 10d | 2026-04-04 A | 2026-05-19 A | MLTX-02-005-EN-14860, MLTX-02-005-EN-12860 | 100% | 2026-04-23 | 2026-05-04 |  |  | Purchaser [150 h] | MOD-02-PR-8640 | MAK-01-PR-1120 | PL |
| MLTX-02-005-PR-11620 |  | Material Delivery for PVC Membrane | 21d | 2026-10-20 | 2026-11-12 | MLTX-02-005-EN-13840, MLTX-02-005-PR-11610 |  |  |  | 1d | 0d | Purchaser [150 h] | MOD-02-PR-8650 | MAK-01-PR-1130 | PL |
|  | 15 | **ARTIFICIAL TURF** |  | 2026-04-04 | 2026-11-26 |  |  |  |  |  |  |  |  |  |  |
| MLTX-02-005-PR-11850 |  | PO for Artificial TURF | 5d | 2026-04-04 A | 2026-05-19 A | MLTX-02-005-PR-11610, MLTX-02-005-EN-14190 | 100% | 2026-05-21 | 2026-05-30 |  |  | Purchaser [150 h] | MOD-02-PR-8830 | MAK-01-PR-1120 | PL |
| MLTX-02-005-PR-11860 |  | Material Delivery for Artificial TURF | 12d | 2026-11-14 | 2026-11-26 | MLTX-02-005-PR-11620, MLTX-02-005-PR-11850 |  |  |  | 1d | 0d | Purchaser [150 h] | MOD-02-PR-8850 | MAK-01-PR-1130 | PL |
|  | 20 | **RUBBER GRANULES** |  | 2026-04-04 | 2026-11-02 |  |  |  |  |  |  |  |  |  |  |
| MLTX-02-005-PR-11870 |  | PO for Rubber Granules | 5d | 2026-04-04 A | 2026-05-19 A | MLTX-02-005-EN-14200 | 100% | 2026-05-21 | 2026-05-30 |  |  | Purchaser [150 h] | MOD-02-PR-8870 | MAK-01-PR-1120 | PL |
| MLTX-02-005-PR-11880 |  | Material Delivery for Rubber Granules | 12d | 2026-10-20 | 2026-11-02 | MLTX-02-005-PR-11870 |  |  |  | 22d | 21d | Purchaser [150 h] | MOD-02-PR-8890 | MAK-01-PR-1130 | PL |
|  | 21 | **PADEL GLASS** |  | 2026-04-04 | 2026-12-08 |  |  |  |  |  |  |  |  |  |  |
| MLTX-02-005-PR-11890 |  | PO for Padel Glass | 5d | 2026-04-04 A | 2026-05-19 A | MLTX-02-005-EN-14210 | 100% | 2026-05-21 | 2026-05-30 |  |  | Purchaser [150 h] | MOD-02-PR-8910 | MAK-01-PR-1120 | PL |
| MLTX-02-005-PR-11900 |  | Material Delivery for Padel Glass | 28d | 2026-11-07 | 2026-12-08 | MLTX-02-005-PR-11890, MLTX-02-005-PR-11550 |  |  |  | -5d | 0d | Purchaser [150 h] | MOD-02-PR-8930 | MAK-01-PR-1130 | PL |
|  | 22 | **PADEL WIRE MESH/STEEL SETS** |  | 2026-04-09 | 2026-11-05 |  |  |  |  |  |  |  |  |  |  |
| MLTX-02-005-PR-11910 |  | PO for Wire Mesh/Steel Sets | 5d | 2026-04-09 A | 2026-05-19 A | MLTX-02-005-PR-11890, MLTX-02-005-EN-14220, MLTX-02-005-PR-11050 | 100% | 2026-05-31 | 2026-06-04 |  |  | Purchaser [150 h] | MOD-02-PR-8950 | MAK-01-PR-1120 | PL |
| MLTX-02-005-PR-11920 |  | Material Delivery for Wire Mesh/Steel Sets | 15d | 2026-10-20 | 2026-11-05 | MLTX-02-005-PR-11910 |  |  |  | -11d | 0d | Purchaser [150 h] | MOD-02-PR-8970 | MAK-01-PR-1130 | PL |
|  | 1 | **AGGREGATE BASE COURSE** |  | 2026-04-04 | 2026-07-07 |  |  |  |  |  |  |  |  |  |  |
| MLTX-02-005-PR-11060 |  | PO for Aggregate Base Course | 5d | 2026-04-04 A | 2026-05-14 A | MLTX-02-005-EN-13300 | 100% | 2026-07-16 | 2026-07-21 |  |  | Purchaser [150 h] | MOD-02-PR-8990 | MAK-01-PR-1090 | PL |
| MLTX-02-005-PR-11070 |  | Material Delivery for Aggregate Base Course | 7d | 2026-07-07 A | 2026-07-07 A | MLTX-02-005-PR-11060 | 100% | 2026-07-22 | 2026-07-29 |  |  | Purchaser [150 h] | MOD-02-PR-9000 | MAK-01-PR-1100 | PL |
|  | 16 | **PACKAGE AC UNITS** |  | 2026-07-07 | 2026-07-07 |  |  |  |  |  |  |  |  |  |  |
| MLTX-02-005-PR-11530 |  | PO for Package AC Units | 5d | 2026-07-07 A | 2026-07-07 A | MLTX-02-005-PR-11890, MLTX-02-005-PR-11450, MLTX-02-005-EN-13760, MLTX-02-005-PR-11870, MLTX-02-005-EN-14230, MLTX-02-005-PR-11850, MLTX-02-005-PR-11040 | 100% | 2026-11-04 | 2026-11-09 |  |  | Purchaser [200 h] | MOD-02-PR-9130 | MAK-01-PR-1000 | PL |
| MLTX-02-005-PR-11540 |  | Material Delivery for Package AC Units | 15d | 2026-07-07 A | 2026-07-07 A | MLTX-02-005-PR-11530, MLTX-02-005-PR-11040 | 100% | 2026-11-10 | 2026-11-26 |  |  | Purchaser [200 h] | MOD-02-PR-9150 | MAK-01-PR-1020 | PL |
|  | 17 | **AIR DIFUSSERS/GRILLS** |  | 2026-10-20 | 2026-12-05 |  |  |  |  |  |  |  |  |  |  |
| MLTX-02-005-PR-11550 |  | PO for Air Difussers/Grills | 15d | 2026-10-20 | 2026-11-05 | MLTX-02-005-EN-13780, MLTX-02-005-PR-11310, MLTX-02-005-PR-11450, MLTX-02-005-PR-11030 |  |  |  | -14d | 0d | Purchaser [200 h] | MOD-02-PR-9170 | MAK-01-PR-1000 | PL |
| MLTX-02-005-PR-11560 |  | Material Delivery for Air Difussers/Grills | 25d | 2026-11-07 | 2026-12-05 | MLTX-02-005-PR-11550, MLTX-02-005-PR-11040 |  |  |  | 1d | 25d | Purchaser [200 h] | MOD-02-PR-9190 | MAK-01-PR-1020 | PL |

| ID | WBS | Activity | Duration | Start | Finish | Predecessors | Complete | Planned start | Planned finish | Total float | Free float | Resources | New Activity ID | Old Activity ID - MK | Procurement |
| --- | --- | --- | --- | --- | --- | --- | --- | --- | --- | --- | --- | --- | --- | --- | --- |
|  | 2 | **BITUMINOUS BASE & WEARING COURSE** |  | 2026-11-10 | 2026-12-16 |  |  |  |  |  |  |  |  |  |  |
| MLTX-02-005-PR-11080 |  | PO for Bituminous Base & Wearing Course | 15d | 2026-11-10 | 2026-11-26 | MLTX-02-005-EN-13320, MLTX-02-005-PR-12010 |  |  |  | -40d | 0d | Purchaser [150 h] | MOD-02-PR-9020 | MAK-01-PR-1120 | PL |
| MLTX-02-005-PR-11090 |  | Material Delivery for the Site | 17d | 2026-11-28 | 2026-12-16 | MLTX-02-005-PR-11080 |  |  |  | -10d | 30d | Purchaser [150 h] | MOD-02-PR-9030 | MAK-01-PR-1130 | PL |
|  | 3 | **INTERLOCKING PAVING** |  | 2027-01-04 | 2027-02-09 |  |  |  |  |  |  |  |  |  |  |
| MLTX-02-005-PR-11100 |  | PO for Interlocking Block Pavers | 15d | 2027-01-04 | 2027-01-20 | MLTX-02-005-PR-11440, MLTX-02-005-PR-11390, MLTX-02-005-EN-13380 |  |  |  | -40d | 0d | Purchaser [200 h] | MOD-02-PR-9050 | MAK-01-PR-1170 | PL |
| MLTX-02-005-PR-11110 |  | Material Delivery for Interlocking Block Pavers | 17d | 2027-01-21 | 2027-02-09 | MLTX-02-005-PR-11100, MLTX-02-005-PR-11090 |  |  |  | -40d | 0d | Purchaser [200 h] | MOD-02-PR-9070 | MAK-01-PR-1190 | PL |
|  | 4 | **MARKING PAINT** |  | 2026-11-28 | 2027-01-03 |  |  |  |  |  |  |  |  |  |  |
| MLTX-02-005-PR-11430 |  | PO for Marking Paint | 15d | 2026-11-28 | 2026-12-14 | MLTX-02-005-PR-11080, MLTX-02-005-EN-14230 |  |  |  | -40d | 0d | Purchaser [150 h] | MOD-02-PR-9090 | MAK-01-PR-1120 | PL |
| MLTX-02-005-PR-11440 |  | Material Delivery for Marking Paint | 17d | 2026-12-15 | 2027-01-03 | MLTX-02-005-PR-11430, MLTX-02-005-PR-12020 |  |  |  | -40d | 0d | Purchaser [150 h] | MOD-02-PR-9110 | MAK-01-PR-1130 | PL |
|  | 18 | **GALVANIZED DUCTS** |  | 2026-11-07 | 2026-12-22 |  |  |  |  |  |  |  |  |  |  |
| MLTX-02-005-PR-11570 |  | PO for Galvanized Duct | 15d | 2026-11-07 | 2026-11-23 | MLTX-02-005-EN-13800, MLTX-02-005-PR-11450, MLTX-02-005-PR-11550 |  |  |  | -14d | 0d | Purchaser [150 h] | MOD-02-PR-9210 | MAK-01-PR-1000 | PL |
| MLTX-02-005-PR-11580 |  | Material Delivery for Galvanized Duct | 25d | 2026-11-24 | 2026-12-22 | MLTX-02-005-PR-11570, MLTX-02-005-PR-11550 |  |  |  | -14d | 10d | Purchaser [150 h] | MOD-02-PR-9230 | MAK-01-PR-1020 | PL |
|  | 19 | **EXHAUST FANS** |  | 2026-10-20 | 2026-12-05 |  |  |  |  |  |  |  |  |  |  |
| MLTX-02-005-PR-11590 |  | PO for Exhaust Fans | 15d | 2026-10-20 | 2026-11-05 | MLTX-02-005-PR-11450, MLTX-02-005-EN-13820 |  |  |  | 1d | 0d | Purchaser [150 h] | MOD-02-PR-9250 | MAK-01-PR-1000 | PL |
| MLTX-02-005-PR-11600 |  | Material Delivery for Exhaust Fans | 25d | 2026-11-07 | 2026-12-05 | MLTX-02-005-PR-11590, MLTX-02-005-PR-11040 |  |  |  | 1d | 25d | Purchaser [150 h] | MOD-02-PR-9270 | MAK-01-PR-1020 | PL |
|  | 10 | **DISTRIBUTION BOARDS** |  | 2026-11-07 | 2026-11-29 |  |  |  |  |  |  |  |  |  |  |
| MLTX-02-005-PR-11710 |  | PO for Distribution Boards | 5d | 2026-11-07 | 2026-11-11 | MLTX-02-005-PR-11920, MLTX-02-005-PR-11450, MLTX-02-005-EN-13900 |  |  |  | -11d | 0d | Purchaser [150 h] | MOD-02-PR-9290 | MAK-01-PR-1000 | PL |
| MLTX-02-005-PR-11720 |  | Material Delivery for Distribution Boards | 15d | 2026-11-12 | 2026-11-29 | MLTX-02-005-PR-11710, MLTX-02-005-PR-11530 |  |  |  | 6d | 30d | Purchaser [150 h] | MOD-02-PR-9310 | MAK-01-PR-1020 | PL |
|  | 11 | **POWER CABLES** |  | 2026-11-12 | 2026-11-29 |  |  |  |  |  |  |  |  |  |  |
| MLTX-02-005-PR-11730 |  | PO for Power Cables | 5d | 2026-11-12 | 2026-11-17 | MLTX-02-005-EN-13920, MLTX-02-005-PR-11710 |  |  |  | -11d | 0d | Purchaser [150 h] | MOD-02-PR-9330 | MAK-01-PR-1000 | PL |
| MLTX-02-005-PR-11740 |  | Material Delivery for Power Cables | 10d | 2026-11-18 | 2026-11-29 | MLTX-02-005-PR-11730, MLTX-02-005-PR-11200 |  |  |  | -11d | 15d | Purchaser [150 h] | MOD-02-PR-9350 | MAK-01-PR-1020 | PL |
|  | 12 | **LIGHT FIXTURES** |  | 2026-07-07 | 2026-12-10 |  |  |  |  |  |  |  |  |  |  |
| MLTX-02-005-PR-11750 |  | PO for Light Fixtures | 5d | 2026-07-07 A | 2026-07-07 A | MLTX-02-005-EN-13940, MLTX-02-005-EN-13920, MLTX-02-005-EN-13550 | 100% | 2026-07-22 | 2026-07-27 |  |  | Purchaser [150 h] | MOD-02-PR-9370 | MAK-01-PR-1000 | PL |
| MLTX-02-005-PR-11760 |  | Material Delivery for Light Fixtures | 20d | 2026-11-18 | 2026-12-10 | MLTX-02-005-PR-11730, MLTX-02-005-PR-11750, MLTX-02-005-PR-11520, MLTX-02-005-PR-11530 |  |  |  | 1d | 38d | Purchaser [150 h] | MOD-02-PR-9390 | MAK-01-PR-1020 | PL |

| ID | WBS | Activity | Duration | Start | Finish | Predecessors | Complete | Planned start | Planned finish | Total float | Free float | Resources | New Activity ID | Old Activity ID - MK | Procurement |
| --- | --- | --- | --- | --- | --- | --- | --- | --- | --- | --- | --- | --- | --- | --- | --- |
|  | 13 | **CCTV MATERIALS** |  | 2026-10-20 | 2027-01-20 |  |  |  |  |  |  |  |  |  |  |
| MLTX-02-005-PR-11770 |  | PO for CCTV | 5d | 2026-10-20 | 2026-10-25 | MLTX-02-005-PR-11750, MLTX-02-005-EN-13960, MLTX-02-005-PR-11070 |  |  |  | -6d | 36d | Purchaser [150 h] | MOD-02-PR-9410 | MAK-01-PR-1000 | PL |
| MLTX-02-005-PR-11780 |  | Material Delivery for CCTV | 15d | 2027-01-04 | 2027-01-20 | MLTX-02-005-PR-11600, MLTX-02-005-PR-11770, MLTX-02-005-PR-11880, MLTX-02-005-PR-11580, MLTX-02-005-PR-11900, MLTX-02-005-PR-11720, MLTX-02-005-PR-11860, MLTX-02-005-PR-11560, MLTX-02-005-PR-11540, MLTX-02-005-PR-11440, MLTX-02-005-PR-12090 |  |  |  | -24d | 10d | Purchaser [150 h] | MOD-02-PR-9430 | MAK-01-PR-1020 | PL |
|  | 14 | **POWER OUTLETS/SWITCHES** |  | 2026-12-07 | 2027-01-11 |  |  |  |  |  |  |  |  |  |  |
| MLTX-02-005-PR-11790 |  | PO for Power Outlets/Switches | 6d | 2026-12-07 | 2026-12-13 | MLTX-02-005-PR-11770, MLTX-02-005-EN-13980, MLTX-02-005-PR-11380, MLTX-02-005-PR-11460, MLTX-02-005-PR-11400 |  |  |  | -42d | 0d | Purchaser [150 h] | MOD-02-PR-9450 | MAK-01-PR-1000 | PL |
| MLTX-02-005-PR-11800 |  | Material Delivery for Power Outlets/Switches | 25d | 2026-12-14 | 2027-01-11 | MLTX-02-005-PR-11790, MLTX-02-005-PR-11530 |  |  |  | -20d | 14d | Purchaser [150 h] | MOD-02-PR-9470 | MAK-01-PR-1020 | PL |
|  | LSC | **LANDSCAPE WORKS** |  | 2026-05-16 | 2027-02-02 |  |  |  |  |  |  |  |  |  |  |
|  | 7 | **INTERLOCKING PAVING** |  | 2026-08-26 | 2026-08-26 |  |  |  |  |  |  |  |  |  |  |
| MLTX-02-005-PR-11830 |  | PO for Interlocking Block Pavers | 5d | 2026-08-26 A | 2026-08-26 A | MLTX-02-005-EN-14020 | 100% | 2026-07-30 | 2026-08-04 |  |  | Purchaser [150 h] | MOD-02-PR-9500 | MAK-01-PR-1170 | LS |
| MLTX-02-005-PR-11840 |  | Material Delivery for Interlocking Block Pavers | 12d | 2026-08-26 A | 2026-08-26 A | MLTX-02-005-PR-11830, MLTX-02-005-PR-11990 | 100% | 2026-08-11 | 2026-08-24 |  |  | Purchaser [150 h] | MOD-02-PR-9520 | MAK-01-PR-1190 | LS |
|  | 9 | **CURBSTONE** |  | 2026-07-14 | 2026-07-23 |  |  |  |  |  |  |  |  |  |  |
| MLTX-02-005-PR-11970 |  | PO for Curbstone | 5d | 2026-07-14 A | 2026-07-14 A | MLTX-02-005-EN-14120 | 100% | 2026-07-30 | 2026-08-04 |  |  | Purchaser [150 h] | MOD-02-PR-9540 | MAK-01-PR-1260 | LS |
| MLTX-02-005-PR-11980 |  | Material Delivery for Curbstone | 12d | 2026-07-23 A | 2026-07-23 A | MLTX-02-005-PR-11970 | 100% | 2026-08-23 | 2026-09-05 |  |  | Purchaser [150 h] | MOD-02-PR-9560 | MAK-01-PR-1280 | LS |
|  | 1 | **PAVEMENT MARKING** |  | 2026-12-14 | 2026-12-30 |  |  |  |  |  |  |  |  |  |  |
| MLTX-02-005-PR-11120 |  | PO for Pavement Markings | 5d | 2026-12-14 | 2026-12-19 | MLTX-02-005-EN-13390, MLTX-02-005-PR-11790 |  |  |  | -42d | 0d | Purchaser [150 h] | MOD-02-PR-9580 | MAK-01-PR-1200 | LS |
| MLTX-02-005-PR-11130 |  | Material Delivery for Pavement Markings | 10d | 2026-12-20 | 2026-12-30 | MLTX-02-005-PR-11120 |  |  |  | -42d | 0d | Purchaser [150 h] | MOD-02-PR-9600 | MAK-01-PR-1220 | LS |
|  | 2 | **TRAFFIC SIGNS** |  | 2026-12-20 | 2027-02-02 |  |  |  |  |  |  |  |  |  |  |
| MLTX-02-005-PR-11140 |  | PO for Traffic Signs | 15d | 2026-12-20 | 2027-01-05 | MLTX-02-005-EN-13360, MLTX-02-005-PR-11120, MLTX-02-005-PR-11990, MLTX-02-005-PR-11040 |  |  |  | -37d | 0d | Purchaser [150 h] | MOD-02-PR-9620 | MAK-01-PR-1230 | LS |
| MLTX-02-005-PR-11160 |  | Material Delivery for Traffic Signs | 19d | 2027-01-12 | 2027-02-02 | MLTX-02-005-PR-11140, MLTX-02-005-PR-11960, MLTX-02-005-PR-11500 |  |  |  | -42d | 0d | Purchaser [150 h] | MOD-02-PR-9640 | MAK-01-PR-1250 | LS |
|  | 3 | **IRRIGATION PIPES/SPRINKLERS** |  | 2026-12-20 | 2027-01-14 |  |  |  |  |  |  |  |  |  |  |
| MLTX-02-005-PR-11170 |  | PO for Irrigation Pipes/Sprinkles | 5d | 2026-12-20 | 2026-12-24 | MLTX-02-005-EN-13410, MLTX-02-005-PR-11120, MLTX-02-005-PR-11530 |  |  |  | -27d | 10d | Purchaser [150 h] | MOD-02-PR-9660 | MAK-01-PR-1260 | LS |
| MLTX-02-005-PR-11180 |  | Material Delivery for Irrigation Pipes/Sprinkles | 8d | 2027-01-06 | 2027-01-14 | MLTX-02-005-PR-11170, MLTX-02-005-PR-11420, MLTX-02-005-PR-11140 |  |  |  | -37d | 6d | Purchaser [150 h] | MOD-02-PR-9680 | MAK-01-PR-1280 | LS |
|  | 5 | **AGRICULTURE SOIL** |  | 2026-10-20 | 2026-12-01 |  |  |  |  |  |  |  |  |  |  |
| MLTX-02-005-PR-11930 |  | PO for Agriculture Soil | 15d | 2026-10-20 | 2026-11-05 | MLTX-02-005-PR-11950, MLTX-02-005-EN-14080 |  |  |  | 3d | 0d | Purchaser [150 h] | MOD-02-PR-9700 | MAK-01-PR-1260 | LS |
| MLTX-02-005-PR-11940 |  | Material Delivery for Agriculture Soil | 22d | 2026-11-07 | 2026-12-01 | MLTX-02-005-PR-11930, MLTX-02-005-PR-11530, MLTX-02-005-PR-11280, MLTX-02-005-PR-11480 |  |  |  | 3d | 30d | Purchaser [150 h] | MOD-02-PR-9720 | MAK-01-PR-1280 | LS |

| ID | WBS | Activity | Duration | Start | Finish | Predecessors | Complete | Planned start | Planned finish | Total float | Free float | Resources | New Activity ID | Old Activity ID - MK | Procurement |
| --- | --- | --- | --- | --- | --- | --- | --- | --- | --- | --- | --- | --- | --- | --- | --- |
|  | 8 | **TRACK SURFACE** |  | 2026-05-16 | 2027-01-11 |  |  |  |  |  |  |  |  |  |  |
| MLTX-02-005-PR-11950 |  | PO for Track Surface | 5d | 2026-05-16 A | 2026-05-20 A | MLTX-02-005-EN-13390, MLTX-02-005-EN-15180, MLTX-02-005-EN-15120 | 100% | 2026-07-30 | 2026-08-04 |  |  | Purchaser [150 h] | MOD-02-PR-9740 | MAK-01-PR-1260 | LS |
| MLTX-02-005-PR-11960 |  | Material Delivery for Track Surface | 10d | 2026-12-31 | 2027-01-11 | MLTX-02-005-EN-14100, MLTX-02-005-PR-11950, MLTX-02-005-PR-11120, MLTX-02-005-PR-11130, MLTX-02-005-PR-11530 |  |  |  | -42d | 0d | Purchaser [150 h] | MOD-02-PR-9760 | MAK-01-PR-1280 | LS |
|  | 10 | **GRASS/TREES** |  | 2026-05-17 | 2027-01-28 |  |  |  |  |  |  |  |  |  |  |
| MLTX-02-005-PR-11990 |  | PO for Grass/Trees | 5d | 2026-05-17 A | 2026-05-20 A | MLTX-02-005-PR-11950, MLTX-02-005-EN-14140 | 100% | 2026-08-05 | 2026-08-10 |  |  | Purchaser [150 h] | MOD-02-PR-9780 | MAK-01-PR-1260 | LS |
| MLTX-02-005-PR-12000 |  | Material Delivery for Grass/Trees | 15d | 2027-01-12 | 2027-01-28 | MLTX-02-005-PR-11960, MLTX-02-005-PR-11990, MLTX-02-005-PR-11530 |  |  |  | -40d | 2d | Purchaser [150 h] | MOD-02-PR-9800 | MAK-01-PR-1280 | LS |
|  | 6 | **CABLES** |  | 2026-08-26 | 2026-09-15 |  |  |  |  |  |  |  |  |  |  |
| MLTX-02-005-PR-11810 |  | PO for Cables | 5d | 2026-08-26 A | 2026-08-26 A | MLTX-02-005-EN-14000 | 100% | 2026-07-30 | 2026-08-04 |  |  | Purchaser [150 h] | MOD-02-PR-9820 | MAK-01-PR-1200 | LS |
| MLTX-02-005-PR-11820 |  | Material Delivery for Cables | 15d | 2026-09-15 A | 2026-09-15 A | MLTX-02-005-PR-11810 | 100% | 2026-08-20 | 2026-09-06 |  |  | Purchaser [150 h] | MOD-02-PR-9840 | MAK-01-PR-1220 | LS |
|  | LLI | **LONG LEAD ITEM** |  | 2026-08-26 | 2027-01-24 |  |  |  |  |  |  |  |  |  |  |
|  | PLG | **PLAYGROUND WORKS** |  | 2026-10-20 | 2027-01-24 |  |  |  |  |  |  |  |  |  |  |
|  | 6 | **STEEL TENSION CABLES** |  | 2026-10-20 | 2026-12-16 |  |  |  |  |  |  |  |  |  |  |
| MLTX-02-005-PR-11630 |  | PO for Steel Tension Cables | 8d | 2026-10-20 | 2026-10-28 | MLTX-02-005-EN-14150, MLTX-02-005-PR-11610 |  |  |  | -40d | 0d | Purchaser [230 h] | MOD-02-PR-8670 | MAK-01-PR-1120 | PL |
| MLTX-02-005-PR-12010 |  | Material Fabrication for Steel Tension Cables | 10d | 2026-10-29 | 2026-11-09 | MLTX-02-005-PR-11630 |  |  |  | -40d | 0d | Purchaser [229.1 h] | MOD-02-PR-8680 | MAK-01-PR-1120 | PL |
| MLTX-02-005-PR-11640 |  | Material Delivery for Steel Tension Cables | 15d | 2026-11-10 | 2026-11-26 | MLTX-02-005-PR-12010, MLTX-02-005-PR-11820 |  |  |  | -39d | 0d | Purchaser [200 h] | MOD-02-PR-8690 | MAK-01-PR-1130 | PL |
| MLTX-02-005-PR-12050 |  | Staging time | 7d | 2026-12-09 | 2026-12-16 | MLTX-02-005-PR-11640, MLTX-02-005-PR-11690 |  |  |  | -36d | 0d | Purchaser [200 h] | MOD-02-PR-8690 | MAK-01-PR-1130 | PL |
|  | 7 | **EMERGENCY DOORS** |  | 2026-11-10 | 2027-01-04 |  |  |  |  |  |  |  |  |  |  |
| MLTX-02-005-PR-11650 |  | PO for Emergency Doors | 10d | 2026-11-10 | 2026-11-21 | MLTX-02-005-PR-12010, MLTX-02-005-EN-14160 |  |  |  | -40d | 0d | Purchaser [150 h] | MOD-02-PR-8710 | MAK-01-PR-1120 | PL |
| MLTX-02-005-PR-12020 |  | Material Fabrication for Emergency Doors | 20d | 2026-11-22 | 2026-12-14 | MLTX-02-005-PR-11650 |  |  |  | -40d | 0d | Purchaser [150 h] | MOD-02-PR-8720 | MAK-01-PR-1120 | PL |
| MLTX-02-005-PR-11660 |  | Material Delivery for Emergency Doors | 15d | 2026-12-15 | 2026-12-31 | MLTX-02-005-PR-12020, MLTX-02-005-PR-11040 |  |  |  | -34d | 0d | Purchaser [150 h] | MOD-02-PR-8730 | MAK-01-PR-1130 | PL |
| MLTX-02-005-PR-12060 |  | Staging time | 3d | 2027-01-02 | 2027-01-04 | MLTX-02-005-PR-11660, MLTX-02-005-PR-12090 |  |  |  | -34d | 1d | Purchaser [150 h] | MOD-02-PR-8730 | MAK-01-PR-1130 | PL |
|  | 8 | **PRESSURE UNITS** |  | 2026-12-09 | 2027-01-24 |  |  |  |  |  |  |  |  |  |  |
| MLTX-02-005-PR-11670 |  | PO for Pressure Units | 10d | 2026-12-09 | 2026-12-20 | MLTX-02-005-EN-14170, MLTX-02-005-PR-12010, MLTX-02-005-PR-11690 |  |  |  | -39d | 0d | Purchaser [150 h] | MOD-02-PR-8750 | MAK-01-PR-1120 | PL |
| MLTX-02-005-PR-12030 |  | Material Fabrication for Pressure Units | 10d | 2026-12-21 | 2026-12-31 | MLTX-02-005-PR-11670, MLTX-02-005-PR-12050 |  |  |  | -39d | 0d | Purchaser [150 h] | MOD-02-PR-8760 | MAK-01-PR-1120 | PL |
| MLTX-02-005-PR-11680 |  | Material Delivery for Pressure Units | 10d | 2027-01-02 | 2027-01-12 | MLTX-02-005-PR-12030, MLTX-02-005-PR-12040 |  |  |  | -39d | 0d | Purchaser [150 h] | MOD-02-PR-8770 | MAK-01-PR-1130 | PL |
| MLTX-02-005-PR-12070 |  | Staging time | 10d | 2027-01-13 | 2027-01-24 | MLTX-02-005-PR-11680, MLTX-02-005-PR-11700 |  |  |  | -39d | 0d | Purchaser [150 h] | MOD-02-PR-8770 | MAK-01-PR-1130 | PL |

| ID | WBS | Activity | Duration | Start | Finish | Predecessors | Complete | Planned start | Planned finish | Total float | Free float | Resources | New Activity ID | Old Activity ID - MK | Procurement |
| --- | --- | --- | --- | --- | --- | --- | --- | --- | --- | --- | --- | --- | --- | --- | --- |
|  | 9 | **AIR LOCK DOORS** |  | 2026-11-28 | 2027-01-14 |  |  |  |  |  |  |  |  |  |  |
| MLTX-02-005-PR-11690 |  | PO for Lock Doors | 10d | 2026-11-28 | 2026-12-08 | MLTX-02-005-PR-12010, MLTX-02-005-EN-14180, MLTX-02-005-PR-11030, MLTX-02-005-PR-11640 |  |  |  | -39d | 0d | Purchaser [150 h] | MOD-02-PR-8790 | MAK-01-PR-1120 | PL |
| MLTX-02-005-PR-12040 |  | Material Fabrication for Lock Doors | 15d | 2026-12-09 | 2026-12-26 | MLTX-02-005-PR-11690, MLTX-02-005-PR-11550 |  |  |  | -36d | 0d | Purchaser [150 h] | MOD-02-PR-8800 | MAK-01-PR-1120 | PL |
| MLTX-02-005-PR-11700 |  | Material Delivery for Lock Doors | 12d | 2026-12-27 | 2027-01-09 | MLTX-02-005-PR-12040, MLTX-02-005-PR-11040 |  |  |  | -36d | 0d | Purchaser [150 h] | MOD-02-PR-8810 | MAK-01-PR-1130 | PL |
| MLTX-02-005-PR-12080 |  | Staging time | 5d | 2027-01-10 | 2027-01-14 | MLTX-02-005-PR-11700, MLTX-02-005-PR-11660 |  |  |  | -31d | 8d | Purchaser [150 h] | MOD-02-PR-8810 | MAK-01-PR-1130 | PL |
|  | LSC | **LANDSCAPE WORKS** |  | 2026-08-26 | 2026-09-15 |  |  |  |  |  |  |  |  |  |  |
|  | 4 | **LIGHT POLES** |  | 2026-08-26 | 2026-09-15 |  |  |  |  |  |  |  |  |  |  |
| MLTX-02-005-PR-11020 |  | PO for Lighting poles | 10d | 2026-08-26 A | 2026-08-26 A | MLTX-02-005-EN-13250, MLTX-02-005-PR-11810 | 100% | 2026-08-05 | 2026-08-16 |  |  | Purchaser [150 h] | MOD-02-PR-9860 | MAK-01-PR-LLI-1120 | LS |
| MLTX-02-005-PR-11030 |  | Material Fabrication for Lighting poles | 30d | 2026-08-26 A | 2026-08-26 A | MLTX-02-005-PR-11840, MLTX-02-005-PR-11020 | 100% | 2026-08-25 | 2026-09-29 |  |  | Purchaser [150 h] | MOD-02-PR-9870 | MAK-01-PR-LLI-1130 | LS |
| MLTX-02-005-PR-11040 |  | Material Delivery for Lighting poles | 30d | 2026-09-15 A | 2026-09-15 A | MLTX-02-005-PR-11030 | 100% | 2026-09-30 | 2026-11-03 |  |  | Purchaser [150 h] | MOD-02-PR-9880 | MAK-01-PR-LLI-1160 | LS |
| MLTX-02-005-PR-12090 |  | Staging time | 15d | 2026-09-15 A | 2026-09-15 A | MLTX-02-005-PR-11040 | 100% | 2026-11-04 | 2026-11-21 |  |  | Purchaser [150 h] | MOD-02-PR-9880 | MAK-01-PR-LLI-1160 | LS |
|  | T & C | **TESTING & COMMISSIONING** |  | 2027-02-13 | 2027-03-15 |  |  |  |  |  |  |  |  |  |  |
| MLTX-02-005-TC-11940 |  | Testing and Commissioning for MEP Works for Landscape Works | 7d | 2027-02-13 | 2027-02-20 | MLTX-02-005-CN-13370, MLTX-02-005-CN-13671, MLTX-02-005-CN-13340 FF, MLTX-02-005-CN-13910 FF, MLTX-02-005-CN-13490 FF, MLTX-02-005-CN-13470 FF, MLTX-02-005-CN-13350 FF, MLTX-02-005-CN-13360 FF |  |  |  | -42d | 16d | QA/QC Engineer [1392.9 h] | MOD-02-TC-11880 | T&C-1050 |  |
| MLTX-02-005-TC-11920 |  | Testing and Commissioning for MEP Works for Playground Area | 5d | 2027-02-15 | 2027-02-20 | MLTX-02-005-CN-13770, MLTX-02-005-CN-14650, MLTX-02-005-CN-13850, MLTX-02-005-CN-13671, MLTX-02-005-CN-13650 FF, MLTX-02-005-CN-13390 FF, MLTX-02-005-CN-13700 FF, MLTX-02-005-CN-13640 FF, MLTX-02-005-CN-13470 FF |  |  |  | -42d | 46d | QA/QC Engineer [1400 h] | MOD-02-TC-11860 | T&C-1020 |  |
| MLTX-02-005-TC-11930 |  | Testing and Commissioning for MEP Works for Toilet/Service Building | 3d | 2027-03-09 | 2027-03-15 | MLTX-02-005-CN-14390, MLTX-02-005-CN-14700, MLTX-02-005-CN-14690, MLTX-02-005-CN-14590, MLTX-02-005-CN-14650, MLTX-02-005-CN-14380, MLTX-02-005-CN-14610, MLTX-02-005-CN-14160, MLTX-02-005-CN-14130, MLTX-02-005-CN-14340, MLTX-02-005-CN-14270, MLTX-02-005-CN-14320, MLTX-02-005-CN-13671, MLTX-02-005-CN-14400, MLTX-02-005-CN-14250, MLTX-02-005-CN-14200, MLTX-02-005-CN-14410, MLTX-02-005-CN-14300, MLTX-02-005-CN-14240, MLTX-02-005-CN-14100 FF, MLTX-02-005-CN-14470 FF, MLTX-02-005-CN-14490 FF, MLTX-02-005-CN-14140 FF, MLTX-02-005-CN-14420 FF, MLTX-02-005-CN-13470 FF, MLTX-02-005-CN-14220, MLTX-02-005-PR-11500, MLTX-02-005-PR-11480, MLTX-02-005-CN-14120, MLTX-02-005-CN-14480, MLTX-02-005-CN-14180, MLTX-02-005-CN-14460, MLTX-02-005-PR-11520, MLTX-02-005-EN-15470, MLTX-02-005-CN-14570, MLTX-02-005-CN-14430 |  |  |  | -58d | 30d | QA/QC Engineer [1400 h] | MOD-02-TC-11870 | T&C-1030 |  |
|  | PRO C & DEM | **PROJECT CLOSEOUT & DEMOBILIZATION** |  | 2027-03-24 | 2027-04-20 |  |  |  |  |  |  |  |  |  |  |
|  | 1 | **As-Built DWGs** |  | 2027-03-24 | 2027-04-15 |  |  |  |  |  |  |  |  |  |  |
|  | 1 | **As-Built DWGs Submittals** |  | 2027-03-24 | 2027-04-11 |  |  |  |  |  |  |  |  |  |  |
| MLTX-02-005-CO-12020 |  | As-Built DWGs Submittal for Landscape Works | 4d | 2027-03-24 | 2027-03-28 | MLTX-02-005-TC-11910 SS, MLTX-02-005-CN-10360 |  |  |  | -74d | 0d | Draftsman [300 h] | MOD-02-CO-12020 | T&C-1090 |  |
| MLTX-02-005-CO-12000 |  | As-Built DWGs Submittal for Playground Area Works | 2d | 2027-03-30 | 2027-03-31 | MLTX-02-005-TC-11890 SS, MLTX-02-005-CN-10100 |  |  |  | -77d | 0d | Draftsman [300 h] | MOD-02-CO-12000 | T&C-1060 |  |
| MLTX-02-005-CO-12010 |  | As-Built DWGs Submittal for Toilet/Service Building Works | 2d | 2027-04-10 | 2027-04-11 | MLTX-02-005-TC-11900 SS, MLTX-02-005-TC-11870 SS, MLTX-02-005-CN-12480 |  |  |  | -86d | 0d | Draftsman [300 h] | MOD-02-CO-12010 | T&C-1070 |  |
|  | 2 | **As-Built DWGs Approvals** |  | 2027-03-29 | 2027-04-15 |  |  |  |  |  |  |  |  |  |  |
| MLTX-02-005-CO-12060 |  | As-Built DWGs Approval for Landscape Works | 3d | 2027-03-29 | 2027-03-31 | MLTX-02-005-CO-12020, MLTX-02-005-CN-11400 |  |  |  | -73d | 16d | Consultant Staff [1200 h] | MOD-02-CO-12060 | T&C-1130 |  |
| MLTX-02-005-CO-12040 |  | As-Built DWGs Approval for Playground Area Works | 3d | 2027-04-01 | 2027-04-04 | MLTX-02-005-CO-12000, MLTX-02-005-MS-1100 |  |  |  | -76d | 13d | Consultant Staff [800 h] | MOD-02-CO-12040 | T&C-1100 |  |
| MLTX-02-005-CO-12050 |  | As-Built DWGs Approval for Toilet/Service Building Works | 3d | 2027-04-13 | 2027-04-15 | MLTX-02-005-CN-13770, MLTX-02-005-CO-12010, MLTX-02-005-CN-10140, MLTX-02-005-CO-12090 |  |  |  | -86d | 3d | Consultant Staff [1200 h] | MOD-02-CO-12050 | T&C-1110 |  |

| ID | WBS | Activity | Duration | Start | Finish | Predecessors | Total float | Free float | Resources | New Activity ID | Old Activity ID - MK |
| --- | --- | --- | --- | --- | --- | --- | --- | --- | --- | --- | --- |
|  | 2 | **Demobilization** |  | 2027-04-12 | 2027-04-20 |  |  |  |  |  |  |
| MLTX-02-005-CO-12080 |  | Demobilization of Manpower | 1d | 2027-04-12 | 2027-04-12 | MLTX-02-005-CO-12020, MLTX-02-005-CO-12010, MLTX-02-005-CO-12000, MLTX-02-005-TC-11940 SS, MLTX-02-005-CN-10140 | -86d | 0d | Labor [1200 h] | MOD-02-CO-12080 | A1090 |
| MLTX-02-005-CO-12090 |  | Removal of Equipment from Site | 1d | 2027-04-12 | 2027-04-12 | MLTX-02-005-CO-12080 SS, MLTX-02-005-CO-12080 FF, MLTX-02-005-CN-10140 | -86d | 0d | Labor [830.1 h] | MOD-02-CO-12090 | A1100 |
| MLTX-02-005-CO-12100 |  | Site Clean Up | 1d | 2027-04-13 | 2027-04-13 | MLTX-02-005-CO-12090, MLTX-02-005-CN-10620 | -84d | 5d | Labor [841.56 h]; Driver [58.44 h]; Forklift [50 h]; Bobcat [160 h] | MOD-02-CO-12100 | A1110 |
| MLTX-02-005-CO-12110 |  | Restoration of Ground Surfaces | 1d | 2027-04-20 | 2027-04-20 | MLTX-02-005-CO-12060, MLTX-02-005-CO-12100, MLTX-02-005-CO-12040, MLTX-02-005-CO-12050, MLTX-02-005-TC-11890, MLTX-02-005-MS-1130 | -89d | 0d | Labor [1200 h]; Driver [150 h]; Loader [30 h]; Water Tanker [30 h]; Bobcat [90 h] | MOD-02-CO-12110 | A1120 |

## Activity codes

| Code | Value | Meaning |
| --- | --- | --- |
| AIR DOME WORKS | CVL | CVL AIR DOME WORKS |
| AIR DOME WORKS | ELE | ELE AIR DOME WORKS |
| AIR DOME WORKS | FIN | FINISH AIR DOME WORKS |
| AIR DOME WORKS | MEC | MEC AIR DOME WORKS |
| AIR DOME WORKS | MEC) | MEC AIR DOME WORKS |
| Construction | ER | Earth Works |
| Construction | LS | Landscape Works |
| Construction | PL | Playground Works |
| Construction | TO | Toilet/Service Works |
| Procurement | LS | Landscape Materials |
| Procurement | PL | Playground Materials |
| Procurement | TO | Toilet/Service Materials |
| Shop Drawings | ER | Shop Dwgs For Earthing Works |
| Shop Drawings | LS | Shop Dwgs For Landscape Works |
| Shop Drawings | PL | Shop Dwgs For Playground Works |
| Shop Drawings | TO | Shop Dwgs For Service/Toilet Works |
