# Improvement of Waad Al Shamal Industrial City Fence & Gates - B1 - B1

Schedule from Primavera P6, 2025-04-07 to 2026-11-26, data date 2026-10-26, costs in USD, A marks actual dates.
Must finish by 2026-10-05

## Calendars

- Waad Al Shamal-Industrial: Mon-Thu 08:00-16:00; Fri off; Sat-Sun 08:00-16:00. Exceptions (off unless hours are given): 2026-03-19, 2026-03-21 to 2026-03-23, 2026-05-26 to 2026-05-28.

## Resources

| Resource | Group |
| --- | --- |
| Moblization Labors | labor |
| Testing | material |
| Labors | labor |
| FENCE WORKS | material |
| Construction Labors | labor |
| Excavator | equipment |
| Compactor | equipment |
| EXT. WORKS | material |
| Engineers | labor |
| Procurment | material |
| Drivers | labor |
| Trcck | equipment |
| Fence (Fabrication & Delivery) | material |
| Engineering | material |
| Concrete Mixer | equipment |
| Concrete Pump | equipment |
| GUARD HOUSE Works | material |

## Schedule

| ID | WBS | Activity | Type | Duration | Start | Finish | Predecessors | Complete | Planned start | Planned finish | Total float | Free float | Resources |
| --- | --- | --- | --- | --- | --- | --- | --- | --- | --- | --- | --- | --- | --- |
|  | 1 | **Key Milestones** |  |  | 2026-07-07 | 2026-11-26 |  |  |  |  |  |  |  |
|  | 1 | **General Milestones** |  |  | 2026-07-07 | 2026-11-26 |  |  |  |  |  |  |  |
| WAD.S.1080 |  | Project Start | milestone | 0d | 2026-07-07 A | 2026-07-07 A |  | 100% |  |  |  |  |  |
| WAD.S.6490 |  | Project Finish | milestone | 0d | 2026-11-26 | 2026-11-26 | WAD.S.1320 FF, WAD.S.3850 FF, WAD.S.5070 FF, WAD.S.6250 FF, WAD.S.3860 FF, WAD.S.6110 FF, WAD.S.5870 FF, WAD.S.5490, WAD.S.4030, WAD.S.2980, WAD.S.3870, WAD.S.3380, WAD.S.1000, WAD.S.1030, WAD.S.1040, WAD.S.1050, WAD.S.1060, WAD.S.1070, WAD.S.1180, WAD.S.1220, WAD.S.1260, WAD.S.1300, WAD.S.1310, WAD.S.4810, WAD.S.4990, WAD.S.3730, WAD.S.3890, WAD.S.4160, WAD.S.4780, WAD.S.5080, WAD.S.3900, WAD.S.4130, WAD.S.4150, WAD.S.4560, WAD.S.4620, WAD.S.4630, WAD.S.4640, WAD.S.4650, WAD.S.4790, WAD.S.3950, WAD.S.4730, WAD.S.4830, WAD.S.4850, WAD.S.3920, WAD.S.4090, WAD.S.5990, WAD.S.6340, WAD.S.6120, WAD.S.6480, WAD.S.4890, WAD.S.3960, WAD.S.4100, WAD.S.5760, WAD.S.5770, WAD.S.7540, WAD.S.6560, WAD.S.6590, WAD.S.7240, WAD.S.7250, WAD.S.1210, WAD.S.5540, WAD.S.2530, WAD.S.1470, WAD.S.7550, WAD.S.7560, `, WAD.S.7550 FF |  |  |  | -44.46d | 0d |  |
|  | 2 | **Contractual Milestones** |  |  | 2026-07-07 | 2026-11-11 |  |  |  |  |  |  |  |
| WAD.S.1470 |  | Site Handover | milestone | 0d | 2026-07-07 A | 2026-07-07 A | WAD.S.1080 | 100% |  |  |  |  |  |
| WAD.S.7550 |  | Contract Schedule (Baseline Program) | milestone | 0d | 2026-07-07 A | 2026-07-07 A | WAD.S.1030 SS, WAD.S.1030 FF | 100% |  |  |  |  |  |
| WAD.S.1320 |  | Completion of Moblization | milestone | 0d | 2026-07-09 A | 2026-07-09 A | WAD.S.1280 | 100% | 2026-07-28 | 2026-07-28 |  |  |  |
| WAD.S.3850 |  | Completion of Fences | milestone | 0d | 2026-10-27 | 2026-10-27 | WAD.S.1080, WAD.S.3380 |  |  |  | -18d | 0d |  |
| WAD.S.3860 |  | Completion of GUARD HOUSE 1 | milestone | 0d | 2026-10-27 | 2026-10-27 | WAD.S.3850 FF |  |  |  | -18d | 26.46d |  |
| WAD.S.5070 |  | Completion of Engineering Works | milestone | 0d | 2026-10-28 | 2026-10-28 | WAD.S.1330 FF, WAD.S.4840 |  |  |  | -19.5d | 24.96d |  |
| WAD.S.6250 |  | Completion of Procurment Works | milestone | 0d | 2026-11-07 | 2026-11-07 | WAD.S.1080, WAD.S.4660 |  |  |  | -27.3d | 17.16d |  |
| WAD.S.6110 |  | Completion of EXT. WORKS | milestone | 0d | 2026-11-08 | 2026-11-08 | WAD.S.4990 |  |  |  | -28.9d | 15.56d |  |
| WAD.S.7560 |  | Testing & Commissioning | milestone | 0d | 2026-11-11 | 2026-11-11 | WAD.S.5490 FF |  |  |  | -31.65d | 12.81d |  |
|  | 2 | **Mobilization** |  |  | 2026-07-01 | 2026-07-19 |  |  |  |  |  |  |  |
|  | 2 | **Site Layout Plan** |  |  | 2026-07-06 | 2026-07-19 |  |  |  |  |  |  |  |
| WAD.S.1130 |  | Site Office Layout Drawing Review & Approval |  | 2d | 2026-07-06 A | 2026-07-19 A | WAD.S.1120 | 100% | 2026-07-20 | 2026-07-21 |  |  | Moblization Labors [197.07 h] |
| WAD.S.1120 |  | Site Office Layout Drawing Proposal Submittal |  | 1d | 2026-07-19 A | 2026-07-19 A | WAD.S.1110 | 100% |  |  |  |  | Moblization Labors [197.07 h] |
|  | 6 | **Construct Site Access Roads** |  |  | 2026-07-06 | 2026-07-19 |  |  |  |  |  |  |  |
| WAD.S.1150 |  | Site Preparation |  | 1d | 2026-07-06 A | 2026-07-19 A | WAD.S.1130 | 100% | 2026-07-22 | 2026-07-22 |  |  | Moblization Labors [197.07 h] |
| WAD.S.1160 |  | Grading & Leveling |  | 2d | 2026-07-06 A | 2026-07-19 A | WAD.S.1150 | 100% | 2026-07-23 | 2026-07-25 |  |  | Moblization Labors [197.07 h] |
| WAD.S.1200 |  | Temporary Access Road |  | 3d | 2026-07-06 A | 2026-07-19 A | WAD.S.1160 SS+1.25d, WAD.S.1150 | 100% | 2026-07-25 | 2026-07-28 |  |  | Moblization Labors [197.07 h] |
|  | 7 | **Construct Site Office Fence** |  |  | 2026-07-06 | 2026-07-19 |  |  |  |  |  |  |  |
| WAD.S.1230 |  | Excavation for Fence Foundation |  | 4d | 2026-07-06 A | 2026-07-19 A | WAD.S.1200 SS+1.25d | 100% | 2026-07-26 | 2026-07-30 |  |  | Moblization Labors [197.07 h] |
| WAD.S.1270 |  | Installation of Fence Posts |  | 4d | 2026-07-06 A | 2026-07-19 A | WAD.S.1230 SS+1.25d | 100% | 2026-07-27 | 2026-08-01 |  |  | Moblization Labors [197.07 h] |
| WAD.S.1280 |  | Installation of Fence Mesh |  | 4d | 2026-07-06 A | 2026-07-19 A | WAD.S.1270 SS+2.5d, WAD.S.1230 | 100% | 2026-07-30 | 2026-08-04 |  |  | Moblization Labors [197.07 h] |

| ID | WBS | Activity | Duration | Start | Finish | Predecessors | Complete | Planned start | Planned finish | Resources |
| --- | --- | --- | --- | --- | --- | --- | --- | --- | --- | --- |
|  | 8 | **Construct Site Offices** |  | 2026-07-01 | 2026-07-19 |  |  |  |  |  |
| ` |  | Installation of Site Offices | 3d | 2026-07-01 A | 2026-07-09 A | WAD.S.1200 SS, WAD.S.1130, WAD.S.1160 | 100% | 2026-07-26 | 2026-07-28 | Moblization Labors [197.07 h] |
| WAD.S.1210 |  | Installation of Site Offices | 3d | 2026-07-06 A | 2026-07-19 A | WAD.S.1200 SS, WAD.S.1130, WAD.S.1160 | 100% | 2026-07-26 | 2026-07-28 | Moblization Labors [197.07 h] |
| WAD.S.1240 |  | MEP Works | 2d | 2026-07-06 A | 2026-07-19 A | WAD.S.1160 | 100% | 2026-07-26 | 2026-07-27 | Moblization Labors [197.07 h] |
| WAD.S.1260 |  | Installation of Furniture | 3d | 2026-07-06 A | 2026-07-19 A | WAD.S.1240 SS, WAD.S.1160 | 100% | 2026-07-26 | 2026-07-28 | Moblization Labors [197.07 h] |
|  | 3 | **Mobilization of Manpower** |  | 2026-07-06 | 2026-07-19 |  |  |  |  |  |
| WAD.S.1170 |  | Mobilization of Manpower | 6d | 2026-07-06 A | 2026-07-19 A | WAD.S.1150 SS, WAD.S.1150, WAD.S.1150 FF | 100% | 2026-07-23 | 2026-07-29 | Moblization Labors [197.07 h] |
|  | 4 | **Mobilization of Equipment** |  | 2026-07-06 | 2026-07-19 |  |  |  |  |  |
| WAD.S.1180 |  | Mobilization of Tools & Equipment | 6d | 2026-07-06 A | 2026-07-19 A | WAD.S.1170 SS, WAD.S.1150 | 100% | 2026-07-23 | 2026-07-29 | Moblization Labors [197.07 h] |
|  | 5 | **Site Survey** |  | 2026-07-14 | 2026-07-18 |  |  |  |  |  |
| WAD.S.1020 |  | Site Survey | 2d | 2026-07-14 A | 2026-07-15 A | WAD.S.1080 SS | 100% |  |  | Moblization Labors [197.07 h] |
| WAD.S.1110 |  | Survey Report | 2d | 2026-07-16 A | 2026-07-18 A | WAD.S.1020 | 100% |  |  | Moblization Labors [197.07 h] |
|  | 3 | **Preliminary Submittals** |  | 2026-07-06 | 2026-07-19 |  |  |  |  |  |
| WAD.S.1000 |  | Insurances | 18d | 2026-07-06 A | 2026-07-19 A | WAD.S.1080 | 100% | 2026-07-14 | 2026-08-03 |  |
| WAD.S.1010 |  | Performance Bonds | 10d | 2026-07-06 A | 2026-07-19 A | WAD.S.1080 | 100% | 2026-07-14 | 2026-07-25 |  |
| WAD.S.1030 |  | Contract Schedule (Baseline Program) | 13d | 2026-07-06 A | 2026-07-19 A | WAD.S.1080 | 100% | 2026-07-14 | 2026-07-28 |  |
| WAD.S.1040 |  | HSE Plan | 12d | 2026-07-06 A | 2026-07-19 A | WAD.S.1080 | 100% | 2026-07-14 | 2026-07-27 |  |
| WAD.S.1050 |  | Quality Control Plan | 10d | 2026-07-06 A | 2026-07-19 A | WAD.S.1080, WAD.S.1010 FF | 100% | 2026-07-14 | 2026-07-25 |  |
| WAD.S.1060 |  | Project Organization Chart | 12d | 2026-07-06 A | 2026-07-19 A | WAD.S.1080, WAD.S.1040 FF | 100% | 2026-07-14 | 2026-07-27 |  |
| WAD.S.1070 |  | Submission of Staff CVs | 10d | 2026-07-06 A | 2026-07-19 A | WAD.S.1080, WAD.S.1050 FF | 100% | 2026-07-14 | 2026-07-25 |  |
|  | 6 | **Engineering** |  | 2026-06-16 | 2026-11-04 |  |  |  |  |  |
|  | 3 | **Shop Drawings** |  | 2026-06-16 | 2026-09-10 |  |  |  |  |  |
|  | 2 | **Prepare & Submit** |  | 2026-07-05 | 2026-09-05 |  |  |  |  |  |
| WAD.S.1250 |  | EXT. WORKS Shop Drawings (Prepare & Submit) | 10d | 2026-07-05 A | 2026-09-05 A | WAD.S.1190 SS+3d, WAD.S.1000 FF, WAD.S.1280 FF, WAD.S.1010 | 100% | 2026-08-02 | 2026-08-13 | Engineers [46.48 h] |
| WAD.S.1090 |  | FENCES Shop Drawings (Prepare & Submit) | 10d | 2026-07-06 A | 2026-07-19 A | WAD.S.1080, WAD.S.1070 FF | 100% | 2026-07-14 | 2026-07-25 | Engineers [46.48 h] |
| WAD.S.1140 |  | GUARD HOUSE 1 Shop Drawings (Prepare & Submit) | 10d | 2026-07-13 A | 2026-08-31 A | WAD.S.1090 SS+3d, WAD.S.1060 FF, WAD.S.1030 FF, WAD.S.1180 FF, WAD.S.1120 | 100% | 2026-07-13 | 2026-07-23 | Engineers [46.48 h] |
| WAD.S.1190 |  | GUARD HOUSE 1 Shop Drawings (Prepare & Submit) | 10d | 2026-07-16 A | 2026-08-31 A | WAD.S.1140 SS+3d, WAD.S.1260 FF, WAD.S.1150 | 100% | 2026-07-16 | 2026-07-27 | Engineers [46.48 h] |

| ID | WBS | Activity | Duration | Start | Finish | Predecessors | Complete | Remaining | Planned start | Planned finish | Total float | Free float | Resources |
| --- | --- | --- | --- | --- | --- | --- | --- | --- | --- | --- | --- | --- | --- |
|  | 7 | **Review & Approve** |  | 2026-06-16 | 2026-09-10 |  |  |  |  |  |  |  |  |
| WAD.S.1220 |  | FENCES Shop Drawings (Review & Approve) | 8d | 2026-06-16 A | 2026-06-22 A | WAD.S.1090, WAD.S.1090 FF | 100% |  | 2026-07-19 | 2026-07-27 |  |  | Engineers [46.48 h] |
| WAD.S.1300 |  | GUARD HOUSE 1 Shop Drawings (Review & Approve) | 8d | 2026-07-13 A | 2026-09-01 A | WAD.S.1140, WAD.S.1220, WAD.S.1190, WAD.S.1220 SS, WAD.S.1140 SS, WAD.S.1190 SS | 100% |  | 2026-07-28 | 2026-08-05 |  |  | Engineers [46.48 h] |
| WAD.S.1310 |  | GUARD HOUSE 1 Shop Drawings (Review & Approve) | 8d | 2026-07-13 A | 2026-09-05 A | WAD.S.1190, WAD.S.1300 FF, WAD.S.1190 FF, WAD.S.1190 SS | 100% |  | 2026-07-28 | 2026-08-05 |  |  | Engineers [46.48 h] |
| WAD.S.1330 |  | EXT. WORKS Shop Drawings (Review & Approve) | 8d | 2026-07-13 A | 2026-09-10 A | WAD.S.1250, WAD.S.1310 FF, WAD.S.1250 SS, WAD.S.1310 SS | 100% |  | 2026-08-13 | 2026-08-23 |  |  | Engineers [46.48 h] |
|  | 1 | **Material Submittal** |  | 2026-06-25 | 2026-11-04 |  |  |  |  |  |  |  |  |
|  | 1 | **Material Prepare & Submit** |  | 2026-07-05 | 2026-10-28 |  |  |  |  |  |  |  |  |
|  | 1 | **Short Lead Items** |  | 2026-07-06 | 2026-10-28 |  |  |  |  |  |  |  |  |
| WAD.S.1360 |  | structural steel beams, posts and rods for wall fence (Material Prepare & Submit) (FENCES) | 4d | 2026-07-06 A | 2026-07-19 A | WAD.S.1080 SS+37d | 100% |  | 2026-08-19 | 2026-08-23 |  |  | Engineers [46.48 h] |
| WAD.S.1400 |  | tubes, bolts, nuts and steel plates to strengthened the wall fence and posts (Material Prepare & Submit) (FENCES) | 4d | 2026-07-06 A | 2026-07-19 A | WAD.S.1080 SS+37d, WAD.S.1360 | 100% |  | 2026-08-24 | 2026-08-27 |  |  | Engineers [46.48 h] |
| WAD.S.1500 |  | bitumen waterproofing paint on concrete surfaces (Material Prepare & Submit) (FENCES) | 4d | 2026-07-06 A | 2026-07-19 A | WAD.S.1080 SS+37d, WAD.S.1400 | 100% |  | 2026-08-19 | 2026-08-23 |  |  | Engineers [46.48 h] |
| WAD.S.3070 |  | GROUNDING (Material Prepare & Submit) (GUARD HOUSE) | 4d | 2026-07-06 A | 2026-07-19 A | WAD.S.1080 SS+95d, WAD.S.2830 | 100% |  | 2026-10-26 | 2026-10-29 |  |  | Engineers [46.48 h] |
| WAD.S.3080 |  | ROAD WORKS (Material Prepare & Submit) (GUARD HOUSE) | 4d | 2026-07-06 A | 2026-07-19 A | WAD.S.1080 SS+94d, WAD.S.2830 | 100% |  | 2026-10-26 | 2026-10-29 |  |  | Engineers [46.48 h] |
| WAD.S.3580 |  | FIRE PROTECTION SYSTEM (fire extinguisher) (Material Prepare & Submit) (GUARD HOUSE) | 4d | 2026-07-06 A | 2026-07-19 A | WAD.S.1080 SS+99d | 100% |  | 2026-10-31 | 2026-11-03 |  |  | Engineers [46.48 h] |
| WAD.S.2830 |  | Concrete Masonry (200mm thick ) (Material Prepare & Submit) (GUARD HOUSE) | 4d | 2026-07-14 A | 2026-07-16 A | WAD.S.1080 SS+91d, WAD.S.2700 | 100% |  | 2026-10-21 | 2026-10-25 |  |  | Engineers [46.48 h] |
| WAD.S.2880 |  | Concrete Masonry (100mm thick ) (Material Prepare & Submit) (GUARD HOUSE) | 4d | 2026-07-14 A | 2026-07-16 A | WAD.S.1080 SS+92d, WAD.S.2700 | 100% |  | 2026-10-22 | 2026-10-26 |  |  | Engineers [46.48 h] |
| WAD.S.1350 |  | Backfilling Works (Material Prepare & Submit) | 4d | 2026-08-09 A | 2026-08-12 A | WAD.S.1080 SS | 100% |  |  |  |  |  | Engineers [46.48 h] |
| WAD.S.2630 |  | Manhole depth not exceeding 4.0m (Material Prepare & Submit) (GUARD HOUSE) | 4d | 2026-09-14 A | 2026-10-27 | WAD.S.1080 SS+58d | 85% | 0.6d | 2026-09-14 | 2026-09-17 | -20.7d | 0d | Engineers [46.48 h] |
| WAD.S.2690 |  | GRP Pipes laid in trenches(Material Prepare & Submit) (GUARD HOUS | 4d | 2026-09-14 A | 2026-10-27 | WAD.S.1080 SS+40d, WAD.S.1400 | 85% | 0.6d | 2026-09-14 | 2026-09-17 | -29.5d | 0d | Engineers [46.48 h] |
| WAD.S.2700 |  | 100 mm GRP pipe service connections (Material Prepare & Submit) (GUARD HOUSE) | 4d | 2026-09-14 A | 2026-10-27 | WAD.S.1080 SS+45d, WAD.S.1400 | 85% | 0.6d | 2026-09-14 | 2026-09-17 | -34.9d | 0d | Engineers [46.48 h] |
| WAD.S.2900 |  | SIDEWALKS AND CURBS (Material Prepare & Submit) (GUARD HOUSE) | 4d | 2026-09-19 A | 2026-10-28 | WAD.S.1080 SS+45d, WAD.S.2700 | 85% | 0.6d | 2026-09-19 | 2026-09-22 | -32.05d | 0d | Engineers [46.48 h] |
| WAD.S.4700 |  | UNDERGROUND DISTRIBUTION SYSTEM (Material Prepare & Submit) (GUARD HOUSE) | 4d | 2026-09-27 A | 2026-10-27 | WAD.S.1080 SS+70d | 85% | 0.6d | 2026-09-27 | 2026-09-30 | -19.95d | 0d | Engineers [46.48 h] |
|  | 2 | **Long Lead Items** |  | 2026-07-05 | 2026-10-28 |  |  |  |  |  |  |  |  |
| WAD.S.1490 |  | Intrusion Detection system including processor control units items and joints (Material Prepare & Submit) (FENCES) | 4d | 2026-07-05 A | 2026-10-27 | WAD.S.1080 SS+35d, WAD.S.1410 | 85% | 0.6d | 2026-09-16 | 2026-09-20 | -44.46d | 0d | Engineers [46.48 h] |
| WAD.S.3220 |  | WATER SUPPLY SYSTEM (Material Prepare & Submit) (GUARD HOUSE) | 4d | 2026-07-05 A | 2026-10-27 | WAD.S.1080 SS+62d | 85% | 0.6d | 2026-10-27 | 2026-10-31 | -22.9d | 0d | Engineers [46.48 h] |
| WAD.S.3230 |  | SEWER AND DRAINAGE SYSTEM (Material Prepare & Submit) (GUARD HOUSE) | 4d | 2026-07-05 A | 2026-10-28 | WAD.S.1080 SS+63d, WAD.S.2890 | 85% | 0.6d | 2026-10-27 | 2026-10-31 | -24.1d | 0d | Engineers [46.48 h] |
| WAD.S.3250 |  | HEATING, VENTILATION AND AIR CONDITIONING (Material Prepare & Submit) (GUARD HOUSE) | 4d | 2026-07-05 A | 2026-10-28 | WAD.S.1080 SS+66d, WAD.S.2890 | 85% | 0.6d | 2026-10-27 | 2026-10-31 | -23.5d | 0d | Engineers [46.48 h] |
| WAD.S.1410 |  | fix galvanized steel chain link gate including all necessary associated (Material Prepare & Submit) (FENCES) | 4d | 2026-07-06 A | 2026-07-19 A | WAD.S.1080 SS+57d, WAD.S.1360 | 100% |  | 2026-09-12 | 2026-09-15 |  |  | Engineers [46.48 h] |
| WAD.S.1580 |  | structural steel members and plates for main sliding gates (Material Prepare & Submit) (FENCES) | 4d | 2026-07-06 A | 2026-07-19 A | WAD.S.1080 SS+68d | 100% |  | 2026-09-24 | 2026-09-28 |  |  | Engineers [46.48 h] |
| WAD.S.1520 |  | Handholes\ Manholes (Material Prepare & Submit) (FENCES) | 4d | 2026-09-08 A | 2026-10-28 | WAD.S.1080 SS+54d, WAD.S.1490 | 85% | 0.6d | 2026-09-08 | 2026-09-12 | -21.3d | 0d | Engineers [46.48 h] |
| WAD.S.3150 |  | folding & sliding mounter combination ladder for building maintenance purpose (Material Prepare & Submit) (GUARD HOUSE) | 4d | 2026-09-08 A | 2026-10-28 | WAD.S.1080 SS+50d, WAD.S.2890 | 85% | 0.6d | 2026-09-08 | 2026-09-12 | -34.6d | 0d | Engineers [46.48 h] |
| WAD.S.3050 |  | Workstation chair (Material Prepare & Submit) (GUARD HOUSE) | 4d | 2026-09-14 A | 2026-10-27 | WAD.S.1080 SS+50d | 85% | 0.6d | 2026-09-14 | 2026-09-17 | -33.4d | 0d | Engineers [46.48 h] |
| WAD.S.3160 |  | overflow galvanized steel roof scupper (Material Prepare & Submit) (GUARD HOUSE) | 4d | 2026-09-14 A | 2026-10-27 | WAD.S.1080 SS+50d | 85% | 0.6d | 2026-09-14 | 2026-09-17 | -33.4d | 1.2d | Engineers [46.48 h] |
| WAD.S.3170 |  | counter desk (Material Prepare & Submit) (GUARD HOUSE) | 4d | 2026-09-14 A | 2026-10-27 | WAD.S.1080 SS+50d | 85% | 0.6d | 2026-09-14 | 2026-09-17 | -33.4d | 1.2d | Engineers [46.48 h] |
| WAD.S.3180 |  | install ceramic wall tiles (Material Prepare & Submit) (GUARD HOUSE) | 4d | 2026-09-14 A | 2026-10-27 | WAD.S.1080 SS+50d | 85% | 0.6d | 2026-09-14 | 2026-09-17 | -33.4d | 1.2d | Engineers [46.48 h] |
| WAD.S.3190 |  | PANEL SIGNAGE (Material Prepare & Submit) (GUARD HOUSE) | 4d | 2026-09-14 A | 2026-10-27 | WAD.S.1080 SS+50d | 85% | 0.6d | 2026-09-14 | 2026-09-17 | -33.4d | 1.2d | Engineers [46.48 h] |
| WAD.S.3200 |  | COMMUNICATIONS BACKBONE CABLING (Material Prepare & Submit) (GUARD HOUSE) | 4d | 2026-09-14 A | 2026-10-27 | WAD.S.1080 SS+50d | 85% | 0.6d | 2026-09-14 | 2026-09-17 | -33.4d | 1.2d | Engineers [46.48 h] |
| WAD.S.3210 |  | card reader IN/OUT (Material Prepare & Submit) (GUARD HOUSE) | 4d | 2026-09-14 A | 2026-10-27 | WAD.S.1080 SS+52d | 85% | 0.6d | 2026-09-14 | 2026-09-17 | -29.1d | 0d | Engineers [46.48 h] |
| WAD.S.3240 |  | SUPPLY AND INSTALL PLUMBING FIXTURES (Material Prepare & Submit) (GUARD HOUSE) | 4d | 2026-09-14 A | 2026-10-27 | WAD.S.1080 SS+53d | 85% | 0.6d | 2026-09-14 | 2026-09-17 | -28.9d | 5.7d | Engineers [46.48 h] |
| WAD.S.2840 |  | ceramic floor tiles (Material Prepare & Submit) (GUARD HOUSE) | 4d | 2026-09-19 A | 2026-10-28 | WAD.S.1080 SS+53d, WAD.S.2700 | 85% | 0.6d | 2026-09-19 | 2026-09-22 | -24.6d | 0d | Engineers [46.48 h] |
| WAD.S.2850 |  | Riyadh stone cladding (Material Prepare & Submit) (GUARD HOUSE) | 4d | 2026-09-19 A | 2026-10-28 | WAD.S.1080 SS+53d, WAD.S.2700 | 85% | 0.6d | 2026-09-19 | 2026-09-22 | -28.9d | 0d | Engineers [46.48 h] |
| WAD.S.2860 |  | UPS (Material Prepare & Submit) (GUARD HOUSE) | 4d | 2026-09-19 A | 2026-10-28 | WAD.S.1080 SS+45d, WAD.S.2700 | 85% | 0.6d | 2026-09-19 | 2026-09-22 | -29.5d | 0d | Engineers [46.48 h] |
| WAD.S.2890 |  | Panel boards (Material Prepare & Submit) (GUARD HOUSE) | 4d | 2026-09-19 A | 2026-10-28 | WAD.S.1080 SS+42d, WAD.S.2700 | 85% | 0.6d | 2026-09-19 | 2026-09-22 | -34.6d | 0d | Engineers [46.48 h] |
| WAD.S.3560 |  | aluminum framed double glazed windows (Material Prepare & Submit) (GUARD HOUSE) | 4d | 2026-09-19 A | 2026-10-28 | WAD.S.1080 SS+55d, WAD.S.3050 | 85% | 0.6d | 2026-09-19 | 2026-09-22 | -26.4d | 0d | Engineers [46.48 h] |
| WAD.S.3570 |  | Roller blind (Material Prepare & Submit) (GUARD HOUSE) | 4d | 2026-09-19 A | 2026-10-28 | WAD.S.1080 SS+55d, WAD.S.3050 | 85% | 0.6d | 2026-09-19 | 2026-09-22 | -33.4d | 0d | Engineers [46.48 h] |
| WAD.S.3590 |  | DATA COMMUNICATIONS (Material Prepare & Submit) (GUARD HOUSE) | 4d | 2026-09-19 A | 2026-10-28 | WAD.S.1080 SS+55d, WAD.S.3050 | 85% | 0.6d | 2026-09-19 | 2026-09-22 | -26.5d | 0d | Engineers [46.48 h] |
| WAD.S.3710 |  | COMPUTERS AND RELATED PERIPHERALS (Material Prepare & Submit) (GUARD HOUSE) | 4d | 2026-09-19 A | 2026-10-28 | WAD.S.1080 SS+50d, WAD.S.3050 | 85% | 0.6d | 2026-09-19 | 2026-09-22 | -29.2d | 0d | Engineers [46.48 h] |
| WAD.S.3030 |  | PANTRY CABINET (Material Prepare & Submit) (GUARD HOUSE) | 4d | 2026-09-23 A | 2026-10-28 | WAD.S.1080 SS+50d, WAD.S.2860 | 85% | 0.6d | 2026-09-23 | 2026-09-27 | -29.5d | 0d | Engineers [46.48 h] |
| WAD.S.3040 |  | 20mm thick black granite (Material Prepare & Submit) (GUARD HOUSE) | 4d | 2026-09-23 A | 2026-10-28 | WAD.S.1080 SS+60d, WAD.S.2860 | 85% | 0.6d | 2026-09-23 | 2026-09-27 | -22d | 0d | Engineers [46.48 h] |
| WAD.S.3060 |  | Safety Disconnect Switches complete with busbar, frame box (Material Prepare & Submit) (GUARD HOUSE) | 4d | 2026-09-23 A | 2026-10-28 | WAD.S.1080 SS+50d, WAD.S.2860 | 85% | 0.6d | 2026-09-23 | 2026-09-27 | -28.6d | 0.9d | Engineers [46.48 h] |
| WAD.S.3300 |  | heavy steel cover with frame for tanks (Material Prepare & Submit) (GUARD HOUSE) | 4d | 2026-09-23 A | 2026-10-28 | WAD.S.1080 SS+63d, WAD.S.2890 | 85% | 0.6d | 2026-09-23 | 2026-09-27 | -27.1d | 0d | Engineers [46.48 h] |
| WAD.S.3310 |  | HOLLOW METAL DOORS AND FRAMES (Material Prepare & Submit) (GUARD HOUSE) | 4d | 2026-09-23 A | 2026-10-28 | WAD.S.1080 SS+55d, WAD.S.2890 | 85% | 0.6d | 2026-09-23 | 2026-09-27 | -27.2d | 0d | Engineers [46.48 h] |
| WAD.S.3320 |  | ALUMINIUM DOORS (Material Prepare & Submit) (GUARD HOUSE) | 4d | 2026-09-23 A | 2026-10-28 | WAD.S.1080 SS+55d, WAD.S.2890 | 85% | 0.6d | 2026-09-23 | 2026-09-27 | -27.1d | 0d | Engineers [46.48 h] |
| WAD.S.3330 |  | TOILET AND BATH ACCESSROIES (Material Prepare & Submit) (GUARD HOUSE) | 4d | 2026-09-23 A | 2026-10-28 | WAD.S.1080 SS+60d, WAD.S.2890 | 85% | 0.6d | 2026-09-23 | 2026-09-27 | -22d | 0d | Engineers [46.48 h] |
| WAD.S.3340 |  | Waste Receptacle (Material Prepare & Submit) (GUARD HOUSE) | 4d | 2026-09-23 A | 2026-10-28 | WAD.S.1080 SS+55d, WAD.S.2890 | 85% | 0.6d | 2026-09-23 | 2026-09-27 | -28.3d | 0d | Engineers [46.48 h] |
| WAD.S.3350 |  | LIGHTING FIXTURES (Material Prepare & Submit) (GUARD HOUSE) | 4d | 2026-09-23 A | 2026-10-28 | WAD.S.1080 SS+55d, WAD.S.2890 | 85% | 0.6d | 2026-09-23 | 2026-09-27 | -27.6d | 0d | Engineers [46.48 h] |
| WAD.S.3360 |  | Access control panel (Material Prepare & Submit) (GUARD HOUSE) | 4d | 2026-09-23 A | 2026-10-28 | WAD.S.1080 SS+55d, WAD.S.2890 | 85% | 0.6d | 2026-09-23 | 2026-09-27 | -29.2d | 0d | Engineers [46.48 h] |
| WAD.S.3370 |  | VIDEO SURVEILLANCE (Material Prepare & Submit) (GUARD HOUSE) | 4d | 2026-09-23 A | 2026-10-28 | WAD.S.1080 SS+55d, WAD.S.2890 | 85% | 0.6d | 2026-09-23 | 2026-09-27 | -31.2d | 0d | Engineers [46.48 h] |

| ID | WBS | Activity | Duration | Start | Finish | Predecessors | Complete | Remaining | Planned start | Planned finish | Total float | Free float | Resources | Cost |
| --- | --- | --- | --- | --- | --- | --- | --- | --- | --- | --- | --- | --- | --- | --- |
|  | 2 | **Material Review & Approve** |  | 2026-06-25 | 2026-11-04 |  |  |  |  |  |  |  |  |  |
|  | 1 | **Short Lead Items** |  | 2026-07-06 | 2026-10-29 |  |  |  |  |  |  |  |  |  |
| WAD.S.1390 |  | structural steel beams, posts and rods for wall fence (Material Review & Approve) (FENCES) | 6d | 2026-07-06 A | 2026-07-19 A | WAD.S.1360 | 100% |  | 2026-08-24 | 2026-08-30 |  |  | Engineering [48]; Engineers [46.48 h] | 9,734.49 |
| WAD.S.1440 |  | tubes, bolts, nuts and steel plates to strengthened the wall fence and posts (Material Review & Approve) (FENCES) | 6d | 2026-07-06 A | 2026-07-19 A | WAD.S.1400 | 100% |  | 2026-08-29 | 2026-09-03 |  |  | Engineering [48]; Engineers [46.48 h] | 9,734.49 |
| WAD.S.1550 |  | bitumen waterproofing paint on concrete surfaces (Material Review & Approve) (FENCES) | 6d | 2026-07-06 A | 2026-07-19 A | WAD.S.1500 | 100% |  | 2026-08-24 | 2026-08-30 |  |  | Engineering [48]; Engineers [46.48 h] | 9,734.49 |
| WAD.S.2990 |  | Concrete Masonry (200mm thick ) (Material Review & Approve) (GUARD HOUSE) | 6d | 2026-07-06 A | 2026-07-19 A | WAD.S.2830 | 100% |  | 2026-10-26 | 2026-11-01 |  |  | Engineering [48]; Engineers [46.48 h] | 9,734.49 |
| WAD.S.3120 |  | Concrete Masonry (100mm thick ) (Material Review & Approve) (GUARD HOUSE) | 6d | 2026-07-06 A | 2026-07-19 A | WAD.S.2880 | 100% |  | 2026-10-27 | 2026-11-02 |  |  | Engineering [48]; Engineers [46.48 h] | 9,734.49 |
| WAD.S.3540 |  | GROUNDING (Material Review & Approve) (GUARD HOUSE) | 6d | 2026-07-06 A | 2026-07-19 A | WAD.S.3070 | 100% |  | 2026-10-31 | 2026-11-05 |  |  | Engineering [48]; Engineers [46.48 h] | 9,734.49 |
| WAD.S.4060 |  | FIRE PROTECTION SYSTEM (fire extinguisher) (Material Review & Approve) (GUARD HOUSE) | 6d | 2026-07-06 A | 2026-07-19 A | WAD.S.3580 | 100% |  | 2026-11-04 | 2026-11-10 |  |  | Engineering [48]; Engineers [46.48 h] | 9,734.49 |
| WAD.S.3550 |  | ROAD WORKS (Material Review & Approve) (GUARD HOUSE) | 6d | 2026-07-15 A | 2026-10-29 | WAD.S.3080 | 60% | 2.4d | 2026-10-31 | 2026-11-05 | -34.9d | 0d | Engineering [48]; Engineers [46.48 h] | 9,734.49 |
| WAD.S.2810 |  | GRP Pipes laid in trenches(Material Review & Approve) (GUARD HOUS | 6d | 2026-08-02 A | 2026-08-02 A | WAD.S.2690 | 100% |  | 2026-08-27 | 2026-09-02 |  |  | Engineering [48]; Engineers [46.48 h] | 9,734.49 |
| WAD.S.2820 |  | 100 mm GRP pipe service connections(Material Review & Approve) (GUARD HOUSE) | 6d | 2026-08-02 A | 2026-08-02 A | WAD.S.2700 | 100% |  | 2026-09-02 | 2026-09-08 |  |  | Engineering [48]; Engineers [46.48 h] | 9,734.49 |
| WAD.S.1380 |  | Backfilling Works (Material Review & Approve) | 6d | 2026-08-12 A | 2026-08-18 A | WAD.S.1350 | 100% |  |  |  |  |  | Engineering [48]; Engineers [46.48 h] | 9,734.49 |
| WAD.S.2680 |  | Manhole depth not exceeding 4.0m (Material Review & Approve) (GUARD HOUSE) | 6d | 2026-10-19 A | 2026-10-28 | WAD.S.2630 | 85% | 0.9d | 2026-10-19 | 2026-10-26 | -20.7d | 0d | Engineering [48]; Engineers [46.48 h] | 9,734.49 |
| WAD.S.4840 |  | UNDERGROUND DISTRIBUTION SYSTEM (Material Review & Approve) (GUARD HOUSE) | 6d | 2026-10-19 A | 2026-10-28 | WAD.S.4700 | 85% | 0.9d | 2026-10-19 | 2026-10-26 | -19.95d | 0d | Engineering [48]; Engineers [46.48 h] | 9,734.49 |
| WAD.S.3140 |  | SIDEWALKS AND CURBS (Material Review & Approve) (GUARD HOUSE) | 6d | 2026-10-21 A | 2026-10-29 | WAD.S.2900 | 85% | 0.9d | 2026-10-21 | 2026-10-28 | -32.05d | 0d | Engineering [48]; Engineers [46.48 h] | 9,734.49 |
|  | 2 | **Long Lead Items** |  | 2026-06-25 | 2026-11-04 |  |  |  |  |  |  |  |  |  |
| WAD.S.1480 |  | fix galvanized steel chain link gate including all necessary associated (Material Review & Approve) (FENCES) | 6d | 2026-06-25 A | 2026-06-27 A | WAD.S.1410 | 100% |  | 2026-09-16 | 2026-09-22 |  |  | Engineering [48]; Engineers [46.48 h] | 9,734.49 |
| WAD.S.1510 |  | Intrusion Detection system including processor control units items and joints (Material Review & Approve) (FENCES) | 6d | 2026-07-05 A | 2026-10-28 | WAD.S.1490, WAD.S.1490 SS | 85% | 0.9d | 2026-09-21 | 2026-09-27 | -44.46d | 0d | Engineering [48]; Engineers [46.48 h] | 9,734.49 |
| WAD.S.3670 |  | WATER SUPPLY SYSTEM (Material Review & Approve) (GUARD HOUSE) | 6d | 2026-07-05 A | 2026-10-28 | WAD.S.3220, WAD.S.3220 SS | 85% | 0.9d | 2026-11-01 | 2026-11-07 | -22.9d | 0d | Engineering [48]; Engineers [46.48 h] | 9,734.49 |
| WAD.S.3680 |  | SEWER AND DRAINAGE SYSTEM (Material Review & Approve) (GUARD HOUSE) | 6d | 2026-07-05 A | 2026-10-29 | WAD.S.3230, WAD.S.3670 SS, WAD.S.3230 SS | 85% | 0.9d | 2026-11-01 | 2026-11-07 | -24.1d | 0d | Engineering [48]; Engineers [46.48 h] | 9,734.49 |
| WAD.S.3700 |  | HEATING, VENTILATION AND AIR CONDITIONING (Material Review & Approve) (GUARD HOUSE) | 6d | 2026-07-05 A | 2026-10-29 | WAD.S.3250, WAD.S.3250 SS | 85% | 0.9d | 2026-11-01 | 2026-11-07 | -23.5d | 0d | Engineering [48]; Engineers [46.48 h] | 9,734.49 |
| WAD.S.2190 |  | structural steel members and plates for main sliding gates (Material Review & Approve) (FENCES) | 6d | 2026-07-06 A | 2026-07-19 A | WAD.S.1580 | 100% |  | 2026-09-29 | 2026-10-05 |  |  | Engineering [48]; Engineers [46.48 h] | 9,734.49 |
| WAD.S.3800 |  | TOILET AND BATH ACCESSROIES (Material Review & Approve) (GUARD HOUSE) | 6d | 2026-07-12 A | 2026-10-29 | WAD.S.3330 | 85% | 0.9d | 2026-09-20 | 2026-09-26 | -22d | 0d | Engineering [48]; Engineers [46.48 h] | 9,734.49 |
| WAD.S.3690 |  | SUPPLY AND INSTALL PLUMBING FIXTURES (Material Review & Approve) (GUARD HOUSE) | 6d | 2026-07-13 A | 2026-11-04 | WAD.S.3240, WAD.S.3240 FF, WAD.S.3650 FF | 75% | 1.5d | 2026-09-12 | 2026-09-17 | -34.6d | 0d | Engineering [48]; Engineers [46.48 h] | 9,734.49 |
| WAD.S.3530 |  | Safety Disconnect Switches complete with busbar, frame box (Material Review & Approve) (GUARD HOUSE) | 6d | 2026-07-28 A | 2026-08-01 A | WAD.S.3060, WAD.S.3500 FF | 100% |  | 2026-09-12 | 2026-09-17 |  |  | Engineering [48]; Engineers [46.48 h] | 9,734.49 |
| WAD.S.1650 |  | Handholes\ Manholes (Material Review & Approve) (FENCES) | 6d | 2026-10-19 A | 2026-10-29 | WAD.S.1520 | 85% | 0.9d | 2026-10-19 | 2026-10-26 | -21.3d | 0d | Engineering [48]; Engineers [46.48 h] | 9,734.49 |
| WAD.S.3000 |  | ceramic floor tiles (Material Review & Approve) (GUARD HOUSE) | 6d | 2026-10-21 A | 2026-10-29 | WAD.S.2840 | 85% | 0.9d | 2026-10-21 | 2026-10-28 | -24.6d | 0d | Engineering [48]; Engineers [46.48 h] | 9,734.49 |
| WAD.S.3010 |  | install Riyadh stone cladding (Material Review & Approve) (GUARD HOUSE) | 6d | 2026-10-21 A | 2026-10-29 | WAD.S.2850 | 85% | 0.9d | 2026-10-21 | 2026-10-28 | -28.9d | 0d | Engineering [48]; Engineers [46.48 h] | 9,734.49 |
| WAD.S.3020 |  | UPS (Material Review & Approve) (GUARD HOUSE) | 6d | 2026-10-21 A | 2026-10-29 | WAD.S.2860 | 85% | 0.9d | 2026-10-21 | 2026-10-28 | -23.9d | 0d | Engineering [48]; Engineers [46.48 h] | 9,734.49 |
| WAD.S.3130 |  | Panel boards (Material Review & Approve) (GUARD HOUSE) | 6d | 2026-10-21 A | 2026-10-29 | WAD.S.2890, WAD.S.3010 FF | 85% | 0.9d | 2026-10-21 | 2026-10-28 | -28.9d | 0d | Engineering [48]; Engineers [46.48 h] | 9,734.49 |
| WAD.S.3500 |  | PANTRY CABINET (Material Review & Approve) (GUARD HOUSE) | 6d | 2026-10-22 A | 2026-10-29 | WAD.S.3030, WAD.S.3130 FF | 85% | 0.9d |  |  | -29.5d | 0d | Engineering [48]; Engineers [46.48 h] | 9,734.49 |
| WAD.S.3510 |  | 20mm thick black granite (Material Review & Approve) (GUARD HOUSE) | 6d | 2026-10-22 A | 2026-10-29 | WAD.S.3040, WAD.S.3020 FF | 85% | 0.9d |  |  | -22d | 0d | Engineering [48]; Engineers [46.48 h] | 9,734.49 |
| WAD.S.3520 |  | Workstation chair (Material Review & Approve) (GUARD HOUSE) | 6d | 2026-10-22 A | 2026-10-29 | WAD.S.3050, WAD.S.3500 FF | 85% | 0.9d |  |  | -23.3d | 0d | Engineering [48]; Engineers [46.48 h] | 9,734.49 |
| WAD.S.3660 |  | card reader IN/OUT (Material Review & Approve) (GUARD HOUSE) | 6d | 2026-10-27 | 2026-11-03 | WAD.S.3210, WAD.S.3000 FF |  |  |  |  | -29.1d | 0d | Engineering [48]; Engineers [46.48 h] | 9,734.49 |
| WAD.S.4040 |  | aluminum framed double glazed windows (Material Review & Approve) (GUARD HOUSE) | 6d | 2026-10-28 | 2026-11-04 | WAD.S.3560 |  |  |  |  | -26.4d | 0d | Engineering [48]; Engineers [46.48 h] | 9,734.49 |
| WAD.S.4050 |  | Roller blind (Material Review & Approve) (GUARD HOUSE) | 6d | 2026-10-28 | 2026-11-04 | WAD.S.3570 |  |  |  |  | -33.4d | 0d | Engineering [48]; Engineers [46.48 h] | 9,734.49 |
| WAD.S.4070 |  | DATA COMMUNICATIONS (Material Review & Approve) (GUARD HOUSE) | 6d | 2026-10-28 | 2026-11-04 | WAD.S.3590 |  |  |  |  | -26.5d | 0d | Engineering [48]; Engineers [46.48 h] | 9,734.49 |
| WAD.S.4080 |  | COMPUTERS AND RELATED PERIPHERALS (Material Review & Approve) (GUARD HOUSE) | 6d | 2026-10-28 | 2026-11-04 | WAD.S.3710 |  |  |  |  | -29.2d | 0d | Engineering [48]; Engineers [46.48 h] | 9,734.49 |
| WAD.S.3600 |  | folding & sliding mounter combination ladder for building maintenance purpose (Material Review & Approve) (GUARD HOUSE) | 6d | 2026-10-28 | 2026-11-04 | WAD.S.3150, WAD.S.3530 FF |  |  |  |  | -34.6d | 0d | Engineering [48]; Engineers [46.48 h] | 9,734.49 |
| WAD.S.3610 |  | overflow galvanized steel roof scupper (Material Review & Approve) (GUARD HOUSE) | 6d | 2026-10-28 | 2026-11-04 | WAD.S.3160, WAD.S.3600 FF |  |  |  |  | -34.6d | 0d | Engineering [48]; Engineers [46.48 h] | 9,734.49 |
| WAD.S.3620 |  | counter desk (Material Review & Approve) (GUARD HOUSE) | 6d | 2026-10-28 | 2026-11-04 | WAD.S.3170, WAD.S.3610 FF |  |  |  |  | -34.6d | 0d | Engineering [48]; Engineers [46.48 h] | 9,734.49 |
| WAD.S.3630 |  | install ceramic wall tiles (Material Review & Approve) (GUARD HOUSE) | 6d | 2026-10-28 | 2026-11-04 | WAD.S.3180, WAD.S.3620 FF |  |  |  |  | -34.6d | 0d | Engineering [48]; Engineers [46.48 h] | 9,734.49 |
| WAD.S.3640 |  | PANEL SIGNAGE (Material Review & Approve) (GUARD HOUSE) | 6d | 2026-10-28 | 2026-11-04 | WAD.S.3190, WAD.S.3630 FF |  |  |  |  | -34.6d | 0d | Engineering [48]; Engineers [46.48 h] | 9,734.49 |
| WAD.S.3650 |  | COMMUNICATIONS BACKBONE CABLING (Material Review & Approve) (GUARD HOUSE) | 6d | 2026-10-28 | 2026-11-04 | WAD.S.3200, WAD.S.3640 FF |  |  |  |  | -34.6d | 0d | Engineering [48]; Engineers [46.48 h] | 9,734.49 |
| WAD.S.3770 |  | heavy steel cover with frame for tanks (Material Review & Approve) (GUARD HOUSE) | 6d | 2026-10-28 | 2026-11-04 | WAD.S.3300, WAD.S.3670 FF |  |  |  |  | -27.1d | 0d | Engineering [48]; Engineers [46.48 h] | 9,734.49 |
| WAD.S.3780 |  | HOLLOW METAL DOORS AND FRAMES (Material Review & Approve) (GUARD HOUSE) | 6d | 2026-10-28 | 2026-11-04 | WAD.S.3310, WAD.S.3310 FF |  |  |  |  | -27.2d | 0d | Engineering [48]; Engineers [46.48 h] | 9,734.49 |
| WAD.S.3790 |  | ALUMINIUM DOORS (Material Review & Approve) (GUARD HOUSE) | 6d | 2026-10-28 | 2026-11-04 | WAD.S.3320, WAD.S.3320 FF |  |  |  |  | -27.1d | 0d | Engineering [48]; Engineers [46.48 h] | 9,734.49 |
| WAD.S.3810 |  | Waste Receptacle (Material Review & Approve) (GUARD HOUSE) | 6d | 2026-10-28 | 2026-11-04 | WAD.S.3340 |  |  |  |  | -28.3d | 0d | Engineering [48]; Engineers [46.48 h] | 9,734.49 |
| WAD.S.3820 |  | LIGHTING FIXTURES (Material Review & Approve) (GUARD HOUSE) | 6d | 2026-10-28 | 2026-11-04 | WAD.S.3350 |  |  |  |  | -27.6d | 0d | Engineering [48]; Engineers [46.48 h] | 9,734.49 |
| WAD.S.3830 |  | Access control panel (Material Review & Approve) (GUARD HOUSE) | 6d | 2026-10-28 | 2026-11-04 | WAD.S.3360 |  |  |  |  | -29.2d | 0d | Engineering [48]; Engineers [46.48 h] | 9,734.49 |
| WAD.S.3840 |  | VIDEO SURVEILLANCE (Material Review & Approve) (GUARD HOUSE) | 6d | 2026-10-28 | 2026-11-04 | WAD.S.3370 |  |  |  |  | -31.2d | 0d | Engineering [48]; Engineers [46.48 h] | 9,734.49 |

| ID | WBS | Activity | Duration | Start | Finish | Predecessors | Complete | Remaining | Planned start | Planned finish | Total float | Free float | Resources | Cost |
| --- | --- | --- | --- | --- | --- | --- | --- | --- | --- | --- | --- | --- | --- | --- |
|  | 7 | **Procurement** |  | 2026-06-08 | 2026-11-07 |  |  |  |  |  |  |  |  |  |
|  | 5 | **Fabrication & Delivery** |  | 2026-06-08 | 2026-11-07 |  |  |  |  |  |  |  |  |  |
|  | 1 | **Short Lead Items** |  | 2026-06-08 | 2026-10-31 |  |  |  |  |  |  |  |  |  |
| WAD.S.1430 |  | structural steel beams, posts and rods for wall fence (FENCES) | 4d | 2026-06-08 A | 2026-10-27 | WAD.S.1080 SS, WAD.S.1390 | 95% | 0.2d | 2026-08-31 | 2026-09-03 | -20.86d | 0.55d | Drivers [261.45 h]; Trcck [32 h]; Fence (Fabrication & Delivery) [32] | 385,553.09 |
| WAD.S.1540 |  | tubes, bolts, nuts and steel plates to strengthened the wall fence and posts (FENCES) | 3d | 2026-06-09 A | 2026-10-27 | WAD.S.1080 SS, WAD.S.1440 | 95% | 0.15d | 2026-09-05 | 2026-09-07 | -20.15d | 0.6d | Drivers [261.45 h]; Trcck [24 h]; Fence (Fabrication & Delivery) [24] | 385,553.09 |
| WAD.S.3730 |  | Concrete Masonry (200mm thick ) (GUARD HOUSE) | 3d | 2026-08-08 A | 2026-08-08 A | WAD.S.1080 SS, WAD.S.2990 | 100% |  | 2026-08-08 | 2026-08-10 |  |  | Procurment [24]; Drivers [261.45 h]; Trcck [24 h] | 11,453.81 |
| WAD.S.3890 |  | Concrete Masonry (100mm thick ) (GUARD HOUSE) | 2d | 2026-08-08 A | 2026-08-08 A | WAD.S.1080 SS, WAD.S.3120 | 100% |  | 2026-08-08 | 2026-08-09 |  |  | Procurment [16]; Drivers [261.45 h]; Trcck [16 h] | 11,453.81 |
| WAD.S.2180 |  | bitumen waterproofing paint on concrete surfaces (FENCES) | 4d | 2026-08-17 A | 2026-08-20 A | WAD.S.1080 SS, WAD.S.1550 | 100% |  |  |  |  |  | Drivers [261.45 h]; Trcck [32 h]; Fence (Fabrication & Delivery) [32] | 385,553.09 |
| WAD.S.1420 |  | Backfilling Works | 4d | 2026-08-18 A | 2026-08-22 A | WAD.S.1080 SS, WAD.S.1380 | 100% |  |  |  |  |  | Procurment [32]; Drivers [261.45 h]; Trcck [32 h] | 11,453.88 |
| WAD.S.3280 |  | GRP Pipes laid in trenches(Fabrication & Delivery) (GUARD HOUSE) | 6d | 2026-09-19 A | 2026-09-24 A | WAD.S.1080 SS, WAD.S.2810 | 100% |  |  |  |  |  | Procurment [48]; Drivers [261.45 h]; Trcck [48 h] | 11,453.81 |
| WAD.S.4780 |  | FIRE PROTECTION SYSTEM (fire extinguisher) (GUARD HOUSE) | 5d | 2026-09-23 A | 2026-10-27 | WAD.S.1080 SS, WAD.S.4060 | 85% | 0.75d | 2026-09-23 | 2026-09-28 | -18.75d | 25.71d | Procurment [40]; Drivers [261.45 h]; Trcck [40 h] | 11,453.81 |
| WAD.S.3290 |  | 100 mm GRP pipe service connections (GUARD HOUSE) | 6d | 2026-09-24 A | 2026-10-28 | WAD.S.1080 SS, WAD.S.2820 | 85% | 0.9d | 2026-09-24 | 2026-10-01 | -30.4d | 0d | Procurment [48]; Drivers [261.45 h]; Trcck [48 h] | 11,453.81 |
| WAD.S.4160 |  | GROUNDING (GUARD HOUSE) | 3d | 2026-09-24 A | 2026-10-28 | WAD.S.1080 SS, WAD.S.3540 | 85% | 0.45d | 2026-09-24 | 2026-09-28 | -19.05d | 25.41d | Procurment [24]; Drivers [261.45 h]; Trcck [24 h] | 11,453.81 |
| WAD.S.4170 |  | ROAD WORKS (GUARD HOUSE) | 6d | 2026-09-28 A | 2026-10-31 | WAD.S.1080 SS, WAD.S.3550 | 85% | 0.9d | 2026-09-28 | 2026-10-04 | -34.9d | 0d | Procurment [48]; Drivers [261.45 h]; Trcck [48 h] | 11,453.81 |
| WAD.S.2970 |  | Manhole depth not exceeding 4.0m (GUARD HOUSE) | 8d | 2026-10-01 A | 2026-10-29 | WAD.S.1080 SS, WAD.S.2680 | 85% | 1.2d | 2026-10-01 | 2026-10-11 | -20.7d | 0d | Procurment [64]; Drivers [261.45 h]; Trcck [64 h] | 11,453.81 |
| WAD.S.3910 |  | SIDEWALKS AND CURBS (GUARD HOUSE) | 7d | 2026-10-04 A | 2026-10-31 | WAD.S.1080 SS, WAD.S.3140 | 85% | 1.05d | 2026-10-04 | 2026-10-12 | -32.05d | 0d | Procurment [56]; Drivers [261.45 h]; Trcck [56 h] | 11,453.81 |
| WAD.S.5080 |  | UNDERGROUND DISTRIBUTION SYSTEM (GUARD HOUSE) | 3d | 2026-10-05 A | 2026-10-28 | WAD.S.1080 SS, WAD.S.4840 | 85% | 0.45d | 2026-10-05 | 2026-10-08 | -19.95d | 24.51d | Procurment [24]; Drivers [261.45 h]; Trcck [24 h] | 11,453.81 |
|  | 2 | **Long Lead Items** |  | 2026-08-22 | 2026-11-07 |  |  |  |  |  |  |  |  |  |
| WAD.S.1570 |  | fix galvanized steel chain link gate including all necessary associated (FENCES) | 15d | 2026-08-22 A | 2026-10-27 | WAD.S.1080 SS, WAD.S.1480 | 95% | 0.75d | 2026-08-22 | 2026-09-07 | -21.41d | 0d | Drivers [261.45 h]; Trcck [120 h]; Fence (Fabrication & Delivery) [120] | 385,553.09 |
| WAD.S.2470 |  | structural steel members and plates for main sliding gates (FENCES) | 14d | 2026-09-09 A | 2026-10-27 | WAD.S.1080 SS, WAD.S.2190 | 95% | 0.7d | 2026-09-09 | 2026-09-24 | -21.36d | 0.05d | Drivers [261.45 h]; Trcck [112 h]; Fence (Fabrication & Delivery) [112] | 385,553.09 |
| WAD.S.2170 |  | Intrusion Detection system including processor control units items and joints (FENCES) | 12d | 2026-09-24 A | 2026-10-29 | WAD.S.1080 SS, WAD.S.1510 | 90% | 1.2d | 2026-09-24 | 2026-10-08 | -44.46d | 0d | Drivers [261.45 h]; Trcck [96 h]; Fence (Fabrication & Delivery) [96] | 385,553.09 |
| WAD.S.4580 |  | WATER SUPPLY SYSTEM (GUARD HOUSE) | 13d | 2026-10-01 A | 2026-10-29 | WAD.S.1080 SS, WAD.S.3670 | 90% | 1.3d | 2026-10-01 | 2026-10-17 | -22.8d | 1.3d | Procurment [104]; Drivers [261.45 h]; Trcck [104 h] | 11,453.81 |
| WAD.S.2260 |  | Handholes\ Manholes (FENCES) | 12d | 2026-10-01 A | 2026-10-31 | WAD.S.1080 SS, WAD.S.1650 | 90% | 1.2d | 2026-10-01 | 2026-10-15 | -21.3d | 10.4d | Drivers [261.45 h]; Trcck [96 h]; Fence (Fabrication & Delivery) [96] | 385,553.09 |
| WAD.S.3740 |  | ceramic floor tiles (GUARD HOUSE) | 12d | 2026-10-04 A | 2026-10-31 | WAD.S.1080 SS, WAD.S.3000 | 90% | 1.2d | 2026-10-04 | 2026-10-18 | -23.75d | 0d | Procurment [96]; Drivers [261.45 h]; Trcck [96 h] | 11,453.81 |
| WAD.S.3750 |  | install Riyadh stone cladding (GUARD HOUSE) | 12d | 2026-10-04 A | 2026-10-31 | WAD.S.1080 SS, WAD.S.3010 | 90% | 1.2d | 2026-10-04 | 2026-10-18 | -21.9d | 0d | Procurment [96]; Drivers [261.45 h]; Trcck [96 h] | 11,453.81 |
| WAD.S.3760 |  | UPS (GUARD HOUSE) | 18d | 2026-10-04 A | 2026-10-31 | WAD.S.1080 SS, WAD.S.3020 | 90% | 1.8d | 2026-10-04 | 2026-10-25 | -23.9d | 7.3d | Procurment [144]; Drivers [261.45 h]; Trcck [144 h] | 11,453.81 |
| WAD.S.3900 |  | Panel boards (GUARD HOUSE) | 18d | 2026-10-04 A | 2026-10-31 | WAD.S.1080 SS, WAD.S.3130 | 90% | 1.8d | 2026-10-04 | 2026-10-25 | -21.9d | 22.56d | Procurment [144]; Drivers [261.45 h]; Trcck [144 h] | 11,453.81 |
| WAD.S.4610 |  | HEATING, VENTILATION AND AIR CONDITIONING (GUARD HOUSE) | 14d | 2026-10-04 A | 2026-11-01 | WAD.S.1080 SS, WAD.S.3700 | 90% | 1.4d | 2026-10-04 | 2026-10-20 | -23.5d | 0.25d | Procurment [112]; Drivers [261.45 h]; Trcck [112 h] | 11,453.81 |
| WAD.S.4590 |  | SEWER AND DRAINAGE SYSTEM (GUARD HOUSE) | 14d | 2026-10-05 A | 2026-11-01 | WAD.S.1080 SS, WAD.S.3680 | 90% | 1.4d | 2026-10-05 | 2026-10-21 | -24.1d | 0d | Procurment [112]; Drivers [261.45 h]; Trcck [112 h] | 11,453.81 |
| WAD.S.4650 |  | TOILET AND BATH ACCESSROIES (GUARD HOUSE) | 13d | 2026-10-05 A | 2026-10-31 | WAD.S.1080 SS, WAD.S.3800 | 90% | 1.3d | 2026-10-05 | 2026-10-20 | -22d | 22.46d | Procurment [104]; Drivers [261.45 h]; Trcck [104 h] | 11,453.81 |
| WAD.S.4120 |  | PANTRY CABINET (GUARD HOUSE) | 15d | 2026-10-05 A | 2026-11-01 | WAD.S.1080 SS, WAD.S.3500 | 90% | 1.5d | 2026-10-05 | 2026-10-22 | -24.2d | 5.55d | Procurment [120]; Drivers [261.45 h]; Trcck [120 h] | 11,453.81 |
| WAD.S.4130 |  | 20mm thick black granite (GUARD HOUSE) | 13d | 2026-10-05 A | 2026-10-31 | WAD.S.1080 SS, WAD.S.3510 | 90% | 1.3d | 2026-10-05 | 2026-10-20 | -22d | 22.46d | Procurment [104]; Drivers [261.45 h]; Trcck [104 h] | 11,453.81 |
| WAD.S.4140 |  | Workstation chair (GUARD HOUSE) | 16d | 2026-10-06 A | 2026-11-01 | WAD.S.1080 SS, WAD.S.3520 | 90% | 1.6d | 2026-10-06 | 2026-10-25 | -23.3d | 7.9d | Procurment [128]; Drivers [261.45 h]; Trcck [128 h] | 11,453.81 |
| WAD.S.4150 |  | Safety Disconnect Switches complete with busbar, frame box (GUARD HOUSE) | 17d | 2026-10-06 A | 2026-11-01 | WAD.S.1080 SS, WAD.S.3530 | 90% | 1.7d | 2026-10-06 | 2026-10-26 | -22.4d | 22.06d | Procurment [136]; Drivers [261.45 h]; Trcck [136 h] | 11,453.81 |
| WAD.S.4510 |  | folding & sliding mounter combination ladder for building maintenance purpose (GUARD HOUSE) | 13d | 2026-10-06 A | 2026-11-07 | WAD.S.1080 SS, WAD.S.3600 | 90% | 1.3d | 2026-10-06 | 2026-10-21 | -29.1d | 0d | Procurment [104]; Drivers [261.45 h]; Trcck [104 h] | 11,453.81 |
| WAD.S.4520 |  | overflow galvanized steel roof scupper (GUARD HOUSE) | 13d | 2026-10-07 A | 2026-11-07 | WAD.S.1080 SS, WAD.S.3610 | 85% | 1.95d | 2026-10-07 | 2026-10-22 | -29.75d | 0d | Procurment [104]; Drivers [261.45 h]; Trcck [104 h] | 11,453.81 |
| WAD.S.4530 |  | counter desk (GUARD HOUSE) | 14d | 2026-10-07 A | 2026-11-07 | WAD.S.1080 SS, WAD.S.3620 | 85% | 2.1d | 2026-10-07 | 2026-10-24 | -30.9d | 0d | Procurment [112]; Drivers [261.45 h]; Trcck [112 h] | 11,453.81 |
| WAD.S.4540 |  | install ceramic wall tiles (GUARD HOUSE) | 12d | 2026-10-07 A | 2026-11-07 | WAD.S.1080 SS, WAD.S.3630 | 85% | 1.8d | 2026-10-07 | 2026-10-21 | -27.8d | 0d | Procurment [96]; Drivers [261.45 h]; Trcck [96 h] | 11,453.81 |
| WAD.S.4570 |  | card reader IN/OUT (GUARD HOUSE) | 15d | 2026-10-10 A | 2026-11-05 | WAD.S.1080 SS, WAD.S.3660 | 90% | 1.5d | 2026-10-10 | 2026-10-27 | -29.1d | 0d | Procurment [120]; Drivers [261.45 h]; Trcck [120 h] | 11,453.81 |
| WAD.S.4760 |  | aluminum framed double glazed windows (GUARD HOUSE) | 12d | 2026-10-10 A | 2026-11-05 | WAD.S.1080 SS, WAD.S.4040 | 90% | 1.2d | 2026-10-10 | 2026-10-24 | -26.4d | 0d | Procurment [96]; Drivers [261.45 h]; Trcck [96 h] | 11,453.81 |
| WAD.S.4770 |  | Roller blind (GUARD HOUSE) | 12d | 2026-10-10 A | 2026-11-05 | WAD.S.1080 SS, WAD.S.4050 | 90% | 1.2d | 2026-10-10 | 2026-10-24 | -33.4d | 1.2d | Procurment [96]; Drivers [261.45 h]; Trcck [96 h] | 11,453.81 |
| WAD.S.4790 |  | DATA COMMUNICATIONS (GUARD HOUSE) | 13d | 2026-10-10 A | 2026-11-05 | WAD.S.1080 SS, WAD.S.4070 | 90% | 1.3d | 2026-10-10 | 2026-10-25 | -26.5d | 17.96d | Procurment [104]; Drivers [261.45 h]; Trcck [104 h] | 11,453.81 |
| WAD.S.4820 |  | COMPUTERS AND RELATED PERIPHERALS (GUARD HOUSE) | 10d | 2026-10-10 A | 2026-11-05 | WAD.S.1080 SS, WAD.S.4080 | 90% | 1d | 2026-10-10 | 2026-10-21 | -29.2d | 0d | Procurment [80]; Drivers [261.45 h]; Trcck [80 h] | 11,453.81 |
| WAD.S.4550 |  | PANEL SIGNAGE (GUARD HOUSE) | 14d | 2026-10-11 A | 2026-11-07 | WAD.S.1080 SS, WAD.S.3640 | 90% | 1.4d | 2026-10-11 | 2026-10-27 | -27.2d | 4d | Procurment [112]; Drivers [261.45 h]; Trcck [112 h] | 11,453.81 |
| WAD.S.4560 |  | COMMUNICATIONS BACKBONE CABLING (GUARD HOUSE) | 13d | 2026-10-11 A | 2026-11-07 | WAD.S.1080 SS, WAD.S.3650 | 90% | 1.3d | 2026-10-11 | 2026-10-26 | -27.1d | 17.36d | Procurment [104]; Drivers [261.45 h]; Trcck [104 h] | 11,453.81 |
| WAD.S.4600 |  | SUPPLY PLUMBING FIXTURES (GUARD HOUSE) | 13d | 2026-10-11 A | 2026-11-07 | WAD.S.1080 SS, WAD.S.3690 | 90% | 1.3d | 2026-10-11 | 2026-10-26 | -34.6d | 0d | Procurment [104]; Drivers [261.45 h]; Trcck [104 h] | 11,453.81 |
| WAD.S.4620 |  | heavy steel cover with frame for tanks (GUARD HOUSE) | 13d | 2026-10-11 A | 2026-11-07 | WAD.S.1080 SS, WAD.S.3770 | 90% | 1.3d | 2026-10-11 | 2026-10-26 | -27.1d | 17.36d | Procurment [104]; Drivers [261.45 h]; Trcck [104 h] | 11,453.81 |
| WAD.S.4630 |  | HOLLOW METAL DOORS AND FRAMES (GUARD HOUSE) | 14d | 2026-10-11 A | 2026-11-07 | WAD.S.1080 SS, WAD.S.3780 | 90% | 1.4d | 2026-10-11 | 2026-10-27 | -27.2d | 17.26d | Procurment [112]; Drivers [261.45 h]; Trcck [112 h] | 11,453.81 |
| WAD.S.4640 |  | ALUMINIUM DOORS (GUARD HOUSE) | 13d | 2026-10-11 A | 2026-11-07 | WAD.S.1080 SS, WAD.S.3790 | 90% | 1.3d | 2026-10-11 | 2026-10-26 | -27.1d | 17.36d | Procurment [104]; Drivers [261.45 h]; Trcck [104 h] | 11,453.81 |
| WAD.S.4660 |  | Waste Receptacle (GUARD HOUSE) | 15d | 2026-10-11 A | 2026-11-07 | WAD.S.1080 SS, WAD.S.3810 | 90% | 1.5d | 2026-10-11 | 2026-10-28 | -28.3d | 0d | Procurment [120]; Drivers [261.45 h]; Trcck [120 h] | 11,453.81 |
| WAD.S.4670 |  | LIGHTING FIXTURES (GUARD HOUSE) | 12d | 2026-10-11 A | 2026-11-05 | WAD.S.1080 SS, WAD.S.3820 | 90% | 1.2d | 2026-10-11 | 2026-10-25 | -27.6d | 0d | Procurment [96]; Drivers [261.45 h]; Trcck [96 h] | 11,453.81 |
| WAD.S.4680 |  | Access control panel (GUARD HOUSE) | 14d | 2026-10-11 A | 2026-11-07 | WAD.S.1080 SS, WAD.S.3830 | 90% | 1.4d | 2026-10-11 | 2026-10-27 | -29.2d | 0d | Procurment [112]; Drivers [261.45 h]; Trcck [112 h] | 11,453.81 |
| WAD.S.4690 |  | VIDEO SURVEILLANCE (GUARD HOUSE) | 14d | 2026-10-11 A | 2026-11-07 | WAD.S.1080 SS, WAD.S.3840 | 90% | 1.4d | 2026-10-11 | 2026-10-27 | -31.2d | 0d | Procurment [112]; Drivers [261.45 h]; Trcck [112 h] | 11,453.81 |

| ID | WBS | Activity | Duration | Start | Finish | Predecessors | Complete | Remaining | Planned start | Planned finish | Total float | Free float | Resources | Cost |
| --- | --- | --- | --- | --- | --- | --- | --- | --- | --- | --- | --- | --- | --- | --- |
|  | 8 | **Construction** |  | 2025-04-07 | 2026-11-26 |  |  |  |  |  |  |  |  |  |
|  | 1 | **FENCES** |  | 2025-11-11 | 2026-11-26 |  |  |  |  |  |  |  |  |  |
|  | 1 | **SITE WORKS** |  | 2026-07-06 | 2026-10-04 |  |  |  |  |  |  |  |  |  |
| WAD.S.1340 |  | Demolition Works | 10d | 2026-07-06 A | 2026-07-19 A | WAD.S.1010, WAD.S.1330 FS+12d, WAD.S.1330 SS+12d | 100% |  | 2026-08-24 | 2026-09-03 |  |  | FENCE WORKS [80]; Construction Labors [212.38 h] | 10,609.05 |
| WAD.S.1370 |  | Excavation Works | 15d | 2026-07-11 A | 2026-10-04 A | WAD.S.1340 | 100% |  | 2026-09-06 | 2026-09-23 |  |  | FENCE WORKS [120]; Construction Labors [212.38 h]; Excavator [48 h] | 34,942.38 |
| WAD.S.1530 |  | Backfilling Works Before Foundation | 18d | 2026-08-01 A | 2026-09-05 A | WAD.S.1370, WAD.S.1420 | 100% |  | 2026-09-07 | 2026-09-28 |  |  | FENCE WORKS [144]; Construction Labors [212.38 h]; Excavator [32 h]; Compactor [144 h] | 24,942.38 |
| WAD.S.3380 |  | Backfilling Works After Foundation | 5d | 2026-09-01 A | 2026-09-05 A | WAD.S.1560, WAD.S.2330 | 100% |  | 2026-09-23 | 2026-09-29 |  |  | FENCE WORKS [40]; Construction Labors [212.38 h]; Excavator [40 h]; Compactor [40 h] | 34,942.39 |
|  | 2 | **CONCRETE WORKS** |  | 2026-07-09 | 2026-10-27 |  |  |  |  |  |  |  |  |  |
|  | 1 | **Part 1** |  | 2026-07-09 | 2026-10-18 |  |  |  |  |  |  |  |  |  |
| WAD.S.1560 |  | cast in place reinforced concrete for the sub-structures - Part 1 | 21d | 2026-07-09 A | 2026-10-18 A | WAD.S.1370, WAD.S.1370 SS | 100% |  | 2026-09-01 | 2026-09-26 |  |  | FENCE WORKS [168]; Construction Labors [212.38 h]; Concrete Mixer [880 h]; Concrete Pump [168 h] | 760,483.5 |
|  | 2 | **Part 2** |  | 2026-07-09 | 2026-10-27 |  |  |  |  |  |  |  |  |  |
| WAD.S.2720 |  | cast in place reinforced concrete for the sub-structures - Part 2 | 21d | 2026-07-09 A | 2026-10-27 | WAD.S.1560, WAD.S.1560 SS | 99% | 0.21d | 2026-09-26 | 2026-10-20 | -20.21d | 0.54d | FENCE WORKS [168]; Construction Labors [212.38 h]; Concrete Mixer [168 h]; Concrete Pump [168 h] | 760,483.5 |
|  | 3 | **THERMAL & MOISTURE PROTECTION** |  | 2026-08-18 | 2026-10-27 |  |  |  |  |  |  |  |  |  |
|  | 1 | **Part 1** |  | 2026-08-18 | 2026-10-08 |  |  |  |  |  |  |  |  |  |
| WAD.S.2330 |  | Applying 2 coats of bitumen waterproofing paint on concrete surfaces - Part 1 | 21d | 2026-08-18 A | 2026-10-08 A | WAD.S.2180, WAD.S.1560 FF+2d | 100% |  | 2026-08-18 | 2026-09-10 |  |  | FENCE WORKS [168]; Construction Labors [212.38 h] | 21,570.65 |
|  | 2 | **Part 2** |  | 2026-10-01 | 2026-10-27 |  |  |  |  |  |  |  |  |  |
| WAD.S.3420 |  | Applying 2 coats of bitumen waterproofing paint on concrete surfaces - Part 2 | 21d | 2026-10-01 A | 2026-10-27 | WAD.S.2330 | 97% | 0.63d | 2026-10-01 | 2026-10-26 | -18.83d | 8.97d | FENCE WORKS [168]; Construction Labors [212.38 h] | 21,570.65 |
|  | 6 | **SPECIAL CONSTRUCTION- STRUCTURAL STEEL** |  | 2026-08-31 | 2026-10-29 |  |  |  |  |  |  |  |  |  |
|  | 1 | **Part 1** |  | 2026-08-31 | 2026-10-19 |  |  |  |  |  |  |  |  |  |
| WAD.S.2870 |  | install structural steel beams, posts and rods for wall fence - Part 1 | 21d | 2026-08-31 A | 2026-09-24 A | WAD.S.1430, WAD.S.1560 SS, WAD.S.1570, WAD.S.2470 | 100% |  | 2026-08-31 | 2026-09-23 |  |  | FENCE WORKS [168]; Construction Labors [212.38 h] | 888,080.98 |
| WAD.S.3260 |  | Install tubes, bolts, nuts and steel plates to strengthened the wall fence and posts - Part 1 | 21d | 2026-09-26 A | 2026-09-30 A | WAD.S.2870 SS+5d, WAD.S.1540 | 100% |  | 2026-09-26 | 2026-10-19 |  |  | FENCE WORKS [168]; Construction Labors [212.38 h] | 888,080.98 |
| WAD.S.3870 |  | fix galvanized steel chain link fence wall; including steel tube framing and posts, turn buckle - Part 1 | 21d | 2026-10-01 A | 2026-10-05 A | WAD.S.3260 SS+5d | 100% |  | 2026-10-01 | 2026-10-25 |  |  | FENCE WORKS [168]; Construction Labors [212.38 h] | 888,080.98 |
| WAD.S.4720 |  | galvanized steel chain link gates Installation - Part 1 | 20d | 2026-10-07 A | 2026-10-19 A | WAD.S.3870 SS+5d, WAD.S.2720 | 100% |  | 2026-10-07 | 2026-10-29 |  |  | FENCE WORKS [168]; Construction Labors [212.38 h] | 32,119.8 |
|  | 2 | **Part 2** |  | 2026-09-21 | 2026-10-29 |  |  |  |  |  |  |  |  |  |
| WAD.S.2920 |  | install structural steel beams, posts and rods for wall fence - Part 2 | 21d | 2026-09-21 A | 2026-10-27 | WAD.S.2870 SS | 99% | 0.21d | 2026-09-21 | 2026-10-15 | -21.41d | 2.34d | FENCE WORKS [168]; Construction Labors [212.38 h] | 888,080.98 |
| WAD.S.3430 |  | Install tubes, bolts, nuts and steel plates to strengthened the wall fence and posts - Part 2 | 21d | 2026-09-26 A | 2026-10-28 | WAD.S.3260 SS | 98% | 0.42d | 2026-09-26 | 2026-10-20 | -19.37d | 8.43d | FENCE WORKS [168]; Construction Labors [212.38 h] | 888,080.98 |
| WAD.S.3950 |  | fix galvanized steel chain link fence wall; including steel tube framing and posts, turn buckle - Part 2 | 21d | 2026-10-01 A | 2026-10-28 | WAD.S.3870 SS | 98% | 0.42d | 2026-10-01 | 2026-10-26 | -19.17d | 25.29d | FENCE WORKS [168]; Construction Labors [212.38 h] | 888,080.98 |
| WAD.S.4730 |  | galvanized steel chain link gates Installation - Part 2 | 20d | 2026-10-07 A | 2026-10-29 | WAD.S.4720 SS | 90% | 2d | 2026-10-07 | 2026-10-31 | -20.75d | 23.71d | FENCE WORKS [168]; Construction Labors [212.38 h] | 32,119.8 |

Notes:
- WAD.S.1340: Remarks: Ã˜ÂªÃ™â€šÃ™â€žÃ™ÅÂ Ã™â€ž Ã™â€¦Ã˜Â¯Ã˜Â© Ã˜Â§Ã™â€žÃ˜Â¨Ã™â€Â Ã˜Â¯
- WAD.S.1370: Remarks: Ã˜Â§Ã™â€Â Ã˜ÂªÃ™â€¡Ã˜Â§Ã˜Â¡ 02-July-2026
- WAD.S.1530: Remarks: Ã™ÂÂ Ã˜ÂµÃ™â€ž Ã˜Â§Ã™â€žÃ˜Â­Ã™ÂÂ Ã˜Â± Ãƒâ„¢Ã‹â€ Ã˜Â§Ã™â€žÃ˜Â¯Ã™ÂÂ Ã˜Â§Ã™â€Â Type 2 & Type 1

| ID | WBS | Activity | Duration | Start | Finish | Predecessors | Complete | Remaining | Planned start | Planned finish | Total float | Free float | Resources | Cost |
| --- | --- | --- | --- | --- | --- | --- | --- | --- | --- | --- | --- | --- | --- | --- |
|  | 8 | **ELECTRICAL WORKS** |  | 2025-11-11 | 2026-11-19 |  |  |  |  |  |  |  |  |  |
| WAD.S.4810 |  | Handholes\ Manholes | 8d | 2025-11-11 A | 2026-11-14 A | WAD.S.3720 | 100% |  | 2026-11-11 | 2026-11-21 |  |  | FENCE WORKS [64]; Construction Labors [212.38 h] | 309,504.73 |
| WAD.S.2950 |  | Fiber Optic Outdoor Cable | 8d | 2026-10-22 A | 2026-11-09 | WAD.S.2640 | 98% | 0.16d | 2026-10-22 | 2026-11-01 | -44.46d | 0d | FENCE WORKS [64]; Construction Labors [212.38 h] | 309,504.71 |
| WAD.S.2640 |  | Intrusion Detection system including processor control units items and joints - 1st Fix | 9d | 2026-10-29 | 2026-11-09 | WAD.S.1530, WAD.S.2170 |  |  |  |  | -44.46d | 0d | FENCE WORKS [72]; Construction Labors [212.38 h] | 309,504.71 |
| WAD.S.2980 |  | install 50mm diameter high-density polyethylene (HDPE) pipe including the require pipe fittings for connection, | 8d | 2026-11-03 A | 2026-11-12 A | WAD.S.2960 SS+2d, WAD.S.2260 | 100% |  |  |  |  |  | FENCE WORKS [64]; Construction Labors [212.38 h] | 309,504.71 |
| WAD.S.2960 |  | Road crossing ducts for Fiber Optic Cable | 7d | 2026-11-09 | 2026-11-17 | WAD.S.2640 |  |  |  |  | -36.7d | 0d | FENCE WORKS [56]; Construction Labors [212.38 h] | 309,504.71 |
| WAD.S.3720 |  | Fiber Optic Outdoor Cable To Close The Loop | 9d | 2026-11-09 | 2026-11-19 | WAD.S.2950 |  |  |  |  | -44.46d | 0d | FENCE WORKS [72]; Construction Labors [212.38 h] | 309,504.71 |
|  | 4 | **ELECTRICAL GATE BARRIER** |  | 2026-11-12 | 2026-11-26 |  |  |  |  |  |  |  |  |  |
| WAD.S.4830 |  | Install, Electrical gate barrier complete (cables, conduits, pipes, pulling cables in the conduits) | 8d | 2026-11-12 A | 2026-11-26 | WAD.S.3720 | 30% | 5.6d | 2026-11-12 | 2026-11-22 | -44.46d | 0d | FENCE WORKS [64]; Construction Labors [212.38 h] | 120,921.74 |
|  | 2 | **GUARD HOUSE 1** |  | 2026-07-06 | 2026-11-11 |  |  |  |  |  |  |  |  |  |
|  | 1 | **SITE WORKS** |  | 2026-07-06 | 2026-10-22 |  |  |  |  |  |  |  |  |  |
|  | 4 | **Guard Rooms & Gates** |  | 2026-07-06 | 2026-09-08 |  |  |  |  |  |  |  |  |  |
| WAD.S.1450 |  | Excavation for guard rooms | 8d | 2026-07-06 A | 2026-07-19 A | WAD.S.1080 FS+60d | 100% |  | 2026-09-15 | 2026-09-23 |  |  | GUARD HOUSE Works [64]; Construction Labors [212.38 h]; Excavator [64 h] | 1,108.45 |
| WAD.S.1590 |  | Replacment Under Foundation | 2d | 2026-08-02 A | 2026-08-04 A | WAD.S.1450 | 100% |  | 2026-08-02 | 2026-08-03 |  |  | GUARD HOUSE Works [16]; Construction Labors [212.38 h]; Excavator [16 h]; Compactor [16 h]; Trcck [16 h] | 411.47 |
| WAD.S.2270 |  | Backfilling Under G.Beam | 2d | 2026-08-11 A | 2026-08-31 A | WAD.S.1820, WAD.S.1820 SS, WAD.S.1300 FF-1d | 100% |  | 2026-08-11 | 2026-08-12 |  |  | GUARD HOUSE Works [16]; Construction Labors [212.38 h]; Compactor [16 h] | 411.47 |
| WAD.S.2280 |  | Backfilling Under S.O.G | 2d | 2026-09-07 A | 2026-09-08 A | WAD.S.1820, WAD.S.1820 SS | 100% |  |  |  |  |  | GUARD HOUSE Works [16]; Construction Labors [212.38 h]; Compactor [16 h] | 411.47 |
|  | 5 | **Guard Rooms & Gates (CONCRETE Works)** |  | 2026-07-12 | 2026-10-22 |  |  |  |  |  |  |  |  |  |
| WAD.S.1820 |  | Isolated Footings & Column Neck | 5d | 2026-07-12 A | 2026-08-08 A | WAD.S.1600 SS+2d, WAD.S.1600 FF+2d | 100% |  | 2026-09-27 | 2026-10-01 |  |  | GUARD HOUSE Works [40]; Construction Labors [212.38 h]; Concrete Mixer [40 h]; Concrete Pump [40 h] | 1,547.7 |
| WAD.S.1600 |  | 50 mm thickness lean concrete under the foundation. | 3d | 2026-08-04 A | 2026-08-06 A | WAD.S.1590 SS | 100% |  |  |  |  |  | GUARD HOUSE Works [24]; Construction Labors [212.38 h]; Concrete Mixer [24 h]; Concrete Pump [24 h] | 409.37 |
| WAD.S.2340 |  | 50 mm thickness lean concrete under grade beams. | 3d | 2026-08-31 A | 2026-09-03 A | WAD.S.2270 | 100% |  |  |  |  |  | GUARD HOUSE Works [24]; Construction Labors [212.38 h]; Concrete Mixer [24 h]; Concrete Pump [24 h] | 409.37 |
| WAD.S.2600 |  | Grade beams | 5d | 2026-09-03 A | 2026-09-09 A | WAD.S.2340 | 100% |  |  |  |  |  | GUARD HOUSE Works [40]; Construction Labors [212.38 h]; Concrete Mixer [40 h]; Concrete Pump [40 h] | 1,547.86 |
| WAD.S.2710 |  | Raft and R.C. walls | 5d | 2026-09-05 A | 2026-09-09 A | WAD.S.2650 SS+2d | 100% |  |  |  |  |  | GUARD HOUSE Works [40]; Construction Labors [212.38 h]; Concrete Mixer [40 h]; Concrete Pump [40 h] | 1,547.86 |
| WAD.S.2750 |  | Roof Slab | 8d | 2026-09-06 A | 2026-09-08 A | WAD.S.2760 SS, WAD.S.2650 | 100% |  | 2026-09-06 | 2026-09-14 |  |  | GUARD HOUSE Works [64]; Construction Labors [212.38 h]; Concrete Mixer [64 h]; Concrete Pump [64 h] | 1,547.86 |
| WAD.S.2760 |  | Beams | 8d | 2026-09-06 A | 2026-09-08 A | WAD.S.2650 | 100% |  | 2026-09-06 | 2026-09-14 |  |  | GUARD HOUSE Works [64]; Construction Labors [212.38 h]; Concrete Mixer [64 h]; Concrete Pump [64 h] | 1,547.86 |
| WAD.S.2650 |  | Columns | 4d | 2026-09-09 A | 2026-09-14 A | WAD.S.2600 | 100% |  |  |  |  |  | GUARD HOUSE Works [32]; Construction Labors [212.38 h]; Concrete Mixer [32 h]; Concrete Pump [32 h] | 1,547.86 |
| WAD.S.3400 |  | Concrete Pad | 3d | 2026-09-12 A | 2026-09-14 A | WAD.S.2760 | 100% |  |  |  |  |  | GUARD HOUSE Works [24]; Construction Labors [212.38 h]; Concrete Mixer [24 h]; Concrete Pump [24 h] | 1,547.86 |
| WAD.S.3390 |  | Provide and cast concrete floor slab on grade | 5d | 2026-09-19 A | 2026-09-22 A | WAD.S.2600 SS+2d, WAD.S.2280, WAD.S.2760 | 100% |  | 2026-09-19 | 2026-09-23 |  |  | GUARD HOUSE Works [40]; Construction Labors [212.38 h]; Concrete Mixer [40 h]; Concrete Pump [40 h] | 1,547.86 |
| WAD.S.3410 |  | Tanks Raft | 5d | 2026-10-06 A | 2026-10-11 A | WAD.S.2750 | 100% |  |  |  |  |  | GUARD HOUSE Works [40]; Construction Labors [212.38 h]; Concrete Mixer [40 h]; Concrete Pump [40 h] | 1,547.86 |
| WAD.S.3940 |  | Tanks Walls | 5d | 2026-10-12 A | 2026-10-18 A | WAD.S.3410, WAD.S.3390, WAD.S.3400 | 100% |  | 2026-10-12 | 2026-10-17 |  |  | GUARD HOUSE Works [40]; Construction Labors [212.38 h]; Concrete Mixer [40 h]; Concrete Pump [40 h] | 1,547.86 |
| WAD.S.4850 |  | Tanks Slab | 4d | 2026-10-18 A | 2026-10-22 A | WAD.S.3940, WAD.S.4710 | 100% |  |  |  |  |  | GUARD HOUSE Works [32]; Construction Labors [212.38 h]; Concrete Mixer [32 h]; Concrete Pump [32 h] | 1,547.86 |

| ID | WBS | Activity | Duration | Start | Finish | Predecessors | Complete | Remaining | Planned start | Planned finish | Total float | Free float | Resources | Cost |
| --- | --- | --- | --- | --- | --- | --- | --- | --- | --- | --- | --- | --- | --- | --- |
|  | 3 | **MASONRY UNIT** |  | 2026-09-12 | 2026-09-27 |  |  |  |  |  |  |  |  |  |
| WAD.S.2910 |  | install Concrete Masonry Unit (CMU) for walls | 3d | 2026-09-12 A | 2026-09-27 A | WAD.S.2750 SS+3d, WAD.S.2710 | 100% |  | 2026-09-12 | 2026-09-14 |  |  | GUARD HOUSE Works [24]; Construction Labors [212.38 h] | 10,980.56 |
|  | 6 | **THERMAL & MOISTURE PROTECTION** |  | 2026-09-16 | 2026-10-18 |  |  |  |  |  |  |  |  |  |
|  | 1 | **THERMAL & MOISTURE PROTECTION - Foundation** |  | 2026-09-16 | 2026-10-18 |  |  |  |  |  |  |  |  |  |
| WAD.S.3920 |  | apply 2 coats of bitumen waterproofing paint on concrete surface in contact with soil | 2d | 2026-09-16 A | 2026-09-19 A | WAD.S.3930 SS | 100% |  |  |  |  |  | GUARD HOUSE Works [16]; Construction Labors [212.38 h] | 358.99 |
| WAD.S.3930 |  | install liquid applied waterproofing coating; single-component pitch modified polyurethane | 2d | 2026-10-06 A | 2026-10-18 A | WAD.S.2340 FS+22d | 100% |  | 2026-10-06 | 2026-10-07 |  |  | GUARD HOUSE Works [16]; Construction Labors [212.38 h] | 226.73 |
| WAD.S.4090 |  | install geotextile sheet | 2d | 2026-10-08 A | 2026-10-10 A | WAD.S.3930 | 100% |  |  |  |  |  | GUARD HOUSE Works [16]; Construction Labors [212.38 h] | 557.37 |
|  | 7 | **ROOFING SYSTEM** |  | 2026-10-15 | 2026-10-29 |  |  |  |  |  |  |  |  |  |
| WAD.S.4210 |  | cast in place foam concrete screed, 50mm thick minimum; laid to fall and cross fall | 11d | 2026-10-15 A | 2026-10-18 A | WAD.S.4200 SS | 100% |  | 2026-10-15 | 2026-10-27 |  |  | GUARD HOUSE Works [88]; Construction Labors [212.38 h] | 683.49 |
| WAD.S.4270 |  | install Terrazzo tiles | 11d | 2026-10-15 A | 2026-10-27 A | WAD.S.4260 SS | 100% |  |  |  |  |  | GUARD HOUSE Works [88]; Construction Labors [212.38 h] | 683.49 |
| WAD.S.4180 |  | install liquid applied waterproofing coating single-component pitch modified polyurethane based elastomeric | 11d | 2026-10-18 A | 2026-10-29 A | WAD.S.3090 SS+10d | 100% |  |  |  |  |  | GUARD HOUSE Works [88]; Construction Labors [212.38 h] | 683.49 |
| WAD.S.4190 |  | install 4mm thick APP modified bituminous membrane - single layer | 11d | 2026-10-18 A | 2026-10-29 A | WAD.S.4280 SS | 100% |  |  |  |  |  | GUARD HOUSE Works [88]; Construction Labors [212.38 h] | 683.49 |
| WAD.S.4200 |  | install 75mm thick rigid insulation (extruded polystyrene) | 11d | 2026-10-18 A | 2026-10-29 A | WAD.S.4190 SS | 100% |  |  |  |  |  | GUARD HOUSE Works [88]; Construction Labors [212.38 h] | 683.49 |
| WAD.S.4220 |  | install 300 micron polyethylene sheet | 11d | 2026-10-18 A | 2026-10-29 A | WAD.S.4210 SS | 100% |  |  |  |  |  | GUARD HOUSE Works [88]; Construction Labors [212.38 h] | 683.49 |
| WAD.S.4230 |  | install 50mm thick loose gravel toppings | 11d | 2026-10-18 A | 2026-10-29 A | WAD.S.4220 SS | 100% |  |  |  |  |  | GUARD HOUSE Works [88]; Construction Labors [212.38 h] | 683.49 |
| WAD.S.4240 |  | install high density polyisocynurate cover board | 11d | 2026-10-18 A | 2026-10-29 A | WAD.S.4230 SS | 100% |  |  |  |  |  | GUARD HOUSE Works [88]; Construction Labors [212.38 h] | 683.49 |
| WAD.S.4250 |  | install UV resistant geotextile sheet | 11d | 2026-10-18 A | 2026-10-29 A | WAD.S.4240 SS | 100% |  |  |  |  |  | GUARD HOUSE Works [88]; Construction Labors [212.38 h] | 683.49 |
| WAD.S.4260 |  | fixing 3mm thick extruded aluminum flashing 40mm with sealant and all other accessories | 11d | 2026-10-18 A | 2026-10-29 A | WAD.S.4250 SS | 100% |  |  |  |  |  | GUARD HOUSE Works [88]; Construction Labors [212.38 h] | 683.49 |
|  | 2 | **THERMAL & MOISTURE PROTECTION - Tanks** |  | 2026-10-15 | 2026-10-20 |  |  |  |  |  |  |  |  |  |
| WAD.S.4280 |  | lay epoxy 2 coating for inner surfaces for bottom of the roof | 11d | 2026-10-15 A | 2026-10-19 A | WAD.S.4180 SS | 100% |  | 2026-10-15 | 2026-10-27 |  |  | GUARD HOUSE Works [88]; Construction Labors [212.38 h] | 683.49 |
| WAD.S.4710 |  | install water stop for tanks according to the drawings and specification | 5d | 2026-10-15 A | 2026-10-20 A | WAD.S.3940 | 100% |  |  |  |  |  | GUARD HOUSE Works [40]; Construction Labors [212.38 h] | 683.49 |
|  | 9 | **FINISHES** |  | 2026-10-04 | 2026-11-07 |  |  |  |  |  |  |  |  |  |
| WAD.S.3090 |  | install concrete plastering | 4d | 2026-10-04 A | 2026-10-06 A | WAD.S.2910 | 100% |  | 2026-10-04 | 2026-10-07 |  |  | GUARD HOUSE Works [32]; Construction Labors [212.38 h] | 2,524.93 |
| WAD.S.4950 |  | install granite flooring | 2d | 2026-10-20 A | 2026-10-22 A | WAD.S.4940 SS | 100% |  |  |  |  |  | GUARD HOUSE Works [16]; Construction Labors [212.38 h] | 2,524.93 |
| WAD.S.5020 |  | install Riyadh stone cladding | 3d | 2026-10-21 A | 2026-10-25 A | WAD.S.5030 FF, WAD.S.3750 | 100% |  |  |  |  |  | GUARD HOUSE Works [24]; Construction Labors [212.38 h] | 2,524.93 |
| WAD.S.5030 |  | install 3mm steel CNC laser cut panels | 3d | 2026-10-21 A | 2026-10-25 A | WAD.S.5060 FF | 100% |  |  |  |  |  | GUARD HOUSE Works [24]; Construction Labors [212.38 h] | 2,524.93 |
| WAD.S.5060 |  | install aluminum cladding | 2d | 2026-10-22 A | 2026-10-25 A | WAD.S.5010 FF | 100% |  |  |  |  |  | GUARD HOUSE Works [16]; Construction Labors [212.38 h] | 2,524.93 |
| WAD.S.5120 |  | install ceramic wall tiles | 3d | 2026-10-25 A | 2026-10-28 A | WAD.S.4950 SS, WAD.S.4540, WAD.S.3430 | 100% |  |  |  |  |  | GUARD HOUSE Works [24]; Construction Labors [212.38 h] | 2,524.93 |
| WAD.S.5530 |  | install two coats of acrylic paint on internal walls | 2d | 2026-10-26 A | 2026-11-03 A | WAD.S.5120 FF, WAD.S.3420 | 100% |  | 2026-10-26 | 2026-10-28 |  |  | GUARD HOUSE Works [16]; Construction Labors [212.38 h] | 2,524.93 |
| WAD.S.5540 |  | install two coats of acrylic paint (suitable for exterior use) on external | 2d | 2026-10-26 A | 2026-11-07 | WAD.S.5530 SS | 90% | 0.2d | 2026-10-26 | 2026-10-28 | -27.8d | 16.66d | GUARD HOUSE Works [16]; Construction Labors [212.38 h] | 2,524.93 |
| WAD.S.4940 |  | install ceramic floor tiles | 3d | 2026-10-31 A | 2026-11-03 A | WAD.S.1810 FF, WAD.S.3740, WAD.S.2920 | 100% |  |  |  |  |  | GUARD HOUSE Works [24]; Construction Labors [212.38 h] | 2,524.93 |
| WAD.S.5010 |  | install granite saddles and thresholds | 3d | 2026-10-31 A | 2026-11-03 A | WAD.S.5040 SS, WAD.S.4710 | 100% |  |  |  |  |  | GUARD HOUSE Works [24]; Construction Labors [212.38 h] | 2,524.93 |
| WAD.S.5040 |  | gypsum board suspended ceiling | 5d | 2026-10-31 A | 2026-11-05 A | WAD.S.4950 SS | 100% |  |  |  |  |  | GUARD HOUSE Works [32]; Construction Labors [212.38 h] | 2,524.93 |

| ID | WBS | Activity | Duration | Start | Finish | Predecessors | Complete | Remaining | Planned start | Planned finish | Total float | Free float | Resources | Cost |
| --- | --- | --- | --- | --- | --- | --- | --- | --- | --- | --- | --- | --- | --- | --- |
|  | 13 | **MECHANICAL WORKS** |  | 2026-09-21 | 2026-11-04 |  |  |  |  |  |  |  |  |  |
|  | 1 | **MECHANICAL WORKS - 1st Fix** |  | 2026-09-21 | 2026-10-11 |  |  |  |  |  |  |  |  |  |
| WAD.S.1660 |  | WATER SUPPLY SYSTEM - 1st Fix | 10d | 2026-09-21 A | 2026-10-11 A | WAD.S.1680 SS | 100% |  | 2026-09-21 | 2026-10-01 |  |  | GUARD HOUSE Works [80]; Construction Labors [212.38 h] | 2,776.97 |
| WAD.S.1670 |  | SEWER AND DRAINAGE SYSTEM - 1st Fix | 10d | 2026-09-21 A | 2026-10-05 A | WAD.S.1660 SS | 100% |  | 2026-09-21 | 2026-10-01 |  |  | GUARD HOUSE Works [80]; Construction Labors [212.38 h] | 2,776.97 |
| WAD.S.1680 |  | IRRIGATION SYSTEM - 1st Fix | 10d | 2026-09-21 A | 2026-10-11 A | WAD.S.1820 SS | 100% |  | 2026-09-21 | 2026-10-01 |  |  | GUARD HOUSE Works [80]; Construction Labors [212.38 h] | 2,776.97 |
| WAD.S.1710 |  | HEATING, VENTILATION AND AIR CONDITIONING - 1st Fix | 10d | 2026-09-21 A | 2026-10-11 A | WAD.S.1670 SS | 100% |  | 2026-09-21 | 2026-10-01 |  |  | GUARD HOUSE Works [80]; Construction Labors [212.38 h] | 2,776.97 |
| WAD.S.1720 |  | Exhaust fans - 1st Fix | 10d | 2026-09-21 A | 2026-10-11 A | WAD.S.1710 SS | 100% |  | 2026-09-21 | 2026-10-01 |  |  | GUARD HOUSE Works [80]; Construction Labors [212.38 h] | 2,776.97 |
|  | 2 | **MECHANICAL WORKS - Final Fix** |  | 2026-10-24 | 2026-11-04 |  |  |  |  |  |  |  |  |  |
| WAD.S.5130 |  | installation of Fire extinguishers as per drawings, specifications | 3d | 2026-10-24 A | 2026-11-01 | WAD.S.1720, WAD.S.5060, WAD.S.5030, WAD.S.4270 FS+2d | 65% | 1.05d | 2026-10-24 | 2026-10-27 | -23.75d | 0d | GUARD HOUSE Works [24]; Construction Labors [212.38 h] | 2,776.97 |
| WAD.S.5140 |  | gully traps with heavy duty cover | 3d | 2026-10-24 A | 2026-11-03 A | WAD.S.5130 FF | 100% |  | 2026-10-24 | 2026-10-27 |  |  | GUARD HOUSE Works [24]; Construction Labors [212.38 h] | 2,776.97 |
| WAD.S.5150 |  | chamber with heavy duty cover | 3d | 2026-10-24 A | 2026-11-03 A | WAD.S.5140 FF | 100% |  | 2026-10-24 | 2026-10-27 |  |  | GUARD HOUSE Works [24]; Construction Labors [212.38 h] | 2,776.97 |
| WAD.S.5160 |  | INSTALL PLUMBING FIXTURES | 3d | 2026-10-24 A | 2026-11-01 | WAD.S.5150 FF | 65% | 1.05d | 2026-10-24 | 2026-10-27 | -23.75d | 0d | GUARD HOUSE Works [24]; Construction Labors [212.38 h] | 2,776.97 |
| WAD.S.5910 |  | HEATING, VENTILATION AND AIR CONDITIONING - Final Fix | 3d | 2026-11-01 A | 2026-11-03 A | WAD.S.5160 FF, WAD.S.4610 | 100% |  | 2026-11-01 | 2026-11-04 |  |  | GUARD HOUSE Works [24]; Construction Labors [212.38 h] | 2,776.97 |
| WAD.S.5920 |  | Exhaust fans - Final Fix | 3d | 2026-11-01 A | 2026-11-03 A | WAD.S.5910 FF | 100% |  | 2026-11-01 | 2026-11-04 |  |  | GUARD HOUSE Works [24]; Construction Labors [212.38 h] | 2,776.97 |
| WAD.S.5930 |  | Bulbblers and Spreyers of IRRIGATION SYSTEM | 3d | 2026-11-01 A | 2026-11-04 A | WAD.S.5920 FF | 100% |  |  |  |  |  | GUARD HOUSE Works [24]; Construction Labors [212.38 h] | 2,776.97 |
| WAD.S.5980 |  | WATER SUPPLY SYSTEM - Final Fix | 3d | 2026-11-01 A | 2026-11-01 | WAD.S.5930 FF, WAD.S.4590, WAD.S.4580 | 80% | 0.6d | 2026-11-01 | 2026-11-04 | -24.1d | 0d | GUARD HOUSE Works [24]; Construction Labors [212.38 h] | 2,776.97 |
| WAD.S.5990 |  | IRRIGATION SYSTEM - Final Fix | 3d | 2026-11-01 A | 2026-11-04 A | WAD.S.5980 FF | 100% |  |  |  |  |  | GUARD HOUSE Works [24]; Construction Labors [212.38 h] | 2,776.97 |
|  | 15 | **ELECTRICAL WORKS** |  | 2026-09-06 | 2026-11-11 |  |  |  |  |  |  |  |  |  |
|  | 1 | **ELECTRICAL WORKS - 1st Fix** |  | 2026-09-06 | 2026-10-08 |  |  |  |  |  |  |  |  |  |
| WAD.S.1770 |  | GROUNDING - 1st Fix | 10d | 2026-09-06 A | 2026-10-08 A | WAD.S.1760 SS | 100% |  | 2026-09-06 | 2026-09-16 |  |  | GUARD HOUSE Works [80]; Construction Labors [212.38 h] | 7,789.66 |
| WAD.S.1740 |  | UNDERGROUND DISTRIBUTION SYSTEM - 1st Fix | 10d | 2026-09-21 A | 2026-10-08 A | WAD.S.1730 SS | 100% |  | 2026-09-21 | 2026-10-01 |  |  | GUARD HOUSE Works [80]; Construction Labors [212.38 h] | 7,789.66 |
| WAD.S.1750 |  | LIGHTING FIXTURES - 1st Fix | 10d | 2026-09-21 A | 2026-10-08 A | WAD.S.1740 SS | 100% |  | 2026-09-21 | 2026-10-01 |  |  | GUARD HOUSE Works [80]; Construction Labors [212.38 h] | 7,789.66 |
| WAD.S.1690 |  | LIGHTING AND POWER TYPE PANELBOARDS - 1st Fix | 10d | 2026-09-27 A | 2026-10-08 A | WAD.S.1720 SS | 100% |  | 2026-09-27 | 2026-10-07 |  |  | GUARD HOUSE Works [80]; Construction Labors [212.38 h] | 7,789.66 |
| WAD.S.1700 |  | UPS 3KVA (installed inside the rack) - 1st Fix | 10d | 2026-09-27 A | 2026-10-08 A | WAD.S.1690 SS | 100% |  | 2026-09-27 | 2026-10-07 |  |  | GUARD HOUSE Works [80]; Construction Labors [212.38 h] | 7,789.66 |
| WAD.S.1730 |  | power source with built-in photocell sensor for automatic electrical connection during day/light times - 1st Fix | 10d | 2026-09-27 A | 2026-10-08 A | WAD.S.1700 SS | 100% |  | 2026-09-27 | 2026-10-07 |  |  | GUARD HOUSE Works [80]; Construction Labors [212.38 h] | 7,789.66 |
| WAD.S.1760 |  | installation of Wiring devices includes switches and Receptacle outlets complete with device boxes - 1st Fix | 10d | 2026-09-27 A | 2026-10-08 A | WAD.S.1750 SS | 100% |  | 2026-09-27 | 2026-10-07 |  |  | GUARD HOUSE Works [80]; Construction Labors [212.38 h] | 7,789.66 |
| WAD.S.1780 |  | card reader IN/OUT - 1st Fix | 10d | 2026-09-27 A | 2026-10-08 A | WAD.S.1770 SS | 100% |  | 2026-09-27 | 2026-10-07 |  |  | GUARD HOUSE Works [80]; Construction Labors [212.38 h] | 7,789.66 |
| WAD.S.1790 |  | CCTV cameras - 1st Fix | 10d | 2026-09-27 A | 2026-10-08 A | WAD.S.1780 SS | 100% |  | 2026-09-27 | 2026-10-07 |  |  | GUARD HOUSE Works [80]; Construction Labors [212.38 h] | 7,789.66 |
| WAD.S.1800 |  | Access control panel - 1st Fix | 10d | 2026-09-27 A | 2026-10-08 A | WAD.S.1790 SS | 100% |  | 2026-09-27 | 2026-10-07 |  |  | GUARD HOUSE Works [80]; Construction Labors [212.38 h] | 7,789.66 |
| WAD.S.1810 |  | fire alarm system including wires, conduit and other materials - 1st Fix | 10d | 2026-09-27 A | 2026-10-08 A | WAD.S.1800 SS | 100% |  | 2026-09-27 | 2026-10-07 |  |  | GUARD HOUSE Works [80]; Construction Labors [212.38 h] | 7,789.66 |

| ID | WBS | Activity | Duration | Start | Finish | Predecessors | Complete | Remaining | Planned start | Planned finish | Total float | Free float | Resources | Cost |
| --- | --- | --- | --- | --- | --- | --- | --- | --- | --- | --- | --- | --- | --- | --- |
|  | 2 | **ELECTRICAL WORKS - Final Fix** |  | 2026-11-01 | 2026-11-11 |  |  |  |  |  |  |  |  |  |
| WAD.S.5940 |  | power source with built-in photocell sensor for automatic electrical connection during day/light times - Final Fix | 3d | 2026-11-01 A | 2026-11-04 A | WAD.S.5980 FF | 100% |  |  |  |  |  | GUARD HOUSE Works [24]; Construction Labors [212.38 h] | 7,789.66 |
| WAD.S.6140 |  | UNDERGROUND DISTRIBUTION SYSTEM - Final Fix | 2d | 2026-11-02 A | 2026-11-04 A | WAD.S.5940 FF | 100% |  |  |  |  |  | GUARD HOUSE Works [16]; Construction Labors [212.38 h] | 7,789.66 |
| WAD.S.5970 |  | 12-Port, SMF, Fiber Optic Patch Panels; | 4d | 2026-11-04 | 2026-11-09 | WAD.S.6170 FF |  |  |  |  | -29.2d | 0d | GUARD HOUSE Works [32]; Construction Labors [212.38 h] | 7,789.66 |
| WAD.S.6160 |  | card reader IN/OUT - Final Fix | 3d | 2026-11-05 | 2026-11-09 | WAD.S.5960 FF, WAD.S.4570 |  |  |  |  | -29.1d | 0.1d | GUARD HOUSE Works [24]; Construction Labors [212.38 h] | 7,789.66 |
| WAD.S.6170 |  | 12-Port CAT6A UTP fully loaded patch panel | 3d | 2026-11-05 | 2026-11-09 | WAD.S.6270 FF |  |  |  |  | -29.2d | 0d | GUARD HOUSE Works [24]; Construction Labors [212.38 h] | 7,789.66 |
| WAD.S.6180 |  | COMPUTERS AND RELATED PERIPHERALS | 3d | 2026-11-05 | 2026-11-09 | WAD.S.5970 FF, WAD.S.4820 |  |  |  |  | -29.2d | 2d | GUARD HOUSE Works [24]; Construction Labors [212.38 h] | 7,789.66 |
| WAD.S.5950 |  | LIGHTING FIXTURES - Final Fix | 3d | 2026-11-05 A | 2026-11-07 | WAD.S.6140 FF, WAD.S.4670 | 80% | 0.6d | 2026-11-05 | 2026-11-09 | -27.6d | 0d | GUARD HOUSE Works [24]; Construction Labors [212.38 h] | 7,789.66 |
| WAD.S.5960 |  | GROUNDING - Final Fix | 3d | 2026-11-05 A | 2026-11-07 | WAD.S.6150 FF, WAD.S.1810, WAD.S.5020 | 80% | 0.6d | 2026-11-05 | 2026-11-09 | -27.6d | 1.5d | GUARD HOUSE Works [24]; Construction Labors [212.38 h] | 7,789.66 |
| WAD.S.6190 |  | VIDEO SURVEILLANCE | 4d | 2026-11-07 | 2026-11-11 | WAD.S.6180 FF, WAD.S.4690 |  |  |  |  | -31.2d | 0d | GUARD HOUSE Works [32]; Construction Labors [212.38 h] | 7,789.66 |
| WAD.S.6200 |  | CCTV storage system, as specified; | 4d | 2026-11-07 | 2026-11-11 | WAD.S.6290 FF |  |  |  |  | -31.2d | 0d | GUARD HOUSE Works [32]; Construction Labors [212.38 h] | 7,789.66 |
| WAD.S.6270 |  | Access control panel - Final Fix | 2d | 2026-11-07 | 2026-11-09 | WAD.S.6160 FF, WAD.S.4680 |  |  |  |  | -29.2d | 0d | GUARD HOUSE Works [16]; Construction Labors [212.38 h] | 7,789.66 |
| WAD.S.6150 |  | installation of Wiring devices includes switches and Receptacle outlets complete with device boxes - Final Fix | 2d | 2026-11-07 A | 2026-11-07 | WAD.S.5950 FF | 80% | 0.4d | 2026-11-07 | 2026-11-09 | -27.6d | 0d | GUARD HOUSE Works [16]; Construction Labors [212.38 h] | 7,789.66 |
| WAD.S.6280 |  | Central (Headend) System Components; | 3d | 2026-11-08 | 2026-11-11 | WAD.S.6190 FF |  |  |  |  | -31.2d | 0d | GUARD HOUSE Works [24]; Construction Labors [212.38 h] | 7,789.66 |
| WAD.S.6290 |  | VSS System, as specified; | 3d | 2026-11-08 | 2026-11-11 | WAD.S.6280 FF |  |  |  |  | -31.2d | 0d | GUARD HOUSE Works [24]; Construction Labors [212.38 h] | 7,789.66 |
| WAD.S.6300 |  | CCTV cameras - Final Fix | 3d | 2026-11-08 | 2026-11-11 | WAD.S.6200 FF |  |  |  |  | -31.2d | 0d | GUARD HOUSE Works [24]; Construction Labors [212.38 h] | 7,789.66 |
| WAD.S.6310 |  | ELECTRICAL GATE BARRIER | 3d | 2026-11-08 A | 2026-11-11 | WAD.S.6420 FF | 30% | 2.1d |  |  | -31.2d | 0d | GUARD HOUSE Works [24]; Construction Labors [212.38 h] | 7,789.66 |
| WAD.S.6320 |  | fire alarm system including wires, conduit and other materials - Final Fix | 3d | 2026-11-08 A | 2026-11-11 A | WAD.S.6430 FF | 100% |  |  |  |  |  | GUARD HOUSE Works [24]; Construction Labors [212.38 h] | 7,789.66 |
| WAD.S.6330 |  | Analog addressable fire alarm control panel with battery | 3d | 2026-11-08 A | 2026-11-11 A | WAD.S.6320 FF | 100% |  |  |  |  |  | GUARD HOUSE Works [24]; Construction Labors [212.38 h] | 7,789.66 |
| WAD.S.6340 |  | LIGHTING AND POWER TYPE PANELBOARDS - Final Fix | 3d | 2026-11-08 A | 2026-11-11 | WAD.S.6440 FF | 50% | 1.5d |  |  | -31.2d | 13.26d | GUARD HOUSE Works [24]; Construction Labors [212.38 h] | 7,789.66 |
| WAD.S.6420 |  | 20A , ATS ( Automatic transfer switch) for UPS | 2d | 2026-11-09 | 2026-11-11 | WAD.S.6300 FF, WAD.S.3760 |  |  |  |  | -31.2d | 0d | GUARD HOUSE Works [16]; Construction Labors [212.38 h] | 7,789.66 |
| WAD.S.6430 |  | LIGHTNING PROTECTION | 2d | 2026-11-09 A | 2026-11-11 A | WAD.S.6310 FF | 100% |  |  |  |  |  | GUARD HOUSE Works [16]; Construction Labors [212.38 h] | 7,789.66 |
| WAD.S.6440 |  | Intelligent Ionization / Photoelectric smoke and heat detector with base | 2d | 2026-11-09 A | 2026-11-11 A | WAD.S.6330 FF | 100% |  |  |  |  |  | GUARD HOUSE Works [16]; Construction Labors [212.38 h] | 7,789.66 |
|  | 4 | **METALS** |  | 2026-10-26 | 2026-11-09 |  |  |  |  |  |  |  |  |  |
| WAD.S.5510 |  | install of overflow galvanized steel roof scupper with gray color with angular secondary support | 2d | 2026-10-26 A | 2026-11-07 A | WAD.S.5500 SS, WAD.S.4520 | 100% |  | 2026-10-26 | 2026-10-28 |  |  | GUARD HOUSE Works [16]; Construction Labors [212.38 h] | 850.23 |
| WAD.S.5500 |  | folding & sliding mounter combination ladder for building maintenance purpose | 2d | 2026-11-07 | 2026-11-09 | WAD.S.5040, WAD.S.4510 |  |  |  |  | -29.1d | 0.65d | GUARD HOUSE Works [16]; Construction Labors [212.38 h] | 4,093.7 |
| WAD.S.5520 |  | install heavy steel cover with frame including all necessary fixings | 2d | 2026-11-07 | 2026-11-09 | WAD.S.5510 SS |  |  |  |  | -29.75d | 0d | GUARD HOUSE Works [16]; Construction Labors [212.38 h] | 1,020.28 |

| ID | WBS | Activity | Duration | Start | Finish | Predecessors | Complete | Remaining | Planned start | Planned finish | Total float | Free float | Resources | Cost |
| --- | --- | --- | --- | --- | --- | --- | --- | --- | --- | --- | --- | --- | --- | --- |
|  | 5 | **WOODS AND PLASTICS** |  | 2026-11-07 | 2026-11-10 |  |  |  |  |  |  |  |  |  |
| WAD.S.5880 |  | PANTRY CABINET | 2d | 2026-11-07 | 2026-11-09 | WAD.S.5520 SS, WAD.S.4120 |  |  |  |  | -29.75d | 1.15d | GUARD HOUSE Works [16]; Construction Labors [212.38 h] | 5,353.3 |
| WAD.S.5890 |  | COUNTER DESK | 3d | 2026-11-07 | 2026-11-10 | WAD.S.5880 FF, WAD.S.4530 |  |  |  |  | -30.9d | 0d | GUARD HOUSE Works [24]; Construction Labors [212.38 h] | 2,309.27 |
|  | 8 | **DOORS & WINDOWS** |  | 2026-11-03 | 2026-11-08 |  |  |  |  |  |  |  |  |  |
| WAD.S.5050 |  | install hollow metal door | 4d | 2026-11-03 A | 2026-11-04 A | WAD.S.5010 | 100% |  | 2026-11-03 | 2026-11-08 |  |  | GUARD HOUSE Works [32]; Construction Labors [212.38 h] | 5,636.71 |
| WAD.S.6120 |  | Install aluminum framed double glazed windows | 3d | 2026-11-04 A | 2026-11-04 A | WAD.S.5050 SS, WAD.S.4760 | 100% |  | 2026-11-04 | 2026-11-08 |  |  | GUARD HOUSE Works [24]; Construction Labors [212.38 h] | 5,636.71 |
| WAD.S.5900 |  | Install Aluminum Door | 3d | 2026-11-04 A | 2026-11-08 | WAD.S.5890 SS, WAD.S.5060 | 80% | 0.6d |  |  | -28.5d | 0d | GUARD HOUSE Works [24]; Construction Labors [212.38 h] | 5,636.71 |
|  | 10 | **SPECIALTIES** |  | 2026-11-05 | 2026-11-11 |  |  |  |  |  |  |  |  |  |
| WAD.S.6130 |  | TOILET ACCESSROIES | 2d | 2026-11-05 | 2026-11-08 | WAD.S.5980 SS, WAD.S.5900 FF |  |  |  |  | -28.5d | 4.7d | GUARD HOUSE Works [16]; Construction Labors [212.38 h] | 2,544.39 |
| WAD.S.6410 |  | PANEL SIGNAGE | 2d | 2026-11-09 A | 2026-11-11 A | WAD.S.6130 SS, WAD.S.6440 FF, WAD.S.4550 | 100% |  |  |  |  |  | GUARD HOUSE Works [16]; Construction Labors [212.38 h] | 34,639 |
|  | 11 | **FURNISHINGS** |  | 2026-11-10 | 2026-11-11 |  |  |  |  |  |  |  |  |  |
| WAD.S.6450 |  | Workstation chair | 1d | 2026-11-10 | 2026-11-11 | WAD.S.6410 FF, WAD.S.4140 |  |  |  |  | -31.2d | 0d | GUARD HOUSE Works [8]; Construction Labors [212.38 h] | 1,684.72 |
| WAD.S.6460 |  | Workstation table | 1d | 2026-11-10 | 2026-11-11 | WAD.S.6450 SS |  |  |  |  | -31.2d | 0d | GUARD HOUSE Works [8]; Construction Labors [212.38 h] | 1,684.72 |
| WAD.S.6470 |  | Roller blind | 1d | 2026-11-10 | 2026-11-11 | WAD.S.6460 SS |  |  |  |  | -31.2d | 0d | GUARD HOUSE Works [8]; Construction Labors [212.38 h] | 1,684.72 |
| WAD.S.6480 |  | Waste Receptacle | 1d | 2026-11-10 | 2026-11-11 | WAD.S.6470 SS, WAD.S.4660 |  |  |  |  | -31.2d | 13.26d | GUARD HOUSE Works [8]; Construction Labors [212.38 h] | 1,684.72 |
|  | 3 | **GUARD HOUSE 2** |  | 2025-04-07 | 2026-11-10 |  |  |  |  |  |  |  |  |  |
|  | 1 | **SITE WORKS** |  | 2026-06-08 | 2026-10-22 |  |  |  |  |  |  |  |  |  |
|  | 4 | **Guard Rooms & Gates** |  | 2026-07-11 | 2026-10-05 |  |  |  |  |  |  |  |  |  |
| WAD.S.1460 |  | Excavation for guard rooms | 8d | 2026-07-11 A | 2026-07-23 A | WAD.S.1080 FS+17d | 100% |  | 2026-07-27 | 2026-08-04 |  |  | GUARD HOUSE Works [64]; Construction Labors [212.38 h]; Excavator [64 h] | 1,108.45 |
| WAD.S.1610 |  | Replacment Under Foundation | 2d | 2026-08-04 A | 2026-08-04 A | WAD.S.1460 | 100% |  | 2026-08-04 | 2026-08-05 |  |  | GUARD HOUSE Works [16]; Construction Labors [212.38 h]; Excavator [16 h]; Compactor [16 h]; Trcck [16 h] | 411.47 |
| WAD.S.2290 |  | Backfilling Under G.Beam | 2d | 2026-08-11 A | 2026-09-16 A | WAD.S.1990 | 100% |  | 2026-08-11 | 2026-08-12 |  |  | GUARD HOUSE Works [16]; Construction Labors [212.38 h]; Compactor [16 h] | 411.47 |
| WAD.S.2300 |  | Backfilling Under S.O.G | 2d | 2026-10-04 A | 2026-10-05 A | WAD.S.1990 | 100% |  |  |  |  |  | GUARD HOUSE Works [16]; Construction Labors [212.38 h]; Compactor [16 h] | 411.47 |
|  | 5 | **Guard Rooms & Gates (CONCRETE Works)** |  | 2026-06-08 | 2026-10-22 |  |  |  |  |  |  |  |  |  |
| WAD.S.2780 |  | Beams | 8d | 2026-06-08 A | 2026-10-04 A | WAD.S.2660 | 100% |  | 2026-10-05 | 2026-10-13 |  |  | GUARD HOUSE Works [64]; Construction Labors [212.38 h]; Concrete Mixer [64 h]; Concrete Pump [64 h] | 1,547.86 |
| WAD.S.1990 |  | Isolated Footings & Column Neck | 5d | 2026-07-11 A | 2026-08-08 A | WAD.S.1620 SS+2d, WAD.S.1620 FF+2d | 100% |  | 2026-09-27 | 2026-10-01 |  |  | GUARD HOUSE Works [40]; Construction Labors [212.38 h]; Concrete Mixer [40 h]; Concrete Pump [40 h] | 1,547.7 |
| WAD.S.1620 |  | 50 mm thickness lean concrete under the foundation. | 3d | 2026-08-04 A | 2026-08-06 A | WAD.S.1610 SS | 100% |  |  |  |  |  | GUARD HOUSE Works [24]; Construction Labors [212.38 h]; Concrete Mixer [24 h]; Concrete Pump [24 h] | 409.37 |
| WAD.S.2770 |  | Roof Slab | 8d | 2026-08-17 A | 2026-10-04 A | WAD.S.2780 SS, WAD.S.2660 | 100% |  | 2026-10-05 | 2026-10-13 |  |  | GUARD HOUSE Works [64]; Construction Labors [212.38 h]; Concrete Mixer [64 h]; Concrete Pump [64 h] | 1,547.86 |
| WAD.S.2400 |  | 50 mm thickness lean concrete under grade beams. | 3d | 2026-09-08 A | 2026-09-12 A | WAD.S.2290 | 100% |  |  |  |  |  | GUARD HOUSE Works [24]; Construction Labors [212.38 h]; Concrete Mixer [24 h]; Concrete Pump [24 h] | 409.37 |
| WAD.S.2610 |  | Grade beams | 5d | 2026-09-24 A | 2026-09-30 A | WAD.S.2400, WAD.S.1720 | 100% |  | 2026-09-24 | 2026-09-29 |  |  | GUARD HOUSE Works [40]; Construction Labors [212.38 h]; Concrete Mixer [40 h]; Concrete Pump [40 h] | 1,547.86 |
| WAD.S.2660 |  | Columns | 4d | 2026-09-29 A | 2026-10-04 A | WAD.S.2610 | 100% |  | 2026-09-29 | 2026-10-03 |  |  | GUARD HOUSE Works [32]; Construction Labors [212.38 h]; Concrete Mixer [32 h]; Concrete Pump [32 h] | 1,547.86 |
| WAD.S.3440 |  | Provide and cast concrete floor slab on grade | 5d | 2026-10-04 A | 2026-10-13 A | WAD.S.2610 SS+2d, WAD.S.2300, WAD.S.2780 | 100% |  | 2026-10-04 | 2026-10-10 |  |  | GUARD HOUSE Works [40]; Construction Labors [212.38 h]; Concrete Mixer [40 h]; Concrete Pump [40 h] | 1,547.86 |
| WAD.S.3450 |  | Concrete Pad | 3d | 2026-10-04 A | 2026-10-07 A | WAD.S.2780 | 100% |  |  |  |  |  | GUARD HOUSE Works [24]; Construction Labors [212.38 h]; Concrete Mixer [24 h]; Concrete Pump [24 h] | 1,547.86 |
| WAD.S.2730 |  | Raft and R.C. walls | 5d | 2026-10-05 A | 2026-10-10 A | WAD.S.2660 SS+2d | 100% |  |  |  |  |  | GUARD HOUSE Works [40]; Construction Labors [212.38 h]; Concrete Mixer [40 h]; Concrete Pump [40 h] | 1,547.86 |
| WAD.S.3460 |  | Tanks Raft | 5d | 2026-10-06 A | 2026-10-11 A | WAD.S.2770 | 100% |  |  |  |  |  | GUARD HOUSE Works [40]; Construction Labors [212.38 h]; Concrete Mixer [40 h]; Concrete Pump [40 h] | 1,547.86 |
| WAD.S.3980 |  | Tanks Walls | 5d | 2026-10-12 A | 2026-10-18 A | WAD.S.3460, WAD.S.3440, WAD.S.3450 | 100% |  | 2026-10-12 | 2026-10-17 |  |  | GUARD HOUSE Works [40]; Construction Labors [212.38 h]; Concrete Mixer [40 h]; Concrete Pump [40 h] | 1,547.86 |
| WAD.S.4890 |  | Tanks Slab | 4d | 2026-10-18 A | 2026-10-22 A | WAD.S.3980, WAD.S.4740 | 100% |  |  |  |  |  | GUARD HOUSE Works [32]; Construction Labors [212.38 h]; Concrete Mixer [32 h]; Concrete Pump [32 h] | 1,547.86 |

| ID | WBS | Activity | Duration | Start | Finish | Predecessors | Complete | Remaining | Planned start | Planned finish | Total float | Free float | Resources | Cost |
| --- | --- | --- | --- | --- | --- | --- | --- | --- | --- | --- | --- | --- | --- | --- |
|  | 3 | **MASONRY UNIT** |  | 2026-10-04 | 2026-10-06 |  |  |  |  |  |  |  |  |  |
| WAD.S.2930 |  | install Concrete Masonry Unit (CMU) for walls | 3d | 2026-10-04 A | 2026-10-06 A | WAD.S.2770 SS+3d, WAD.S.2730 | 100% |  | 2026-10-04 | 2026-10-07 |  |  | GUARD HOUSE Works [24]; Construction Labors [212.38 h]; Concrete Mixer [24 h]; Concrete Pump [24 h] | 10,980.56 |
|  | 6 | **THERMAL & MOISTURE PROTECTION** |  | 2026-09-16 | 2026-10-19 |  |  |  |  |  |  |  |  |  |
|  | 1 | **THERMAL & MOISTURE PROTECTION - Foundation** |  | 2026-09-16 | 2026-10-19 |  |  |  |  |  |  |  |  |  |
| WAD.S.3960 |  | apply 2 coats of bitumen waterproofing paint on concrete surface in contact with soil | 2d | 2026-09-16 A | 2026-09-19 A | WAD.S.3970 SS | 100% |  |  |  |  |  | GUARD HOUSE Works [16]; Construction Labors [212.38 h] | 358.99 |
| WAD.S.4100 |  | install geotextile sheet | 2d | 2026-10-10 A | 2026-10-12 A | WAD.S.3970 | 100% |  |  |  |  |  | GUARD HOUSE Works [16]; Construction Labors [212.38 h] | 557.37 |
| WAD.S.3970 |  | install liquid applied waterproofing coating; single-component pitch modified polyurethane | 2d | 2026-10-18 A | 2026-10-19 A | WAD.S.2400 FS+22d | 100% |  |  |  |  |  | GUARD HOUSE Works [16]; Construction Labors [212.38 h] | 226.73 |
|  | 7 | **ROOFING SYSTEM** |  | 2026-06-09 | 2026-10-31 |  |  |  |  |  |  |  |  |  |
| WAD.S.4320 |  | cast in place foam concrete screed, 50mm thick minimum; laid to fall and cross fall | 11d | 2026-06-09 A | 2026-10-19 A | WAD.S.4310 SS | 100% |  | 2026-10-18 | 2026-10-31 |  |  | GUARD HOUSE Works [88]; Construction Labors [212.38 h] | 683.49 |
| WAD.S.4290 |  | install liquid applied waterproofing coating single-component pitch modified polyurethane based elastomeric | 11d | 2026-10-18 A | 2026-10-29 A | WAD.S.3100 SS+10d | 100% |  |  |  |  |  | GUARD HOUSE Works [88]; Construction Labors [212.38 h] | 683.49 |
| WAD.S.4300 |  | install 4mm thick APP modified bituminous membrane - single layer | 11d | 2026-10-18 A | 2026-10-29 A | WAD.S.4390 SS | 100% |  |  |  |  |  | GUARD HOUSE Works [88]; Construction Labors [212.38 h] | 683.49 |
| WAD.S.4310 |  | install 75mm thick rigid insulation (extruded polystyrene) | 11d | 2026-10-18 A | 2026-10-29 A | WAD.S.4300 SS | 100% |  |  |  |  |  | GUARD HOUSE Works [88]; Construction Labors [212.38 h] | 683.49 |
| WAD.S.4330 |  | install 300 micron polyethylene sheet | 11d | 2026-10-18 A | 2026-10-29 A | WAD.S.4320 SS | 100% |  |  |  |  |  | GUARD HOUSE Works [88]; Construction Labors [212.38 h] | 683.49 |
| WAD.S.4340 |  | install 50mm thick loose gravel toppings | 11d | 2026-10-18 A | 2026-10-29 A | WAD.S.4330 SS | 100% |  |  |  |  |  | GUARD HOUSE Works [88]; Construction Labors [212.38 h] | 683.49 |
| WAD.S.4350 |  | install high density polyisocynurate cover board | 11d | 2026-10-18 A | 2026-10-29 A | WAD.S.4340 SS | 100% |  |  |  |  |  | GUARD HOUSE Works [88]; Construction Labors [212.38 h] | 683.49 |
| WAD.S.4360 |  | install UV resistant geotextile sheet | 11d | 2026-10-18 A | 2026-10-29 A | WAD.S.4350 SS | 100% |  |  |  |  |  | GUARD HOUSE Works [88]; Construction Labors [212.38 h] | 683.49 |
| WAD.S.4370 |  | fixing 3mm thick extruded aluminum flashing 40mm with sealant and all other accessories | 11d | 2026-10-18 A | 2026-10-29 A | WAD.S.4360 SS | 100% |  |  |  |  |  | GUARD HOUSE Works [88]; Construction Labors [212.38 h] | 683.49 |
| WAD.S.4380 |  | install Terrazzo tiles | 11d | 2026-10-18 A | 2026-10-31 A | WAD.S.4370 SS | 100% |  |  |  |  |  | GUARD HOUSE Works [88]; Construction Labors [212.38 h] | 683.49 |
|  | 2 | **THERMAL & MOISTURE PROTECTION - Tanks** |  | 2026-07-20 | 2026-10-22 |  |  |  |  |  |  |  |  |  |
| WAD.S.4390 |  | lay epoxy 2 coating for inner surfaces for bottom of the roof | 11d | 2026-07-20 A | 2026-10-21 A | WAD.S.4290 SS | 100% |  | 2026-10-18 | 2026-10-31 |  |  | GUARD HOUSE Works [88]; Construction Labors [212.38 h] | 683.49 |
| WAD.S.4740 |  | install water stop for tanks according to the drawings and specification | 5d | 2026-10-22 A | 2026-10-22 A | WAD.S.3980 | 100% |  | 2026-10-22 | 2026-10-28 |  |  | GUARD HOUSE Works [40]; Construction Labors [212.38 h] | 683.49 |
|  | 9 | **FINISHES** |  | 2025-04-07 | 2026-10-27 |  |  |  |  |  |  |  |  |  |
| WAD.S.3100 |  | install concrete plastering | 4d | 2025-04-07 A | 2026-10-18 A | WAD.S.2930 | 100% |  | 2026-10-13 | 2026-10-17 |  |  | GUARD HOUSE Works [32]; Construction Labors [212.38 h] | 2,524.93 |
| WAD.S.2240 |  | gypsum board suspended ceiling | 4d | 2026-10-18 A | 2026-10-21 A | WAD.S.3450 | 100% |  |  |  |  |  | GUARD HOUSE Works [32]; Construction Labors [212.38 h] | 2,524.93 |
| WAD.S.2370 |  | install ceramic floor tiles | 3d | 2026-10-18 A | 2026-10-20 A | WAD.S.1980 FF | 100% |  |  |  |  |  | GUARD HOUSE Works [24]; Construction Labors [212.38 h] | 2,524.93 |
| WAD.S.2380 |  | install granite flooring | 2d | 2026-10-18 A | 2026-10-19 A | WAD.S.2370 SS | 100% |  |  |  |  |  | GUARD HOUSE Works [16]; Construction Labors [212.38 h] | 2,524.93 |
| WAD.S.2390 |  | install ceramic wall tiles | 3d | 2026-10-18 A | 2026-10-20 A | WAD.S.2380 SS | 100% |  |  |  |  |  | GUARD HOUSE Works [24]; Construction Labors [212.38 h] | 2,524.93 |
| WAD.S.4860 |  | install granite saddles and thresholds | 3d | 2026-10-18 A | 2026-10-21 A | WAD.S.2240 SS, WAD.S.4740 | 100% |  |  |  |  |  | GUARD HOUSE Works [24]; Construction Labors [212.38 h] | 2,524.93 |
| WAD.S.2520 |  | install two coats of acrylic paint on internal walls | 2d | 2026-10-19 A | 2026-10-19 A | WAD.S.2390 FF | 100% |  | 2026-10-19 | 2026-10-20 |  |  | GUARD HOUSE Works [16]; Construction Labors [212.38 h] | 2,524.93 |
| WAD.S.2530 |  | install two coats of acrylic paint (suitable for exterior use) on external | 2d | 2026-10-19 A | 2026-10-27 | WAD.S.2520 SS | 90% | 0.2d | 2026-10-19 | 2026-10-20 | -18.2d | 26.26d | GUARD HOUSE Works [16]; Construction Labors [212.38 h] | 2,524.93 |
| WAD.S.4870 |  | install Riyadh stone cladding | 3d | 2026-10-21 A | 2026-10-25 A | WAD.S.4880 FF | 100% |  |  |  |  |  | GUARD HOUSE Works [24]; Construction Labors [212.38 h] | 2,524.93 |
| WAD.S.4880 |  | install 3mm steel CNC laser cut panels | 3d | 2026-10-21 A | 2026-10-25 A | WAD.S.4960 FF | 100% |  |  |  |  |  | GUARD HOUSE Works [24]; Construction Labors [212.38 h] | 2,524.93 |
| WAD.S.4960 |  | install aluminum cladding | 2d | 2026-10-22 A | 2026-10-25 A | WAD.S.4860 FF | 100% |  |  |  |  |  | GUARD HOUSE Works [16]; Construction Labors [212.38 h] | 2,524.93 |

| ID | WBS | Activity | Duration | Start | Finish | Predecessors | Complete | Remaining | Planned start | Planned finish | Total float | Free float | Resources | Cost |
| --- | --- | --- | --- | --- | --- | --- | --- | --- | --- | --- | --- | --- | --- | --- |
|  | 13 | **MECHANICAL WORKS** |  | 2026-10-04 | 2026-11-10 |  |  |  |  |  |  |  |  |  |
|  | 1 | **MECHANICAL WORKS - 1st Fix** |  | 2026-10-04 | 2026-10-15 |  |  |  |  |  |  |  |  |  |
| WAD.S.1830 |  | WATER SUPPLY SYSTEM - 1st Fix | 10d | 2026-10-04 A | 2026-10-11 A | WAD.S.1850 SS | 100% |  | 2026-10-04 | 2026-10-14 |  |  | GUARD HOUSE Works [80]; Construction Labors [212.38 h] | 2,776.97 |
| WAD.S.1840 |  | SEWER AND DRAINAGE SYSTEM - 1st Fix | 10d | 2026-10-04 A | 2026-10-15 A | WAD.S.1830 SS | 100% |  | 2026-10-04 | 2026-10-14 |  |  | GUARD HOUSE Works [80]; Construction Labors [212.38 h] | 2,776.97 |
| WAD.S.1850 |  | IRRIGATION SYSTEM - 1st Fix | 10d | 2026-10-04 A | 2026-10-15 A | WAD.S.1990 SS, WAD.S.1990 FF | 100% |  | 2026-10-04 | 2026-10-14 |  |  | GUARD HOUSE Works [80]; Construction Labors [212.38 h] | 2,776.97 |
| WAD.S.1880 |  | HEATING, VENTILATION AND AIR CONDITIONING - 1st Fix | 10d | 2026-10-04 A | 2026-10-15 A | WAD.S.1840 SS | 100% |  | 2026-10-04 | 2026-10-14 |  |  | GUARD HOUSE Works [80]; Construction Labors [212.38 h] | 2,776.97 |
| WAD.S.1890 |  | Exhaust fans - 1st Fix | 10d | 2026-10-04 A | 2026-10-15 A | WAD.S.1880 SS | 100% |  | 2026-10-04 | 2026-10-14 |  |  | GUARD HOUSE Works [80]; Construction Labors [212.38 h] | 2,776.97 |
|  | 2 | **MECHANICAL WORKS - Final Fix** |  | 2026-10-21 | 2026-11-10 |  |  |  |  |  |  |  |  |  |
| WAD.S.5570 |  | gully traps with heavy duty cover | 3d | 2026-10-21 A | 2026-10-22 A | WAD.S.5560 FF | 100% |  | 2026-10-21 | 2026-10-25 |  |  | GUARD HOUSE Works [24]; Construction Labors [212.38 h] | 2,776.97 |
| WAD.S.5580 |  | chamber with heavy duty cover | 3d | 2026-10-21 A | 2026-10-22 A | WAD.S.5570 FF | 100% |  | 2026-10-21 | 2026-10-25 |  |  | GUARD HOUSE Works [24]; Construction Labors [212.38 h] | 2,776.97 |
| WAD.S.5560 |  | installation of Fire extinguishers as per drawings, specifications | 3d | 2026-10-31 | 2026-11-02 | WAD.S.1890, WAD.S.4960, WAD.S.4880, WAD.S.4380 FS+3d |  |  |  |  | -30d | 0d | GUARD HOUSE Works [24]; Construction Labors [212.38 h] | 2,776.97 |
| WAD.S.5590 |  | INSTALL PLUMBING FIXTURES | 3d | 2026-11-07 A | 2026-11-08 | WAD.S.5580 FF, WAD.S.4600 | 50% | 1.5d | 2026-11-07 | 2026-11-10 | -34.6d | 0d | GUARD HOUSE Works [24]; Construction Labors [212.38 h] | 2,776.97 |
| WAD.S.5600 |  | HEATING, VENTILATION AND AIR CONDITIONING - Final Fix | 3d | 2026-11-07 A | 2026-11-08 A | WAD.S.5590 FF | 100% |  | 2026-11-07 | 2026-11-10 |  |  | GUARD HOUSE Works [24]; Construction Labors [212.38 h] | 2,776.97 |
| WAD.S.5610 |  | Exhaust fans - Final Fix | 3d | 2026-11-07 A | 2026-11-10 A | WAD.S.5600 FF | 100% |  |  |  |  |  | GUARD HOUSE Works [24]; Construction Labors [212.38 h] | 2,776.97 |
| WAD.S.5620 |  | Bulbblers and Spreyers of IRRIGATION SYSTEM | 3d | 2026-11-07 A | 2026-11-10 A | WAD.S.5610 FF | 100% |  |  |  |  |  | GUARD HOUSE Works [24]; Construction Labors [212.38 h] | 2,776.97 |
| WAD.S.5750 |  | WATER SUPPLY SYSTEM - Final Fix | 3d | 2026-11-07 A | 2026-11-08 | WAD.S.5620 FF | 80% | 0.6d | 2026-11-07 | 2026-11-10 | -34.6d | 0d | GUARD HOUSE Works [24]; Construction Labors [212.38 h] | 2,776.97 |
| WAD.S.5760 |  | IRRIGATION SYSTEM - Final Fix | 3d | 2026-11-07 A | 2026-11-10 A | WAD.S.5750 FF | 100% |  |  |  |  |  | GUARD HOUSE Works [24]; Construction Labors [212.38 h] | 2,776.97 |
|  | 15 | **ELECTRICAL WORKS** |  | 2026-10-06 | 2026-11-10 |  |  |  |  |  |  |  |  |  |
|  | 1 | **ELECTRICAL WORKS - 1st Fix** |  | 2026-10-06 | 2026-10-17 |  |  |  |  |  |  |  |  |  |
| WAD.S.1860 |  | LIGHTING AND POWER TYPE PANELBOARDS - 1st Fix | 10d | 2026-10-06 A | 2026-10-17 A | WAD.S.1890 SS | 100% |  |  |  |  |  | GUARD HOUSE Works [80]; Construction Labors [212.38 h] | 7,789.66 |
| WAD.S.1870 |  | UPS 3KVA (installed inside the rack) - 1st Fix | 10d | 2026-10-06 A | 2026-10-17 A | WAD.S.1860 SS | 100% |  |  |  |  |  | GUARD HOUSE Works [80]; Construction Labors [212.38 h] | 7,789.66 |
| WAD.S.1900 |  | power source with built-in photocell sensor for automatic electrical connection during day/light times - 1st Fix | 10d | 2026-10-06 A | 2026-10-17 A | WAD.S.1870 SS | 100% |  |  |  |  |  | GUARD HOUSE Works [80]; Construction Labors [212.38 h] | 7,789.66 |
| WAD.S.1910 |  | UNDERGROUND DISTRIBUTION SYSTEM - 1st Fix | 10d | 2026-10-06 A | 2026-10-17 A | WAD.S.1900 SS | 100% |  |  |  |  |  | GUARD HOUSE Works [80]; Construction Labors [212.38 h] | 7,789.66 |
| WAD.S.1920 |  | LIGHTING FIXTURES - 1st Fix | 10d | 2026-10-06 A | 2026-10-17 A | WAD.S.1910 SS | 100% |  |  |  |  |  | GUARD HOUSE Works [80]; Construction Labors [212.38 h] | 7,789.66 |
| WAD.S.1930 |  | installation of Wiring devices includes switches and Receptacle outlets complete with device boxes - 1st Fix | 10d | 2026-10-06 A | 2026-10-17 A | WAD.S.1920 SS | 100% |  |  |  |  |  | GUARD HOUSE Works [80]; Construction Labors [212.38 h] | 7,789.66 |
| WAD.S.1940 |  | GROUNDING - 1st Fix | 10d | 2026-10-06 A | 2026-10-17 A | WAD.S.1930 SS | 100% |  |  |  |  |  | GUARD HOUSE Works [80]; Construction Labors [212.38 h] | 7,789.66 |
| WAD.S.1950 |  | card reader IN/OUT - 1st Fix | 10d | 2026-10-06 A | 2026-10-17 A | WAD.S.1940 SS | 100% |  |  |  |  |  | GUARD HOUSE Works [80]; Construction Labors [212.38 h] | 7,789.66 |
| WAD.S.1960 |  | CCTV cameras - 1st Fix | 10d | 2026-10-06 A | 2026-10-17 A | WAD.S.1950 SS | 100% |  |  |  |  |  | GUARD HOUSE Works [80]; Construction Labors [212.38 h] | 7,789.66 |
| WAD.S.1970 |  | Access control panel - 1st Fix | 10d | 2026-10-06 A | 2026-10-17 A | WAD.S.1960 SS | 100% |  |  |  |  |  | GUARD HOUSE Works [80]; Construction Labors [212.38 h] | 7,789.66 |
| WAD.S.1980 |  | fire alarm system including wires, conduit and other materials - 1st Fix | 10d | 2026-10-06 A | 2026-10-17 A | WAD.S.1970 SS | 100% |  |  |  |  |  | GUARD HOUSE Works [80]; Construction Labors [212.38 h] | 7,789.66 |

| ID | WBS | Activity | Duration | Start | Finish | Predecessors | Complete | Remaining | Planned start | Planned finish | Total float | Free float | Resources | Cost |
| --- | --- | --- | --- | --- | --- | --- | --- | --- | --- | --- | --- | --- | --- | --- |
|  | 2 | **ELECTRICAL WORKS - Final Fix** |  | 2026-11-03 | 2026-11-10 |  |  |  |  |  |  |  |  |  |
| WAD.S.5170 |  | 12-Port, SMF, Fiber Optic Patch Panels; | 4d | 2026-11-03 | 2026-11-08 | WAD.S.5670 FF |  |  |  |  | -34.6d | 0d | GUARD HOUSE Works [32]; Construction Labors [212.38 h] | 7,789.66 |
| WAD.S.5180 |  | VIDEO SURVEILLANCE | 4d | 2026-11-03 | 2026-11-08 | WAD.S.5680 FF |  |  |  |  | -34.6d | 0d | GUARD HOUSE Works [32]; Construction Labors [212.38 h] | 7,789.66 |
| WAD.S.5190 |  | CCTV storage system, as specified; | 4d | 2026-11-03 | 2026-11-08 | WAD.S.5700 FF |  |  |  |  | -34.6d | 0d | GUARD HOUSE Works [32]; Construction Labors [212.38 h] | 7,789.66 |
| WAD.S.5660 |  | card reader IN/OUT - Final Fix | 3d | 2026-11-04 | 2026-11-08 | WAD.S.5650 FF |  |  |  |  | -34.6d | 0d | GUARD HOUSE Works [24]; Construction Labors [212.38 h] | 7,789.66 |
| WAD.S.5670 |  | 12-Port CAT6A UTP fully loaded patch panel | 3d | 2026-11-04 | 2026-11-08 | WAD.S.6030 FF |  |  |  |  | -34.6d | 0d | GUARD HOUSE Works [24]; Construction Labors [212.38 h] | 7,789.66 |
| WAD.S.5680 |  | COMPUTERS AND RELATED PERIPHERALS | 3d | 2026-11-04 | 2026-11-08 | WAD.S.5170 FF |  |  |  |  | -34.6d | 0d | GUARD HOUSE Works [24]; Construction Labors [212.38 h] | 7,789.66 |
| WAD.S.5690 |  | Central (Headend) System Components; | 3d | 2026-11-04 | 2026-11-08 | WAD.S.5180 FF |  |  |  |  | -34.6d | 0d | GUARD HOUSE Works [24]; Construction Labors [212.38 h] | 7,789.66 |
| WAD.S.5700 |  | VSS System, as specified; | 3d | 2026-11-04 | 2026-11-08 | WAD.S.5690 FF |  |  |  |  | -34.6d | 0d | GUARD HOUSE Works [24]; Construction Labors [212.38 h] | 7,789.66 |
| WAD.S.5710 |  | CCTV cameras - Final Fix | 3d | 2026-11-04 | 2026-11-08 | WAD.S.5190 FF |  |  |  |  | -34.6d | 0d | GUARD HOUSE Works [24]; Construction Labors [212.38 h] | 7,789.66 |
| WAD.S.6030 |  | Access control panel - Final Fix | 2d | 2026-11-05 | 2026-11-08 | WAD.S.5660 FF |  |  |  |  | -34.6d | 0d | GUARD HOUSE Works [16]; Construction Labors [212.38 h] | 7,789.66 |
| WAD.S.6040 |  | 20A , ATS ( Automatic transfer switch) for UPS | 2d | 2026-11-05 | 2026-11-08 | WAD.S.5710 FF |  |  |  |  | -34.6d | 0d | GUARD HOUSE Works [16]; Construction Labors [212.38 h] | 7,789.66 |
| WAD.S.5630 |  | power source with built-in photocell sensor for automatic electrical connection during day/light times - Final Fix | 3d | 2026-11-07 A | 2026-11-10 A | WAD.S.5750 FF | 100% |  |  |  |  |  | GUARD HOUSE Works [24]; Construction Labors [212.38 h] | 7,789.66 |
| WAD.S.5640 |  | LIGHTING FIXTURES - Final Fix | 3d | 2026-11-07 A | 2026-11-08 | WAD.S.6010 FF | 80% | 0.6d | 2026-11-07 | 2026-11-10 | -34.6d | 0d | GUARD HOUSE Works [24]; Construction Labors [212.38 h] | 7,789.66 |
| WAD.S.5650 |  | GROUNDING - Final Fix | 3d | 2026-11-07 A | 2026-11-08 | WAD.S.6020 FF, WAD.S.1980, WAD.S.4870 | 80% | 0.6d | 2026-11-07 | 2026-11-10 | -34.6d | 0d | GUARD HOUSE Works [24]; Construction Labors [212.38 h] | 7,789.66 |
| WAD.S.5720 |  | ELECTRICAL GATE BARRIER | 3d | 2026-11-07 A | 2026-11-08 | WAD.S.6040 FF | 30% | 2.1d | 2026-11-07 | 2026-11-10 | -34.6d | 0d | GUARD HOUSE Works [24]; Construction Labors [212.38 h] | 7,789.66 |
| WAD.S.5730 |  | fire alarm system including wires, conduit and other materials - Final Fix | 3d | 2026-11-07 A | 2026-11-10 A | WAD.S.6050 FF | 100% |  |  |  |  |  | GUARD HOUSE Works [24]; Construction Labors [212.38 h] | 7,789.66 |
| WAD.S.5740 |  | Analog addressable fire alarm control panel with battery | 3d | 2026-11-07 A | 2026-11-10 A | WAD.S.5730 FF | 100% |  |  |  |  |  | GUARD HOUSE Works [24]; Construction Labors [212.38 h] | 7,789.66 |
| WAD.S.5770 |  | LIGHTING AND POWER TYPE PANELBOARDS - Final Fix | 3d | 2026-11-07 A | 2026-11-08 | WAD.S.6060 FF | 50% | 1.5d | 2026-11-07 | 2026-11-10 | -28.6d | 15.86d | GUARD HOUSE Works [24]; Construction Labors [212.38 h] | 7,789.66 |
| WAD.S.6010 |  | UNDERGROUND DISTRIBUTION SYSTEM - Final Fix | 2d | 2026-11-08 A | 2026-11-10 A | WAD.S.5630 FF | 100% |  |  |  |  |  | GUARD HOUSE Works [16]; Construction Labors [212.38 h] | 7,789.66 |
| WAD.S.6020 |  | installation of Wiring devices includes switches and Receptacle outlets complete with device boxes - Final Fix | 2d | 2026-11-08 A | 2026-11-08 | WAD.S.5640 FF | 80% | 0.4d | 2026-11-08 | 2026-11-10 | -34.6d | 0d | GUARD HOUSE Works [16]; Construction Labors [212.38 h] | 7,789.66 |
| WAD.S.6050 |  | LIGHTNING PROTECTION | 2d | 2026-11-08 A | 2026-11-10 A | WAD.S.5720 FF | 100% |  |  |  |  |  | GUARD HOUSE Works [16]; Construction Labors [212.38 h] | 7,789.66 |
| WAD.S.6060 |  | Intelligent Ionization / Photoelectric smoke and heat detector with base | 2d | 2026-11-08 A | 2026-11-10 A | WAD.S.5740 FF | 100% |  |  |  |  |  | GUARD HOUSE Works [16]; Construction Labors [212.38 h] | 7,789.66 |
|  | 4 | **METALS** |  | 2026-10-11 | 2026-10-28 |  |  |  |  |  |  |  |  |  |
| WAD.S.2490 |  | install of overflow galvanized steel roof scupper with gray color with angular secondary support | 2d | 2026-10-11 A | 2026-10-22 A | WAD.S.2480 SS | 100% |  | 2026-10-11 | 2026-10-12 |  |  | GUARD HOUSE Works [16]; Construction Labors [212.38 h] | 850.23 |
| WAD.S.2480 |  | folding & sliding mounter combination ladder for building maintenance purpose | 2d | 2026-10-27 | 2026-10-28 | WAD.S.2240 |  |  |  |  | -21.6d | 0d | GUARD HOUSE Works [16]; Construction Labors [212.38 h] | 4,093.7 |
| WAD.S.2500 |  | install heavy steel cover with frame including all necessary fixings | 2d | 2026-10-27 | 2026-10-28 | WAD.S.2490 SS |  |  |  |  | -21.6d | 0d | GUARD HOUSE Works [16]; Construction Labors [212.38 h] | 1,020.28 |

| ID | WBS | Activity | Duration | Start | Finish | Predecessors | Complete | Remaining | Planned start | Planned finish | Total float | Free float | Resources | Cost |
| --- | --- | --- | --- | --- | --- | --- | --- | --- | --- | --- | --- | --- | --- | --- |
|  | 5 | **WOODS AND PLASTICS** |  | 2026-10-27 | 2026-10-29 |  |  |  |  |  |  |  |  |  |
| WAD.S.2350 |  | COUNTER DESK | 3d | 2026-10-27 | 2026-10-29 | WAD.S.2510 FF |  |  |  |  | -22.6d | 0d | GUARD HOUSE Works [24]; Construction Labors [212.38 h] | 2,309.27 |
| WAD.S.2510 |  | PANTRY CABINET | 2d | 2026-10-27 | 2026-10-28 | WAD.S.2500 SS |  |  |  |  | -21.6d | 0d | GUARD HOUSE Works [16]; Construction Labors [212.38 h] | 5,353.3 |
|  | 8 | **DOORS & WINDOWS** |  | 2026-10-21 | 2026-10-27 |  |  |  |  |  |  |  |  |  |
| WAD.S.2360 |  | Install Aluminum Door | 3d | 2026-10-21 A | 2026-10-27 | WAD.S.2350 SS | 80% | 0.6d | 2026-10-21 | 2026-10-24 | -22.6d | 11.4d | GUARD HOUSE Works [24]; Construction Labors [212.38 h] | 5,636.71 |
| WAD.S.2200 |  | install hollow metal door | 4d | 2026-10-22 A | 2026-10-22 A | WAD.S.2510 SS | 100% |  | 2026-10-22 | 2026-10-26 |  |  | GUARD HOUSE Works [32]; Construction Labors [212.38 h] | 5,636.71 |
| WAD.S.2210 |  | Install aluminum framed double glazed windows | 3d | 2026-10-22 A | 2026-10-22 A | WAD.S.2200 SS | 100% |  | 2026-10-22 | 2026-10-25 |  |  | GUARD HOUSE Works [24]; Construction Labors [212.38 h] | 5,636.71 |
|  | 10 | **SPECIALTIES** |  | 2026-11-08 | 2026-11-10 |  |  |  |  |  |  |  |  |  |
| WAD.S.5550 |  | TOILET ACCESSROIES | 2d | 2026-11-08 | 2026-11-09 | WAD.S.5750 SS, WAD.S.2360 FF |  |  |  |  | -34d | 0.6d | GUARD HOUSE Works [16]; Construction Labors [212.38 h] | 2,544.39 |
| WAD.S.6000 |  | PANEL SIGNAGE | 2d | 2026-11-08 A | 2026-11-10 A | WAD.S.5550 SS, WAD.S.6060 FF | 100% |  |  |  |  |  | GUARD HOUSE Works [16]; Construction Labors [212.38 h] | 34,639 |
|  | 11 | **FURNISHINGS** |  | 2026-11-07 | 2026-11-08 |  |  |  |  |  |  |  |  |  |
| WAD.S.6210 |  | Workstation chair | 1d | 2026-11-07 | 2026-11-08 | WAD.S.6000 FF |  |  |  |  | -34.6d | 0d | GUARD HOUSE Works [8]; Construction Labors [212.38 h] | 1,684.72 |
| WAD.S.6220 |  | Workstation table | 1d | 2026-11-07 | 2026-11-08 | WAD.S.6210 SS |  |  |  |  | -34.6d | 0d | GUARD HOUSE Works [8]; Construction Labors [212.38 h] | 1,684.72 |
| WAD.S.6230 |  | Roller blind | 1d | 2026-11-07 | 2026-11-08 | WAD.S.6220 SS, WAD.S.4770 |  |  |  |  | -34.6d | 0d | GUARD HOUSE Works [8]; Construction Labors [212.38 h] | 1,684.72 |
| WAD.S.6240 |  | Waste Receptacle | 1d | 2026-11-07 | 2026-11-08 | WAD.S.6230 SS |  |  |  |  | -34.6d | 0d | GUARD HOUSE Works [8]; Construction Labors [212.38 h] | 1,684.72 |
|  | 5 | **GUARD HOUSE 3** |  | 2026-07-11 | 2026-11-10 |  |  |  |  |  |  |  |  |  |
|  | 1 | **SITE WORKS** |  | 2026-07-11 | 2026-10-29 |  |  |  |  |  |  |  |  |  |
|  | 4 | **Guard Rooms & Gates** |  | 2026-07-16 | 2026-09-08 |  |  |  |  |  |  |  |  |  |
| WAD.S.7380 |  | Excavation for guard rooms | 8d | 2026-07-16 A | 2026-07-23 A | WAD.S.1080 FS+20d | 100% |  | 2026-09-15 | 2026-09-23 |  |  | GUARD HOUSE Works [64]; Construction Labors [212.38 h]; Excavator [64 h] | 1,108.45 |
| WAD.S.7390 |  | Replacment Under Foundation | 2d | 2026-08-04 A | 2026-08-04 A | WAD.S.7380 | 100% |  | 2026-08-04 | 2026-08-05 |  |  | GUARD HOUSE Works [16]; Construction Labors [212.38 h]; Excavator [16 h]; Compactor [16 h]; Trcck [16 h] | 411.47 |
| WAD.S.7400 |  | Backfilling Under G.Beam | 2d | 2026-08-11 A | 2026-08-31 A | WAD.S.7450 | 100% |  | 2026-08-11 | 2026-08-12 |  |  | GUARD HOUSE Works [16]; Construction Labors [212.38 h]; Compactor [16 h] | 411.47 |
| WAD.S.7410 |  | Backfilling Under S.O.G | 2d | 2026-09-07 A | 2026-09-08 A | WAD.S.7450 | 100% |  |  |  |  |  | GUARD HOUSE Works [16]; Construction Labors [212.38 h]; Compactor [16 h] | 411.47 |
|  | 5 | **Guard Rooms & Gates (CONCRETE Works)** |  | 2026-07-11 | 2026-10-29 |  |  |  |  |  |  |  |  |  |
| WAD.S.7450 |  | Isolated Footings & Column Neck | 5d | 2026-07-11 A | 2026-08-08 A | WAD.S.7430 SS+2d, WAD.S.7430 FF+2d | 100% |  | 2026-09-27 | 2026-10-01 |  |  | GUARD HOUSE Works [40]; Construction Labors [212.38 h]; Concrete Mixer [40 h]; Concrete Pump [40 h] | 1,547.7 |
| WAD.S.7430 |  | 50 mm thickness lean concrete under the foundation. | 3d | 2026-08-04 A | 2026-08-06 A | WAD.S.7390 SS | 100% |  |  |  |  |  | GUARD HOUSE Works [24]; Construction Labors [212.38 h]; Concrete Mixer [24 h]; Concrete Pump [24 h] | 409.37 |
| WAD.S.7420 |  | 50 mm thickness lean concrete under grade beams. | 3d | 2026-08-31 A | 2026-09-03 A | WAD.S.7400 | 100% |  |  |  |  |  | GUARD HOUSE Works [24]; Construction Labors [212.38 h]; Concrete Mixer [24 h]; Concrete Pump [24 h] | 409.37 |
| WAD.S.7490 |  | Roof Slab | 8d | 2026-09-06 A | 2026-09-20 A | WAD.S.7500 SS, WAD.S.7470 | 100% |  | 2026-09-17 | 2026-09-26 |  |  | GUARD HOUSE Works [64]; Construction Labors [212.38 h]; Concrete Mixer [64 h]; Concrete Pump [64 h] | 1,547.86 |
| WAD.S.7500 |  | Beams | 8d | 2026-09-06 A | 2026-09-20 A | WAD.S.7470 | 100% |  | 2026-09-17 | 2026-09-26 |  |  | GUARD HOUSE Works [64]; Construction Labors [212.38 h]; Concrete Mixer [64 h]; Concrete Pump [64 h] | 1,547.86 |
| WAD.S.7460 |  | Grade beams | 5d | 2026-09-10 A | 2026-09-15 A | WAD.S.7420, WAD.S.1720 | 100% |  |  |  |  |  | GUARD HOUSE Works [40]; Construction Labors [212.38 h]; Concrete Mixer [40 h]; Concrete Pump [40 h] | 1,547.86 |
| WAD.S.7470 |  | Columns | 4d | 2026-09-16 A | 2026-09-20 A | WAD.S.7460 | 100% |  |  |  |  |  | GUARD HOUSE Works [32]; Construction Labors [212.38 h]; Concrete Mixer [32 h]; Concrete Pump [32 h] | 1,547.86 |
| WAD.S.7510 |  | Raft and R.C. walls | 5d | 2026-09-16 A | 2026-09-24 A | WAD.S.7470 SS+2d | 100% |  | 2026-09-16 | 2026-09-21 |  |  | GUARD HOUSE Works [40]; Construction Labors [212.38 h]; Concrete Mixer [40 h]; Concrete Pump [40 h] | 1,547.86 |
| WAD.S.7480 |  | Concrete Pad | 3d | 2026-09-23 A | 2026-09-26 A | WAD.S.7500 | 100% |  |  |  |  |  | GUARD HOUSE Works [24]; Construction Labors [212.38 h]; Concrete Mixer [24 h]; Concrete Pump [24 h] | 1,547.86 |
| WAD.S.7440 |  | Provide and cast concrete floor slab on grade | 5d | 2026-10-03 A | 2026-10-07 A | WAD.S.7460 SS+2d, WAD.S.7410, WAD.S.7500 | 100% |  |  |  |  |  | GUARD HOUSE Works [40]; Construction Labors [212.38 h]; Concrete Mixer [40 h]; Concrete Pump [40 h] | 1,547.86 |
| WAD.S.7520 |  | Tanks Raft | 5d | 2026-10-06 A | 2026-10-11 A | WAD.S.7490 | 100% |  |  |  |  |  | GUARD HOUSE Works [40]; Construction Labors [212.38 h]; Concrete Mixer [40 h]; Concrete Pump [40 h] | 1,547.86 |
| WAD.S.7530 |  | Tanks Walls | 5d | 2026-10-12 A | 2026-10-18 A | WAD.S.7520, WAD.S.7440, WAD.S.7480 | 100% |  | 2026-10-12 | 2026-10-17 |  |  | GUARD HOUSE Works [40]; Construction Labors [212.38 h]; Concrete Mixer [40 h]; Concrete Pump [40 h] | 1,547.86 |
| WAD.S.7540 |  | Tanks Slab | 4d | 2026-10-26 A | 2026-10-29 A | WAD.S.7530, WAD.S.6600, WAD.S.2210 | 100% |  |  |  |  |  | GUARD HOUSE Works [32]; Construction Labors [212.38 h]; Concrete Mixer [32 h]; Concrete Pump [32 h] | 1,547.86 |

| ID | WBS | Activity | Duration | Start | Finish | Predecessors | Complete | Remaining | Planned start | Planned finish | Total float | Free float | Resources | Cost |
| --- | --- | --- | --- | --- | --- | --- | --- | --- | --- | --- | --- | --- | --- | --- |
|  | 3 | **MASONRY UNIT** |  | 2026-09-23 | 2026-10-04 |  |  |  |  |  |  |  |  |  |
| WAD.S.6500 |  | install Concrete Masonry Unit (CMU) for walls | 3d | 2026-09-23 A | 2026-10-04 A | WAD.S.7490 SS+3d, WAD.S.7510 | 100% |  | 2026-09-23 | 2026-09-26 |  |  | GUARD HOUSE Works [24]; Construction Labors [212.38 h]; Concrete Mixer [24 h]; Concrete Pump [24 h] | 10,980.56 |
|  | 6 | **THERMAL & MOISTURE PROTECTION** |  | 2026-09-16 | 2026-10-18 |  |  |  |  |  |  |  |  |  |
|  | 1 | **THERMAL & MOISTURE PROTECTION - Foundation** |  | 2026-09-16 | 2026-10-18 |  |  |  |  |  |  |  |  |  |
| WAD.S.6560 |  | apply 2 coats of bitumen waterproofing paint on concrete surface in contact with soil | 2d | 2026-09-16 A | 2026-09-19 A | WAD.S.6580 SS | 100% |  |  |  |  |  | GUARD HOUSE Works [16]; Construction Labors [212.38 h] | 358.99 |
| WAD.S.6580 |  | install liquid applied waterproofing coating; single-component pitch modified polyurethane | 2d | 2026-10-06 A | 2026-10-18 A | WAD.S.7420 FS+22d | 100% |  | 2026-10-06 | 2026-10-07 |  |  | GUARD HOUSE Works [16]; Construction Labors [212.38 h] | 226.73 |
| WAD.S.6590 |  | install geotextile sheet | 2d | 2026-10-08 A | 2026-10-10 A | WAD.S.6580 | 100% |  |  |  |  |  | GUARD HOUSE Works [16]; Construction Labors [212.38 h] | 557.37 |
|  | 7 | **ROOFING SYSTEM** |  | 2026-10-18 | 2026-11-04 |  |  |  |  |  |  |  |  |  |
| WAD.S.6630 |  | cast in place foam concrete screed, 50mm thick minimum; laid to fall and cross fall | 11d | 2026-10-18 A | 2026-10-24 A | WAD.S.6620 SS | 100% |  | 2026-10-18 | 2026-10-29 |  |  | GUARD HOUSE Works [88]; Construction Labors [212.38 h] | 683.49 |
| WAD.S.6690 |  | install Terrazzo tiles | 11d | 2026-10-18 A | 2026-10-29 A | WAD.S.6680 SS | 100% |  |  |  |  |  | GUARD HOUSE Works [88]; Construction Labors [212.38 h] | 683.49 |
| WAD.S.6570 |  | install liquid applied waterproofing coating single-component pitch modified polyurethane based elastomeric | 11d | 2026-10-22 A | 2026-11-04 A | WAD.S.6760 SS+10d | 100% |  |  |  |  |  | GUARD HOUSE Works [88]; Construction Labors [212.38 h] | 683.49 |
| WAD.S.6610 |  | install 4mm thick APP modified bituminous membrane - single layer | 11d | 2026-10-22 A | 2026-11-04 A | WAD.S.7370 SS | 100% |  |  |  |  |  | GUARD HOUSE Works [88]; Construction Labors [212.38 h] | 683.49 |
| WAD.S.6620 |  | install 75mm thick rigid insulation (extruded polystyrene) | 11d | 2026-10-22 A | 2026-11-04 A | WAD.S.6610 SS | 100% |  |  |  |  |  | GUARD HOUSE Works [88]; Construction Labors [212.38 h] | 683.49 |
| WAD.S.6640 |  | install 300 micron polyethylene sheet | 11d | 2026-10-22 A | 2026-11-04 A | WAD.S.6630 SS | 100% |  |  |  |  |  | GUARD HOUSE Works [88]; Construction Labors [212.38 h] | 683.49 |
| WAD.S.6650 |  | install 50mm thick loose gravel toppings | 11d | 2026-10-22 A | 2026-11-04 A | WAD.S.6640 SS | 100% |  |  |  |  |  | GUARD HOUSE Works [88]; Construction Labors [212.38 h] | 683.49 |
| WAD.S.6660 |  | install high density polyisocynurate cover board | 11d | 2026-10-22 A | 2026-11-04 A | WAD.S.6650 SS | 100% |  |  |  |  |  | GUARD HOUSE Works [88]; Construction Labors [212.38 h] | 683.49 |
| WAD.S.6670 |  | install UV resistant geotextile sheet | 11d | 2026-10-22 A | 2026-11-04 A | WAD.S.6660 SS | 100% |  |  |  |  |  | GUARD HOUSE Works [88]; Construction Labors [212.38 h] | 683.49 |
| WAD.S.6680 |  | fixing 3mm thick extruded aluminum flashing 40mm with sealant and all other accessories | 11d | 2026-10-22 A | 2026-11-04 A | WAD.S.6670 SS | 100% |  |  |  |  |  | GUARD HOUSE Works [88]; Construction Labors [212.38 h] | 683.49 |
|  | 2 | **THERMAL & MOISTURE PROTECTION - Tanks** |  | 2026-10-22 | 2026-10-27 |  |  |  |  |  |  |  |  |  |
| WAD.S.6600 |  | install water stop for tanks according to the drawings and specification | 5d | 2026-10-22 A | 2026-10-22 A | WAD.S.7530 | 100% |  | 2026-10-22 | 2026-10-28 |  |  | GUARD HOUSE Works [40]; Construction Labors [212.38 h] | 683.49 |
| WAD.S.7370 |  | lay epoxy 2 coating for inner surfaces for bottom of the roof | 11d | 2026-10-22 A | 2026-10-27 A | WAD.S.6570 SS | 100% |  | 2026-10-22 | 2026-11-04 |  |  | GUARD HOUSE Works [88]; Construction Labors [212.38 h] | 683.49 |
|  | 9 | **FINISHES** |  | 2026-10-06 | 2026-10-27 |  |  |  |  |  |  |  |  |  |
| WAD.S.6740 |  | install granite flooring | 2d | 2026-10-06 A | 2026-10-07 A | WAD.S.6730 SS | 100% |  |  |  |  |  | GUARD HOUSE Works [16]; Construction Labors [212.38 h] | 2,524.93 |
| WAD.S.6770 |  | install ceramic wall tiles | 3d | 2026-10-06 A | 2026-10-08 A | WAD.S.6740 SS | 100% |  |  |  |  |  | GUARD HOUSE Works [24]; Construction Labors [212.38 h] | 2,524.93 |
| WAD.S.6780 |  | install two coats of acrylic paint on internal walls | 2d | 2026-10-07 A | 2026-10-18 A | WAD.S.6770 FF | 100% |  | 2026-10-07 | 2026-10-08 |  |  | GUARD HOUSE Works [16]; Construction Labors [212.38 h] | 2,524.93 |
| WAD.S.6790 |  | install two coats of acrylic paint (suitable for exterior use) on external | 2d | 2026-10-07 A | 2026-10-27 | WAD.S.6780 SS | 90% | 0.2d | 2026-10-07 | 2026-10-08 | -29.1d | 0d | GUARD HOUSE Works [16]; Construction Labors [212.38 h] | 2,524.93 |
| WAD.S.6760 |  | install concrete plastering | 4d | 2026-10-11 A | 2026-10-11 A | WAD.S.6500 | 100% |  | 2026-10-11 | 2026-10-15 |  |  | GUARD HOUSE Works [32]; Construction Labors [212.38 h] | 2,524.93 |
| WAD.S.6730 |  | install ceramic floor tiles | 3d | 2026-10-18 A | 2026-10-20 A | WAD.S.7360 FF | 100% |  |  |  |  |  | GUARD HOUSE Works [24]; Construction Labors [212.38 h] | 2,524.93 |
| WAD.S.6830 |  | gypsum board suspended ceiling | 4d | 2026-10-18 A | 2026-10-21 A | WAD.S.7480 | 100% |  |  |  |  |  | GUARD HOUSE Works [32]; Construction Labors [212.38 h] | 2,524.93 |
| WAD.S.6750 |  | install granite saddles and thresholds | 3d | 2026-10-18 A | 2026-10-21 A | WAD.S.6830 SS, WAD.S.6600 | 100% |  |  |  |  |  | GUARD HOUSE Works [24]; Construction Labors [212.38 h] | 2,524.93 |
| WAD.S.6800 |  | install Riyadh stone cladding | 3d | 2026-10-21 A | 2026-10-25 A | WAD.S.6820 FF | 100% |  |  |  |  |  | GUARD HOUSE Works [24]; Construction Labors [212.38 h] | 2,524.93 |
| WAD.S.6820 |  | install 3mm steel CNC laser cut panels | 3d | 2026-10-21 A | 2026-10-25 A | WAD.S.6810 FF | 100% |  |  |  |  |  | GUARD HOUSE Works [24]; Construction Labors [212.38 h] | 2,524.93 |
| WAD.S.6810 |  | install aluminum cladding | 2d | 2026-10-22 A | 2026-10-25 A | WAD.S.6750 FF | 100% |  |  |  |  |  | GUARD HOUSE Works [16]; Construction Labors [212.38 h] | 2,524.93 |

| ID | WBS | Activity | Duration | Start | Finish | Predecessors | Complete | Remaining | Planned start | Planned finish | Total float | Free float | Resources | Cost |
| --- | --- | --- | --- | --- | --- | --- | --- | --- | --- | --- | --- | --- | --- | --- |
|  | 13 | **MECHANICAL WORKS** |  | 2026-09-21 | 2026-11-10 |  |  |  |  |  |  |  |  |  |
|  | 1 | **MECHANICAL WORKS - 1st Fix** |  | 2026-09-21 | 2026-10-10 |  |  |  |  |  |  |  |  |  |
| WAD.S.6910 |  | WATER SUPPLY SYSTEM - 1st Fix | 10d | 2026-09-21 A | 2026-10-10 A | WAD.S.6980 SS | 100% |  | 2026-09-21 | 2026-10-01 |  |  | GUARD HOUSE Works [80]; Construction Labors [212.38 h] | 2,776.97 |
| WAD.S.6920 |  | SEWER AND DRAINAGE SYSTEM - 1st Fix | 10d | 2026-09-21 A | 2026-10-05 A | WAD.S.6910 SS | 100% |  | 2026-09-21 | 2026-10-01 |  |  | GUARD HOUSE Works [80]; Construction Labors [212.38 h] | 2,776.97 |
| WAD.S.6980 |  | IRRIGATION SYSTEM - 1st Fix | 10d | 2026-09-21 A | 2026-10-10 A | WAD.S.7450 SS, WAD.S.7450 | 100% |  | 2026-09-21 | 2026-10-01 |  |  | GUARD HOUSE Works [80]; Construction Labors [212.38 h] | 2,776.97 |
| WAD.S.7260 |  | HEATING, VENTILATION AND AIR CONDITIONING - 1st Fix | 10d | 2026-09-21 A | 2026-10-10 A | WAD.S.6920 SS | 100% |  | 2026-09-21 | 2026-10-01 |  |  | GUARD HOUSE Works [80]; Construction Labors [212.38 h] | 2,776.97 |
| WAD.S.7270 |  | Exhaust fans - 1st Fix | 10d | 2026-09-21 A | 2026-10-10 A | WAD.S.7260 SS | 100% |  | 2026-09-21 | 2026-10-01 |  |  | GUARD HOUSE Works [80]; Construction Labors [212.38 h] | 2,776.97 |
|  | 2 | **MECHANICAL WORKS - Final Fix** |  | 2026-10-26 | 2026-11-10 |  |  |  |  |  |  |  |  |  |
| WAD.S.6930 |  | gully traps with heavy duty cover | 3d | 2026-10-26 A | 2026-10-27 A | WAD.S.6900 FF | 100% |  | 2026-10-26 | 2026-10-29 |  |  | GUARD HOUSE Works [24]; Construction Labors [212.38 h] | 2,776.97 |
| WAD.S.6940 |  | chamber with heavy duty cover | 3d | 2026-10-26 A | 2026-10-27 A | WAD.S.6930 FF | 100% |  | 2026-10-26 | 2026-10-29 |  |  | GUARD HOUSE Works [24]; Construction Labors [212.38 h] | 2,776.97 |
| WAD.S.6900 |  | installation of Fire extinguishers as per drawings, specifications | 3d | 2026-10-31 | 2026-11-02 | WAD.S.7270, WAD.S.6810, WAD.S.6820, WAD.S.6690 FS+3d |  |  |  |  | -30d | 0d | GUARD HOUSE Works [24]; Construction Labors [212.38 h] | 2,776.97 |
| WAD.S.6960 |  | HEATING, VENTILATION AND AIR CONDITIONING - Final Fix | 3d | 2026-11-03 A | 2026-11-10 A | WAD.S.6950 FF | 100% |  | 2026-11-03 | 2026-11-05 |  |  | GUARD HOUSE Works [24]; Construction Labors [212.38 h] | 2,776.97 |
| WAD.S.6950 |  | INSTALL PLUMBING FIXTURES | 3d | 2026-11-07 A | 2026-11-08 | WAD.S.6940 FF, WAD.S.4600 | 50% | 1.5d | 2026-11-07 | 2026-11-10 | -34.6d | 0d | GUARD HOUSE Works [24]; Construction Labors [212.38 h] | 2,776.97 |
| WAD.S.6970 |  | Exhaust fans - Final Fix | 3d | 2026-11-07 A | 2026-11-08 A | WAD.S.6960 FF | 100% |  | 2026-11-07 | 2026-11-10 |  |  | GUARD HOUSE Works [24]; Construction Labors [212.38 h] | 2,776.97 |
| WAD.S.6990 |  | Bulbblers and Spreyers of IRRIGATION SYSTEM | 3d | 2026-11-07 A | 2026-11-10 A | WAD.S.6970 FF | 100% |  |  |  |  |  | GUARD HOUSE Works [24]; Construction Labors [212.38 h] | 2,776.97 |
| WAD.S.7230 |  | WATER SUPPLY SYSTEM - Final Fix | 3d | 2026-11-07 A | 2026-11-08 | WAD.S.6990 FF | 80% | 0.6d | 2026-11-07 | 2026-11-10 | -34.6d | 0d | GUARD HOUSE Works [24]; Construction Labors [212.38 h] | 2,776.97 |
| WAD.S.7240 |  | IRRIGATION SYSTEM - Final Fix | 3d | 2026-11-07 A | 2026-11-10 A | WAD.S.7230 FF | 100% |  |  |  |  |  | GUARD HOUSE Works [24]; Construction Labors [212.38 h] | 2,776.97 |
|  | 15 | **ELECTRICAL WORKS** |  | 2026-09-06 | 2026-11-10 |  |  |  |  |  |  |  |  |  |
|  | 1 | **ELECTRICAL WORKS - 1st Fix** |  | 2026-09-06 | 2026-10-08 |  |  |  |  |  |  |  |  |  |
| WAD.S.7320 |  | GROUNDING - 1st Fix | 10d | 2026-09-06 A | 2026-10-08 A | WAD.S.7310 SS | 100% |  | 2026-09-06 | 2026-09-16 |  |  | GUARD HOUSE Works [80]; Construction Labors [212.38 h] | 7,789.66 |
| WAD.S.7290 |  | UNDERGROUND DISTRIBUTION SYSTEM - 1st Fix | 10d | 2026-09-21 A | 2026-10-08 A | WAD.S.7280 SS | 100% |  | 2026-09-21 | 2026-10-01 |  |  | GUARD HOUSE Works [80]; Construction Labors [212.38 h] | 7,789.66 |
| WAD.S.7300 |  | LIGHTING FIXTURES - 1st Fix | 10d | 2026-09-21 A | 2026-10-08 A | WAD.S.7290 SS | 100% |  | 2026-09-21 | 2026-10-01 |  |  | GUARD HOUSE Works [80]; Construction Labors [212.38 h] | 7,789.66 |
| WAD.S.7000 |  | LIGHTING AND POWER TYPE PANELBOARDS - 1st Fix | 10d | 2026-09-27 A | 2026-10-08 A | WAD.S.7270 SS | 100% |  | 2026-09-27 | 2026-10-07 |  |  | GUARD HOUSE Works [80]; Construction Labors [212.38 h] | 7,789.66 |
| WAD.S.7010 |  | UPS 3KVA (installed inside the rack) - 1st Fix | 10d | 2026-09-27 A | 2026-10-08 A | WAD.S.7000 SS | 100% |  | 2026-09-27 | 2026-10-07 |  |  | GUARD HOUSE Works [80]; Construction Labors [212.38 h] | 7,789.66 |
| WAD.S.7280 |  | power source with built-in photocell sensor for automatic electrical connection during day/light times - 1st Fix | 10d | 2026-09-27 A | 2026-10-08 A | WAD.S.7010 SS | 100% |  | 2026-09-27 | 2026-10-07 |  |  | GUARD HOUSE Works [80]; Construction Labors [212.38 h] | 7,789.66 |
| WAD.S.7310 |  | installation of Wiring devices includes switches and Receptacle outlets complete with device boxes - 1st Fix | 10d | 2026-09-27 A | 2026-10-08 A | WAD.S.7300 SS | 100% |  | 2026-09-27 | 2026-10-07 |  |  | GUARD HOUSE Works [80]; Construction Labors [212.38 h] | 7,789.66 |
| WAD.S.7330 |  | card reader IN/OUT - 1st Fix | 10d | 2026-09-27 A | 2026-10-08 A | WAD.S.7320 SS | 100% |  | 2026-09-27 | 2026-10-07 |  |  | GUARD HOUSE Works [80]; Construction Labors [212.38 h] | 7,789.66 |
| WAD.S.7340 |  | CCTV cameras - 1st Fix | 10d | 2026-09-27 A | 2026-10-08 A | WAD.S.7330 SS | 100% |  | 2026-09-27 | 2026-10-07 |  |  | GUARD HOUSE Works [80]; Construction Labors [212.38 h] | 7,789.66 |
| WAD.S.7350 |  | Access control panel - 1st Fix | 10d | 2026-09-27 A | 2026-10-08 A | WAD.S.7340 SS | 100% |  | 2026-09-27 | 2026-10-07 |  |  | GUARD HOUSE Works [80]; Construction Labors [212.38 h] | 7,789.66 |
| WAD.S.7360 |  | fire alarm system including wires, conduit and other materials - 1st Fix | 10d | 2026-09-27 A | 2026-10-08 A | WAD.S.7350 SS | 100% |  | 2026-09-27 | 2026-10-07 |  |  | GUARD HOUSE Works [80]; Construction Labors [212.38 h] | 7,789.66 |

| ID | WBS | Activity | Duration | Start | Finish | Predecessors | Complete | Remaining | Planned start | Planned finish | Total float | Free float | Resources | Cost |
| --- | --- | --- | --- | --- | --- | --- | --- | --- | --- | --- | --- | --- | --- | --- |
|  | 2 | **ELECTRICAL WORKS - Final Fix** |  | 2026-11-03 | 2026-11-10 |  |  |  |  |  |  |  |  |  |
| WAD.S.7100 |  | 12-Port, SMF, Fiber Optic Patch Panels; | 4d | 2026-11-03 | 2026-11-08 | WAD.S.7090 FF |  |  |  |  | -34.6d | 0d | GUARD HOUSE Works [32]; Construction Labors [212.38 h] | 7,789.66 |
| WAD.S.7120 |  | VIDEO SURVEILLANCE | 4d | 2026-11-03 | 2026-11-08 | WAD.S.7110 FF |  |  |  |  | -34.6d | 0d | GUARD HOUSE Works [32]; Construction Labors [212.38 h] | 7,789.66 |
| WAD.S.7150 |  | CCTV storage system, as specified; | 4d | 2026-11-03 | 2026-11-08 | WAD.S.7140 FF |  |  |  |  | -34.6d | 0d | GUARD HOUSE Works [32]; Construction Labors [212.38 h] | 7,789.66 |
| WAD.S.7070 |  | card reader IN/OUT - Final Fix | 3d | 2026-11-04 | 2026-11-08 | WAD.S.7060 FF |  |  |  |  | -34.6d | 0d | GUARD HOUSE Works [24]; Construction Labors [212.38 h] | 7,789.66 |
| WAD.S.7090 |  | 12-Port CAT6A UTP fully loaded patch panel | 3d | 2026-11-04 | 2026-11-08 | WAD.S.7080 FF |  |  |  |  | -34.6d | 0d | GUARD HOUSE Works [24]; Construction Labors [212.38 h] | 7,789.66 |
| WAD.S.7110 |  | COMPUTERS AND RELATED PERIPHERALS | 3d | 2026-11-04 | 2026-11-08 | WAD.S.7100 FF |  |  |  |  | -34.6d | 0d | GUARD HOUSE Works [24]; Construction Labors [212.38 h] | 7,789.66 |
| WAD.S.7130 |  | Central (Headend) System Components; | 3d | 2026-11-04 | 2026-11-08 | WAD.S.7120 FF |  |  |  |  | -34.6d | 0d | GUARD HOUSE Works [24]; Construction Labors [212.38 h] | 7,789.66 |
| WAD.S.7140 |  | VSS System, as specified; | 3d | 2026-11-04 | 2026-11-08 | WAD.S.7130 FF |  |  |  |  | -34.6d | 0d | GUARD HOUSE Works [24]; Construction Labors [212.38 h] | 7,789.66 |
| WAD.S.7160 |  | CCTV cameras - Final Fix | 3d | 2026-11-04 | 2026-11-08 | WAD.S.7150 FF |  |  |  |  | -34.6d | 0d | GUARD HOUSE Works [24]; Construction Labors [212.38 h] | 7,789.66 |
| WAD.S.7080 |  | Access control panel - Final Fix | 2d | 2026-11-05 | 2026-11-08 | WAD.S.7070 FF |  |  |  |  | -34.6d | 0d | GUARD HOUSE Works [16]; Construction Labors [212.38 h] | 7,789.66 |
| WAD.S.7170 |  | 20A , ATS ( Automatic transfer switch) for UPS | 2d | 2026-11-05 | 2026-11-08 | WAD.S.7160 FF |  |  |  |  | -34.6d | 0d | GUARD HOUSE Works [16]; Construction Labors [212.38 h] | 7,789.66 |
| WAD.S.7020 |  | power source with built-in photocell sensor for automatic electrical connection during day/light times - Final Fix | 3d | 2026-11-07 A | 2026-11-10 A | WAD.S.7230 FF | 100% |  |  |  |  |  | GUARD HOUSE Works [24]; Construction Labors [212.38 h] | 7,789.66 |
| WAD.S.7040 |  | LIGHTING FIXTURES - Final Fix | 3d | 2026-11-07 A | 2026-11-08 | WAD.S.7030 FF | 80% | 0.6d | 2026-11-07 | 2026-11-10 | -34.6d | 0d | GUARD HOUSE Works [24]; Construction Labors [212.38 h] | 7,789.66 |
| WAD.S.7060 |  | GROUNDING - Final Fix | 3d | 2026-11-07 A | 2026-11-08 | WAD.S.7050 FF, WAD.S.7360, WAD.S.6800 | 80% | 0.6d | 2026-11-07 | 2026-11-10 | -34.6d | 0d | GUARD HOUSE Works [24]; Construction Labors [212.38 h] | 7,789.66 |
| WAD.S.7180 |  | ELECTRICAL GATE BARRIER | 3d | 2026-11-07 A | 2026-11-08 | WAD.S.7170 FF | 30% | 2.1d | 2026-11-07 | 2026-11-10 | -34.6d | 0d | GUARD HOUSE Works [24]; Construction Labors [212.38 h] | 7,789.66 |
| WAD.S.7200 |  | fire alarm system including wires, conduit and other materials - Final Fix | 3d | 2026-11-07 A | 2026-11-10 A | WAD.S.7190 FF | 100% |  |  |  |  |  | GUARD HOUSE Works [24]; Construction Labors [212.38 h] | 7,789.66 |
| WAD.S.7210 |  | Analog addressable fire alarm control panel with battery | 3d | 2026-11-07 A | 2026-11-10 A | WAD.S.7200 FF | 100% |  |  |  |  |  | GUARD HOUSE Works [24]; Construction Labors [212.38 h] | 7,789.66 |
| WAD.S.7250 |  | LIGHTING AND POWER TYPE PANELBOARDS - Final Fix | 3d | 2026-11-07 A | 2026-11-10 A | WAD.S.7220 FF | 100% |  |  |  |  |  | GUARD HOUSE Works [24]; Construction Labors [212.38 h] | 7,789.66 |
| WAD.S.7030 |  | UNDERGROUND DISTRIBUTION SYSTEM - Final Fix | 2d | 2026-11-08 A | 2026-11-10 A | WAD.S.7020 FF | 100% |  |  |  |  |  | GUARD HOUSE Works [16]; Construction Labors [212.38 h] | 7,789.66 |
| WAD.S.7050 |  | installation of Wiring devices includes switches and Receptacle outlets complete with device boxes - Final Fix | 2d | 2026-11-08 A | 2026-11-08 | WAD.S.7040 FF | 80% | 0.4d | 2026-11-08 | 2026-11-10 | -34.6d | 0d | GUARD HOUSE Works [16]; Construction Labors [212.38 h] | 7,789.66 |
| WAD.S.7190 |  | LIGHTNING PROTECTION | 2d | 2026-11-08 A | 2026-11-10 A | WAD.S.7180 FF | 100% |  |  |  |  |  | GUARD HOUSE Works [16]; Construction Labors [212.38 h] | 7,789.66 |
| WAD.S.7220 |  | Intelligent Ionization / Photoelectric smoke and heat detector with base | 2d | 2026-11-08 A | 2026-11-10 A | WAD.S.7210 FF | 100% |  |  |  |  |  | GUARD HOUSE Works [16]; Construction Labors [212.38 h] | 7,789.66 |
|  | 4 | **METALS** |  | 2026-10-11 | 2026-10-28 |  |  |  |  |  |  |  |  |  |
| WAD.S.6520 |  | install of overflow galvanized steel roof scupper with gray color with angular secondary support | 2d | 2026-10-11 A | 2026-10-22 A | WAD.S.6510 SS | 100% |  | 2026-10-11 | 2026-10-12 |  |  | GUARD HOUSE Works [16]; Construction Labors [212.38 h] | 850.23 |
| WAD.S.6510 |  | folding & sliding mounter combination ladder for building maintenance purpose | 2d | 2026-10-27 | 2026-10-28 | WAD.S.6830 |  |  |  |  | -24d | 0d | GUARD HOUSE Works [16]; Construction Labors [212.38 h] | 4,093.7 |
| WAD.S.6530 |  | install heavy steel cover with frame including all necessary fixings | 2d | 2026-10-27 | 2026-10-28 | WAD.S.6520 SS |  |  |  |  | -24d | 0d | GUARD HOUSE Works [16]; Construction Labors [212.38 h] | 1,020.28 |

| ID | WBS | Activity | Duration | Start | Finish | Predecessors | Complete | Remaining | Planned start | Planned finish | Total float | Free float | Resources | Cost |
| --- | --- | --- | --- | --- | --- | --- | --- | --- | --- | --- | --- | --- | --- | --- |
|  | 5 | **WOODS AND PLASTICS** |  | 2026-10-27 | 2026-10-29 |  |  |  |  |  |  |  |  |  |
| WAD.S.6540 |  | PANTRY CABINET | 2d | 2026-10-27 | 2026-10-28 | WAD.S.6530 SS |  |  |  |  | -24d | 0d | GUARD HOUSE Works [16]; Construction Labors [212.38 h] | 5,353.3 |
| WAD.S.6550 |  | COUNTER DESK | 3d | 2026-10-27 | 2026-10-29 | WAD.S.6540 FF |  |  |  |  | -22.6d | 0d | GUARD HOUSE Works [24]; Construction Labors [212.38 h] | 2,309.27 |
|  | 8 | **DOORS & WINDOWS** |  | 2026-10-21 | 2026-10-27 |  |  |  |  |  |  |  |  |  |
| WAD.S.6700 |  | Install Aluminum Door | 3d | 2026-10-21 A | 2026-10-27 | WAD.S.6550 SS | 80% | 0.6d | 2026-10-21 | 2026-10-24 | -22.6d | 11.4d | GUARD HOUSE Works [24]; Construction Labors [212.38 h] | 5,636.71 |
| WAD.S.6710 |  | install hollow metal door | 4d | 2026-10-22 A | 2026-10-22 A | WAD.S.6540 SS | 100% |  | 2026-10-22 | 2026-10-26 |  |  | GUARD HOUSE Works [32]; Construction Labors [212.38 h] | 5,636.71 |
| WAD.S.6720 |  | Install aluminum framed double glazed windows | 3d | 2026-10-22 A | 2026-10-22 A | WAD.S.6710 SS | 100% |  | 2026-10-22 | 2026-10-25 |  |  | GUARD HOUSE Works [24]; Construction Labors [212.38 h] | 5,636.71 |
|  | 10 | **SPECIALTIES** |  | 2026-11-08 | 2026-11-10 |  |  |  |  |  |  |  |  |  |
| WAD.S.6840 |  | TOILET ACCESSROIES | 2d | 2026-11-08 | 2026-11-09 | WAD.S.7230 SS, WAD.S.6700 FF, WAD.S.6720 |  |  |  |  | -34d | 0.6d | GUARD HOUSE Works [16]; Construction Labors [212.38 h] | 2,544.39 |
| WAD.S.6850 |  | PANEL SIGNAGE | 2d | 2026-11-08 A | 2026-11-10 A | WAD.S.6840 SS, WAD.S.7220 FF | 100% |  |  |  |  |  | GUARD HOUSE Works [16]; Construction Labors [212.38 h] | 34,639 |
|  | 11 | **FURNISHINGS** |  | 2026-11-07 | 2026-11-08 |  |  |  |  |  |  |  |  |  |
| WAD.S.6860 |  | Workstation chair | 1d | 2026-11-07 | 2026-11-08 | WAD.S.6850 FF |  |  |  |  | -34.6d | 0d | GUARD HOUSE Works [8]; Construction Labors [212.38 h] | 1,684.72 |
| WAD.S.6870 |  | Workstation table | 1d | 2026-11-07 | 2026-11-08 | WAD.S.6860 SS |  |  |  |  | -34.6d | 0d | GUARD HOUSE Works [8]; Construction Labors [212.38 h] | 1,684.72 |
| WAD.S.6880 |  | Roller blind | 1d | 2026-11-07 | 2026-11-08 | WAD.S.6870 SS, WAD.S.4770 |  |  |  |  | -34.6d | 0d | GUARD HOUSE Works [8]; Construction Labors [212.38 h] | 1,684.72 |
| WAD.S.6890 |  | Waste Receptacle | 1d | 2026-11-07 | 2026-11-08 | WAD.S.6880 SS |  |  |  |  | -34.6d | 0d | GUARD HOUSE Works [8]; Construction Labors [212.38 h] | 1,684.72 |
|  | 4 | **EXT. WORKS** |  | 2026-10-18 | 2026-11-24 |  |  |  |  |  |  |  |  |  |
|  | 1 | **EXTERNAL WORKS** |  | 2026-10-18 | 2026-11-24 |  |  |  |  |  |  |  |  |  |
| WAD.S.1100 |  | Excavation Works | 15d | 2026-10-18 A | 2026-11-04 A | WAD.S.1080, WAD.S.7360, WAD.S.6790 | 100% |  |  |  |  |  | EXT. WORKS [120]; Construction Labors [212.38 h] | 3,023.04 |
| WAD.S.4990 |  | ROAD WORKS | 7d | 2026-10-31 | 2026-11-08 | WAD.S.4980 FF, WAD.S.4170 |  |  |  |  | -34.9d | 0d | EXT. WORKS [64]; Construction Labors [212.38 h] | 39,110.58 |
| WAD.S.1290 |  | 40 mm Pipes | 12d | 2026-11-04 A | 2026-11-18 A | WAD.S.1100 | 100% |  |  |  |  |  | EXT. WORKS [64]; Construction Labors [212.38 h] | 66,129 |
| WAD.S.3270 |  | GRP Pipes laid in trenches | 12d | 2026-11-04 A | 2026-11-18 A | WAD.S.1290 FF, WAD.S.3280 SS | 100% |  |  |  |  |  | EXT. WORKS [64]; Construction Labors [212.38 h] | 188.94 |
| WAD.S.4020 |  | install 100 mm GRP pipe service connections between building sewage inspection chamber and main wastewater line | 8d | 2026-11-09 A | 2026-11-18 A | WAD.S.3880 FF, WAD.S.3290 | 100% |  |  |  |  |  | EXT. WORKS [64]; Construction Labors [212.38 h] | 56,682 |
| WAD.S.4030 |  | Manhole depth not exceeding 4.0m | 8d | 2026-11-09 A | 2026-11-18 A | WAD.S.4020 FF, WAD.S.2970 | 100% |  |  |  |  |  | EXT. WORKS [64]; Construction Labors [212.38 h] | 34,953.9 |
| WAD.S.3880 |  | 100 mm Pipe in trench not exceeding 2.00 m depth to invert | 7d | 2026-11-10 A | 2026-11-18 A | WAD.S.3270 FF | 100% |  |  |  |  |  | EXT. WORKS [56]; Construction Labors [212.38 h] | 188.94 |
| WAD.S.4800 |  | Backfilling Works | 5d | 2026-11-18 A | 2026-11-24 A | WAD.S.3880 | 100% |  |  |  |  |  | EXT. WORKS [40]; Construction Labors [212.38 h] | 5,668.2 |
| WAD.S.4980 |  | SIDEWALKS AND CURBS | 7d | 2026-11-24 A | 2026-11-05 | WAD.S.3910, WAD.S.4020, WAD.S.4800 | 30% | 4.9d | 2026-11-24 | 2026-12-02 | -32.05d | 0d | EXT. WORKS [120]; Construction Labors [212.38 h] | 26,073.72 |
| WAD.S.5000 |  | install flag pole 6 M height | 5d | 2026-11-24 A | 2026-11-01 | WAD.S.4980 SS | 70% | 1.5d | 2026-11-24 | 2026-11-30 | -31.65d | 0d | EXT. WORKS [40]; Construction Labors [212.38 h] | 63,483.84 |

| ID | WBS | Activity | Duration | Start | Finish | Predecessors | Total float | Free float | Resources | Cost | BOQ Mapping |
| --- | --- | --- | --- | --- | --- | --- | --- | --- | --- | --- | --- |
|  | 4 | **Testing & Commissioning** |  | 2026-11-01 | 2026-11-15 |  |  |  |  |  |  |
| WAD.S.5440 |  | Testing & Commissioning - Electrical Systems | 9d | 2026-11-01 | 2026-11-11 | WAD.S.4020, WAD.S.5000 | -31.65d | 0d | Testing [24]; Labors [231.88 h] | 93,527.41 | 28.1.1, 28.1.2, 28.2.1 |
| WAD.S.5490 |  | Testing & Commissioning - Mechanical Systems | 9d | 2026-11-01 | 2026-11-11 | WAD.S.5440 SS | -31.65d | 0d | Testing [24]; Labors [231.88 h] | 93,527.41 |  |
|  | 1 | **Engineering** |  | 2026-11-01 | 2026-11-15 |  |  |  |  |  |  |
|  | 1 | **As-Built Drawings** |  | 2026-11-04 | 2026-11-15 |  |  |  |  |  |  |
| WAD.S.5430 |  | Prepare & Submit | 4d | 2026-11-04 | 2026-11-09 | WAD.S.5440 SS, WAD.S.6240 FF+1d, WAD.S.6890 FF+1d | -34.6d | 0d | Testing [24]; Labors [231.88 h] | 93,527.41 |  |
| WAD.S.6260 |  | Review & Approve | 6d | 2026-11-08 | 2026-11-15 | WAD.S.4990 | -34.9d | 0d | Testing [24]; Labors [231.88 h] | 93,527.41 |  |
|  | 2 | **Operational Spares** |  | 2026-11-04 | 2026-11-15 |  |  |  |  |  |  |
| WAD.S.5450 |  | Prepare & Submit | 4d | 2026-11-04 | 2026-11-09 | WAD.S.5430 SS | -34.6d | 0d | Testing [24]; Labors [231.88 h] | 93,527.41 | 16.11 |
| WAD.S.6350 |  | Inspection | 5d | 2026-11-09 | 2026-11-15 | WAD.S.5450 | -34.6d | 0d | Testing [16]; Labors [231.88 h] | 93,527.41 |  |
| WAD.S.6370 |  | Acceptance | 5d | 2026-11-09 | 2026-11-15 | WAD.S.6350 FF | -34.6d | 0.3d | Testing [16]; Labors [231.88 h] | 93,527.41 |  |
|  | 3 | **Warranties and Guarantees** |  | 2026-11-01 | 2026-11-11 |  |  |  |  |  |  |
| WAD.S.5460 |  | Prepare & Submit | 4d | 2026-11-01 | 2026-11-05 | WAD.S.5440 SS | -31.65d | 0d | Testing [8]; Labors [231.88 h] | 93,527.41 |  |
| WAD.S.6360 |  | Review & Approve | 5d | 2026-11-05 | 2026-11-11 | WAD.S.5460 | -31.65d | 3.25d | Testing [16]; Labors [231.88 h] | 93,527.41 |  |
|  | 2 | **Training and Manuals** |  | 2026-11-01 | 2026-11-15 |  |  |  |  |  |  |
|  | 1 | **Training** |  | 2026-11-04 | 2026-11-15 |  |  |  |  |  |  |
| WAD.S.5470 |  | Prepare & Submit | 4d | 2026-11-04 | 2026-11-09 | WAD.S.5450 SS | -34.6d | 0d | Testing [24]; Labors [231.88 h] | 93,527.41 |  |
| WAD.S.6380 |  | Review & Approve | 5d | 2026-11-09 | 2026-11-15 | WAD.S.5470 | -34.6d | 0d | Testing [16]; Labors [231.88 h] | 93,527.41 |  |
| WAD.S.6400 |  | Fabrication & Delivery | 5d | 2026-11-09 | 2026-11-15 | WAD.S.6380 FF | -34.6d | 0.3d | Testing [16]; Labors [231.88 h] | 93,527.41 |  |
|  | 2 | **Manuals** |  | 2026-11-01 | 2026-11-11 |  |  |  |  |  |  |
| WAD.S.5480 |  | Prepare & Submit | 4d | 2026-11-01 | 2026-11-05 | WAD.S.5440 SS | -31.65d | 0d | Testing [8]; Labors [231.88 h] | 93,527.41 |  |
| WAD.S.6390 |  | Review & Approve | 5d | 2026-11-05 | 2026-11-11 | WAD.S.5480 | -31.65d | 0d | Testing [16]; Labors [231.88 h] | 93,527.41 |  |
|  | 3 | **Demobilization** |  | 2026-11-02 | 2026-11-11 |  |  |  |  |  |  |
| WAD.S.5850 |  | Demobilize | 8d | 2026-11-02 | 2026-11-11 | WAD.S.6390 FF | -31.65d | 0d | Testing [40]; Labors [231.88 h] | 93,527.41 |  |

| ID | WBS | Activity | Duration | Start | Finish | Predecessors | Total float | Free float | Resources | Cost |
| --- | --- | --- | --- | --- | --- | --- | --- | --- | --- | --- |
|  | 4 | **Snaglist Rectification** |  | 2026-11-02 | 2026-11-15 |  |  |  |  |  |
| WAD.S.5860 |  | Snaglist Rectification | 8d | 2026-11-02 | 2026-11-11 | WAD.S.5440 FF, WAD.S.5850 FF | -31.65d | 3.25d | Testing [16]; Labors [231.88 h] | 93,527.41 |
| WAD.S.5870 |  | Initial Handing Over | 8d | 2026-11-05 | 2026-11-15 | WAD.S.6260 FF, WAD.S.6370 FF, WAD.S.6360 FF, WAD.S.6400 FF, WAD.S.6390 FF, WAD.S.5860 FF | -34.9d | 9.56d | Testing [16]; Labors [231.88 h] | 93,527.41 |
