# Construction of Industrial Units for Artisans in Najran Project Baseline

Schedule from Primavera P6, 2026-03-03 to 2027-01-02, data date 2026-03-03, costs in USD.
Must finish by 2027-01-02

## Calendars

- Najran Industrial Units Calendar: Mon-Thu 07:00-12:00, 13:00-16:00; Fri off; Sat-Sun 07:00-12:00, 13:00-16:00. Exceptions (off unless hours are given): 2026-03-21 to 2026-03-22, 2026-05-26 to 2026-05-28, 2026-09-23.

## Resources

| Resource | Group | Rate | Notes |
| --- | --- | --- | --- |
| Grader | equipment |  | ï»¿ |
| General Labor | labor |  | ï»¿ |
| Operator | labor |  | ï»¿ |
| Excavator | equipment |  | ï»¿ |
| Dump Truck | equipment |  | ï»¿ |
| Crane | equipment |  | ï»¿ |
| Fork Lift | equipment |  | ï»¿ |
| Staff | labor |  | ï»¿ |
| Pay Loader | equipment |  | ï»¿ |
| Skid Loader (Bobcat) | equipment |  | ï»¿ |
| Excavation | material | 35 | ï»¿ |
| Street lighting poles relocation | material | 500 | ï»¿ |
| Demolition of the existing curbstone | material | 45 | ï»¿ |
| Demolition of the existing interlock | material | 45 | ï»¿ |
| Relocating of existing Trees | material | 500 | ï»¿ |
| Backfilling | material | 36 | ï»¿ |
| Bituminous wearing course asphalt layer | material | 960 | ï»¿ |
| Bituminous base course asphalt layer | material | 960 | ï»¿ |
| Base course layer | material | 50 | ï»¿ |
| Subgrade material | material | 40 | ï»¿ |
| Retroreflective Thermoplastic White Traffic lines | material | 12000 | ï»¿ |
| Retroreflective Thermoplastic Yellow Traffic lines | material | 12000 | ï»¿ |
| Concrete parking bumper with dimensions 1800*150*100 mm | material | 230 | ï»¿ |
| Interlocking pedstrian paving blocks | material | 110 | ï»¿ |
| Install traffic signs aluminum sheet, (breakaway) Single post I.P.E. | material | 1200 | ï»¿ |
| Kerb type K1A | material | 95 | ï»¿ |
| Kerb type K1B | material | 95 | ï»¿ |
| Kerb type K3 | material | 95 | ï»¿ |
| Steel ladder with safety cage | material | 9000 | ï»¿ |
| Steel bollards 1135mm height | material | 700 | ï»¿ |
| Galvanised steel gratings 400mm wide*4000mm long | material | 3000 | ï»¿ |
| Overflow galvanized steel roof scupper | material | 900 | ï»¿ |
| 2 coats of bitumen waterproofing paint on concrete surface | material | 15 | ï»¿ |
| 250 micron thk polyethylene sheet under grade slab and footings | material | 10 | ï»¿ |
| Anti termite under all concrete in touch with earth | material | 8 | ï»¿ |
| Liquid applied waterproofing membrane for toilets | material | 100 | ï»¿ |
| Geotextile sheet | material | 16 | ï»¿ |
| Polyurethane waterpoof coating to internal surfaces of concrete trench | material | 120 | ï»¿ |
| 4mm thick APP modified bituminous membrane | material | 60 | ï»¿ |
| 50mm thk rigid insulation | material | 40 | ï»¿ |
| Foam concrete screed 50mm thk | material | 45 | ï»¿ |
| 300 micron polyethylene sheet | material | 12 | ï»¿ |
| 50mm thk loose gravel toppings | material | 35 | ï»¿ |
| High density polyisocynurate cover board (12.7mm) | material | 50 | ï»¿ |
| Geotextile sheets (200 g/m2) | material | 10 | ï»¿ |
| 3mm thk extruded aluminum flashing | material | 25 | ï»¿ |
| Workshop - Aluminium cladding | material | 300 | ï»¿ |
| Waterproofing Installer | labor |  | ï»¿ |
| (D6) 3000*3500mm galvanized steel heavy duty industrial isolated type roll up shutter door | material | 20000 | ï»¿ |
| (D5) 1000*2200mm single leaf steel door | material | 3000 | ï»¿ |
| (D2) 1000*2200 mm single leaf galvanized steel door | material | 3000 | ï»¿ |
| (D3) 800*2200 mm single leaf semi solid wood door | material | 3500 | ï»¿ |
| (D1) single leaf galvanized steel door | material | 3000 | ï»¿ |
| Window W1 (size 1000*1300) | material | 1200 | ï»¿ |
| Window W2 (size 1600*1200) | material | 2400 | ï»¿ |
| Outside Mosque - Install Door D1 | material | 7500 | ï»¿ |
| Outside Mosque - Install Window W1 | material | 6300 | ï»¿ |
| Door & Window Installer | labor |  | ï»¿ |
| 300*300mm ceramic tiles for toilets | material | 110 | ï»¿ |
| Carpet rolls to prayer room | material | 330 | ï»¿ |
| Epoxy paint to concrete surface in the factory area | material | 60 | ï»¿ |
| Granite tiles | material | 250 | ï»¿ |
| Marble strip 30mm thk, Threshold | material | 250 | ï»¿ |
| Wood skirt 100mm height | material | 35 | ï»¿ |
| Internal plastering to walls and columns | material | 42 | ï»¿ |
| External plastering to external walls | material | 45 | ï»¿ |
| 2 coats of acrylic paint at internal walls and roof | material | 30 | ï»¿ |
| 2 coats of acrylic paint at external walls and parapet | material | 35 | ï»¿ |
| Marble chips on external walls and grooves | material | 60 | ï»¿ |
| GRC panels | material | 400 | ï»¿ |
| 300*300mm glazed ceramic wall tiles for toilets | material | 110 | ï»¿ |
| Phenolic partitions with doors for toilets | material | 600 | ï»¿ |
| 12.5mm thk, moisture resistant gypsum board suspended ceiling for toilets | material | 150 | ï»¿ |
| 12.5mm thk, moisture resistant gypsum board suspended ceiling for prayer room | material | 150 | ï»¿ |
| Soap dispenser | material | 200 | ï»¿ |
| Mirror, Size 3300*1200mm | material | 950 | ï»¿ |
| Mirror, Size 800*1200mm | material | 300 | ï»¿ |
| Toilet tissue holder | material | 200 | ï»¿ |
| Paper towel dispenser | material | 200 | ï»¿ |
| Waste receptacle | material | 300 | ï»¿ |
| Stainless steel hand dryer | material | 1300 | ï»¿ |
| Robe hook | material | 100 | ï»¿ |
| Grab bars | material | 150 | ï»¿ |
| Extruded EPDM rubber bumper 200mm high | material | 65 | ï»¿ |
| Internal and External Signage | material | 250 | ï»¿ |
| Install MODON logo on entrance | material | 5000 | ï»¿ |
| Lean Concrete | material | 75 | ï»¿ |
| Isolated Footings | material | 1050 | ï»¿ |
| Grade beams | material | 1200 | ï»¿ |
| Tank Footing | material | 1200 | ï»¿ |
| Pedestal | material | 1300 | ï»¿ |
| GRP Water Tank and Pump Shed - Concrete Pad | material | 1400 | ï»¿ |
| Toilet, Mosque & EE Room - Roof Slab | material | 1350 | ï»¿ |
| Toilet, Mosque & EE Room - Roof Beam | material | 1350 | ï»¿ |
| GRP Water Tank and Pump Shed - SOG | material | 1000 | ï»¿ |
| Underground Septic Tank - Wall | material | 1300 | ï»¿ |
| Underground Septic Tank - Slab | material | 1300 | ï»¿ |
| 150 mm thk concrete floor slab on grade | material | 950 | ï»¿ |
| Autoclaved aerated panel | material | 300 | ï»¿ |
| Electrical substation - Foundation | material | 20000 | ï»¿ |
| Install CMU wall at internal walls (100mm thick) | material | 80 | ï»¿ |
| Install CMU wall at internal walls (200mm thick) | material | 90 | ï»¿ |
| Install CMU wall at external walls (200mm thick insulated) | material | 100 | ï»¿ |
| Install CMU wall at electrical room (200mm thick, 2 hr fire rated) | material | 100 | ï»¿ |
| Mason | labor |  | ï»¿ |
| 200 mm Ø HDPE Fire Fighting | material | 250 | ï»¿ |
| 150 mm Ø HDPE Fire Fighting | material | 230 | ï»¿ |
| 200 mm Ø Directly Buried Gate valve | material | 5000 | ï»¿ |
| 150 mm Ø Directly Buried Gate valve | material | 4500 | ï»¿ |
| 100 mm Ø HDPE Water Supply | material | 200 | ï»¿ |
| 90 mm Ø HDPE Water Supply | material | 180 | ï»¿ |
| 63 mm Ø HDPE Water Supply | material | 160 | ï»¿ |
| 50 mm Ø HDPE Water Supply | material | 140 | ï»¿ |
| 100 mm Ø Directly Buried Gate valve | material | 2500 | ï»¿ |
| 90 mm Ø Directly Buried Gate valve | material | 2500 | ï»¿ |
| 63 mm Ø Directly Buried Gate valve | material | 1000 | ï»¿ |
| 50 mm Ø Directly Buried Gate valve | material | 750 | ï»¿ |
| 63 mm Ø Service connection - HDPE | material | 6000 | ï»¿ |
| For 100 mm Ø pipe Road Crossing sleeve | material | 260 | ï»¿ |
| Air Valve | material | 7500 | ï»¿ |
| Washout Valve | material | 9500 | ï»¿ |
| Hot Press GRP Sectional Panel Water Tanks (10x8x4m) | material | 500000 | ï»¿ |
| Sewage tank with dimensions (8x4x3m) | material | 110000 | ï»¿ |
| 110 mm Pipe sewer upvc pipe | material | 250 | ï»¿ |
| 160 mm Pipe sewer upvc pipe | material | 300 | ï»¿ |
| Sewer manholes | material | 10000 | ï»¿ |
| Gully traps | material | 1300 | ï»¿ |
| 110mm UPVC pipe service connections | material | 15000 | ï»¿ |
| 8" Ø Fire Fighting HDPE Pipes | material | 400 | ï»¿ |
| Seamless black steel pipes & fittings | material | 232750 | ï»¿ |
| Water sprinklers | material | 12810 | ï»¿ |
| Fire house cabinet | material | 3000 | ï»¿ |
| OS&Y Gate valve | material | 23800 | ï»¿ |
| Fire Alarm Check Valve (ACV) | material | 5500 | ï»¿ |
| Fire Department Connection (FDC) 6" | material | 3000 | ï»¿ |
| 1" Ø Automatic air release valve | material | 1000 | ï»¿ |
| 63 mm Ø HDPE pipes Water Supply | material | 200 | ï»¿ |
| PPR SDR 7.4 PN 16, DIN 8077/78 pipes | material | 11620 | ï»¿ |
| Ball Valve | material | 2560 | ï»¿ |
| Capped connection (For tenant use) | material | 175 | ï»¿ |
| 63 mm Ø Valve with Valve Box | material | 2200 | ï»¿ |
| Install uPVC Pipe Sewer & Drainage | material | 81420 | ï»¿ |
| Roof Vent Caps | material | 500 | ï»¿ |
| Floor drain (FD-1) | material | 400 | ï»¿ |
| Gully Traps with heavy duty cover | material | 1450 | ï»¿ |
| Inspection chamber with heavy duty cover | material | 4500 | ï»¿ |
| Plumbing fixtures | material | 49500 | ï»¿ |
| Inline exhaust fans/make-up air fans | material | 10400 | ï»¿ |
| Indoor ductwork | material | 130 | ï»¿ |
| Square exhaust diffuser | material | 250 | ï»¿ |
| Exhaust grills | material | 300 | ï»¿ |
| Flexible ducts | material | 200 | ï»¿ |
| Condensate drain piping | material | 900 | ï»¿ |
| Fire Pump system | material | 420000 | ï»¿ |
| 50 mm Ø Valve with Valve Box | material | 2000 | ï»¿ |
| Plumber | labor |  | ï»¿ |
| Branch Telecom Manhole (MH1) with pipes | material | 3360 | ï»¿ |
| Main Telecom Manhole (MH2) with pipes | material | 3360 | ï»¿ |
| Telecom Handhole (HH) with pipes | material | 1160 | ï»¿ |
| Main Electrical Manhole with pipes | material | 4400 | ï»¿ |
| Branch Electrical Manhole with pipes | material | 3200 | ï»¿ |
| Street Lighting Manhole with pipes | material | 3200 | ï»¿ |
| Pipes for all telecom network at site | material | 132 | ï»¿ |
| Pipes for all electrical network at site | material | 240 | ï»¿ |
| Road crossing duct bank for street lighting cables | material | 480 | ï»¿ |
| Road crossing duct bank for site electrical cables | material | 480 | ï»¿ |
| Road crossing duct bank for site telecom cables | material | 480 | ï»¿ |
| Street lighting feeder pillar | material | 12000 | ï»¿ |
| Street lighting poles with LED lighting fixtures | material | 5600 | ï»¿ |
| Concrete wall for KWHM for street lighting feeder pillar | material | 4000 | ï»¿ |
| 4C x 50mm2 +1C x 25 mm2 | material | 320 | ï»¿ |
| 4C x 16mm2 +1C x 10mm2 | material | 120 | ï»¿ |
| LED Lighting fixtures | material | 720 | ï»¿ |
| Emergency LED lighting | material | 1200 | ï»¿ |
| Lighting switch | material | 400 | ï»¿ |
| Motor Circuit Protector for pumps | material | 6400 | ï»¿ |
| Pump room power panel | material | 4800 | ï»¿ |
| Control Panel for pumps | material | 8000 | ï»¿ |
| Isolator switch | material | 2000 | ï»¿ |
| Disconnect switch | material | 2000 | ï»¿ |
| Concrete wall for KWHM for pump room | material | 4000 | ï»¿ |
| Cable trays | material | 8000 | ï»¿ |
| Feeder pillars | material | 4800 | ï»¿ |
| Pump Room | material | 3200 | ï»¿ |
| KWHM's | material | 2000 | ï»¿ |
| Street lighting Poles | material | 720 | ï»¿ |
| Low Voltage Copper Cables & Wires | material | 89070 | ï»¿ |
| Cable Trays | material | 128000 | ï»¿ |
| Lighting, Power Panelboards, and Control | material | 273600 | ï»¿ |
| Safety Disconnect Switches | material | 52032 | ï»¿ |
| Lighting Fixtures and Their Switches | material | 190640 | ï»¿ |
| Telecom & Data System | material | 198400 | ï»¿ |
| Grounding System | material | 52800 | ï»¿ |
| Lightning Protection System | material | 20000 | ï»¿ |
| Fire Alarm System | material | 106280 | ï»¿ |
| Sockets, outlets, and wiring devices | material | 98007 | ï»¿ |
| Solar Power Plant | material | 36800 | ï»¿ |
| Skylight Fixtures | material | 2640 | ï»¿ |
| Electrician | labor |  | ï»¿ |
| Jack Hammer | equipment |  | ï»¿ |
| Landscape Labor | labor |  | ï»¿ |
| Carpenter | labor |  | ï»¿ |
| Steel Fixer | labor |  | ï»¿ |
| Concreting Labor | labor |  | ï»¿ |
| Compactor | equipment |  | ï»¿ |
| PEB for one block with an area 1990 square meter | material | 1700000 | ï»¿ |
| Pump Shed | material | 35000 | ï»¿ |
| Intumescent paint to steel works | material | 220000 | ï»¿ |
| Fencing For Pump Room | material | 1400 | ï»¿ |
| Install swing gate for fence with similar design with opening of 3m. | material | 10000 | ï»¿ |
| Install swing gate for fence with similar design with opening of 1.5m. | material | 7000 | ï»¿ |
| Water Tank Truck | equipment |  | ï»¿ |
| Tile Installer | labor |  | ï»¿ |
| HVAC Installer | labor |  | ï»¿ |
| Welder | labor |  | ï»¿ |
| Painter | labor |  | ï»¿ |
| Asphalt Paver | equipment |  | ï»¿ |
| Asphalt Labor | labor |  | ï»¿ |

## Schedule

| ID | WBS | Activity | Type | Duration | Start | Finish | Predecessors | Total float | Free float |
| --- | --- | --- | --- | --- | --- | --- | --- | --- | --- |
|  | 1 | **MILESTONE** |  |  | 2026-03-03 | 2027-01-02 |  |  |  |
|  | 1 | **CONTRACTUAL MILESTONES** |  |  | 2026-03-03 | 2027-01-02 |  |  |  |
| NJR1-MI-CM-100 |  | PROJECT START | milestone | 0d | 2026-03-03 | 2026-03-03 |  | 0d |  |
| NJR1-MI-CM-110 |  | Completion of Site Survey Works | milestone | 0d | 2026-03-31 | 2026-03-31 | NJR1-MO-PS-RA-100, NJR1-MO-PS-RA-110, NJR1-MO-PS-RA-120, NJR1-MO-PS-RA-130, NJR1-MO-PS-RA-140, NJR1-MO-PS-RA-150 | 0d |  |
| NJR1-MI-CM-120 |  | Completion of Plans (PEP, HSE, PQP, Procurement Plan) | milestone | 0d | 2026-03-31 | 2026-03-31 | NJR1-MO-PS-RA-100, NJR1-MO-PS-RA-110, NJR1-MO-PS-RA-120, NJR1-MO-PS-RA-130, NJR1-MO-PS-RA-140, NJR1-MO-PS-RA-150 | 0d |  |
| NJR1-MI-CM-130 |  | Completion of Time Schedule Submission | milestone | 0d | 2026-03-31 | 2026-03-31 | NJR1-MO-PS-RA-100, NJR1-MO-PS-RA-110, NJR1-MO-PS-RA-120, NJR1-MO-PS-RA-130, NJR1-MO-PS-RA-140, NJR1-MO-PS-RA-150 | 0d |  |
| NJR1-MI-CM-140 |  | Completion of Engineering and Material Submittals | milestone | 0d | 2026-05-02 | 2026-05-02 | NJR1-SD-ST-MI-20, NJR1-EN-MT-RA-100, NJR1-EN-MT-RA-110, NJR1-EN-MT-RA-120, NJR1-EN-MT-RA-130, NJR1-EN-MT-RA-140, NJR1-EN-MT-RA-150, NJR1-EN-MT-RA-160, NJR1-EN-MT-RA-170, NJR1-EN-MT-RA-190, NJR1-EN-MT-RA-200, NJR1-EN-MT-RA-180, NJR1-3910, NJR1-SD-ME-MI-20, NJR1-MS-LL-MI-20, NJR1-MS-SL-MI-20 | 13d | 0d |
| NJR1-MI-CM-150 |  | Completion of Long Lead Procurement and Material Delivery | milestone | 0d | 2026-10-27 | 2026-10-27 | NJR1-DE-LL-CO-100, NJR1-DE-LL-DW-100, NJR1-DE-LL-DW-110, NJR1-DE-LL-DW-120, NJR1-DE-LL-DW-130, NJR1-DE-LL-DW-140, NJR1-DE-LL-DW-150, NJR1-DE-LL-PR-100, NJR1-DE-LL-PR-110, NJR1-DE-LL-PR-120, NJR1-DE-LL-FF-100, NJR1-DE-LL-EE-100, NJR1-DE-LL-EE-110, NJR1-DE-LL-EE-120, NJR1-DE-LL-EE-130, NJR1-DE-LL-EE-140, NJR1-DE-LL-EE-150, NJR1-DE-LL-WS-100 | 31d | 14d |
| NJR1-MI-CM-160 |  | Completion of Short Lead Procurement and Material Delivery | milestone | 0d | 2026-10-29 | 2026-10-29 | NJR1-DE-SL-EA-100, NJR1-DE-SL-EA-110, NJR1-DE-SL-EA-120, NJR1-DE-SL-EA-130, NJR1-DE-SL-EA-140, NJR1-DE-SL-EA-150, NJR1-DE-SL-EA-160, NJR1-DE-SL-EA-170, NJR1-DE-SL-EA-180, NJR1-DE-SL-EA-190, NJR1-DE-SL-CO-100, NJR1-DE-SL-CO-110, NJR1-DE-SL-MA-100, NJR1-DE-SL-MW-100, NJR1-DE-SL-MW-110, NJR1-DE-SL-MW-120, NJR1-DE-SL-MW-130, NJR1-DE-SL-TH-100, NJR1-DE-SL-TH-110, NJR1-DE-SL-TH-120, NJR1-DE-SL-TH-130, NJR1-DE-SL-TH-140, NJR1-DE-SL-TH-150, NJR1-DE-SL-TH-160, NJR1-DE-SL-TH-170, NJR1-DE-SL-FW-100, NJR1-DE-SL-FW-110, NJR1-DE-SL-FW-120, NJR1-DE-SL-FW-130, NJR1-DE-SL-FW-140, NJR1-DE-SL-FW-150, NJR1-DE-SL-FW-160, NJR1-DE-SL-FW-170, NJR1-DE-SL-FW-180, NJR1-DE-SL-FW-190, NJR1-DE-SL-FW-200, NJR1-DE-SL-SP-100, NJR1-DE-SL-SP-110, NJR1-DE-SL-SP-120, NJR1-DE-SL-PR-100, NJR1-DE-SL-PR-110, NJR1-DE-SL-PR-120, NJR1-DE-SL-FF-100, NJR1-DE-SL-FF-110, NJR1-DE-SL-WS-100, NJR1-DE-SL-WS-110, NJR1-DE-SL-WS-120, NJR1-DE-SL-WS-130, NJR1-DE-SL-WS-140, NJR1-DE-SL-SW-100, NJR1-DE-SL-SW-110, NJR1-DE-SL-SW-120, NJR1-DE-SL-SW-130, NJR1-DE-SL-FF-120, NJR1-DE-SL-FF-130, NJR1-DE-SL-FF-140, NJR1-DE-SL-FF-150, NJR1-DE-SL-FF-160, NJR1-DE-SL-FF-170, NJR1-DE-SL-FF-180, NJR1-DE-SL-FF-190, NJR1-DE-SL-WS-150, NJR1-DE-SL-WS-160, NJR1-DE-SL-WS-170, NJR1-DE-SL-WS-180, NJR1-DE-SL-SW-140, NJR1-DE-SL-SW-150, NJR1-DE-SL-SW-160, NJR1-DE-SL-SW-170, NJR1-DE-SL-SW-180, NJR1-DE-SL-SW-190, NJR1-DE-SL-SW-200, NJR1-DE-SL-SW-210, NJR1-DE-SL-SW-220, NJR1-DE-SL-SW-230, NJR1-DE-SL-HV-100, NJR1-DE-SL-HV-110, NJR1-DE-SL-HV-120, NJR1-DE-SL-HV-130, NJR1-DE-SL-HV-140, NJR1-DE-SL-EE100, NJR1-DE-SL-EE110, NJR1-DE-SL-EE120, NJR1-DE-SL-EE130, NJR1-DE-SL-EE140, NJR1-DE-SL-EE150, NJR1-DE-SL-EE160, NJR1-DE-SL-EE170, NJR1-DE-SL-EE180, NJR1-DE-SL-EE190 | 14d | 0d |
| NJR1-MI-CM-170 |  | Completion of Construction | milestone | 0d | 2026-12-08 | 2026-12-08 | NJR1-CO-SW-170, NJR1-CO-SW-200, NJR1-CO-SW-240, NJR1-CO-SW-330, NJR1-CO-SW-340, NJR1-CO-SW-350, NJR1-CO-SW-360, NJR1-CO-SW-370, NJR1-CO-SW-380, NJR1-CO-MW-100, NJR1-CO-MW-110, NJR1-CO-MW-120, NJR1-CO-MW-130, NJR1-CO-MW-160, NJR1-CO-MW-170, NJR1-CO-MW-180, NJR1-CO-MW-190, NJR1-CO-MW-200, NJR1-CO-MW-210, NJR1-CO-MW-220, NJR1-CO-MW-230, NJR1-CO-MW-240, NJR1-CO-MW-250, NJR1-CO-MW-260, NJR1-CO-MW-140, NJR1-CO-MW-150, NJR1-CO-TH-800, NJR1-CO-TH-810, NJR1-CO-TH-820, NJR1-CO-TH-830, NJR1-CO-TH-840, NJR1-CO-TH-850, NJR1-CO-TH-860, NJR1-CO-DW-420, NJR1-CO-DW-430, NJR1-CO-DW-440, NJR1-CO-DW-450, NJR1-CO-DW-460, NJR1-CO-DW-470, NJR1-CO-DW-480, NJR1-CO-DW-490, NJR1-CO-DW-500, NJR1-CO-DW-510, NJR1-CO-DW-520, NJR1-CO-DW-530, NJR1-CO-FW-250, NJR1-CO-FW-340, NJR1-CO-FW-360, NJR1-CO-FW-330, NJR1-CO-FW-350, NJR1-CO-SP-260, NJR1-CO-SP-270, NJR1-CO-SP-320, NJR1-CO-ME-EX-WS-230, NJR1-CO-EE-IN-1780, NJR1-CO-EE-IN-1900, NJR1-CO-EE-IN-1310, NJR1-CO-EE-IN-1320, NJR1-CO-EE-IN-1330, NJR1-CO-EE-IN-1340, NJR1-CO-EE-IN-1350, NJR1-CO-EE-IN-1360, NJR1-CO-EE-IN-1370, NJR1-CO-EE-IN-1380, NJR1-CO-EE-IN-1390, NJR1-CO-EE-IN-1400, NJR1-CO-EE-IN-1410, NJR1-CO-EE-IN-1420, NJR1-CO-EE-IN-1430, NJR1-CO-EE-IN-1440, NJR1-CO-EE-IN-1450, NJR1-CO-EE-IN-1460, NJR1-CO-EE-IN-1470, NJR1-CO-EE-IN-1480, NJR1-CO-EE-IN-1300, NJR1-CO-FW-600, NJR1-CO-ME-IN-SW-156, NJR1-CO-ME-IN-HV-280, NJR1-CO-ME-IN-HV-290, NJR1-CO-ME-IN-WS-160, NJR1-CO-ME-IN-WS-170, NJR1-CO-ME-IN-WS-180, NJR1-CO-ME-IN-WS-190, NJR1-CO-ME-IN-WS-200, NJR1-CO-ME-IN-WS-210, NJR1-CO-ME-IN-WS-220, NJR1-CO-ME-IN-WS-230, NJR1-CO-ME-IN-WS-240, NJR1-CO-ME-IN-WS-250, NJR1-CO-ME-IN-WS-260, NJR1-CO-ME-IN-WS-270, NJR1-CO-ME-IN-SW-320, NJR1-CO-ME-IN-SW-330, NJR1-CO-ME-IN-SW-120, NJR1-CO-ME-IN-SW-130, NJR1-CO-ME-IN-SW-310, NJR1-CO-ME-IN-FF-420, NJR1-MI-BM-240, NJR1-MI-BM-260, NJR1-MI-BM-280, NJR1-MI-BM-140, NJR1-MI-BM-190, NJR1-CO-ME-IN-FF-560, NJR1-CO-DW-410, NJR1-CO-SP-280, NJR1-MI-CM-150, NJR1-MI-CM-160, NJR1-CO-ME-IN-HV-450 | 0d |  |
| NJR1-MI-CM-180 |  | Completion of Testing and Commissioning | milestone | 0d | 2027-01-02 | 2027-01-02 | NJR1-CL-EN-100, NJR1-CL-EN-110, NJR1-CL-DM-100, NJR1-CL-DM-110, NJR1-CL-DM-120, NJR1-CL-DM-130, NJR1-CL-DM-140, NJR1-CL-EN-120, NJR1-CL-EN-130, NJR1-CL-EN-140 | 0d |  |
| NJR1-MI-CM-190 |  | PROJECT FINISH | milestone | 0d | 2027-01-02 | 2027-01-02 | NJR1-MI-CM-180 | 0d |  |
|  | 2 | **BUILDING AND DISCIPLINE MILESTONES** |  |  | 2026-04-01 | 2026-12-05 |  |  |  |
|  | 1 | **WAREHOUSE** |  |  | 2026-04-01 | 2026-11-29 |  |  |  |
| NJR1-MI-BM-100 |  | Workshop Construction Start | milestone | 0d | 2026-04-01 | 2026-04-01 | NJR1-MI-CM-110, NJR1-MI-CM-120, NJR1-MO-SO-100, NJR1-MO-SO-110, NJR1-MO-SO-120, NJR1-MO-SO-130, NJR1-MO-SO-140, NJR1-MO-SO-150, NJR1-MO-SO-160, NJR1-MO-SO-170, NJR1-MO-SO-180, NJR1-MO-SO-190, NJR1-MO-SO-200, NJR1-MI-CM-130 | 0d |  |
| NJR1-MI-BM-110 |  | Completion of Earth Works | milestone | 0d | 2026-06-08 | 2026-06-08 | NJR1-CO-SW-180, NJR1-MI-BM-100 | 22d | 0d |
| NJR1-MI-BM-120 |  | Completion of Concrete Works | milestone | 0d | 2026-08-03 | 2026-08-03 | NJR1-CO-CW-250, NJR1-CO-CW-260, NJR1-MI-BM-110 | 31d | 9d |
| NJR1-MI-BM-130 |  | Completion Pre Engineered Structure | milestone | 0d | 2026-08-13 | 2026-08-13 | NJR1-CO-PR-130, NJR1-CO-PR-120, NJR1-MI-BM-120 | 22d | 3d |
| NJR1-MI-BM-140 |  | Completion of Finishes | milestone | 0d | 2026-11-29 | 2026-11-29 | NJR1-CO-SP-270, NJR1-MI-BM-130, NJR1-MI-CM-150 | 8d |  |
|  | 2 | **OUTSIDE MOSQUE (Prayer Room)** |  |  | 2026-07-13 | 2026-12-05 |  |  |  |
| NJR1-MI-BM-150 |  | Outside Mosque (Prayer Room) Construction Start | milestone | 0d | 2026-07-13 | 2026-07-13 | NJR1-CO-ME-EX-WS-132 | 0d |  |
| NJR1-MI-BM-160 |  | Completion of Earth Works | milestone | 0d | 2026-08-24 | 2026-08-24 | NJR1-CO-SW-190 | 0d |  |
| NJR1-MI-BM-170 |  | Completion of Concrete Works | milestone | 0d | 2026-09-06 | 2026-09-06 | NJR1-CO-CW-360 | 0d |  |
| NJR1-MI-BM-180 |  | Completion ACC Works | milestone | 0d | 2026-10-03 | 2026-10-03 | NJR1-CO-CW-350 | 21d | 5d |
| NJR1-MI-BM-190 |  | Completion of Finishes | milestone | 0d | 2026-12-05 | 2026-12-05 | NJR1-MI-BM-180, NJR1-CO-FW-360 | 3d |  |

| ID | WBS | Activity | Type | Duration | Start | Finish | Predecessors | Total float | Free float | Resources |
| --- | --- | --- | --- | --- | --- | --- | --- | --- | --- | --- |
|  | 3 | **GRP WATERTANK AND PUMP SHED** |  |  | 2026-04-01 | 2026-08-24 |  |  |  |  |
| NJR1-MI-BM-200 |  | GRP Watertank and Pump Shed Construction Start | milestone | 0d | 2026-04-01 | 2026-04-01 | NJR1-CO-SW-100 SS | 15d | 0d |  |
| NJR1-MI-BM-210 |  | Completion of Earth Works | milestone | 0d | 2026-05-25 | 2026-05-25 | NJR1-CO-SW-210, NJR1-MI-CM-140 | 13d | 0d |  |
| NJR1-MI-BM-220 |  | Completion of Pump Shed Structure | milestone | 0d | 2026-06-24 | 2026-06-24 | NJR1-CO-PR-180 | 21d | 0d |  |
| NJR1-MI-BM-240 |  | Completion of Hot Press GRP Installation | milestone | 0d | 2026-07-15 | 2026-07-15 | NJR1-CO-ME-EX-WS-230 | 34d | 9d |  |
| NJR1-MI-BM-230 |  | Completion of Gates for Pump Shed | milestone | 0d | 2026-08-24 | 2026-08-24 | NJR1-CO-PR-150, NJR1-CO-PR-160, NJR1-CO-PR-170 | 11d | 0d |  |
|  | 4 | **EXTERNAL WORKS** |  |  | 2026-04-28 | 2026-11-25 |  |  |  |  |
| NJR1-MI-BM-250 |  | External Work Construction Start | milestone | 0d | 2026-04-28 | 2026-04-28 | NJR1-CO-SW-100, NJR1-CO-SW-120, NJR1-CO-SW-130, NJR1-SD-EI-MI-20, NJR1-SD-EE-MI-20 | 0d |  |  |
| NJR1-MI-BM-270 |  | Completion of External Electrical Works | milestone | 0d | 2026-09-27 | 2026-09-27 | NJR1-CO-EE-EX-290, NJR1-CO-EE-EX-340, NJR1-CO-EE-EX-400, NJR1-CO-EE-EX-350, NJR1-CO-EE-EX-200, NJR1-CO-EE-EX-210 | 11d | 0d |  |
| NJR1-MI-BM-280 |  | Completion of Asphalt Work | milestone | 0d | 2026-11-12 | 2026-11-12 | NJR1-CO-SW-250, NJR1-CO-SW-260, NJR1-MI-BM-270 | 22d |  |  |
| NJR1-MI-BM-260 |  | Completion of External Mechanical Works | milestone | 0d | 2026-11-25 | 2026-11-25 | NJR1-CO-ME-EX-WS-230, NJR1-CO-ME-IN-SW-310, NJR1-CO-ME-IN-WS-270 | 11d |  |  |
|  | 2 | **MOBILIZATION** |  |  | 2026-03-03 | 2026-03-31 |  |  |  |  |
|  | 1 | **Site Facilities & Offices** |  |  | 2026-03-03 | 2026-03-31 |  |  |  |  |
| NJR1-MO-SO-100 |  | Clear & Grub for Offices & Access Road |  | 2.5d | 2026-03-03 | 2026-03-05 | NJR1-MI-CM-100 | 2.5d | 0d | Grader [24 h]; General Labor [12 h]; Operator [24 h] |
| NJR1-MO-SO-110 |  | Site Layout Plan |  | 5d | 2026-03-03 | 2026-03-08 | NJR1-MI-CM-100 | 0d |  | General Labor [20 h] |
| NJR1-MO-SO-120 |  | Mobilize Manpower |  | 18d | 2026-03-03 | 2026-03-25 | NJR1-MO-SO-100 SS, NJR1-MO-SO-110 SS | 5d |  | General Labor [72 h] |
| NJR1-MO-SO-130 |  | Mobilize Equipment |  | 18d | 2026-03-03 | 2026-03-25 | NJR1-MO-SO-100 SS, NJR1-MO-SO-110 SS | 5d |  | General Labor [72 h] |
| NJR1-MO-SO-140 |  | Construct Site Access Roads |  | 18d | 2026-03-09 | 2026-03-31 | NJR1-MO-SO-100, NJR1-MO-SO-110 | 0d |  | Excavator [144 h]; Grader [144 h]; Dump Truck [144 h]; General Labor [72 h]; Operator [432 h] |
| NJR1-MO-SO-150 |  | Construct Site Offices & Storage |  | 18d | 2026-03-09 | 2026-03-31 | NJR1-MO-SO-100, NJR1-MO-SO-110 | 0d |  | Crane [144 h]; Fork Lift [144 h]; General Labor [72 h]; Operator [288 h] |
| NJR1-MO-SO-160 |  | Install Site Facilities |  | 18d | 2026-03-09 | 2026-03-31 | NJR1-MO-SO-100, NJR1-MO-SO-110 | 0d |  | Crane [144 h]; Fork Lift [144 h]; General Labor [72 h]; Operator [288 h] |
| NJR1-MO-SO-170 |  | Install Electrical Works & Connections |  | 18d | 2026-03-09 | 2026-03-31 | NJR1-MO-SO-100, NJR1-MO-SO-110 | 0d |  | Crane [144 h]; Fork Lift [144 h]; General Labor [72 h]; Operator [288 h] |
| NJR1-MO-SO-180 |  | Construct Parking Sheds |  | 18d | 2026-03-09 | 2026-03-31 | NJR1-MO-SO-100, NJR1-MO-SO-110 | 0d |  | Crane [144 h]; Fork Lift [144 h]; General Labor [72 h]; Operator [288 h] |
| NJR1-MO-SO-190 |  | Construct Project Signage |  | 18d | 2026-03-09 | 2026-03-31 | NJR1-MO-SO-100, NJR1-MO-SO-110 | 0d |  | Crane [144 h]; Fork Lift [144 h]; General Labor [72 h]; Operator [288 h] |
| NJR1-MO-SO-200 |  | Construct Temporary Fence |  | 18d | 2026-03-09 | 2026-03-31 | NJR1-MO-SO-100, NJR1-MO-SO-110 | 0d |  | Crane [144 h]; Fork Lift [144 h]; General Labor [72 h]; Operator [288 h] |

| ID | WBS | Activity | Type | Duration | Start | Finish | Predecessors | Total float | Resources | WBS-Engineering |
| --- | --- | --- | --- | --- | --- | --- | --- | --- | --- | --- |
|  | 2 | **Preliminary Submittals** |  |  | 2026-03-03 | 2026-03-31 |  |  |  |  |
|  | 1 | **Prepare & Submit** |  |  | 2026-03-03 | 2026-03-17 |  |  |  |  |
| NJR1-MO-PS-PS-100 |  | Organization Chart |  | 13d | 2026-03-03 | 2026-03-17 | NJR1-MI-CM-100 | 0d | Staff [509.07 h] |  |
| NJR1-MO-PS-PS-110 |  | Health & Safety Plan |  | 13d | 2026-03-03 | 2026-03-17 | NJR1-MI-CM-100, NJR1-MO-PS-PS-100 SS | 0d | Staff [509.07 h] |  |
| NJR1-MO-PS-PS-120 |  | Quality Control Plan |  | 13d | 2026-03-03 | 2026-03-17 | NJR1-MI-CM-100, NJR1-MO-PS-PS-110 SS | 0d | Staff [509.07 h] |  |
| NJR1-MO-PS-PS-130 |  | Environmental Plan |  | 13d | 2026-03-03 | 2026-03-17 | NJR1-MI-CM-100, NJR1-MO-PS-PS-120 SS | 0d | Staff [509.07 h] |  |
| NJR1-MO-PS-PS-140 |  | Time Schedule |  | 13d | 2026-03-03 | 2026-03-17 | NJR1-MI-CM-100, NJR1-MO-PS-PS-130 SS | 0d | Staff [509.07 h] |  |
| NJR1-MO-PS-PS-150 |  | Soil Investigation Report |  | 13d | 2026-03-03 | 2026-03-17 | NJR1-MI-CM-100, NJR1-MO-PS-PS-140 SS | 0d | Staff [509.07 h] |  |
|  | 2 | **Review & Approve** |  |  | 2026-03-18 | 2026-03-31 |  |  |  |  |
| NJR1-MO-PS-RA-100 |  | Organization Chart |  | 10d | 2026-03-18 | 2026-03-31 | NJR1-MO-PS-PS-100 | 0d | Staff [509.07 h] |  |
| NJR1-MO-PS-RA-110 |  | Health & Safety Plan |  | 10d | 2026-03-18 | 2026-03-31 | NJR1-MO-PS-PS-110 | 0d | Staff [509.07 h] |  |
| NJR1-MO-PS-RA-120 |  | Quality Control Plan |  | 10d | 2026-03-18 | 2026-03-31 | NJR1-MO-PS-PS-120 | 0d | Staff [509.07 h] |  |
| NJR1-MO-PS-RA-130 |  | Environmental Plan |  | 10d | 2026-03-18 | 2026-03-31 | NJR1-MO-PS-PS-130 | 0d | Staff [509.07 h] |  |
| NJR1-MO-PS-RA-140 |  | Time Schedule |  | 10d | 2026-03-18 | 2026-03-31 | NJR1-MO-PS-PS-140 | 0d | Staff [509.07 h] |  |
| NJR1-MO-PS-RA-150 |  | Soil Investigation Report |  | 10d | 2026-03-18 | 2026-03-31 | NJR1-MO-PS-PS-150 | 0d | Staff [509.07 h] |  |
|  | 3 | **ENGINEERING** |  |  | 2026-03-03 | 2026-05-02 |  |  |  |  |
|  | 1 | **Shop Drawing Submittal** |  |  | 2026-03-03 | 2026-04-29 |  |  |  |  |
|  | 1 | **Structural** |  |  | 2026-03-03 | 2026-04-01 |  |  |  |  |
| NJR1-SD-ST-MI-10 |  | Shop Drawing Submittal - Start Structural | milestone | 0d | 2026-03-03 | 2026-03-03 | NJR1-MO-SO-110 SS | 0d |  | 1 |
| NJR1-SD-ST-MI-20 |  | Shop Drawing Submittal - Finish Structural | milestone | 0d | 2026-04-01 | 2026-04-01 | NJR1-SD-ST-RA-130, NJR1-SD-ST-RA-120, NJR1-SD-ST-RA-110, NJR1-SD-ST-RA-100, NJR1-SD-ST-RA-140, NJR1-SD-ST-RA-150, NJR1-SD-ST-RA-160, NJR1-SD-ST-RA-170, NJR1-SD-ST-RA-180, NJR1-SD-ST-RA-190, NJR1-SD-ST-RA-200, NJR1-SD-ST-RA-210, NJR1-SD-ST-RA-220, NJR1-SD-ST-RA-230, NJR1-SD-ST-RA-240, NJR1-SD-ST-RA-250, NJR1-SD-ST-RA-260, NJR1-SD-EI-MI-10 | 0d |  | 1 |
|  | 1 | **Prepare and Submit** |  |  | 2026-03-03 | 2026-03-18 |  |  |  |  |
| NJR1-SD-ST-PS-100 |  | Cover Sheet |  | 14d | 2026-03-03 | 2026-03-18 | NJR1-SD-ST-MI-10 | 0d | Staff [20.87 h] | 1 |
| NJR1-SD-ST-PS-110 |  | List of Drawings |  | 14d | 2026-03-03 | 2026-03-18 | NJR1-SD-ST-MI-10 | 0d | Staff [20.87 h] | 1 |
| NJR1-SD-ST-PS-120 |  | General Notes |  | 14d | 2026-03-03 | 2026-03-18 | NJR1-SD-ST-MI-10 | 0d | Staff [20.87 h] | 1 |
| NJR1-SD-ST-PS-130 |  | General Details |  | 14d | 2026-03-03 | 2026-03-18 | NJR1-SD-ST-MI-10 | 0d | Staff [20.87 h] | 1 |
| NJR1-SD-ST-PS-140 |  | Steel Framing General Notes |  | 14d | 2026-03-03 | 2026-03-18 | NJR1-SD-ST-MI-10 | 0d | Staff [20.87 h] | 1 |
| NJR1-SD-ST-PS-150 |  | Foundation Layout |  | 14d | 2026-03-03 | 2026-03-18 | NJR1-SD-ST-MI-10 | 0d | Staff [20.87 h] | 1 |
| NJR1-SD-ST-PS-160 |  | Base Plate Layout |  | 14d | 2026-03-03 | 2026-03-18 | NJR1-SD-ST-MI-10 | 0d | Staff [20.87 h] | 1 |
| NJR1-SD-ST-PS-170 |  | Grade Beam / Slab on Grade Layout |  | 14d | 2026-03-03 | 2026-03-18 | NJR1-SD-ST-MI-10 | 0d | Staff [20.87 h] | 1 |
| NJR1-SD-ST-PS-180 |  | Roof Beam Layout (Main Rafter) |  | 14d | 2026-03-03 | 2026-03-18 | NJR1-SD-ST-MI-10 | 0d | Staff [20.87 h] | 1 |
| NJR1-SD-ST-PS-190 |  | Roof Framing Layout (Purlins) |  | 14d | 2026-03-03 | 2026-03-18 | NJR1-SD-ST-MI-10 | 0d | Staff [20.87 h] | 1 |
| NJR1-SD-ST-PS-200 |  | Roof Sheeting Layout |  | 14d | 2026-03-03 | 2026-03-18 | NJR1-SD-ST-MI-10 | 0d | Staff [20.87 h] | 1 |
| NJR1-SD-ST-PS-210 |  | Sections |  | 14d | 2026-03-03 | 2026-03-18 | NJR1-SD-ST-MI-10 | 0d | Staff [20.87 h] | 1 |
| NJR1-SD-ST-PS-220 |  | Structural Schedule |  | 14d | 2026-03-03 | 2026-03-18 | NJR1-SD-ST-MI-10 | 0d | Staff [20.87 h] | 1 |
| NJR1-SD-ST-PS-230 |  | Base Plate Details |  | 14d | 2026-03-03 | 2026-03-18 | NJR1-SD-ST-MI-10 | 0d | Staff [20.87 h] | 1 |
| NJR1-SD-ST-PS-240 |  | Pump Shed And GRP Water Tank Structural Details |  | 14d | 2026-03-03 | 2026-03-18 | NJR1-SD-ST-MI-10 | 0d | Staff [20.87 h] | 1 |
| NJR1-SD-ST-PS-250 |  | Under Ground Septic Tank Structural Details |  | 14d | 2026-03-03 | 2026-03-18 | NJR1-SD-ST-MI-10 | 0d | Staff [20.87 h] | 1 |
| NJR1-SD-ST-PS-260 |  | Prayer Room & Ablution Area Structural Details |  | 14d | 2026-03-03 | 2026-03-18 | NJR1-SD-ST-MI-10 | 0d | Staff [20.87 h] | 1 |

| ID | WBS | Activity | Type | Duration | Start | Finish | Predecessors | Total float | Free float | Resources | WBS-Engineering |
| --- | --- | --- | --- | --- | --- | --- | --- | --- | --- | --- | --- |
|  | 2 | **Review and Approve** |  |  | 2026-03-19 | 2026-04-01 |  |  |  |  |  |
| NJR1-SD-ST-RA-100 |  | Cover Sheet |  | 10d | 2026-03-19 | 2026-04-01 | NJR1-SD-ST-PS-100 | 0d |  | Staff [20.87 h] | 1 |
| NJR1-SD-ST-RA-110 |  | List of Drawings |  | 10d | 2026-03-19 | 2026-04-01 | NJR1-SD-ST-PS-110 | 0d |  | Staff [20.87 h] | 1 |
| NJR1-SD-ST-RA-120 |  | General Notes |  | 10d | 2026-03-19 | 2026-04-01 | NJR1-SD-ST-PS-120 | 0d |  | Staff [20.87 h] | 1 |
| NJR1-SD-ST-RA-130 |  | General Details |  | 10d | 2026-03-19 | 2026-04-01 | NJR1-SD-ST-PS-130 | 0d |  | Staff [20.87 h] | 1 |
| NJR1-SD-ST-RA-140 |  | Steel Framing General Notes |  | 10d | 2026-03-19 | 2026-04-01 | NJR1-SD-ST-PS-140 | 0d |  | Staff [20.87 h] | 1 |
| NJR1-SD-ST-RA-150 |  | Foundation Layout |  | 10d | 2026-03-19 | 2026-04-01 | NJR1-SD-ST-PS-150 | 0d |  | Staff [20.87 h] | 1 |
| NJR1-SD-ST-RA-160 |  | Base Plate Layout |  | 10d | 2026-03-19 | 2026-04-01 | NJR1-SD-ST-PS-160 | 0d |  | Staff [20.87 h] | 1 |
| NJR1-SD-ST-RA-170 |  | Grade Beam / Slab on Grade Layout |  | 10d | 2026-03-19 | 2026-04-01 | NJR1-SD-ST-PS-170 | 0d |  | Staff [20.87 h] | 1 |
| NJR1-SD-ST-RA-180 |  | Roof Beam Layout (Main Rafter) |  | 10d | 2026-03-19 | 2026-04-01 | NJR1-SD-ST-PS-180 | 0d |  | Staff [20.87 h] | 1 |
| NJR1-SD-ST-RA-190 |  | Roof Framing Layout (Purlins) |  | 10d | 2026-03-19 | 2026-04-01 | NJR1-SD-ST-PS-190 | 0d |  | Staff [20.87 h] | 1 |
| NJR1-SD-ST-RA-200 |  | Roof Sheeting Layout |  | 10d | 2026-03-19 | 2026-04-01 | NJR1-SD-ST-PS-200 | 0d |  | Staff [20.87 h] | 1 |
| NJR1-SD-ST-RA-210 |  | Sections |  | 10d | 2026-03-19 | 2026-04-01 | NJR1-SD-ST-PS-210 | 0d |  | Staff [20.87 h] | 1 |
| NJR1-SD-ST-RA-220 |  | Structural Schedule |  | 10d | 2026-03-19 | 2026-04-01 | NJR1-SD-ST-PS-220 | 0d |  | Staff [20.87 h] | 1 |
| NJR1-SD-ST-RA-230 |  | Base Plate Details |  | 10d | 2026-03-19 | 2026-04-01 | NJR1-SD-ST-PS-230 | 0d |  | Staff [20.87 h] | 1 |
| NJR1-SD-ST-RA-240 |  | Pump Shed And GRP Water Tank Structural Details |  | 10d | 2026-03-19 | 2026-04-01 | NJR1-SD-ST-PS-240 | 0d |  | Staff [20.87 h] | 1 |
| NJR1-SD-ST-RA-250 |  | Under Ground Septic Tank Structural Details |  | 10d | 2026-03-19 | 2026-04-01 | NJR1-SD-ST-PS-250 | 0d |  | Staff [20.87 h] | 1 |
| NJR1-SD-ST-RA-260 |  | Prayer Room & Ablution Area Structural Details |  | 10d | 2026-03-19 | 2026-04-01 | NJR1-SD-ST-PS-260 | 0d |  | Staff [20.87 h] | 1 |
|  | 2 | **Architectural** |  |  | 2026-03-03 | 2026-04-01 |  |  |  |  |  |
| NJR1-SD-AR-MI-10 |  | Shop Drawing Submittal - Start Architectural | milestone | 0d | 2026-03-03 | 2026-03-03 | NJR1-SD-EE-MI-10, NJR1-SD-ME-MI-10 | 15d | 0d |  | 2 |
| NJR1-SD-AR-MI-20 |  | Shop Drawing Submittal - Finish Architectural | milestone | 0d | 2026-04-01 | 2026-04-01 | NJR1-SD-AR-RA-100, NJR1-SD-AR-RA-110, NJR1-SD-AR-RA-120, NJR1-SD-AR-RA-130, NJR1-SD-AR-RA-140, NJR1-SD-AR-RA-150, NJR1-SD-AR-RA-160, NJR1-SD-AR-RA-170, NJR1-SD-AR-RA-180, NJR1-SD-AR-RA-190, NJR1-SD-AR-RA-200, NJR1-SD-AR-RA-210, NJR1-SD-AR-RA-220, NJR1-SD-ME-MI-20 | 15d | 0d |  | 2 |
|  | 1 | **Prepare and Submit** |  |  | 2026-03-03 | 2026-03-18 |  |  |  |  |  |
| NJR1-SD-AR-PS-100 |  | Cover Sheet |  | 14d | 2026-03-03 | 2026-03-18 | NJR1-SD-AR-MI-10 | 15d | 0d | Staff [20.87 h] | 2 |
| NJR1-SD-AR-PS-110 |  | List of Drawings |  | 14d | 2026-03-03 | 2026-03-18 | NJR1-SD-AR-MI-10 | 15d | 0d | Staff [20.87 h] | 2 |
| NJR1-SD-AR-PS-120 |  | General Notes, Legends & Abbreviations |  | 14d | 2026-03-03 | 2026-03-18 | NJR1-SD-AR-MI-10 | 15d | 0d | Staff [20.87 h] | 2 |
| NJR1-SD-AR-PS-130 |  | Site Development Plan |  | 14d | 2026-03-03 | 2026-03-18 | NJR1-SD-AR-MI-10 | 15d | 0d | Staff [20.87 h] | 2 |
| NJR1-SD-AR-PS-140 |  | Ground Floor Layout Plan |  | 14d | 2026-03-03 | 2026-03-18 | NJR1-SD-AR-MI-10 | 15d | 0d | Staff [20.87 h] | 2 |
| NJR1-SD-AR-PS-150 |  | Roof Layout Plan |  | 14d | 2026-03-03 | 2026-03-18 | NJR1-SD-AR-MI-10 | 15d | 0d | Staff [20.87 h] | 2 |
| NJR1-SD-AR-PS-160 |  | Elevations |  | 14d | 2026-03-03 | 2026-03-18 | NJR1-SD-AR-MI-10 | 15d | 0d | Staff [20.87 h] | 2 |
| NJR1-SD-AR-PS-170 |  | Sections |  | 14d | 2026-03-03 | 2026-03-18 | NJR1-SD-AR-MI-10 | 15d | 0d | Staff [20.87 h] | 2 |
| NJR1-SD-AR-PS-180 |  | Ground Floor Ceiling Layout Plan |  | 14d | 2026-03-03 | 2026-03-18 | NJR1-SD-AR-MI-10 | 15d | 0d | Staff [20.87 h] | 2 |
| NJR1-SD-AR-PS-190 |  | Ground Floor Finishing Layout Plan |  | 14d | 2026-03-03 | 2026-03-18 | NJR1-SD-AR-MI-10 | 15d | 0d | Staff [20.87 h] | 2 |
| NJR1-SD-AR-PS-200 |  | (D1) W.C Detail |  | 14d | 2026-03-03 | 2026-03-18 | NJR1-SD-AR-MI-10 | 15d | 0d | Staff [20.87 h] | 2 |
| NJR1-SD-AR-PS-210 |  | Door & Windows Schedule |  | 14d | 2026-03-03 | 2026-03-18 | NJR1-SD-AR-MI-10 | 15d | 0d | Staff [20.87 h] | 2 |
| NJR1-SD-AR-PS-220 |  | Miscellaneous Details |  | 14d | 2026-03-03 | 2026-03-18 | NJR1-SD-AR-MI-10 | 15d | 0d | Staff [20.87 h] | 2 |

| ID | WBS | Activity | Type | Duration | Start | Finish | Predecessors | Total float | Free float | Resources | WBS-Engineering |
| --- | --- | --- | --- | --- | --- | --- | --- | --- | --- | --- | --- |
|  | 2 | **Review and Approve** |  |  | 2026-03-19 | 2026-04-01 |  |  |  |  |  |
| NJR1-SD-AR-RA-100 |  | Cover Sheet |  | 10d | 2026-03-19 | 2026-04-01 | NJR1-SD-AR-PS-100 | 15d | 0d | Staff [20.87 h] | 2 |
| NJR1-SD-AR-RA-110 |  | List of Drawings |  | 10d | 2026-03-19 | 2026-04-01 | NJR1-SD-AR-PS-110 | 15d | 0d | Staff [20.87 h] | 2 |
| NJR1-SD-AR-RA-120 |  | General Notes, Legends & Abbreviations |  | 10d | 2026-03-19 | 2026-04-01 | NJR1-SD-AR-PS-120 | 15d | 0d | Staff [20.87 h] | 2 |
| NJR1-SD-AR-RA-130 |  | Site Development Plan |  | 10d | 2026-03-19 | 2026-04-01 | NJR1-SD-AR-PS-130 | 15d | 0d | Staff [20.87 h] | 2 |
| NJR1-SD-AR-RA-140 |  | Ground Floor Layout Plan |  | 10d | 2026-03-19 | 2026-04-01 | NJR1-SD-AR-PS-140 | 15d | 0d | Staff [20.87 h] | 2 |
| NJR1-SD-AR-RA-150 |  | Roof Layout Plan |  | 10d | 2026-03-19 | 2026-04-01 | NJR1-SD-AR-PS-150 | 15d | 0d | Staff [20.87 h] | 2 |
| NJR1-SD-AR-RA-160 |  | Elevations |  | 10d | 2026-03-19 | 2026-04-01 | NJR1-SD-AR-PS-160 | 15d | 0d | Staff [20.87 h] | 2 |
| NJR1-SD-AR-RA-170 |  | Sections |  | 10d | 2026-03-19 | 2026-04-01 | NJR1-SD-AR-PS-170 | 15d | 0d | Staff [20.87 h] | 2 |
| NJR1-SD-AR-RA-180 |  | Ground Floor Ceiling Layout Plan |  | 10d | 2026-03-19 | 2026-04-01 | NJR1-SD-AR-PS-180 | 15d | 0d | Staff [20.87 h] | 2 |
| NJR1-SD-AR-RA-190 |  | Ground Floor Finishing Layout Plan |  | 10d | 2026-03-19 | 2026-04-01 | NJR1-SD-AR-PS-190 | 15d | 0d | Staff [20.87 h] | 2 |
| NJR1-SD-AR-RA-200 |  | (D1) W.C Detail |  | 10d | 2026-03-19 | 2026-04-01 | NJR1-SD-AR-PS-200 | 15d | 0d | Staff [20.87 h] | 2 |
| NJR1-SD-AR-RA-210 |  | Door & Windows Schedule |  | 10d | 2026-03-19 | 2026-04-01 | NJR1-SD-AR-PS-210 | 15d | 0d | Staff [20.87 h] | 2 |
| NJR1-SD-AR-RA-220 |  | Miscellaneous Details |  | 10d | 2026-03-19 | 2026-04-01 | NJR1-SD-AR-PS-220 | 15d | 0d | Staff [20.87 h] | 2 |
|  | 3 | **Mechanical** |  |  | 2026-03-03 | 2026-04-01 |  |  |  |  |  |
| NJR1-SD-ME-MI-10 |  | Shop Drawing Submittal - Start Mechanical | milestone | 0d | 2026-03-03 | 2026-03-03 | NJR1-MO-SO-110 SS | 5d | 0d |  | 3 |
| NJR1-SD-ME-MI-20 |  | Shop Drawing Submittal - Finish Mechanical | milestone | 0d | 2026-04-01 | 2026-04-01 | NJR1-SD-ME-PL-RA-100, NJR1-SD-ME-HV-RA-100, NJR1-SD-ME-FF-RA-100, NJR1-SD-ME-PL-RA-110, NJR1-SD-ME-PL-RA-120, NJR1-SD-ME-PL-RA-130, NJR1-SD-ME-PL-RA-140, NJR1-SD-ME-PL-RA-150, NJR1-SD-ME-PL-RA-160, NJR1-SD-ME-PL-RA-170, NJR1-SD-ME-PL-RA-180, NJR1-SD-ME-PL-RA-190, NJR1-SD-ME-HV-RA-110, NJR1-SD-ME-HV-RA-120, NJR1-SD-ME-HV-RA-130, NJR1-SD-ME-HV-RA-140, NJR1-SD-ME-HV-RA-150, NJR1-SD-ME-FF-RA-110, NJR1-SD-ME-FF-RA-120, NJR1-SD-ME-FF-RA-130 | 15d | 0d |  | 3 |
|  | 3 | **Plumbing** |  |  | 2026-03-03 | 2026-04-01 |  |  |  |  |  |
|  | 2 | **Prepare and Submit** |  |  | 2026-03-03 | 2026-03-18 |  |  |  |  |  |
| NJR1-SD-ME-PL-PS-100 |  | Cover Sheet |  | 14d | 2026-03-03 | 2026-03-18 | NJR1-SD-ME-MI-10 | 15d | 0d | Staff [20.87 h] | 3 |
| NJR1-SD-ME-PL-PS-110 |  | List of Drawings |  | 14d | 2026-03-03 | 2026-03-18 | NJR1-SD-ME-MI-10 | 15d | 0d | Staff [20.87 h] | 3 |
| NJR1-SD-ME-PL-PS-120 |  | Ground Floor Drainage Layout |  | 14d | 2026-03-03 | 2026-03-18 | NJR1-SD-ME-MI-10 | 15d | 0d | Staff [20.87 h] | 3 |
| NJR1-SD-ME-PL-PS-130 |  | Roof Floor Drainage Layout |  | 14d | 2026-03-03 | 2026-03-18 | NJR1-SD-ME-MI-10 | 15d | 0d | Staff [20.87 h] | 3 |
| NJR1-SD-ME-PL-PS-140 |  | Ground Floor Enlarged Drainage Layout |  | 14d | 2026-03-03 | 2026-03-18 | NJR1-SD-ME-MI-10 | 15d | 0d | Staff [20.87 h] | 3 |
| NJR1-SD-ME-PL-PS-150 |  | Ground Floor Water Supply Layout |  | 14d | 2026-03-03 | 2026-03-18 | NJR1-SD-ME-MI-10 | 15d | 0d | Staff [20.87 h] | 3 |
| NJR1-SD-ME-PL-PS-160 |  | Ground Floor Enlarged Water Supply Layout |  | 14d | 2026-03-03 | 2026-03-18 | NJR1-SD-ME-MI-10 | 15d | 0d | Staff [20.87 h] | 3 |
| NJR1-SD-ME-PL-PS-170 |  | Plumbing General Notes, Legends & Symbols |  | 14d | 2026-03-03 | 2026-03-18 | NJR1-SD-ME-MI-10 | 15d | 0d | Staff [20.87 h] | 3 |
| NJR1-SD-ME-PL-PS-180 |  | Standard Details : Plumbing |  | 14d | 2026-03-03 | 2026-03-18 | NJR1-SD-ME-MI-10 | 15d | 0d | Staff [20.87 h] | 3 |
| NJR1-SD-ME-PL-PS-190 |  | Standard Details : Plumbing And Fire Fighting |  | 14d | 2026-03-03 | 2026-03-18 | NJR1-SD-ME-MI-10 | 15d | 0d | Staff [20.87 h] | 3 |

| ID | WBS | Activity | Duration | Start | Finish | Predecessors | Total float | Free float | Resources | WBS-Engineering |
| --- | --- | --- | --- | --- | --- | --- | --- | --- | --- | --- |
|  | 3 | **Review and Approve** |  | 2026-03-19 | 2026-04-01 |  |  |  |  |  |
| NJR1-SD-ME-PL-RA-100 |  | Cover Sheet | 10d | 2026-03-19 | 2026-04-01 | NJR1-SD-ME-PL-PS-100 | 15d | 0d | Staff [20.87 h] | 3 |
| NJR1-SD-ME-PL-RA-110 |  | List of Drawings | 10d | 2026-03-19 | 2026-04-01 | NJR1-SD-ME-PL-PS-110 | 15d | 0d | Staff [20.87 h] | 3 |
| NJR1-SD-ME-PL-RA-120 |  | Ground Floor Drainage Layout | 10d | 2026-03-19 | 2026-04-01 | NJR1-SD-ME-PL-PS-120 | 15d | 0d | Staff [20.87 h] | 3 |
| NJR1-SD-ME-PL-RA-130 |  | Roof Floor Drainage Layout | 10d | 2026-03-19 | 2026-04-01 | NJR1-SD-ME-PL-PS-130 | 15d | 0d | Staff [20.87 h] | 3 |
| NJR1-SD-ME-PL-RA-140 |  | Ground Floor Enlarged Drainage Layout | 10d | 2026-03-19 | 2026-04-01 | NJR1-SD-ME-PL-PS-140 | 15d | 0d | Staff [20.87 h] | 3 |
| NJR1-SD-ME-PL-RA-150 |  | Ground Floor Water Supply Layout | 10d | 2026-03-19 | 2026-04-01 | NJR1-SD-ME-PL-PS-150 | 15d | 0d | Staff [20.87 h] | 3 |
| NJR1-SD-ME-PL-RA-160 |  | Ground Floor Enlarged Water Supply Layout | 10d | 2026-03-19 | 2026-04-01 | NJR1-SD-ME-PL-PS-160 | 15d | 0d | Staff [20.87 h] | 3 |
| NJR1-SD-ME-PL-RA-170 |  | Plumbing General Notes, Legends & Symbols | 10d | 2026-03-19 | 2026-04-01 | NJR1-SD-ME-PL-PS-170 | 15d | 0d | Staff [20.87 h] | 3 |
| NJR1-SD-ME-PL-RA-180 |  | Standard Details : Plumbing | 10d | 2026-03-19 | 2026-04-01 | NJR1-SD-ME-PL-PS-180 | 15d | 0d | Staff [20.87 h] | 3 |
| NJR1-SD-ME-PL-RA-190 |  | Standard Details : Plumbing And Fire Fighting | 10d | 2026-03-19 | 2026-04-01 | NJR1-SD-ME-PL-PS-190 | 15d | 0d | Staff [20.87 h] | 3 |
|  | 1 | **HVAC** |  | 2026-03-03 | 2026-04-01 |  |  |  |  |  |
|  | 2 | **Prepare and Submit** |  | 2026-03-03 | 2026-03-18 |  |  |  |  |  |
| NJR1-SD-ME-HV-PS-100 |  | Cover Sheet | 14d | 2026-03-03 | 2026-03-18 | NJR1-SD-ME-MI-10 | 15d | 0d | Staff [20.87 h] | 3 |
| NJR1-SD-ME-HV-PS-110 |  | List of Drawings | 14d | 2026-03-03 | 2026-03-18 | NJR1-SD-ME-MI-10 | 15d | 0d | Staff [20.87 h] | 3 |
| NJR1-SD-ME-HV-PS-120 |  | Ground Floor HVAC Layout | 14d | 2026-03-03 | 2026-03-18 | NJR1-SD-ME-MI-10 | 15d | 0d | Staff [20.87 h] | 3 |
| NJR1-SD-ME-HV-PS-130 |  | Roof HVAC Layout | 14d | 2026-03-03 | 2026-03-18 | NJR1-SD-ME-MI-10 | 15d | 0d | Staff [20.87 h] | 3 |
| NJR1-SD-ME-HV-PS-140 |  | Prayer Room Airconditining Plan | 14d | 2026-03-03 | 2026-03-18 | NJR1-SD-ME-MI-10 | 15d | 0d | Staff [20.87 h] | 3 |
| NJR1-SD-ME-HV-PS-150 |  | HVAC Standard Details | 14d | 2026-03-03 | 2026-03-18 | NJR1-SD-ME-MI-10 | 15d | 0d | Staff [20.87 h] | 3 |
|  | 3 | **Review and Approve** |  | 2026-03-19 | 2026-04-01 |  |  |  |  |  |
| NJR1-SD-ME-HV-RA-100 |  | Cover Sheet | 10d | 2026-03-19 | 2026-04-01 | NJR1-SD-ME-HV-PS-100 | 15d | 0d | Staff [20.87 h] | 3 |
| NJR1-SD-ME-HV-RA-110 |  | List of Drawings | 10d | 2026-03-19 | 2026-04-01 | NJR1-SD-ME-HV-PS-110 | 15d | 0d | Staff [20.87 h] | 3 |
| NJR1-SD-ME-HV-RA-120 |  | Ground Floor HVAC Layout | 10d | 2026-03-19 | 2026-04-01 | NJR1-SD-ME-HV-PS-120 | 15d | 0d | Staff [20.87 h] | 3 |
| NJR1-SD-ME-HV-RA-130 |  | Roof HVAC Layout | 10d | 2026-03-19 | 2026-04-01 | NJR1-SD-ME-HV-PS-130 | 15d | 0d | Staff [20.87 h] | 3 |
| NJR1-SD-ME-HV-RA-140 |  | Prayer Room Airconditining Plan | 10d | 2026-03-19 | 2026-04-01 | NJR1-SD-ME-HV-PS-140 | 15d | 0d | Staff [20.87 h] | 3 |
| NJR1-SD-ME-HV-RA-150 |  | HVAC Standard Details | 10d | 2026-03-19 | 2026-04-01 | NJR1-SD-ME-HV-PS-150 | 15d | 0d | Staff [20.87 h] | 3 |

| ID | WBS | Activity | Type | Duration | Start | Finish | Predecessors | Total float | Free float | Resources | WBS-Engineering |
| --- | --- | --- | --- | --- | --- | --- | --- | --- | --- | --- | --- |
|  | 2 | **Fire Fighting** |  |  | 2026-03-03 | 2026-04-01 |  |  |  |  |  |
|  | 2 | **Prepare and Submit** |  |  | 2026-03-03 | 2026-03-18 |  |  |  |  |  |
| NJR1-SD-ME-FF-PS-100 |  | Cover Sheet |  | 14d | 2026-03-03 | 2026-03-18 | NJR1-SD-ME-MI-10 | 15d | 0d | Staff [20.87 h] | 3 |
| NJR1-SD-ME-FF-PS-110 |  | List of Drawings |  | 14d | 2026-03-03 | 2026-03-18 | NJR1-SD-ME-MI-10 | 15d | 0d | Staff [20.87 h] | 3 |
| NJR1-SD-ME-FF-PS-120 |  | Ground Floor Fire Fighting Layout |  | 14d | 2026-03-03 | 2026-03-18 | NJR1-SD-ME-MI-10 | 15d | 0d | Staff [20.87 h] | 3 |
| NJR1-SD-ME-FF-PS-130 |  | Standard Details : Plumbing and Fire Fighting |  | 14d | 2026-03-03 | 2026-03-18 | NJR1-SD-ME-MI-10 | 15d | 0d | Staff [20.87 h] | 3 |
|  | 3 | **Review and Approve** |  |  | 2026-03-19 | 2026-04-01 |  |  |  |  |  |
| NJR1-SD-ME-FF-RA-100 |  | Cover Sheet |  | 10d | 2026-03-19 | 2026-04-01 | NJR1-SD-ME-FF-PS-100 | 15d | 0d | Staff [20.87 h] | 3 |
| NJR1-SD-ME-FF-RA-110 |  | List of Drawings |  | 10d | 2026-03-19 | 2026-04-01 | NJR1-SD-ME-FF-PS-110 | 15d | 0d | Staff [20.87 h] | 3 |
| NJR1-SD-ME-FF-RA-120 |  | Ground Floor Fire Fighting Layout |  | 10d | 2026-03-19 | 2026-04-01 | NJR1-SD-ME-FF-PS-120 | 15d | 0d | Staff [20.87 h] | 3 |
| NJR1-SD-ME-FF-RA-130 |  | Standard Details : Plumbing and Fire Fighting |  | 10d | 2026-03-19 | 2026-04-01 | NJR1-SD-ME-FF-PS-130 | 15d | 0d | Staff [20.87 h] | 3 |
|  | 6 | **External Infra** |  |  | 2026-03-03 | 2026-04-01 |  |  |  |  |  |
| NJR1-SD-EI-MI-10 |  | Shop Drawing Submittal - Start External Infra | milestone | 0d | 2026-03-03 | 2026-03-03 | NJR1-MO-SO-110 SS | 15d | 0d |  | 4 |
| NJR1-SD-EI-MI-20 |  | Shop Drawing Submittal - Finish External Infra | milestone | 0d | 2026-04-01 | 2026-04-01 | NJR1-SD-EI-PF-RA-100, NJR1-SD-EI-SW-RA-100, NJR1-SD-EI-PF-RA-110, NJR1-SD-EI-PF-RA-120, NJR1-SD-EI-PF-RA-130, NJR1-SD-EI-PF-RA-140, NJR1-SD-EI-PF-RA-150, NJR1-SD-EI-PF-RA-160, NJR1-SD-EI-PF-RA-170, NJR1-SD-EI-PF-RA-180, NJR1-SD-EI-PF-RA-190, NJR1-SD-EI-PF-RA-200, NJR1-SD-EI-SW-RA-110, NJR1-SD-EI-SW-RA-120, NJR1-SD-EI-SW-RA-130, NJR1-SD-EI-SW-RA-140, NJR1-SD-EI-SW-RA-150 | 15d | 0d |  | 4 |
|  | 3 | **Potable and Fire Water** |  |  | 2026-03-03 | 2026-04-01 |  |  |  |  |  |
|  | 2 | **Prepare and Submit** |  |  | 2026-03-03 | 2026-03-18 |  |  |  |  |  |
| NJR1-SD-EI-PF-PS-100 |  | Cover Sheet |  | 14d | 2026-03-03 | 2026-03-18 | NJR1-SD-EI-MI-10 | 15d | 0d | Staff [20.87 h] | 4 |
| NJR1-SD-EI-PF-PS-110 |  | List of Drawings |  | 14d | 2026-03-03 | 2026-03-18 | NJR1-SD-EI-MI-10 | 15d | 0d | Staff [20.87 h] | 4 |
| NJR1-SD-EI-PF-PS-120 |  | External Potable Water Master Plan |  | 14d | 2026-03-03 | 2026-03-18 | NJR1-SD-EI-MI-10 | 15d | 0d | Staff [20.87 h] | 4 |
| NJR1-SD-EI-PF-PS-130 |  | Enlarge Potable Water Layout |  | 14d | 2026-03-03 | 2026-03-18 | NJR1-SD-EI-MI-10 | 15d | 0d | Staff [20.87 h] | 4 |
| NJR1-SD-EI-PF-PS-140 |  | External Fire Water Master Plan |  | 14d | 2026-03-03 | 2026-03-18 | NJR1-SD-EI-MI-10 | 15d | 0d | Staff [20.87 h] | 4 |
| NJR1-SD-EI-PF-PS-150 |  | Enlarge Potable Water Layout |  | 14d | 2026-03-03 | 2026-03-18 | NJR1-SD-EI-MI-10 | 15d | 0d | Staff [20.87 h] | 4 |
| NJR1-SD-EI-PF-PS-160 |  | Buried Gate Valve Detail |  | 14d | 2026-03-03 | 2026-03-18 | NJR1-SD-EI-MI-10 | 15d | 0d | Staff [20.87 h] | 4 |
| NJR1-SD-EI-PF-PS-170 |  | Washout Valve Details |  | 14d | 2026-03-03 | 2026-03-18 | NJR1-SD-EI-MI-10 | 15d | 0d | Staff [20.87 h] | 4 |
| NJR1-SD-EI-PF-PS-180 |  | Air Valve Details |  | 14d | 2026-03-03 | 2026-03-18 | NJR1-SD-EI-MI-10 | 15d | 0d | Staff [20.87 h] | 4 |
| NJR1-SD-EI-PF-PS-190 |  | GRP Water Tank And Pump Shed Piping Layout |  | 14d | 2026-03-03 | 2026-03-18 | NJR1-SD-EI-MI-10 | 15d | 0d | Staff [20.87 h] | 4 |
| NJR1-SD-EI-PF-PS-200 |  | GRP Water Tank And Pump Shed Section Details |  | 14d | 2026-03-03 | 2026-03-18 | NJR1-SD-EI-MI-10 | 15d | 0d | Staff [20.87 h] | 4 |

| ID | WBS | Activity | Duration | Start | Finish | Predecessors | Total float | Free float | Resources | WBS-Engineering |
| --- | --- | --- | --- | --- | --- | --- | --- | --- | --- | --- |
|  | 3 | **Review and Approve** |  | 2026-03-19 | 2026-04-01 |  |  |  |  |  |
| NJR1-SD-EI-PF-RA-100 |  | Cover Sheet | 10d | 2026-03-19 | 2026-04-01 | NJR1-SD-EI-PF-PS-100 | 15d | 0d | Staff [20.87 h] | 4 |
| NJR1-SD-EI-PF-RA-110 |  | List of Drawings | 10d | 2026-03-19 | 2026-04-01 | NJR1-SD-EI-PF-PS-110 | 15d | 0d | Staff [20.87 h] | 4 |
| NJR1-SD-EI-PF-RA-120 |  | External Potable Water Master Plan | 10d | 2026-03-19 | 2026-04-01 | NJR1-SD-EI-PF-PS-120 | 15d | 0d | Staff [20.87 h] | 4 |
| NJR1-SD-EI-PF-RA-130 |  | Enlarge Potable Water Layout | 10d | 2026-03-19 | 2026-04-01 | NJR1-SD-EI-PF-PS-130 | 15d | 0d | Staff [20.87 h] | 4 |
| NJR1-SD-EI-PF-RA-140 |  | External Fire Water Master Plan | 10d | 2026-03-19 | 2026-04-01 | NJR1-SD-EI-PF-PS-140 | 15d | 0d | Staff [20.87 h] | 4 |
| NJR1-SD-EI-PF-RA-150 |  | Enlarge Potable Water Layout | 10d | 2026-03-19 | 2026-04-01 | NJR1-SD-EI-PF-PS-150 | 15d | 0d | Staff [20.87 h] | 4 |
| NJR1-SD-EI-PF-RA-160 |  | Buried Gate Valve Detail | 10d | 2026-03-19 | 2026-04-01 | NJR1-SD-EI-PF-PS-160 | 15d | 0d | Staff [20.87 h] | 4 |
| NJR1-SD-EI-PF-RA-170 |  | Washout Valve Details | 10d | 2026-03-19 | 2026-04-01 | NJR1-SD-EI-PF-PS-170 | 15d | 0d | Staff [20.87 h] | 4 |
| NJR1-SD-EI-PF-RA-180 |  | Air Valve Details | 10d | 2026-03-19 | 2026-04-01 | NJR1-SD-EI-PF-PS-180 | 15d | 0d | Staff [20.87 h] | 4 |
| NJR1-SD-EI-PF-RA-190 |  | GRP Water Tank And Pump Shed Piping Layout | 10d | 2026-03-19 | 2026-04-01 | NJR1-SD-EI-PF-PS-190 | 15d | 0d | Staff [20.87 h] | 4 |
| NJR1-SD-EI-PF-RA-200 |  | GRP Water Tank And Pump Shed Section Details | 10d | 2026-03-19 | 2026-04-01 | NJR1-SD-EI-PF-PS-200 | 15d | 0d | Staff [20.87 h] | 4 |
|  | 1 | **Sewage** |  | 2026-03-03 | 2026-04-01 |  |  |  |  |  |
|  | 2 | **Prepare and Submit** |  | 2026-03-03 | 2026-03-18 |  |  |  |  |  |
| NJR1-SD-EI-SW-PS-100 |  | Cover Sheet | 14d | 2026-03-03 | 2026-03-18 | NJR1-SD-EI-MI-10 | 15d | 0d | Staff [20.87 h] | 4 |
| NJR1-SD-EI-SW-PS-110 |  | List of Drawings | 14d | 2026-03-03 | 2026-03-18 | NJR1-SD-EI-MI-10 | 15d | 0d | Staff [20.87 h] | 4 |
| NJR1-SD-EI-SW-PS-120 |  | External Sewerage Master Plan | 14d | 2026-03-03 | 2026-03-18 | NJR1-SD-EI-MI-10 | 15d | 0d | Staff [20.87 h] | 4 |
| NJR1-SD-EI-SW-PS-130 |  | Enlarge Sewerage Layout | 14d | 2026-03-03 | 2026-03-18 | NJR1-SD-EI-MI-10 | 15d | 0d | Staff [20.87 h] | 4 |
| NJR1-SD-EI-SW-PS-140 |  | Detailed General Notes | 14d | 2026-03-03 | 2026-03-18 | NJR1-SD-EI-MI-10 | 15d | 0d | Staff [20.87 h] | 4 |
| NJR1-SD-EI-SW-PS-150 |  | Manhole Details | 14d | 2026-03-03 | 2026-03-18 | NJR1-SD-EI-MI-10 | 15d | 0d | Staff [20.87 h] | 4 |
|  | 3 | **Review and Approve** |  | 2026-03-19 | 2026-04-01 |  |  |  |  |  |
| NJR1-SD-EI-SW-RA-100 |  | Sewage Plan | 10d | 2026-03-19 | 2026-04-01 | NJR1-SD-EI-SW-PS-100 | 15d | 0d | Staff [20.87 h] | 4 |
| NJR1-SD-EI-SW-RA-110 |  | List of Drawings | 10d | 2026-03-19 | 2026-04-01 | NJR1-SD-EI-SW-PS-110 | 15d | 0d | Staff [20.87 h] | 4 |
| NJR1-SD-EI-SW-RA-120 |  | External Sewerage Master Plan | 10d | 2026-03-19 | 2026-04-01 | NJR1-SD-EI-SW-PS-120 | 15d | 0d | Staff [20.87 h] | 4 |
| NJR1-SD-EI-SW-RA-130 |  | Enlarge Sewerage Layout | 10d | 2026-03-19 | 2026-04-01 | NJR1-SD-EI-SW-PS-130 | 15d | 0d | Staff [20.87 h] | 4 |
| NJR1-SD-EI-SW-RA-140 |  | Detailed General Notes | 10d | 2026-03-19 | 2026-04-01 | NJR1-SD-EI-SW-PS-140 | 15d | 0d | Staff [20.87 h] | 4 |
| NJR1-SD-EI-SW-RA-150 |  | Manhole Details | 10d | 2026-03-19 | 2026-04-01 | NJR1-SD-EI-SW-PS-150 | 15d | 0d | Staff [20.87 h] | 4 |

| ID | WBS | Activity | Type | Duration | Start | Finish | Predecessors | Total float | Free float | Resources | WBS-Engineering |
| --- | --- | --- | --- | --- | --- | --- | --- | --- | --- | --- | --- |
|  | 4 | **Electrical** |  |  | 2026-03-03 | 2026-04-01 |  |  |  |  |  |
| NJR1-SD-EE-MI-10 |  | Shop Drawing Submittal - Start Electrical | milestone | 0d | 2026-03-03 | 2026-03-03 | NJR1-MO-SO-110 SS | 12d | 0d |  | 5 |
| NJR1-SD-EE-MI-20 |  | Shop Drawing Submittal - Finish Electrical | milestone | 0d | 2026-04-01 | 2026-04-01 | NJR1-SD-EE-RA-160, NJR1-SD-EE-RA-170, NJR1-SD-EE-RA-180, NJR1-SD-EE-RA-190, NJR1-SD-EE-RA-200, NJR1-SD-EE-RA-110, NJR1-SD-EE-RA-120, NJR1-SD-EE-RA-130, NJR1-SD-EE-RA-140, NJR1-SD-EE-RA-150, NJR1-SD-EE-RA-210, NJR1-SD-EE-RA-220, NJR1-SD-EE-RA-230, NJR1-SD-EE-RA-240, NJR1-SD-EE-RA-250, NJR1-SD-EE-RA-260, NJR1-SD-EE-RA-270, NJR1-SD-EE-RA-280, NJR1-SD-EE-RA-100 | 15d | 0d |  | 5 |
|  | 1 | **Prepare and Submit** |  |  | 2026-03-03 | 2026-03-18 |  |  |  |  |  |
| NJR1-SD-EE-PS-100 |  | Cover Sheet |  | 14d | 2026-03-03 | 2026-03-18 | NJR1-SD-EE-MI-10 | 15d | 0d | Staff [20.87 h] | 5 |
| NJR1-SD-EE-PS-110 |  | List of Drawings |  | 14d | 2026-03-03 | 2026-03-18 | NJR1-SD-EE-MI-10 | 15d | 0d | Staff [20.87 h] | 5 |
| NJR1-SD-EE-PS-120 |  | Electrical General Notes |  | 14d | 2026-03-03 | 2026-03-18 | NJR1-SD-EE-MI-10 | 15d | 0d | Staff [20.87 h] | 5 |
| NJR1-SD-EE-PS-130 |  | Site Street Lighting Plan |  | 14d | 2026-03-03 | 2026-03-18 | NJR1-SD-EE-MI-10 | 15d | 0d | Staff [20.87 h] | 5 |
| NJR1-SD-EE-PS-140 |  | Street Lighting Single Line Diagram |  | 14d | 2026-03-03 | 2026-03-18 | NJR1-SD-EE-MI-10 | 15d | 0d | Staff [20.87 h] | 5 |
| NJR1-SD-EE-PS-150 |  | Site L.V Cables Layout Plan |  | 14d | 2026-03-03 | 2026-03-18 | NJR1-SD-EE-MI-10 | 15d | 0d | Staff [20.87 h] | 5 |
| NJR1-SD-EE-PS-160 |  | Site Telecom Cable Routing Layout Plan |  | 14d | 2026-03-03 | 2026-03-18 | NJR1-SD-EE-MI-10 | 15d | 0d | Staff [20.87 h] | 5 |
| NJR1-SD-EE-PS-170 |  | Lighting System Layout Plan |  | 14d | 2026-03-03 | 2026-03-18 | NJR1-SD-EE-MI-10 | 15d | 0d | Staff [20.87 h] | 5 |
| NJR1-SD-EE-PS-180 |  | Small Power System Layout Plan |  | 14d | 2026-03-03 | 2026-03-18 | NJR1-SD-EE-MI-10 | 15d | 0d | Staff [20.87 h] | 5 |
| NJR1-SD-EE-PS-190 |  | Air Conditioning Small Power System Layout Plan |  | 14d | 2026-03-03 | 2026-03-18 | NJR1-SD-EE-MI-10 | 15d | 0d | Staff [20.87 h] | 5 |
| NJR1-SD-EE-PS-200 |  | Roof Power System Layout Plan |  | 14d | 2026-03-03 | 2026-03-18 | NJR1-SD-EE-MI-10 | 15d | 0d | Staff [20.87 h] | 5 |
| NJR1-SD-EE-PS-210 |  | Power Single Line Diagram |  | 14d | 2026-03-03 | 2026-03-18 | NJR1-SD-EE-MI-10 | 15d | 0d | Staff [20.87 h] | 5 |
| NJR1-SD-EE-PS-220 |  | Fire Alarm System Layout Plan |  | 14d | 2026-03-03 | 2026-03-18 | NJR1-SD-EE-MI-10 | 15d | 0d | Staff [20.87 h] | 5 |
| NJR1-SD-EE-PS-230 |  | Typical Fire Alarm Schematic Diagram |  | 14d | 2026-03-03 | 2026-03-18 | NJR1-SD-EE-MI-10 | 15d | 0d | Staff [20.87 h] | 5 |
| NJR1-SD-EE-PS-240 |  | Data & Telecom System Layout Plan |  | 14d | 2026-03-03 | 2026-03-18 | NJR1-SD-EE-MI-10 | 15d | 0d | Staff [20.87 h] | 5 |
| NJR1-SD-EE-PS-250 |  | Data & Telecom Typical Single Line Diagram |  | 14d | 2026-03-03 | 2026-03-18 | NJR1-SD-EE-MI-10 | 15d | 0d | Staff [20.87 h] | 5 |
| NJR1-SD-EE-PS-260 |  | Grounding System Layout Plan |  | 14d | 2026-03-03 | 2026-03-18 | NJR1-SD-EE-MI-10 | 15d | 0d | Staff [20.87 h] | 5 |
| NJR1-SD-EE-PS-270 |  | Lighting Protection System Layout Plan |  | 14d | 2026-03-03 | 2026-03-18 | NJR1-SD-EE-MI-10 | 15d | 0d | Staff [20.87 h] | 5 |
| NJR1-SD-EE-PS-280 |  | Typical Electrical Installation Details (Sheet 01 - 07) |  | 14d | 2026-03-03 | 2026-03-18 | NJR1-SD-EE-MI-10 | 15d | 0d | Staff [20.87 h] | 5 |
|  | 2 | **Review and Approve** |  |  | 2026-03-19 | 2026-04-01 |  |  |  |  |  |
| NJR1-SD-EE-RA-100 |  | Cover Sheet |  | 10d | 2026-03-19 | 2026-04-01 | NJR1-SD-EE-PS-100 | 15d | 0d | Staff [20.87 h] | 5 |
| NJR1-SD-EE-RA-110 |  | List of Drawings |  | 10d | 2026-03-19 | 2026-04-01 | NJR1-SD-EE-PS-110 | 15d | 0d | Staff [20.87 h] | 5 |
| NJR1-SD-EE-RA-120 |  | Lighting Plan |  | 10d | 2026-03-19 | 2026-04-01 | NJR1-SD-EE-PS-120 | 15d | 0d | Staff [20.87 h] | 5 |
| NJR1-SD-EE-RA-130 |  | Power Plan |  | 10d | 2026-03-19 | 2026-04-01 | NJR1-SD-EE-PS-130 | 15d | 0d | Staff [20.87 h] | 5 |
| NJR1-SD-EE-RA-140 |  | Mechanical Power |  | 10d | 2026-03-19 | 2026-04-01 | NJR1-SD-EE-PS-140 | 15d | 0d | Staff [20.87 h] | 5 |
| NJR1-SD-EE-RA-150 |  | Fire Alarm Plan |  | 10d | 2026-03-19 | 2026-04-01 | NJR1-SD-EE-PS-150 | 15d | 0d | Staff [20.87 h] | 5 |
| NJR1-SD-EE-RA-160 |  | Data/Tel/CCTV Plan |  | 10d | 2026-03-19 | 2026-04-01 | NJR1-SD-EE-PS-160 | 15d | 0d | Staff [20.87 h] | 5 |
| NJR1-SD-EE-RA-170 |  | Earthing System Plan |  | 10d | 2026-03-19 | 2026-04-01 | NJR1-SD-EE-PS-170 | 15d | 0d | Staff [20.87 h] | 5 |
| NJR1-SD-EE-RA-180 |  | Lightning System Plan |  | 10d | 2026-03-19 | 2026-04-01 | NJR1-SD-EE-PS-180 | 15d | 0d | Staff [20.87 h] | 5 |
| NJR1-SD-EE-RA-190 |  | Cable Routes Plan |  | 10d | 2026-03-19 | 2026-04-01 | NJR1-SD-EE-PS-190 | 15d | 0d | Staff [20.87 h] | 5 |
| NJR1-SD-EE-RA-200 |  | Load Schedule & Power Sld Plan |  | 10d | 2026-03-19 | 2026-04-01 | NJR1-SD-EE-PS-200 | 15d | 0d | Staff [20.87 h] | 5 |
| NJR1-SD-EE-RA-210 |  | Power Single Line Diagram |  | 10d | 2026-03-19 | 2026-04-01 | NJR1-SD-EE-PS-210 | 15d | 0d | Staff [20.87 h] | 5 |
| NJR1-SD-EE-RA-220 |  | Fire Alarm System Layout Plan |  | 10d | 2026-03-19 | 2026-04-01 | NJR1-SD-EE-PS-220 | 15d | 0d | Staff [20.87 h] | 5 |
| NJR1-SD-EE-RA-230 |  | Typical Fire Alarm Schematic Diagram |  | 10d | 2026-03-19 | 2026-04-01 | NJR1-SD-EE-PS-230 | 15d | 0d | Staff [20.87 h] | 5 |
| NJR1-SD-EE-RA-240 |  | Data & Telecom System Layout Plan |  | 10d | 2026-03-19 | 2026-04-01 | NJR1-SD-EE-PS-240 | 15d | 0d | Staff [20.87 h] | 5 |
| NJR1-SD-EE-RA-250 |  | Data & Telecom Typical Single Line Diagram |  | 10d | 2026-03-19 | 2026-04-01 | NJR1-SD-EE-PS-250 | 15d | 0d | Staff [20.87 h] | 5 |
| NJR1-SD-EE-RA-260 |  | Grounding System Layout Plan |  | 10d | 2026-03-19 | 2026-04-01 | NJR1-SD-EE-PS-260 | 15d | 0d | Staff [20.87 h] | 5 |
| NJR1-SD-EE-RA-270 |  | Lighting Protection System Layout Plan |  | 10d | 2026-03-19 | 2026-04-01 | NJR1-SD-EE-PS-270 | 15d | 0d | Staff [20.87 h] | 5 |
| NJR1-SD-EE-RA-280 |  | Typical Electrical Installation Details (Sheet 01 - 07) |  | 10d | 2026-03-19 | 2026-04-01 | NJR1-SD-EE-PS-280 | 15d | 0d | Staff [20.87 h] | 5 |

| ID | WBS | Activity | Type | Duration | Start | Finish | Predecessors | Total float | Free float | Resources | WBS-Engineering |
| --- | --- | --- | --- | --- | --- | --- | --- | --- | --- | --- | --- |
|  | 5 | **Road** |  |  | 2026-04-02 | 2026-04-29 |  |  |  |  |  |
| NJR1-3900 |  | Shop Drawing Submittal - Start Road | milestone | 0d | 2026-04-02 | 2026-04-02 | NJR1-SD-EI-MI-20 | 15d | 0d |  | 6 |
| NJR1-3910 |  | Shop Drawing Submittal - Finish Road | milestone | 0d | 2026-04-29 | 2026-04-29 | NJR1-SD-RD-RA-140, NJR1-SD-RD-RA-130, NJR1-SD-RD-RA-120, NJR1-SD-RD-RA-110, NJR1-SD-RD-RA-150, NJR1-SD-RD-RA-160, NJR1-SD-RD-RA-170, NJR1-SD-RD-RA-180, NJR1-SD-RD-RA-190, NJR1-SD-RD-RA-100, NJR1-MS-LL-MI-20 | 15d | 2d |  | 6 |
|  | 1 | **Prepare and Submit** |  |  | 2026-04-02 | 2026-04-18 |  |  |  |  |  |
| NJR1-SD-RD-PS-100 |  | Cover Sheet |  | 14d | 2026-04-02 | 2026-04-18 | NJR1-3900 | 15d | 0d | Staff [20.87 h] | 6 |
| NJR1-SD-RD-PS-110 |  | List of Drawings |  | 14d | 2026-04-02 | 2026-04-18 | NJR1-3900, NJR1-SD-RD-PS-100 SS | 15d | 0d | Staff [20.87 h] | 6 |
| NJR1-SD-RD-PS-120 |  | General Notes |  | 14d | 2026-04-02 | 2026-04-18 | NJR1-3900, NJR1-SD-RD-PS-110 SS | 15d | 0d | Staff [20.87 h] | 6 |
| NJR1-SD-RD-PS-130 |  | Road Layout Plan |  | 14d | 2026-04-02 | 2026-04-18 | NJR1-3900, NJR1-SD-RD-PS-120 SS | 15d | 0d | Staff [20.87 h] | 6 |
| NJR1-SD-RD-PS-140 |  | Road Spot Level Layout |  | 14d | 2026-04-02 | 2026-04-18 | NJR1-3900, NJR1-SD-RD-PS-130 SS | 15d | 0d | Staff [20.87 h] | 6 |
| NJR1-SD-RD-PS-150 |  | Typical Road Cross Sections |  | 14d | 2026-04-02 | 2026-04-18 | NJR1-3900, NJR1-SD-RD-PS-140 SS | 15d | 0d | Staff [20.87 h] | 6 |
| NJR1-SD-RD-PS-160 |  | Road Profiles |  | 14d | 2026-04-02 | 2026-04-18 | NJR1-3900, NJR1-SD-RD-PS-150 SS | 15d | 0d | Staff [20.87 h] | 6 |
| NJR1-SD-RD-PS-170 |  | Road Signage And Marking Layout |  | 14d | 2026-04-02 | 2026-04-18 | NJR1-3900, NJR1-SD-RD-PS-160 SS | 15d | 0d | Staff [20.87 h] | 6 |
| NJR1-SD-RD-PS-180 |  | Road Standard Details (Sheet 01 - 03) |  | 14d | 2026-04-02 | 2026-04-18 | NJR1-3900, NJR1-SD-RD-PS-170 SS | 15d | 0d | Staff [20.87 h] | 6 |
| NJR1-SD-RD-PS-190 |  | Road Typical Signage Details |  | 14d | 2026-04-02 | 2026-04-18 | NJR1-3900, NJR1-SD-RD-PS-180 SS | 15d | 0d | Staff [20.87 h] | 6 |
|  | 2 | **Review and Approve** |  |  | 2026-04-19 | 2026-04-29 |  |  |  |  |  |
| NJR1-SD-RD-RA-100 |  | Cover Sheet |  | 10d | 2026-04-19 | 2026-04-29 | NJR1-SD-RD-PS-100 | 15d | 0d | Staff [20.87 h] | 6 |
| NJR1-SD-RD-RA-110 |  | List of Drawings |  | 10d | 2026-04-19 | 2026-04-29 | NJR1-SD-RD-PS-110 | 15d | 0d | Staff [20.87 h] | 6 |
| NJR1-SD-RD-RA-120 |  | General Notes |  | 10d | 2026-04-19 | 2026-04-29 | NJR1-SD-RD-PS-120 | 15d | 0d | Staff [20.87 h] | 6 |
| NJR1-SD-RD-RA-130 |  | Road Layout Plan |  | 10d | 2026-04-19 | 2026-04-29 | NJR1-SD-RD-PS-130 | 15d | 0d | Staff [20.87 h] | 6 |
| NJR1-SD-RD-RA-140 |  | Road Spot Level Layout |  | 10d | 2026-04-19 | 2026-04-29 | NJR1-SD-RD-PS-140 | 15d | 0d | Staff [20.87 h] | 6 |
| NJR1-SD-RD-RA-150 |  | Typical Road Cross Sections |  | 10d | 2026-04-19 | 2026-04-29 | NJR1-SD-RD-PS-150 | 15d | 0d | Staff [20.87 h] | 6 |
| NJR1-SD-RD-RA-160 |  | Road Profiles |  | 10d | 2026-04-19 | 2026-04-29 | NJR1-SD-RD-PS-160 | 15d | 0d | Staff [20.87 h] | 6 |
| NJR1-SD-RD-RA-170 |  | Road Signage And Marking Layout |  | 10d | 2026-04-19 | 2026-04-29 | NJR1-SD-RD-PS-170 | 15d | 0d | Staff [20.87 h] | 6 |
| NJR1-SD-RD-RA-180 |  | Road Standard Details (Sheet 01 - 03) |  | 10d | 2026-04-19 | 2026-04-29 | NJR1-SD-RD-PS-180 | 15d | 0d | Staff [20.87 h] | 6 |
| NJR1-SD-RD-RA-190 |  | Road Typical Signage Details |  | 10d | 2026-04-19 | 2026-04-29 | NJR1-SD-RD-PS-190 | 15d | 0d | Staff [20.87 h] | 6 |

| ID | WBS | Activity | Type | Duration | Start | Finish | Predecessors | Total float | Free float | Resources | Cost | WBS-Engineering |
| --- | --- | --- | --- | --- | --- | --- | --- | --- | --- | --- | --- | --- |
|  | 2 | **Material Submittal** |  |  | 2026-03-03 | 2026-05-02 |  |  |  |  |  |  |
|  | 1 | **Long Lead Items** |  |  | 2026-03-03 | 2026-04-29 |  |  |  |  |  |  |
| NJR1-MS-LL-MI-10 |  | Material Submittal - Start Long Lead Items | milestone | 0d | 2026-03-05 | 2026-03-05 | NJR1-MO-SO-100 | 13d | 0d |  |  | LL |
| NJR1-MS-LL-MI-20 |  | Material Submittal - Finish Long Lead Items | milestone | 0d | 2026-04-29 | 2026-04-29 | NJR1-MS-LL-DW-RA-100, NJR1-MS-LL-DW-RA-110, NJR1-MS-LL-DW-RA-120, NJR1-MS-LL-DW-RA-130, NJR1-MS-LL-DW-RA-140, NJR1-MS-LL-DW-RA-150 | 15d | 0d |  |  | LL |
|  | 2 | **Concrete Work** |  |  | 2026-04-02 | 2026-04-29 |  |  |  |  |  |  |
|  | 1 | **Prepare and Submit** |  |  | 2026-04-02 | 2026-04-18 |  |  |  |  |  |  |
| NJR1-MS-LL-CO-PS-100 |  | Autoclaved aerated panel |  | 14d | 2026-04-02 | 2026-04-18 | NJR1-SD-ST-MI-20 | 0d |  | Staff [20.87 h] |  | 1 |
|  | 2 | **Review and Approve** |  |  | 2026-04-19 | 2026-04-29 |  |  |  |  |  |  |
| NJR1-MS-LL-CO-RA-100 |  | Autoclaved aerated panel |  | 10d | 2026-04-19 | 2026-04-29 | NJR1-MS-LL-CO-PS-100 | 0d |  | Autoclaved aerated panel [1.65]; Staff [20.87 h] | 495 | 1 |
|  | 5 | **Doors and Windows** |  |  | 2026-04-02 | 2026-04-29 |  |  |  |  |  |  |
|  | 1 | **Prepare and Submit** |  |  | 2026-04-02 | 2026-04-18 |  |  |  |  |  |  |
| NJR1-MS-LL-DW-PS-100 |  | Roll up shutter door |  | 14d | 2026-04-02 | 2026-04-18 | NJR1-SD-AR-MI-20 | 15d | 0d | Staff [20.87 h] |  | 2 |
| NJR1-MS-LL-DW-PS-110 |  | Steel door |  | 14d | 2026-04-02 | 2026-04-18 | NJR1-SD-AR-MI-20 | 15d | 0d | Staff [20.87 h] |  | 2 |
| NJR1-MS-LL-DW-PS-120 |  | Galvanized steel door |  | 14d | 2026-04-02 | 2026-04-18 | NJR1-SD-AR-MI-20 | 15d | 0d | Staff [20.87 h] |  | 2 |
| NJR1-MS-LL-DW-PS-130 |  | Solid wood door |  | 14d | 2026-04-02 | 2026-04-18 | NJR1-SD-AR-MI-20 | 15d | 0d | Staff [20.87 h] |  | 2 |
| NJR1-MS-LL-DW-PS-140 |  | Aluminum framed double glazed windows |  | 14d | 2026-04-02 | 2026-04-18 | NJR1-SD-AR-MI-20 | 15d | 0d | Staff [20.87 h] |  | 2 |
| NJR1-MS-LL-DW-PS-150 |  | Glass and aluminum door |  | 14d | 2026-04-02 | 2026-04-18 | NJR1-SD-AR-MI-20 | 15d | 0d | Staff [20.87 h] |  | 2 |
|  | 2 | **Review and Approve** |  |  | 2026-04-19 | 2026-04-29 |  |  |  |  |  |  |
| NJR1-MS-LL-DW-RA-100 |  | Roll up shutter door |  | 10d | 2026-04-19 | 2026-04-29 | NJR1-MS-LL-DW-PS-100 | 15d | 0d | (D6) 3000*3500mm galvanized steel heavy duty industrial isolated type roll up shutter door [0.36]; Staff [20.87 h] | 7,200 | 2 |
| NJR1-MS-LL-DW-RA-110 |  | Steel door |  | 10d | 2026-04-19 | 2026-04-29 | NJR1-MS-LL-DW-PS-110 | 15d | 0d | (D5) 1000*2200mm single leaf steel door [0.36]; Staff [20.87 h] | 1,080 | 2 |
| NJR1-MS-LL-DW-RA-120 |  | Galvanized steel door |  | 10d | 2026-04-19 | 2026-04-29 | NJR1-MS-LL-DW-PS-120 | 15d | 0d | (D2) 1000*2200 mm single leaf galvanized steel door [0.06]; (D1) single leaf galvanized steel door [0.03]; Staff [20.87 h] | 270 | 2 |
| NJR1-MS-LL-DW-RA-130 |  | Solid wood door |  | 10d | 2026-04-19 | 2026-04-29 | NJR1-MS-LL-DW-PS-130 | 15d | 0d | (D3) 800*2200 mm single leaf semi solid wood door [0.06]; Staff [20.87 h] | 210 | 2 |
| NJR1-MS-LL-DW-RA-140 |  | Aluminum framed double glazed windows |  | 10d | 2026-04-19 | 2026-04-29 | NJR1-MS-LL-DW-PS-140 | 15d | 0d | Window W1 (size 1000*1300) [0.36]; Window W2 (size 1600*1200) [0.06]; Staff [20.87 h] | 576 | 2 |
| NJR1-MS-LL-DW-RA-150 |  | Glass and aluminum door |  | 10d | 2026-04-19 | 2026-04-29 | NJR1-MS-LL-DW-PS-150 | 15d | 0d | Outside Mosque - Install Door D1 [0.03]; Outside Mosque - Install Window W1 [0.06]; Staff [20.87 h] | 603 | 2 |

| ID | WBS | Activity | Duration | Start | Finish | Predecessors | Total float | Free float | Resources | Cost | WBS-Engineering |
| --- | --- | --- | --- | --- | --- | --- | --- | --- | --- | --- | --- |
|  | 1 | **Pre-Engineered Structural Works** |  | 2026-03-03 | 2026-04-01 |  |  |  |  |  |  |
|  | 1 | **Prepare and Submit** |  | 2026-03-03 | 2026-03-18 |  |  |  |  |  |  |
| NJR1-MS-LL-PR-PS-100 |  | RBF Steel Structure | 14d | 2026-03-03 | 2026-03-18 | NJR1-SD-ST-MI-10 | 11d | 0d | Staff [20.87 h] |  | 3 |
| NJR1-MS-LL-PR-PS-110 |  | Sandwich Panel | 14d | 2026-03-03 | 2026-03-18 | NJR1-MS-LL-PR-PS-100 SS | 11d | 0d | Staff [20.87 h] |  | 3 |
| NJR1-MS-LL-PR-PS-120 |  | Pump Shed | 14d | 2026-03-03 | 2026-03-18 | NJR1-MS-LL-PR-PS-110 SS | 11d | 0d | Staff [20.87 h] |  | 3 |
|  | 2 | **Review and Approve** |  | 2026-03-19 | 2026-04-01 |  |  |  |  |  |  |
| NJR1-MS-LL-PR-RA-100 |  | RBF Steel Structure | 10d | 2026-03-19 | 2026-04-01 | NJR1-MS-LL-PR-PS-100 | 11d | 0d | PEB for one block with an area 1990 square meter [0.02]; Staff [20.87 h] | 34,000 | 3 |
| NJR1-MS-LL-PR-RA-110 |  | Sandwich Panel | 10d | 2026-03-19 | 2026-04-01 | NJR1-MS-LL-PR-PS-110 | 11d | 0d | PEB for one block with an area 1990 square meter [0.01]; Staff [20.87 h] | 17,000 | 3 |
| NJR1-MS-LL-PR-RA-120 |  | Pump Shed | 10d | 2026-03-19 | 2026-04-01 | NJR1-MS-LL-PR-PS-120 | 11d | 0d | Pump Shed [0.03]; Staff [20.87 h] | 1,050 | 3 |
|  | 4 | **Mechanical Works** |  | 2026-03-09 | 2026-04-07 |  |  |  |  |  |  |
|  | 3 | **External Works** |  | 2026-03-09 | 2026-04-07 |  |  |  |  |  |  |
|  | 2 | **Fire Fighting** |  | 2026-03-09 | 2026-04-07 |  |  |  |  |  |  |
|  | 1 | **Prepare and Submit** |  | 2026-03-09 | 2026-03-26 |  |  |  |  |  |  |
| NJR1-MS-LL-FF-PS-100 |  | Fire Pump system | 14d | 2026-03-09 | 2026-03-26 | NJR1-MO-SO-150 SS | 21d | 0d | Staff [20.87 h] |  | 4 |
|  | 2 | **Review and Approve** |  | 2026-03-28 | 2026-04-07 |  |  |  |  |  |  |
| NJR1-MS-LL-FF-RA-100 |  | Fire Pump system | 10d | 2026-03-28 | 2026-04-07 | NJR1-MS-LL-FF-PS-100 | 21d | 0d | Fire Pump system [0.03]; Staff [20.87 h] | 12,600 | 4 |
|  | 3 | **Water Supply System** |  | 2026-03-09 | 2026-04-07 |  |  |  |  |  |  |
|  | 1 | **Prepare and Submit** |  | 2026-03-09 | 2026-03-26 |  |  |  |  |  |  |
| NJR1-MS-LL-WS-PS-100 |  | Facility water storage tanks | 14d | 2026-03-09 | 2026-03-26 | NJR1-MO-SO-150 SS | 21d | 0d | Staff [20.87 h] |  |  |
|  | 2 | **Review and Approve** |  | 2026-03-28 | 2026-04-07 |  |  |  |  |  |  |
| NJR1-MS-LL-WS-RA-100 |  | Facility water storage tanks | 10d | 2026-03-28 | 2026-04-07 | NJR1-MS-LL-WS-PS-100 | 21d | 0d | Hot Press GRP Sectional Panel Water Tanks (10x8x4m) [0.03]; Staff [20.87 h] | 15,000 |  |
|  | 3 | **Electrical Works** |  | 2026-03-03 | 2026-04-02 |  |  |  |  |  |  |
|  | 3 | **Exterior Work** |  | 2026-03-03 | 2026-04-02 |  |  |  |  |  |  |
|  | 1 | **Prepare and Submit** |  | 2026-03-03 | 2026-03-19 |  |  |  |  |  |  |
| NJR1-MS-LL-EE-PS-100 |  | Street lighting network | 15d | 2026-03-03 | 2026-03-19 | NJR1-SD-EE-MI-10 | 23d | 0d | Staff [20.87 h] |  | 5 |

| ID | WBS | Activity | Type | Duration | Start | Finish | Predecessors | Total float | Free float | Resources | Cost | WBS-Engineering |
| --- | --- | --- | --- | --- | --- | --- | --- | --- | --- | --- | --- | --- |
|  | 2 | **Review and Approve** |  |  | 2026-03-23 | 2026-04-02 |  |  |  |  |  |  |
| NJR1-MS-LL-EE-RA-100 |  | Street lighting network |  | 10d | 2026-03-23 | 2026-04-02 | NJR1-MS-LL-EE-PS-100 | 23d | 0d | Street lighting feeder pillar [0.03]; Street lighting poles with LED lighting fixtures [0.75]; Concrete wall for KWHM for street lighting feeder pillar [0.03]; 4C x 50mm2 +1C x 25 mm2 [0.6]; 4C x 16mm2 +1C x 10mm2 [12.3]; Staff [20.87 h] | 6,348 | 5 |
|  | 1 | **Internal Works** |  |  | 2026-03-03 | 2026-04-01 |  |  |  |  |  |  |
|  | 1 | **Prepare and Submit** |  |  | 2026-03-03 | 2026-03-18 |  |  |  |  |  |  |
| NJR1-MS-LL-EE-PS-110 |  | Lighting, Power Panelboards, and Control |  | 14d | 2026-03-03 | 2026-03-18 | NJR1-SD-EE-MI-10 | 26d | 0d | Staff [20.87 h] |  | 5 |
| NJR1-MS-LL-EE-PS-120 |  | Lighting Fixtures + Switches |  | 14d | 2026-03-03 | 2026-03-18 | NJR1-SD-EE-MI-10 | 26d | 0d | Staff [20.87 h] |  | 5 |
| NJR1-MS-LL-EE-PS-130 |  | Fire Alarm System |  | 14d | 2026-03-03 | 2026-03-18 | NJR1-SD-EE-MI-10 | 12d | 0d | Staff [20.87 h] |  | 5 |
| NJR1-MS-LL-EE-PS-140 |  | Solar Power Plant |  | 14d | 2026-03-03 | 2026-03-18 | NJR1-SD-EE-MI-10, NJR1-MS-LL-EE-PS-130 SS | 12d | 0d | Staff [20.87 h] |  | 5 |
| NJR1-MS-LL-EE-PS-150 |  | Skylight Fixtures |  | 14d | 2026-03-03 | 2026-03-18 | NJR1-SD-EE-MI-10 | 12d | 0d | Staff [20.87 h] |  | 5 |
|  | 2 | **Review and Approve** |  |  | 2026-03-19 | 2026-04-01 |  |  |  |  |  |  |
| NJR1-MS-LL-EE-RA-110 |  | Lighting, Power Panelboards, and Control |  | 10d | 2026-03-19 | 2026-04-01 | NJR1-MS-LL-EE-PS-110 | 26d | 0d | Lighting, Power Panelboards, and Control [0.03]; Staff [20.87 h] | 8,208 | 5 |
| NJR1-MS-LL-EE-RA-120 |  | Lighting Fixtures + Switches |  | 10d | 2026-03-19 | 2026-04-01 | NJR1-MS-LL-EE-PS-120 | 26d | 0d | Lighting Fixtures and Their Switches [0.03]; Staff [20.87 h] | 5,719.2 | 5 |
| NJR1-MS-LL-EE-RA-130 |  | Fire Alarm System |  | 10d | 2026-03-19 | 2026-04-01 | NJR1-MS-LL-EE-PS-130 | 12d | 0d | Fire Alarm System [0.03]; Staff [20.87 h] | 3,188.4 | 5 |
| NJR1-MS-LL-EE-RA-140 |  | Solar Power Plant |  | 10d | 2026-03-19 | 2026-04-01 | NJR1-MS-LL-EE-PS-140, NJR1-MS-LL-EE-RA-130 SS | 12d | 0d | Solar Power Plant [0.36]; Staff [20.87 h] | 13,248 | 5 |
| NJR1-MS-LL-EE-RA-150 |  | Skylight Fixtures |  | 10d | 2026-03-19 | 2026-04-01 | NJR1-MS-LL-EE-PS-150 | 12d | 0d | Skylight Fixtures [0.72]; Staff [20.87 h] | 1,900.8 | 5 |
|  | 3 | **Short Lead Items** |  |  | 2026-03-03 | 2026-05-02 |  |  |  |  |  |  |
| NJR1-MS-SL-MI-10 |  | Material Submittal - Start Short Lead Items | milestone | 0d | 2026-03-05 | 2026-03-05 | NJR1-MS-LL-MI-10 SS | 13d | 0d |  |  | SL |
| NJR1-MS-SL-MI-20 |  | Material Submittal - Fiish Short Lead Items | milestone | 0d | 2026-05-02 | 2026-05-02 | NJR1-MS-SL-PR-RA-100, NJR1-MS-SL-PR-RA-110, NJR1-MS-SL-PR-RA-120, NJR1-MS-SL-MV-RA-100, NJR1-MS-SL-MV-RA-110, NJR1-MS-SL-MV-RA-120, NJR1-MS-SL-MV-RA-130, NJR1-MS-SL-EA-RA-110, NJR1-MS-SL-EA-RA-120, NJR1-MS-SL-EA-RA-130, NJR1-MS-SL-EA-RA-140, NJR1-MS-SL-EA-RA-190, NJR1-MS-SL-TH-RA-100, NJR1-MS-SL-TH-RA-110, NJR1-MS-SL-TH-RA-120, NJR1-MS-SL-TH-RA-130, NJR1-MS-SL-TH-RA-140, NJR1-MS-SL-TH-RA-160, NJR1-MS-SL-TH-RA-170, NJR1-MS-SL-FW-RA-100, NJR1-MS-SL-FW-RA-110, NJR1-MS-SL-FW-RA-120, NJR1-MS-SL-FW-RA-130, NJR1-MS-SL-FW-RA-140, NJR1-MS-SL-FW-RA-150, NJR1-MS-SL-FW-RA-160, NJR1-MS-SL-FW-RA-170, NJR1-MS-SL-FW-RA-180, NJR1-MS-SL-FW-RA-190, NJR1-MS-SL-FW-RA-200, NJR1-MS-SL-SP-RA-100, NJR1-MS-SL-SP-RA-110, NJR1-MS-SL-SP-RA-120, NJR1-MS-SL-FF-RA-100, NJR1-MS-SL-FF-RA-110, NJR1-MS-SL-WS-RA-100, NJR1-MS-SL-WS-RA-110, NJR1-MS-SL-WS-RA-120, NJR1-MS-SL-WS-RA-130, NJR1-MS-SL-WS-RA-140, NJR1-MS-SL-SW-RA-100, NJR1-MS-SL-SW-RA-110, NJR1-MS-SL-SW-RA-120, NJR1-MS-SL-SW-RA-130, NJR1-MS-SL-FF-RA-111, NJR1-MS-SL-FF-RA-112, NJR1-MS-SL-FF-RA-120, NJR1-MS-SL-FF-RA-130, NJR1-MS-SL-FF-RA-140, NJR1-MS-SL-FF-RA-150, NJR1-MS-SL-FF-RA-160, NJR1-MS-SL-FF-RA-170, NJR1-MS-SL-WS-RA-150, NJR1-MS-SL-WS-RA-160, NJR1-MS-SL-WS-RA-170, NJR1-MS-SL-WS-RA-180, NJR1-MS-SL-SW-RA-131, NJR1-MS-SL-SW-RA-132, NJR1-MS-SL-SW-RA-133, NJR1-MS-SL-SW-RA-134, NJR1-MS-SL-SW-RA-140, NJR1-MS-SL-SW-RA-150, NJR1-MS-SL-SW-RA-160, NJR1-MS-SL-SW-RA-170, NJR1-MS-SL-SW-RA-180, NJR1-MS-SL-SW-RA-190, NJR1-MS-SL-HV-RA-100, NJR1-MS-SL-HV-RA-110, NJR1-MS-SL-HV-RA-120, NJR1-MS-SL-HV-RA-130, NJR1-MS-SL-HV-RA-140, NJR1-MS-SL-EE-RA-100, NJR1-MS-SL-EE-RA-110, NJR1-MS-SL-EE-RA-120, NJR1-MS-SL-EE-RA-121, NJR1-MS-SL-EE-RA-122, NJR1-MS-SL-EE-RA-123, NJR1-MS-SL-EE-RA-130, NJR1-MS-SL-EE-RA-140, NJR1-MS-SL-EE-RA-150, NJR1-MS-SL-EE-RA-160, NJR1-MS-SL-TH-RA-150, NJR1-MS-LL-MI-20, NJR1-MS-SL-MA-RA-100 | 13d | 0d |  |  | SL |
|  | 5 | **Earthworks** |  |  | 2026-03-05 | 2026-04-29 |  |  |  |  |  |  |
|  | 1 | **Prepare and Submit** |  |  | 2026-03-05 | 2026-04-18 |  |  |  |  |  |  |
| NJR1-MS-SL-EA-PS-100 |  | Backfill Material |  | 14d | 2026-03-05 | 2026-03-24 | NJR1-MS-SL-MI-10 | 36.5d | 0d | Staff [20.87 h] |  | 1 |
| NJR1-MS-SL-EA-PS-110 |  | Bituminous wearing course asphalt layer |  | 14d | 2026-04-02 | 2026-04-18 | NJR1-3900 | 15d | 0d | Staff [20.87 h] |  | 1 |
| NJR1-MS-SL-EA-PS-120 |  | Bituminous base course asphalt layer |  | 14d | 2026-04-02 | 2026-04-18 | NJR1-MS-SL-EA-PS-110 SS | 15d | 0d | Staff [20.87 h] |  | 1 |
| NJR1-MS-SL-EA-PS-130 |  | Base course layer |  | 14d | 2026-04-02 | 2026-04-18 | NJR1-MS-SL-EA-PS-120 SS | 15d | 0d | Staff [20.87 h] |  | 1 |
| NJR1-MS-SL-EA-PS-140 |  | Subgrade material |  | 14d | 2026-04-02 | 2026-04-18 | NJR1-MS-SL-EA-PS-130 SS | 15d | 0d | Staff [20.87 h] |  | 1 |
| NJR1-MS-SL-EA-PS-150 |  | Road Paints |  | 14d | 2026-04-02 | 2026-04-18 | NJR1-MS-SL-EA-PS-140 SS | 15d | 0d | Staff [20.87 h] |  | 1 |
| NJR1-MS-SL-EA-PS-160 |  | Concrete parking bumper |  | 14d | 2026-04-02 | 2026-04-18 | NJR1-MS-SL-EA-PS-150 SS | 15d | 0d | Staff [20.87 h] |  | 1 |
| NJR1-MS-SL-EA-PS-170 |  | Interlocking block pavers |  | 14d | 2026-04-02 | 2026-04-18 | NJR1-MS-SL-EA-PS-160 SS | 15d | 0d | Staff [20.87 h] |  | 1 |
| NJR1-MS-SL-EA-PS-180 |  | Precast concrete curbstone |  | 14d | 2026-04-02 | 2026-04-18 | NJR1-MS-SL-EA-PS-170 SS | 15d | 0d | Staff [20.87 h] |  | 1 |
| NJR1-MS-SL-EA-PS-190 |  | Traffic signs |  | 14d | 2026-04-02 | 2026-04-18 | NJR1-MS-SL-EA-PS-180 SS | 15d | 0d | Staff [20.87 h] |  | 1 |

| ID | WBS | Activity | Duration | Start | Finish | Predecessors | Total float | Free float | Resources | Cost | WBS-Engineering |
| --- | --- | --- | --- | --- | --- | --- | --- | --- | --- | --- | --- |
|  | 2 | **Review and Approve** |  | 2026-03-24 | 2026-04-29 |  |  |  |  |  |  |
| NJR1-MS-SL-EA-RA-100 |  | Backfill Material | 10d | 2026-03-24 | 2026-04-05 | NJR1-MS-SL-EA-PS-100 | 36.5d | 21.5d | Staff [20.87 h] |  | 1 |
| NJR1-MS-SL-EA-RA-110 |  | Bituminous wearing course asphalt layer | 10d | 2026-04-19 | 2026-04-29 | NJR1-MS-SL-EA-PS-110, NJR1-MS-SL-EA-RA-100 SS, NJR1-MS-SL-EA-PS-190 | 15d | 0d | Bituminous wearing course asphalt layer [6.51]; Staff [20.87 h] | 6,249.6 | 1 |
| NJR1-MS-SL-EA-RA-120 |  | Bituminous base course asphalt layer | 10d | 2026-04-19 | 2026-04-29 | NJR1-MS-SL-EA-PS-120, NJR1-MS-SL-EA-RA-110 SS | 15d | 0d | Bituminous base course asphalt layer [9.12]; Staff [20.87 h] | 8,755.2 | 1 |
| NJR1-MS-SL-EA-RA-130 |  | Base course layer | 10d | 2026-04-19 | 2026-04-29 | NJR1-MS-SL-EA-PS-130, NJR1-MS-SL-EA-RA-120 SS | 15d | 0d | Base course layer [26.01]; Staff [20.87 h] | 1,300.5 | 1 |
| NJR1-MS-SL-EA-RA-140 |  | Subgrade material | 10d | 2026-04-19 | 2026-04-29 | NJR1-MS-SL-EA-PS-140, NJR1-MS-SL-EA-RA-130 SS | 15d | 0d | Subgrade material [39]; Staff [20.87 h] | 1,560 | 1 |
| NJR1-MS-SL-EA-RA-150 |  | Road Paints | 10d | 2026-04-19 | 2026-04-29 | NJR1-MS-SL-EA-PS-150, NJR1-MS-SL-EA-RA-140 SS | 15d | 0d | Retroreflective Thermoplastic White Traffic lines [0.03]; Retroreflective Thermoplastic Yellow Traffic lines [0.03]; Staff [20.87 h] | 720 | 1 |
| NJR1-MS-SL-EA-RA-160 |  | Concrete parking bumper | 10d | 2026-04-19 | 2026-04-29 | NJR1-MS-SL-EA-PS-160, NJR1-MS-SL-EA-RA-150 SS | 15d | 0d | Concrete parking bumper with dimensions 1800*150*100 mm [1.26]; Staff [20.87 h] | 289.8 | 1 |
| NJR1-MS-SL-EA-RA-170 |  | Interlocking block pavers | 10d | 2026-04-19 | 2026-04-29 | NJR1-MS-SL-EA-PS-170, NJR1-MS-SL-EA-RA-160 SS | 15d | 0d | Interlocking pedstrian paving blocks [39.78]; Staff [20.87 h] | 4,375.8 | 1 |
| NJR1-MS-SL-EA-RA-180 |  | Precast concrete curbstone | 10d | 2026-04-19 | 2026-04-29 | NJR1-MS-SL-EA-PS-180, NJR1-MS-SL-EA-RA-170 SS | 15d | 0d | Kerb type K1A [30.87]; Kerb type K1B [7.71]; Kerb type K3 [0.24]; Staff [20.87 h] | 3,687.9 | 1 |
| NJR1-MS-SL-EA-RA-190 |  | Traffic signs | 10d | 2026-04-19 | 2026-04-29 | NJR1-MS-SL-EA-PS-190, NJR1-MS-SL-EA-RA-180 SS | 15d | 2d | Install traffic signs aluminum sheet, (breakaway) Single post I.P.E. [0.75]; Staff [20.87 h] | 900 | 1 |
|  | 1 | **Concrete** |  | 2026-03-05 | 2026-04-05 |  |  |  |  |  |  |
|  | 1 | **Prepare and Submit** |  | 2026-03-05 | 2026-03-24 |  |  |  |  |  |  |
| NJR1-MS-SL-CO-PS-100 |  | Concrete Mix Design | 14d | 2026-03-05 | 2026-03-24 | NJR1-MS-SL-MI-10 | 13d | 0d | Staff [20.87 h] |  | 2 |
| NJR1-MS-SL-CO-PS-110 |  | Reinforcing Steel Bars | 14d | 2026-03-05 | 2026-03-24 | NJR1-MS-SL-CO-PS-100 SS | 13d | 0d | Staff [20.87 h] |  | 2 |
|  | 2 | **Review and Approve** |  | 2026-03-24 | 2026-04-05 |  |  |  |  |  |  |
| NJR1-MS-SL-CO-RA-100 |  | Concrete Mix Design | 10d | 2026-03-24 | 2026-04-05 | NJR1-MS-SL-CO-PS-100 | 13d | 0d | Grade beams [4.77]; Tank Footing [1.47]; Pedestal [0.99]; GRP Water Tank and Pump Shed - Concrete Pad [0.09]; Toilet, Mosque & EE Room - Roof Slab [0.45]; Toilet, Mosque & EE Room - Roof Beam [0.27]; GRP Water Tank and Pump Shed - SOG [0.6]; Underground Septic Tank - Wall [0.75]; Underground Septic Tank - Slab [0.3]; 150 mm thk concrete floor slab on grade [9.21]; Lean Concrete [5.04]; Isolated Footings [3.78]; Electrical substation - Foundation [0.06]; Staff [20.87 h] | 26,134.5 | 2 |
| NJR1-MS-SL-CO-RA-110 |  | Reinforcing Steel Bars | 10d | 2026-03-24 | 2026-04-05 | NJR1-MS-SL-CO-PS-110 | 13d | 0d | Staff [20.87 h] |  | 2 |
|  | 7 | **Masonry Works** |  | 2026-04-05 | 2026-05-02 |  |  |  |  |  |  |
|  | 1 | **Prepare and Submit** |  | 2026-04-05 | 2026-04-20 |  |  |  |  |  |  |
| NJR1-MS-SL-MA-PS-100 |  | Concrete Masonry Unit | 13.5d | 2026-04-05 | 2026-04-20 | NJR1-MS-SL-CO-RA-100, NJR1-MS-SL-CO-RA-110 | 13d | 0d | Staff [20.87 h] |  | 3 |
|  | 2 | **Review and Approve** |  | 2026-04-21 | 2026-05-02 |  |  |  |  |  |  |
| NJR1-MS-SL-MA-RA-100 |  | Concrete Masonry Unit | 10d | 2026-04-21 | 2026-05-02 | NJR1-MS-SL-MA-PS-100 | 13d | 0d | Install CMU wall at internal walls (100mm thick) [1.02]; Install CMU wall at internal walls (200mm thick) [6]; Install CMU wall at external walls (200mm thick insulated) [3.6]; Install CMU wall at electrical room (200mm thick, 2 hr fire rated) [2.7]; Staff [20.87 h] | 1,251.6 | 3 |
|  | 8 | **Metal Works** |  | 2026-04-02 | 2026-04-29 |  |  |  |  |  |  |
|  | 1 | **Prepare and Submit** |  | 2026-04-02 | 2026-04-18 |  |  |  |  |  |  |
| NJR1-MS-SL-MW-PS-100 |  | Steel ladder with safety cage | 14d | 2026-04-02 | 2026-04-18 | NJR1-MS-SL-TH-PS-130 SS | 15d | 0d | Staff [20.87 h] |  | 4 |
| NJR1-MS-SL-MW-PS-110 |  | Steel bollards | 14d | 2026-04-02 | 2026-04-18 | NJR1-MS-SL-MW-PS-100 SS | 15d | 0d | Staff [20.87 h] |  | 4 |
| NJR1-MS-SL-MW-PS-120 |  | Galvanised steel gratings | 14d | 2026-04-02 | 2026-04-18 | NJR1-MS-SL-MW-PS-110 SS | 15d | 0d | Staff [20.87 h] |  | 4 |
| NJR1-MS-SL-MW-PS-130 |  | Overflow galvanized steel roof scupper | 14d | 2026-04-02 | 2026-04-18 | NJR1-MS-SL-MW-PS-120 SS | 15d | 0d | Staff [20.87 h] |  | 4 |

| ID | WBS | Activity | Duration | Start | Finish | Predecessors | Total float | Free float | Resources | Cost | WBS-Engineering |
| --- | --- | --- | --- | --- | --- | --- | --- | --- | --- | --- | --- |
|  | 2 | **Review and Approve** |  | 2026-04-19 | 2026-04-29 |  |  |  |  |  |  |
| NJR1-MS-SL-MV-RA-100 |  | Steel ladder with safety cage | 10d | 2026-04-19 | 2026-04-29 | NJR1-MS-SL-MW-PS-100 | 15d | 2d | Steel ladder with safety cage [0.03]; Staff [20.87 h] | 270 | 4 |
| NJR1-MS-SL-MV-RA-110 |  | Steel bollards | 10d | 2026-04-19 | 2026-04-29 | NJR1-MS-SL-MW-PS-110 | 15d | 2d | Steel bollards 1135mm height [0.72]; Staff [20.87 h] | 504 | 4 |
| NJR1-MS-SL-MV-RA-120 |  | Galvanised steel gratings | 10d | 2026-04-19 | 2026-04-29 | NJR1-MS-SL-MW-PS-120 | 15d | 2d | Galvanised steel gratings 400mm wide*4000mm long [0.36]; Staff [20.87 h] | 1,080 | 4 |
| NJR1-MS-SL-MV-RA-130 |  | Overflow galvanized steel roof scupper | 10d | 2026-04-19 | 2026-04-29 | NJR1-MS-SL-MW-PS-130 | 15d | 2d | Overflow galvanized steel roof scupper [0.36]; Staff [20.87 h] | 324 | 4 |
|  | 9 | **Thermal and Moisture Protection** |  | 2026-03-03 | 2026-04-29 |  |  |  |  |  |  |
|  | 1 | **Prepare and Submit** |  | 2026-03-03 | 2026-04-18 |  |  |  |  |  |  |
| NJR1-MS-SL-TH-PS-120 |  | Anti termite control | 14d | 2026-03-03 | 2026-03-18 | NJR1-MO-SO-100 SS | 22d | 0d | Staff [20.87 h] |  | 5 |
| NJR1-MS-SL-TH-PS-100 |  | Bitumen waterproofing paint | 14d | 2026-03-05 | 2026-03-24 | NJR1-MO-SO-100 | 23.5d | 0d | Staff [20.87 h] |  | 5 |
| NJR1-MS-SL-TH-PS-110 |  | Polyethylene sheet | 14d | 2026-03-05 | 2026-03-24 | NJR1-MS-SL-TH-PS-100 SS, NJR1-MO-SO-100 | 23.5d | 0d | Staff [20.87 h] |  | 5 |
| NJR1-MS-SL-TH-PS-130 |  | Liquid applied waterproofing membrane | 14d | 2026-04-02 | 2026-04-18 | NJR1-SD-AR-MI-20 | 15d | 0d | Staff [20.87 h] |  | 5 |
| NJR1-MS-SL-TH-PS-140 |  | Geotextile sheet | 14d | 2026-04-02 | 2026-04-18 | NJR1-MS-SL-TH-PS-130 SS | 15d | 0d | Staff [20.87 h] |  | 5 |
| NJR1-MS-SL-TH-PS-150 |  | Polyurethane waterpoof coating | 14d | 2026-04-02 | 2026-04-18 | NJR1-MS-SL-TH-PS-140 SS | 15d | 0d | Staff [20.87 h] |  | 5 |
| NJR1-MS-SL-TH-PS-160 |  | Roofdeck waterproofing system | 14d | 2026-04-02 | 2026-04-18 | NJR1-MS-SL-TH-PS-150 SS | 15d | 0d | Staff [20.87 h] |  | 5 |
| NJR1-MS-SL-TH-PS-170 |  | Aluminium cladding | 14d | 2026-04-02 | 2026-04-18 | NJR1-MS-SL-TH-PS-160 SS | 15d | 0d | Staff [20.87 h] |  | 5 |
|  | 2 | **Review and Approve** |  | 2026-03-19 | 2026-04-29 |  |  |  |  |  |  |
| NJR1-MS-SL-TH-RA-120 |  | Anti termite control | 10d | 2026-03-19 | 2026-04-01 | NJR1-MS-SL-TH-PS-120 | 22d | 0d | Anti termite under all concrete in touch with earth [65.58]; Staff [20.87 h] | 524.64 | 5 |
| NJR1-MS-SL-TH-RA-100 |  | Bitumen waterproofing paint | 10d | 2026-03-24 | 2026-04-05 | NJR1-MS-SL-TH-PS-100 | 34.5d | 0d | 2 coats of bitumen waterproofing paint on concrete surface [59.16]; Staff [20.87 h] | 887.4 | 5 |
| NJR1-MS-SL-TH-RA-110 |  | Polyethylene sheet | 10d | 2026-03-24 | 2026-04-05 | NJR1-MS-SL-TH-PS-110 | 23.5d | 0d | 250 micron thk polyethylene sheet under grade slab and footings [64.44]; Staff [20.87 h] | 644.4 | 5 |
| NJR1-MS-SL-TH-RA-130 |  | Liquid applied waterproofing membrane | 10d | 2026-04-19 | 2026-04-29 | NJR1-MS-SL-TH-PS-130 | 15d | 2d | Liquid applied waterproofing membrane for toilets [2.4]; Staff [20.87 h] | 240 | 5 |
| NJR1-MS-SL-TH-RA-140 |  | Geotextile sheet | 10d | 2026-04-19 | 2026-04-29 | NJR1-MS-SL-TH-PS-140 | 15d | 2d | Geotextile sheet [2.4]; Staff [20.87 h] | 38.4 | 5 |
| NJR1-MS-SL-TH-RA-150 |  | Polyurethane waterpoof coating | 10d | 2026-04-19 | 2026-04-29 | NJR1-MS-SL-TH-PS-150 | 15d | 2d | Polyurethane waterpoof coating to internal surfaces of concrete trench [0.57]; Staff [20.87 h] | 68.4 | 5 |
| NJR1-MS-SL-TH-RA-160 |  | Roofdeck waterproofing system | 10d | 2026-04-19 | 2026-04-29 | NJR1-MS-SL-TH-PS-160 | 15d | 2d | 4mm thick APP modified bituminous membrane [3.93]; 50mm thk rigid insulation [3.93]; Foam concrete screed 50mm thk [3.93]; 300 micron polyethylene sheet [3.93]; 50mm thk loose gravel toppings [3.93]; High density polyisocynurate cover board (12.7mm) [3.93]; Geotextile sheets (200 g/m2) [3.93]; 3mm thk extruded aluminum flashing [2.52]; Staff [20.87 h] | 1,053.36 | 5 |
| NJR1-MS-SL-TH-RA-170 |  | Aluminium cladding | 10d | 2026-04-19 | 2026-04-29 | NJR1-MS-SL-TH-PS-170 | 15d | 2d | Workshop - Aluminium cladding [7.5]; Staff [20.87 h] | 2,250 | 5 |

| ID | WBS | Activity | Duration | Start | Finish | Predecessors | Total float | Free float | Resources | Cost | WBS-Engineering |
| --- | --- | --- | --- | --- | --- | --- | --- | --- | --- | --- | --- |
|  | 2 | **Finishes** |  | 2026-04-02 | 2026-04-29 |  |  |  |  |  |  |
|  | 4 | **Prepare and Submit** |  | 2026-04-02 | 2026-04-18 |  |  |  |  |  |  |
| NJR1-MS-SL-FW-PS-100 |  | Ceramic tiles | 14d | 2026-04-02 | 2026-04-18 | NJR1-SD-AR-MI-20 | 15d | 0d | Staff [20.87 h] |  | 6 |
| NJR1-MS-SL-FW-PS-110 |  | Carpet rolls | 14d | 2026-04-02 | 2026-04-18 | NJR1-MS-SL-FW-PS-100 SS | 15d | 0d | Staff [20.87 h] |  | 6 |
| NJR1-MS-SL-FW-PS-120 |  | Epoxy paint | 14d | 2026-04-02 | 2026-04-18 | NJR1-MS-SL-FW-PS-110 SS | 15d | 0d | Staff [20.87 h] |  | 6 |
| NJR1-MS-SL-FW-PS-130 |  | Granite tiles | 14d | 2026-04-02 | 2026-04-18 | NJR1-MS-SL-FW-PS-120 SS | 15d | 0d | Staff [20.87 h] |  | 6 |
| NJR1-MS-SL-FW-PS-140 |  | Marble strip | 14d | 2026-04-02 | 2026-04-18 | NJR1-MS-SL-FW-PS-130 SS | 15d | 0d | Staff [20.87 h] |  | 6 |
| NJR1-MS-SL-FW-PS-150 |  | Wood skirt | 14d | 2026-04-02 | 2026-04-18 | NJR1-MS-SL-FW-PS-140 SS | 15d | 0d | Staff [20.87 h] |  | 6 |
| NJR1-MS-SL-FW-PS-160 |  | Acrylic paint | 14d | 2026-04-02 | 2026-04-18 | NJR1-MS-SL-FW-PS-150 SS | 15d | 0d | Staff [20.87 h] |  | 6 |
| NJR1-MS-SL-FW-PS-170 |  | Marble chips | 14d | 2026-04-02 | 2026-04-18 | NJR1-MS-SL-FW-PS-160 SS | 15d | 0d | Staff [20.87 h] |  | 6 |
| NJR1-MS-SL-FW-PS-180 |  | GRC panels | 14d | 2026-04-02 | 2026-04-18 | NJR1-MS-SL-FW-PS-170 SS | 15d | 0d | Staff [20.87 h] |  | 6 |
| NJR1-MS-SL-FW-PS-190 |  | Phenolic partitions | 14d | 2026-04-02 | 2026-04-18 | NJR1-MS-SL-FW-PS-180 SS | 15d | 0d | Staff [20.87 h] |  | 6 |
| NJR1-MS-SL-FW-PS-200 |  | Moisture resistant gypsum board | 14d | 2026-04-02 | 2026-04-18 | NJR1-MS-SL-FW-PS-190 SS | 15d | 0d | Staff [20.87 h] |  | 6 |
|  | 5 | **Review and Approve** |  | 2026-04-19 | 2026-04-29 |  |  |  |  |  |  |
| NJR1-MS-SL-FW-RA-100 |  | Ceramic tiles | 10d | 2026-04-19 | 2026-04-29 | NJR1-MS-SL-FW-PS-100 | 15d | 0d | 300*300mm ceramic tiles for toilets [2.25]; 300*300mm glazed ceramic wall tiles for toilets [7.2]; Staff [20.87 h] | 1,039.5 | 6 |
| NJR1-MS-SL-FW-RA-110 |  | Carpet rolls | 10d | 2026-04-19 | 2026-04-29 | NJR1-MS-SL-FW-PS-110 | 15d | 0d | Carpet rolls to prayer room [1.68]; Staff [20.87 h] | 554.4 | 6 |
| NJR1-MS-SL-FW-RA-120 |  | Epoxy paint | 10d | 2026-04-19 | 2026-04-29 | NJR1-MS-SL-FW-PS-120 | 15d | 0d | Epoxy paint to concrete surface in the factory area [55.5]; Staff [20.87 h] | 3,330 | 6 |
| NJR1-MS-SL-FW-RA-130 |  | Granite tiles | 10d | 2026-04-19 | 2026-04-29 | NJR1-MS-SL-FW-PS-130, NJR1-MS-SL-FW-RA-120 SS | 15d | 0d | Granite tiles [1.05]; Staff [20.87 h] | 262.5 | 6 |
| NJR1-MS-SL-FW-RA-140 |  | Marble strip | 10d | 2026-04-19 | 2026-04-29 | NJR1-MS-SL-FW-PS-140 | 15d | 0d | Marble strip 30mm thk, Threshold [0.09]; Staff [20.87 h] | 22.5 | 6 |
| NJR1-MS-SL-FW-RA-150 |  | Wood skirt | 10d | 2026-04-19 | 2026-04-29 | NJR1-MS-SL-FW-PS-150 | 15d | 0d | Wood skirt 100mm height [1.29]; Staff [20.87 h] | 45.15 | 6 |
| NJR1-MS-SL-FW-RA-160 |  | Acrylic paint | 10d | 2026-04-19 | 2026-04-29 | NJR1-MS-SL-FW-PS-160 | 15d | 0d | 2 coats of acrylic paint at internal walls and roof [9.48]; 2 coats of acrylic paint at external walls and parapet [7.5]; Staff [20.87 h] | 546.9 | 6 |
| NJR1-MS-SL-FW-RA-170 |  | Marble chips | 10d | 2026-04-19 | 2026-04-29 | NJR1-MS-SL-FW-PS-170 | 15d | 0d | Marble chips on external walls and grooves [2.25]; Staff [20.87 h] | 135 | 6 |
| NJR1-MS-SL-FW-RA-180 |  | GRC panels | 10d | 2026-04-19 | 2026-04-29 | NJR1-MS-SL-FW-PS-180 | 15d | 0d | GRC panels [0.33]; Staff [20.87 h] | 132 | 6 |
| NJR1-MS-SL-FW-RA-190 |  | Phenolic partitions | 10d | 2026-04-19 | 2026-04-29 | NJR1-MS-SL-FW-PS-190 | 15d | 0d | Phenolic partitions with doors for toilets [2.25]; Staff [20.87 h] | 1,350 | 6 |
| NJR1-MS-SL-FW-RA-200 |  | Moisture resistant gypsum board | 10d | 2026-04-19 | 2026-04-29 | NJR1-MS-SL-FW-PS-200 | 15d | 0d | 12.5mm thk, moisture resistant gypsum board suspended ceiling for toilets [2.25]; 12.5mm thk, moisture resistant gypsum board suspended ceiling for prayer room [0.6]; Staff [20.87 h] | 427.5 | 6 |

| ID | WBS | Activity | Duration | Start | Finish | Predecessors | Total float | Free float | Resources | Cost | WBS-Engineering |
| --- | --- | --- | --- | --- | --- | --- | --- | --- | --- | --- | --- |
|  | 10 | **Specialties** |  | 2026-04-02 | 2026-04-29 |  |  |  |  |  |  |
|  | 1 | **Prepare and Submit** |  | 2026-04-02 | 2026-04-18 |  |  |  |  |  |  |
| NJR1-MS-SL-SP-PS-100 |  | Toilet Fittings | 14d | 2026-04-02 | 2026-04-18 | NJR1-SD-AR-MI-20, NJR1-MS-SL-FW-PS-100 SS | 15d | 0d | Staff [20.87 h] |  | 7 |
| NJR1-MS-SL-SP-PS-110 |  | Signage | 14d | 2026-04-02 | 2026-04-18 | NJR1-MS-SL-SP-PS-100 SS | 15d | 0d | Staff [20.87 h] |  | 7 |
| NJR1-MS-SL-SP-PS-120 |  | MODON Logo | 14d | 2026-04-02 | 2026-04-18 | NJR1-MS-SL-SP-PS-110 SS | 15d | 0d | Staff [20.87 h] |  | 7 |
|  | 2 | **Review and Approve** |  | 2026-04-19 | 2026-04-29 |  |  |  |  |  |  |
| NJR1-MS-SL-SP-RA-100 |  | Toilet Fittings | 10d | 2026-04-19 | 2026-04-29 | NJR1-MS-SL-SP-PS-100 | 15d | 0d | Soap dispenser [0.18]; Mirror, Size 3300*1200mm [0.06]; Mirror, Size 800*1200mm [0.12]; Toilet tissue holder [0.18]; Paper towel dispenser [0.06]; Waste receptacle [0.24]; Stainless steel hand dryer [0.06]; Robe hook [0.24]; Grab bars [0.06]; Extruded EPDM rubber bumper 200mm high [6]; Staff [20.87 h] | 750 | 7 |
| NJR1-MS-SL-SP-RA-110 |  | Signage | 10d | 2026-04-19 | 2026-04-29 | NJR1-MS-SL-SP-PS-110, NJR1-MS-SL-SP-RA-100 SS | 15d | 0d | Internal and External Signage [0.09]; Staff [20.87 h] | 22.5 | 7 |
| NJR1-MS-SL-SP-RA-120 |  | MODON Logo | 10d | 2026-04-19 | 2026-04-29 | NJR1-MS-SL-SP-PS-120, NJR1-MS-SL-SP-RA-110 SS | 15d | 0d | Install MODON logo on entrance [0.12]; Staff [20.87 h] | 600 | 7 |
|  | 11 | **Pre Engineered Structure** |  | 2026-04-02 | 2026-04-29 |  |  |  |  |  |  |
|  | 1 | **Prepare and Submit** |  | 2026-04-02 | 2026-04-18 |  |  |  |  |  |  |
| NJR1-MS-SL-PR-PS-100 |  | Intumescent paint | 14d | 2026-04-02 | 2026-04-18 | NJR1-MS-SL-FW-PS-160 SS | 15d | 0d | Staff [20.87 h] |  | 8 |
| NJR1-MS-SL-PR-PS-110 |  | Galvanized steel fence | 14d | 2026-04-02 | 2026-04-18 | NJR1-MS-SL-PR-PS-100 SS | 15d | 0d | Staff [20.87 h] |  | 8 |
| NJR1-MS-SL-PR-PS-120 |  | Steel fence gate | 14d | 2026-04-02 | 2026-04-18 | NJR1-MS-SL-PR-PS-110 SS | 15d | 0d | Staff [20.87 h] |  | 8 |
|  | 2 | **Review and Approve** |  | 2026-04-19 | 2026-04-29 |  |  |  |  |  |  |
| NJR1-MS-SL-PR-RA-100 |  | Intumescent paint | 10d | 2026-04-19 | 2026-04-29 | NJR1-MS-SL-PR-PS-100, NJR1-MS-SL-SP-RA-120 SS | 15d | 0d | Intumescent paint to steel works [0.03]; Staff [20.87 h] | 6,600 | 8 |
| NJR1-MS-SL-PR-RA-110 |  | Galvanized steel fence | 10d | 2026-04-19 | 2026-04-29 | NJR1-MS-SL-PR-PS-110, NJR1-MS-SL-PR-RA-100 SS | 15d | 0d | Fencing For Pump Room [1.08]; Staff [20.87 h] | 1,512 | 8 |
| NJR1-MS-SL-PR-RA-120 |  | Steel fence gate | 10d | 2026-04-19 | 2026-04-29 | NJR1-MS-SL-PR-PS-120 | 15d | 2d | Install swing gate for fence with similar design with opening of 3m. [0.06]; Install swing gate for fence with similar design with opening of 1.5m. [0.06]; Staff [20.87 h] | 1,020 | 8 |
|  | 3 | **Mechanical** |  | 2026-03-03 | 2026-04-29 |  |  |  |  |  |  |
|  | 5 | **External Works** |  | 2026-03-03 | 2026-04-01 |  |  |  |  |  |  |
|  | 4 | **Fire Fighting** |  | 2026-03-03 | 2026-04-01 |  |  |  |  |  |  |
|  | 1 | **Prepare and Submit** |  | 2026-03-03 | 2026-03-18 |  |  |  |  |  |  |
| NJR1-MS-SL-FF-PS-100 |  | HDPE pipes | 14d | 2026-03-03 | 2026-03-18 | NJR1-SD-ME-MI-10 | 5d | 0d | Staff [20.87 h] |  | 9 |
| NJR1-MS-SL-FF-PS-110 |  | Directly Buried Gate valve | 14d | 2026-03-03 | 2026-03-18 | NJR1-MS-SL-FF-PS-100 SS | 5d | 0d | Staff [20.87 h] |  | 9 |

| ID | WBS | Activity | Duration | Start | Finish | Predecessors | Total float | Free float | Resources | Cost | WBS-Engineering |
| --- | --- | --- | --- | --- | --- | --- | --- | --- | --- | --- | --- |
|  | 2 | **Review and Approve** |  | 2026-03-19 | 2026-04-01 |  |  |  |  |  |  |
| NJR1-MS-SL-FF-RA-100 |  | HDPE pipes | 10d | 2026-03-19 | 2026-04-01 | NJR1-MS-SL-FF-PS-100 | 19d | 0d | 200 mm Ø HDPE Fire Fighting [1.44]; 150 mm Ø HDPE Fire Fighting [6]; Staff [20.87 h] | 1,740 | 9 |
| NJR1-MS-SL-FF-RA-110 |  | Directly Buried Gate valve | 10d | 2026-03-19 | 2026-04-01 | NJR1-MS-SL-FF-PS-110 | 33d | 14d | 200 mm Ø Directly Buried Gate valve [0.03]; 150 mm Ø Directly Buried Gate valve [0.03]; Staff [20.87 h] | 285 | 9 |
|  | 1 | **Water supply system** |  | 2026-03-03 | 2026-04-01 |  |  |  |  |  |  |
|  | 1 | **Prepare and Submit** |  | 2026-03-03 | 2026-03-18 |  |  |  |  |  |  |
| NJR1-MS-SL-WS-PS-100 |  | HDPE pipes | 14d | 2026-03-03 | 2026-03-18 | NJR1-MS-SL-FF-PS-100 SS | 5d | 0d | Staff [20.87 h] |  | 9 |
| NJR1-MS-SL-WS-PS-110 |  | Directly Buried Gate valve | 14d | 2026-03-03 | 2026-03-18 | NJR1-MS-SL-FF-PS-110 SS | 5d | 0d | Staff [20.87 h] |  | 9 |
| NJR1-MS-SL-WS-PS-120 |  | Air Valve | 14d | 2026-03-03 | 2026-03-18 | NJR1-MS-SL-WS-PS-110 SS | 5d | 0d | Staff [20.87 h] |  | 9 |
| NJR1-MS-SL-WS-PS-130 |  | Washout Valve | 14d | 2026-03-03 | 2026-03-18 | NJR1-MS-SL-WS-PS-120 SS | 5d | 0d | Staff [20.87 h] |  | 9 |
| NJR1-MS-SL-WS-PS-140 |  | Valve Chamber Cover | 14d | 2026-03-03 | 2026-03-18 | NJR1-MS-SL-WS-PS-130 SS | 5d | 0d | Staff [20.87 h] |  | 9 |
|  | 2 | **Review and Approve** |  | 2026-03-19 | 2026-04-01 |  |  |  |  |  |  |
| NJR1-MS-SL-WS-RA-100 |  | HDPE pipes | 10d | 2026-03-19 | 2026-04-01 | NJR1-MS-SL-WS-PS-100 | 19d | 0d | 100 mm Ø HDPE Water Supply [0.6]; 90 mm Ø HDPE Water Supply [7.05]; 63 mm Ø HDPE Water Supply [0.24]; 50 mm Ø HDPE Water Supply [1.2]; 63 mm Ø Service connection - HDPE [0.03]; For 100 mm Ø pipe Road Crossing sleeve [0.75]; Staff [20.87 h] | 1,970.4 | 9 |
| NJR1-MS-SL-WS-RA-110 |  | Directly Buried Gate valve | 10d | 2026-03-19 | 2026-04-01 | NJR1-MS-SL-WS-PS-110 | 33d | 14d | 100 mm Ø Directly Buried Gate valve [0.03]; 90 mm Ø Directly Buried Gate valve [0.03]; 63 mm Ø Directly Buried Gate valve [0.06]; 50 mm Ø Directly Buried Gate valve [0.36]; Staff [20.87 h] | 480 | 9 |
| NJR1-MS-SL-WS-RA-120 |  | Air Valve | 10d | 2026-03-19 | 2026-04-01 | NJR1-MS-SL-WS-PS-120 | 15d | 0d | Air Valve [0.03]; Staff [20.87 h] | 225 | 9 |
| NJR1-MS-SL-WS-RA-130 |  | Washout Valve | 10d | 2026-03-19 | 2026-04-01 | NJR1-MS-SL-WS-PS-130, NJR1-MS-SL-WS-RA-120 SS | 15d | 0d | Washout Valve [0.03]; Staff [20.87 h] | 285 | 9 |
| NJR1-MS-SL-WS-RA-140 |  | Valve Chamber Cover | 10d | 2026-03-19 | 2026-04-01 | NJR1-MS-SL-WS-PS-140, NJR1-MS-SL-WS-RA-130 SS | 15d | 0d | Staff [20.87 h] |  | 9 |
|  | 3 | **Sewerage and Drainage System** |  | 2026-03-03 | 2026-04-01 |  |  |  |  |  |  |
|  | 1 | **Prepare and Submit** |  | 2026-03-03 | 2026-03-18 |  |  |  |  |  |  |
| NJR1-MS-SL-SW-PS-100 |  | Sewage tank Cover | 14d | 2026-03-03 | 2026-03-18 | NJR1-MS-SL-WS-PS-100 SS, NJR1-MS-SL-WS-PS-140 SS | 5d | 0d | Staff [20.87 h] |  | 9 |
| NJR1-MS-SL-SW-PS-110 |  | UPVC pipes | 14d | 2026-03-03 | 2026-03-18 | NJR1-MS-SL-SW-PS-100 SS | 5d | 0d | Staff [20.87 h] |  | 9 |
| NJR1-MS-SL-SW-PS-120 |  | Sewer manholes cover | 14d | 2026-03-03 | 2026-03-18 | NJR1-MS-SL-SW-PS-110 SS | 5d | 0d | Staff [20.87 h] |  | 9 |
| NJR1-MS-SL-SW-PS-130 |  | Gully traps | 14d | 2026-03-03 | 2026-03-18 | NJR1-MS-SL-SW-PS-120 SS | 15d | 0d | Staff [20.87 h] |  | 9 |
|  | 2 | **Review and Approve** |  | 2026-03-19 | 2026-04-01 |  |  |  |  |  |  |
| NJR1-MS-SL-SW-RA-100 |  | Sewage tank Cover | 10d | 2026-03-19 | 2026-04-01 | NJR1-MS-SL-SW-PS-100, NJR1-MS-SL-WS-RA-140 SS | 15d | 0d | Sewage tank with dimensions (8x4x3m) [0.03]; Staff [20.87 h] | 3,300 | 9 |
| NJR1-MS-SL-SW-RA-110 |  | UPVC pipes | 10d | 2026-03-19 | 2026-04-01 | NJR1-MS-SL-SW-PS-110, NJR1-MS-SL-SW-RA-100 SS | 15d | 0d | 110 mm Pipe sewer upvc pipe [3.15]; 160 mm Pipe sewer upvc pipe [2.25]; Staff [20.87 h] | 1,462.5 | 9 |
| NJR1-MS-SL-SW-RA-120 |  | Sewer manholes cover | 10d | 2026-03-19 | 2026-04-01 | NJR1-MS-SL-SW-PS-120 | 5d | 0d | Sewer manholes [0.33]; Staff [20.87 h] | 3,300 | 9 |
| NJR1-MS-SL-SW-RA-130 |  | Gully traps | 10d | 2026-03-19 | 2026-04-01 | NJR1-MS-SL-SW-PS-130 | 29d | 14d | Gully traps [0.24]; 110mm UPVC pipe service connections [0.03]; Staff [20.87 h] | 762 | 9 |

| ID | WBS | Activity | Duration | Start | Finish | Predecessors | Total float | Free float | Resources | Cost | WBS-Engineering |
| --- | --- | --- | --- | --- | --- | --- | --- | --- | --- | --- | --- |
|  | 1 | **Internal Works** |  | 2026-03-03 | 2026-04-29 |  |  |  |  |  |  |
|  | 4 | **Fire Fighting** |  | 2026-03-03 | 2026-04-01 |  |  |  |  |  |  |
|  | 1 | **Prepare and Submit** |  | 2026-03-03 | 2026-03-18 |  |  |  |  |  |  |
| NJR1-MS-SL-FF-PS-120 |  | HDPE pipes | 14d | 2026-03-03 | 2026-03-18 | NJR1-MS-SL-FF-PS-100 SS, NJR1-MS-SL-SW-PS-130 SS | 15d | 0d | Staff [20.87 h] |  | 9 |
| NJR1-MS-SL-FF-PS-130 |  | Seamless black steel pipes & fittings | 14d | 2026-03-03 | 2026-03-18 | NJR1-MS-SL-FF-PS-120 SS | 15d | 0d | Staff [20.87 h] |  | 9 |
| NJR1-MS-SL-FF-PS-140 |  | Water sprinklers | 14d | 2026-03-03 | 2026-03-18 | NJR1-MS-SL-FF-PS-130 SS | 15d | 0d | Staff [20.87 h] |  | 9 |
| NJR1-MS-SL-FF-PS-150 |  | Fire hose cabinet | 14d | 2026-03-03 | 2026-03-18 | NJR1-MS-SL-FF-PS-140 SS | 15d | 0d | Staff [20.87 h] |  | 9 |
| NJR1-MS-SL-FF-PS-160 |  | OS&Y Gate valve | 14d | 2026-03-03 | 2026-03-18 | NJR1-MS-SL-FF-PS-150 SS | 15d | 0d | Staff [20.87 h] |  | 9 |
| NJR1-MS-SL-FF-PS-170 |  | Fire Alarm Check Valve (ACV) | 14d | 2026-03-03 | 2026-03-18 | NJR1-MS-SL-FF-PS-160 SS | 15d | 0d | Staff [20.87 h] |  | 9 |
| NJR1-MS-SL-FF-PS-180 |  | Fire Department Connection (FDC) | 14d | 2026-03-03 | 2026-03-18 | NJR1-MS-SL-FF-PS-170 SS | 15d | 0d | Staff [20.87 h] |  | 9 |
| NJR1-MS-SL-FF-PS-190 |  | Automatic air release valve | 14d | 2026-03-03 | 2026-03-18 | NJR1-MS-SL-FF-PS-180 SS | 15d | 0d | Staff [20.87 h] |  | 9 |
|  | 2 | **Review and Approve** |  | 2026-03-19 | 2026-04-01 |  |  |  |  |  |  |
| NJR1-MS-SL-FF-RA-111 |  | HDPE pipes | 10d | 2026-03-19 | 2026-04-01 | NJR1-MS-SL-FF-PS-120 | 15d | 0d | 8" Ø Fire Fighting HDPE Pipes [0.45]; Staff [20.87 h] | 180 | 9 |
| NJR1-MS-SL-FF-RA-112 |  | Seamless black steel pipes & fittings | 10d | 2026-03-19 | 2026-04-01 | NJR1-MS-SL-FF-PS-130, NJR1-MS-SL-FF-RA-111 SS | 15d | 0d | Seamless black steel pipes & fittings [0.03]; Staff [20.87 h] | 6,982.5 | 9 |
| NJR1-MS-SL-FF-RA-120 |  | Water sprinklers | 10d | 2026-03-19 | 2026-04-01 | NJR1-MS-SL-FF-PS-140, NJR1-MS-SL-FF-RA-112 SS | 15d | 0d | Water sprinklers [0.03]; Staff [20.87 h] | 384.3 | 9 |
| NJR1-MS-SL-FF-RA-130 |  | Fire hose cabinet | 10d | 2026-03-19 | 2026-04-01 | NJR1-MS-SL-FF-PS-150, NJR1-MS-SL-FF-RA-120 SS | 15d | 0d | Fire house cabinet [0.18]; Staff [20.87 h] | 540 | 9 |
| NJR1-MS-SL-FF-RA-140 |  | OS&Y Gate valve | 10d | 2026-03-19 | 2026-04-01 | NJR1-MS-SL-FF-PS-160, NJR1-MS-SL-FF-RA-130 SS | 15d | 0d | OS&Y Gate valve [0.03]; Staff [20.87 h] | 714 | 9 |
| NJR1-MS-SL-FF-RA-150 |  | Fire Alarm Check Valve (ACV) | 10d | 2026-03-19 | 2026-04-01 | NJR1-MS-SL-FF-PS-170, NJR1-MS-SL-FF-RA-140 SS | 15d | 0d | Fire Alarm Check Valve (ACV) [0.03]; Staff [20.87 h] | 165 | 9 |
| NJR1-MS-SL-FF-RA-160 |  | Fire Department Connection (FDC) | 10d | 2026-03-19 | 2026-04-01 | NJR1-MS-SL-FF-PS-180, NJR1-MS-SL-FF-RA-150 SS | 15d | 0d | Fire Department Connection (FDC) 6" [0.03]; Staff [20.87 h] | 90 | 9 |
| NJR1-MS-SL-FF-RA-170 |  | Automatic air release valve | 10d | 2026-03-19 | 2026-04-01 | NJR1-MS-SL-FF-PS-190, NJR1-MS-SL-FF-RA-160 SS | 15d | 0d | 1" Ø Automatic air release valve [0.03]; Staff [20.87 h] | 30 | 9 |
|  | 1 | **Water supply system** |  | 2026-03-03 | 2026-04-01 |  |  |  |  |  |  |
|  | 1 | **Prepare and Submit** |  | 2026-03-03 | 2026-03-18 |  |  |  |  |  |  |
| NJR1-MS-SL-WS-PS-150 |  | HDPE pipes | 14d | 2026-03-03 | 2026-03-18 | NJR1-MS-SL-FF-PS-120 SS, NJR1-MS-SL-FF-PS-190 SS | 15d | 0d | Staff [20.87 h] |  | 9 |
| NJR1-MS-SL-WS-PS-160 |  | PPR pipe | 14d | 2026-03-03 | 2026-03-18 | NJR1-MS-SL-WS-PS-150 SS | 15d | 0d | Staff [20.87 h] |  | 9 |
| NJR1-MS-SL-WS-PS-170 |  | Ball Valve | 14d | 2026-03-03 | 2026-03-18 | NJR1-MS-SL-WS-PS-160 SS | 15d | 0d | Staff [20.87 h] |  | 9 |
| NJR1-MS-SL-WS-PS-180 |  | Valve box | 14d | 2026-03-03 | 2026-03-18 | NJR1-MS-SL-WS-PS-170 SS | 15d | 0d | Staff [20.87 h] |  | 9 |

| ID | WBS | Activity | Duration | Start | Finish | Predecessors | Total float | Free float | Resources | Cost | WBS-Engineering |
| --- | --- | --- | --- | --- | --- | --- | --- | --- | --- | --- | --- |
|  | 2 | **Review and Approve** |  | 2026-03-19 | 2026-04-01 |  |  |  |  |  |  |
| NJR1-MS-SL-WS-RA-150 |  | HDPE pipes | 10d | 2026-03-19 | 2026-04-01 | NJR1-MS-SL-WS-PS-150, NJR1-MS-SL-FF-RA-170 SS | 15d | 0d | 63 mm Ø HDPE pipes Water Supply [1.2]; Staff [20.87 h] | 240 | 9 |
| NJR1-MS-SL-WS-RA-160 |  | PPR pipe | 10d | 2026-03-19 | 2026-04-01 | NJR1-MS-SL-WS-PS-160, NJR1-MS-SL-WS-RA-150 SS | 15d | 0d | PPR SDR 7.4 PN 16, DIN 8077/78 pipes [0.03]; Staff [20.87 h] | 348.6 | 9 |
| NJR1-MS-SL-WS-RA-170 |  | Ball Valve | 10d | 2026-03-19 | 2026-04-01 | NJR1-MS-SL-WS-PS-170, NJR1-MS-SL-WS-RA-160 SS | 15d | 0d | Ball Valve [0.03]; Staff [20.87 h] | 76.8 | 9 |
| NJR1-MS-SL-WS-RA-180 |  | Valve box | 10d | 2026-03-19 | 2026-04-01 | NJR1-MS-SL-WS-PS-180, NJR1-MS-SL-WS-RA-170 SS | 15d | 0d | 63 mm Ø Valve with Valve Box [0.06]; 50 mm Ø Valve with Valve Box [0.36]; Staff [20.87 h] | 852 | 9 |
|  | 3 | **Sewerage and Drainage System** |  | 2026-03-19 | 2026-04-29 |  |  |  |  |  |  |
|  | 1 | **Prepare and Submit** |  | 2026-03-19 | 2026-04-06 |  |  |  |  |  |  |
| NJR1-MS-SL-SW-PS-140 |  | uPVC pipes | 14d | 2026-03-19 | 2026-04-06 | NJR1-SD-ME-PL-PS-120, NJR1-MS-SL-WS-RA-180 SS | 15d | 0d | Staff [20.87 h] |  | 9 |
| NJR1-MS-SL-SW-PS-150 |  | Roof Vent Caps | 14d | 2026-03-19 | 2026-04-06 | NJR1-MS-SL-SW-PS-140 SS, NJR1-MS-SL-WS-PS-180 | 15d | 0d | Staff [20.87 h] |  | 9 |
| NJR1-MS-SL-SW-PS-160 |  | Floor drain | 14d | 2026-03-19 | 2026-04-06 | NJR1-MS-SL-SW-PS-150 SS | 15d | 0d | Staff [20.87 h] |  | 9 |
| NJR1-MS-SL-SW-PS-170 |  | Gully Traps cover | 14d | 2026-03-19 | 2026-04-06 | NJR1-MS-SL-SW-PS-160 SS | 15d | 0d | Staff [20.87 h] |  | 9 |
| NJR1-MS-SL-SW-PS-180 |  | Inspection chamber cover | 14d | 2026-03-19 | 2026-04-06 | NJR1-MS-SL-SW-PS-170 SS | 15d | 0d | Staff [20.87 h] |  | 9 |
| NJR1-MS-SL-SW-PS-190 |  | Electric water heater | 14d | 2026-03-19 | 2026-04-06 | NJR1-MS-SL-SW-PS-180 SS | 25d | 0d | Staff [20.87 h] |  | 9 |
| NJR1-MS-SL-SW-PS-200 |  | Western water closet | 14d | 2026-03-19 | 2026-04-06 | NJR1-MS-SL-SW-PS-190 SS | 25d | 0d | Staff [20.87 h] |  | 9 |
| NJR1-MS-SL-SW-PS-210 |  | Bib tap with Perenial Hose | 14d | 2026-03-19 | 2026-04-06 | NJR1-MS-SL-SW-PS-200 SS | 25d | 0d | Staff [20.87 h] |  | 9 |
| NJR1-MS-SL-SW-PS-220 |  | Wash Basin | 14d | 2026-03-19 | 2026-04-06 | NJR1-MS-SL-SW-PS-210 SS | 25d | 0d | Staff [20.87 h] |  | 9 |
| NJR1-MS-SL-SW-PS-230 |  | Corian Marble Countertop | 14d | 2026-03-19 | 2026-04-06 | NJR1-MS-SL-SW-PS-220 SS | 25d | 0d | Staff [20.87 h] |  | 9 |
|  | 2 | **Review and Approve** |  | 2026-04-07 | 2026-04-29 |  |  |  |  |  |  |
| NJR1-MS-SL-SW-RA-131 |  | uPVC pipes | 10d | 2026-04-07 | 2026-04-18 | NJR1-MS-SL-SW-PS-140 | 15d | 0d | Install uPVC Pipe Sewer & Drainage [0.03]; Staff [20.87 h] | 2,442.6 | 9 |
| NJR1-MS-SL-SW-RA-132 |  | Roof Vent Caps | 10d | 2026-04-07 | 2026-04-18 | NJR1-MS-SL-SW-PS-150, NJR1-MS-SL-SW-RA-131 SS | 15d | 0d | Roof Vent Caps [0.06]; Staff [20.87 h] | 30 | 9 |
| NJR1-MS-SL-SW-RA-133 |  | Floor drain | 10d | 2026-04-07 | 2026-04-18 | NJR1-MS-SL-SW-PS-160, NJR1-MS-SL-SW-RA-132 SS | 15d | 0d | Floor drain (FD-1) [0.66]; Staff [20.87 h] | 264 | 9 |
| NJR1-MS-SL-SW-RA-134 |  | Gully Traps cover | 10d | 2026-04-07 | 2026-04-18 | NJR1-MS-SL-SW-PS-170, NJR1-MS-SL-SW-RA-133 SS | 15d | 0d | Gully Traps with heavy duty cover [0.24]; Staff [20.87 h] | 348 | 9 |
| NJR1-MS-SL-SW-RA-140 |  | Inspection chamber cover | 10d | 2026-04-07 | 2026-04-18 | NJR1-MS-SL-SW-PS-180, NJR1-MS-SL-SW-RA-134 SS | 15d | 0d | Inspection chamber with heavy duty cover [0.09]; Staff [20.87 h] | 405 | 9 |
| NJR1-MS-SL-SW-RA-150 |  | Electric water heater | 10d | 2026-04-19 | 2026-04-29 | NJR1-MS-SL-SW-PS-190, NJR1-MS-SL-SW-RA-140 | 15d | 0d | Plumbing fixtures [0.01]; Staff [20.87 h] | 297 | 9 |
| NJR1-MS-SL-SW-RA-160 |  | Western water closet | 10d | 2026-04-19 | 2026-04-29 | NJR1-MS-SL-SW-PS-200, NJR1-MS-SL-SW-RA-150 SS | 15d | 0d | Plumbing fixtures [0.01]; Staff [20.87 h] | 297 | 9 |
| NJR1-MS-SL-SW-RA-170 |  | Bib tap with Perenial Hose | 10d | 2026-04-19 | 2026-04-29 | NJR1-MS-SL-SW-PS-210, NJR1-MS-SL-SW-RA-160 SS | 15d | 0d | Plumbing fixtures [0.01]; Staff [20.87 h] | 297 | 9 |
| NJR1-MS-SL-SW-RA-180 |  | Wash Basin | 10d | 2026-04-19 | 2026-04-29 | NJR1-MS-SL-SW-PS-220, NJR1-MS-SL-SW-RA-170 SS | 15d | 0d | Plumbing fixtures [0.01]; Staff [20.87 h] | 297 | 9 |
| NJR1-MS-SL-SW-RA-190 |  | Corian Marble Countertop | 10d | 2026-04-19 | 2026-04-29 | NJR1-MS-SL-SW-PS-230, NJR1-MS-SL-SW-RA-180 SS | 15d | 0d | Plumbing fixtures [0.01]; Staff [20.87 h] | 297 | 9 |

| ID | WBS | Activity | Duration | Start | Finish | Predecessors | Total float | Free float | Resources | Cost | WBS-Engineering |
| --- | --- | --- | --- | --- | --- | --- | --- | --- | --- | --- | --- |
|  | 2 | **HVAC** |  | 2026-03-19 | 2026-04-29 |  |  |  |  |  |  |
|  | 1 | **Prepare and Submit** |  | 2026-03-19 | 2026-04-06 |  |  |  |  |  |  |
| NJR1-MS-SL-HV-PS-100 |  | Inline exhaust fans/make-up air fans | 14d | 2026-03-19 | 2026-04-06 | NJR1-MS-SL-SW-PS-230 SS | 25d | 0d | Staff [20.87 h] |  | 9 |
| NJR1-MS-SL-HV-PS-110 |  | Indoor ductwork | 14d | 2026-03-19 | 2026-04-06 | NJR1-MS-SL-HV-PS-100 SS | 25d | 0d | Staff [20.87 h] |  | 9 |
| NJR1-MS-SL-HV-PS-120 |  | Square exhaust diffuser | 14d | 2026-03-19 | 2026-04-06 | NJR1-MS-SL-HV-PS-110 SS | 25d | 0d | Staff [20.87 h] |  | 9 |
| NJR1-MS-SL-HV-PS-130 |  | Exhaust grills | 14d | 2026-03-19 | 2026-04-06 | NJR1-MS-SL-HV-PS-120 SS | 25d | 0d | Staff [20.87 h] |  | 9 |
| NJR1-MS-SL-HV-PS-140 |  | Condensate drain pipe | 14d | 2026-03-19 | 2026-04-06 | NJR1-MS-SL-HV-PS-130 SS | 25d | 10d | Staff [20.87 h] |  | 9 |
|  | 2 | **Review and Approve** |  | 2026-04-19 | 2026-04-29 |  |  |  |  |  |  |
| NJR1-MS-SL-HV-RA-100 |  | Inline exhaust fans/make-up air fans | 10d | 2026-04-19 | 2026-04-29 | NJR1-MS-SL-HV-PS-100, NJR1-MS-SL-SW-RA-190 SS | 15d | 0d | Inline exhaust fans/make-up air fans [0.03]; Staff [20.87 h] | 312 | 9 |
| NJR1-MS-SL-HV-RA-110 |  | Indoor ductwork | 10d | 2026-04-19 | 2026-04-29 | NJR1-MS-SL-HV-PS-110, NJR1-MS-SL-HV-RA-100 SS | 15d | 0d | Indoor ductwork [1.8]; Staff [20.87 h] | 234 | 9 |
| NJR1-MS-SL-HV-RA-120 |  | Square exhaust diffuser | 10d | 2026-04-19 | 2026-04-29 | NJR1-MS-SL-HV-PS-120, NJR1-MS-SL-HV-RA-110 SS | 15d | 0d | Square exhaust diffuser [0.3]; Staff [20.87 h] | 75 | 9 |
| NJR1-MS-SL-HV-RA-130 |  | Exhaust grills | 10d | 2026-04-19 | 2026-04-29 | NJR1-MS-SL-HV-PS-130, NJR1-MS-SL-HV-RA-120 SS | 15d | 0d | Exhaust grills [0.06]; Flexible ducts [0.24]; Staff [20.87 h] | 66 | 9 |
| NJR1-MS-SL-HV-RA-140 |  | Condensate drain pipe | 10d | 2026-04-19 | 2026-04-29 | NJR1-MS-SL-HV-PS-140, NJR1-MS-SL-HV-RA-130 SS | 15d | 2d | Condensate drain piping [1.14]; Staff [20.87 h] | 1,026 | 9 |
|  | 4 | **Electrical Works** |  | 2026-04-02 | 2026-04-29 |  |  |  |  |  |  |
|  | 1 | **External Works** |  | 2026-04-02 | 2026-04-29 |  |  |  |  |  |  |
|  | 4 | **Prepare and Submit** |  | 2026-04-02 | 2026-04-18 |  |  |  |  |  |  |
| NJR1-MS-SL-EE-PS-100 |  | Electrical manhole cover | 14d | 2026-04-02 | 2026-04-18 | NJR1-SD-EE-MI-20 | 15d | 0d | Staff [20.87 h] |  | 10 |
| NJR1-MS-SL-EE-PS-110 |  | All pump room electrical items | 14d | 2026-04-02 | 2026-04-18 | NJR1-MS-SL-EE-PS-100 SS | 15d | 0d | Staff [20.87 h] |  | 10 |
| NJR1-MS-SL-EE-PS-120 |  | Grounding system | 14d | 2026-04-02 | 2026-04-18 | NJR1-MS-SL-EE-PS-110 SS | 15d | 0d | Staff [20.87 h] |  | 10 |
|  | 5 | **Review and Approve** |  | 2026-04-19 | 2026-04-29 |  |  |  |  |  |  |
| NJR1-MS-SL-EE-RA-100 |  | Electrical manhole cover | 10d | 2026-04-19 | 2026-04-29 | NJR1-MS-SL-EE-PS-100 | 15d | 0d | Branch Telecom Manhole (MH1) with pipes [0.24]; Main Telecom Manhole (MH2) with pipes [0.03]; Telecom Handhole (HH) with pipes [0.15]; Main Electrical Manhole with pipes [0.3]; Branch Electrical Manhole with pipes [0.96]; Street Lighting Manhole with pipes [0.06]; Pipes for all telecom network at site [12.15]; Pipes for all electrical network at site [28.5]; Road crossing duct bank for street lighting cables [0.45]; Road crossing duct bank for site electrical cables [2.25]; Road crossing duct bank for site telecom cables [4.95]; Staff [20.87 h] | 17,781 | 10 |
| NJR1-MS-SL-EE-RA-110 |  | All pump room electrical items | 10d | 2026-04-19 | 2026-04-29 | NJR1-MS-SL-EE-PS-110, NJR1-MS-SL-EE-RA-100 SS | 15d | 0d | LED Lighting fixtures [0.27]; Emergency LED lighting [0.06]; Lighting switch [0.06]; Motor Circuit Protector for pumps [0.06]; Pump room power panel [0.03]; Control Panel for pumps [0.06]; Isolator switch [0.06]; Disconnect switch [0.12]; Concrete wall for KWHM for pump room [0.03]; Cable trays [0.03]; Staff [20.87 h] | 2,018.4 | 10 |
| NJR1-MS-SL-EE-RA-120 |  | Grounding system | 10d | 2026-04-19 | 2026-04-29 | NJR1-MS-SL-EE-PS-120, NJR1-MS-SL-EE-RA-110 SS | 15d | 2d | Feeder pillars [0.03]; Pump Room [0.03]; KWHM's [0.12]; Street lighting Poles [0.75]; Staff [20.87 h] | 1,020 | 10 |
|  | 2 | **Internal Works** |  | 2026-04-02 | 2026-04-29 |  |  |  |  |  |  |
|  | 1 | **Prepare and Submit** |  | 2026-04-02 | 2026-04-18 |  |  |  |  |  |  |
| NJR1-MS-SL-EE-PS-130 |  | Low Voltage Copper Cables & Wires | 14d | 2026-04-02 | 2026-04-18 | NJR1-MS-SL-EE-PS-120 SS | 15d | 0d | Staff [20.87 h] |  | 10 |
| NJR1-MS-SL-EE-PS-140 |  | Cable Trays | 14d | 2026-04-02 | 2026-04-18 | NJR1-MS-SL-EE-PS-130 SS | 15d | 0d | Staff [20.87 h] |  | 10 |
| NJR1-MS-SL-EE-PS-150 |  | Safety Disconnect Switches | 14d | 2026-04-02 | 2026-04-18 | NJR1-MS-SL-EE-PS-140 SS | 15d | 0d | Staff [20.87 h] |  | 10 |
| NJR1-MS-SL-EE-PS-160 |  | Telecom & Data System | 14d | 2026-04-02 | 2026-04-18 | NJR1-MS-SL-EE-PS-150 SS | 15d | 0d | Staff [20.87 h] |  | 10 |
| NJR1-MS-SL-EE-PS-170 |  | Grounding System | 14d | 2026-04-02 | 2026-04-18 | NJR1-MS-SL-EE-PS-160 SS | 15d | 0d | Staff [20.87 h] |  | 10 |
| NJR1-MS-SL-EE-PS-180 |  | Lightning Protection System | 14d | 2026-04-02 | 2026-04-18 | NJR1-MS-SL-EE-PS-170 SS | 15d | 0d | Staff [20.87 h] |  | 10 |
| NJR1-MS-SL-EE-PS-190 |  | Sockets + outlets + wiring devices | 14d | 2026-04-02 | 2026-04-18 | NJR1-MS-SL-EE-PS-180 SS | 15d | 0d | Staff [20.87 h] |  | 10 |

| ID | WBS | Activity | Duration | Start | Finish | Predecessors | Total float | Free float | Resources | Cost | WBS-Engineering |
| --- | --- | --- | --- | --- | --- | --- | --- | --- | --- | --- | --- |
|  | 2 | **Review and Approve** |  | 2026-04-19 | 2026-04-29 |  |  |  |  |  |  |
| NJR1-MS-SL-EE-RA-121 |  | Low Voltage Copper Cables & Wires | 10d | 2026-04-19 | 2026-04-29 | NJR1-MS-SL-EE-PS-130, NJR1-MS-SL-EE-PS-190 | 15d | 2d | Low Voltage Copper Cables & Wires [0.03]; Staff [20.87 h] | 2,672.1 | 10 |
| NJR1-MS-SL-EE-RA-122 |  | Cable Trays | 10d | 2026-04-19 | 2026-04-29 | NJR1-MS-SL-EE-PS-140 | 15d | 2d | Cable Trays [0.03]; Staff [20.87 h] | 3,840 | 10 |
| NJR1-MS-SL-EE-RA-123 |  | Safety Disconnect Switches | 10d | 2026-04-19 | 2026-04-29 | NJR1-MS-SL-EE-PS-150 | 15d | 2d | Safety Disconnect Switches [0.03]; Staff [20.87 h] | 1,560.96 | 10 |
| NJR1-MS-SL-EE-RA-130 |  | Telecom & Data System | 10d | 2026-04-19 | 2026-04-29 | NJR1-MS-SL-EE-PS-160 | 15d | 2d | Telecom & Data System [0.03]; Staff [20.87 h] | 5,952 | 10 |
| NJR1-MS-SL-EE-RA-140 |  | Grounding System | 10d | 2026-04-19 | 2026-04-29 | NJR1-MS-SL-EE-PS-170 | 15d | 2d | Grounding System [0.03]; Staff [20.87 h] | 1,584 | 10 |
| NJR1-MS-SL-EE-RA-150 |  | Lightning Protection System | 10d | 2026-04-19 | 2026-04-29 | NJR1-MS-SL-EE-PS-180 | 15d | 2d | Lightning Protection System [0.06]; Staff [20.87 h] | 1,200 | 10 |
| NJR1-MS-SL-EE-RA-160 |  | Sockets + outlets + wiring devices | 10d | 2026-04-19 | 2026-04-29 | NJR1-MS-SL-EE-PS-190 | 15d | 2d | Sockets, outlets, and wiring devices [0.03]; Staff [20.87 h] | 2,940.21 | 10 |
|  | 3 | **Method Statement** |  | 2026-03-09 | 2026-04-27 |  |  |  |  |  |  |
|  | 2 | **Prepare and Submit** |  | 2026-03-09 | 2026-04-15 |  |  |  |  |  |  |
| NJR1-EN-MT-PS-100 |  | Site Works | 12d | 2026-03-09 | 2026-03-24 | NJR1-MO-SO-150 SS | 36d | 0d | Staff [20.87 h] |  | PS |
| NJR1-EN-MT-PS-110 |  | Concrete Works | 12d | 2026-03-09 | 2026-03-24 | NJR1-MO-SO-150 SS | 36d | 0d | Staff [20.87 h] |  | PS |
| NJR1-EN-MT-PS-180 |  | Pre-engineered Structure | 12d | 2026-03-09 | 2026-03-24 | NJR1-MO-SO-150 SS | 36d | 0d | Staff [20.87 h] |  | PS |
| NJR1-EN-MT-PS-120 |  | Masonry Works | 12d | 2026-04-02 | 2026-04-15 | NJR1-SD-AR-MI-20 | 17d | 0d | Staff [20.87 h] |  | PS |
| NJR1-EN-MT-PS-130 |  | Metal Works | 12d | 2026-04-02 | 2026-04-15 | NJR1-SD-AR-MI-20 | 17d | 0d | Staff [20.87 h] |  | PS |
| NJR1-EN-MT-PS-140 |  | Thermal & Moisture Protection | 12d | 2026-04-02 | 2026-04-15 | NJR1-SD-AR-MI-20 | 17d | 0d | Staff [20.87 h] |  | PS |
| NJR1-EN-MT-PS-150 |  | Door and Windows | 12d | 2026-04-02 | 2026-04-15 | NJR1-SD-AR-MI-20 | 17d | 0d | Staff [20.87 h] |  | PS |
| NJR1-EN-MT-PS-160 |  | Finishes | 12d | 2026-04-02 | 2026-04-15 | NJR1-SD-AR-MI-20 | 17d | 0d | Staff [20.87 h] |  | PS |
| NJR1-EN-MT-PS-170 |  | Specialties | 12d | 2026-04-02 | 2026-04-15 | NJR1-SD-AR-MI-20 | 17d | 0d | Staff [20.87 h] |  | PS |
| NJR1-EN-MT-PS-190 |  | Mechanical Works | 12d | 2026-04-02 | 2026-04-15 | NJR1-SD-ME-MI-20 | 17d | 0d | Staff [20.87 h] |  | PS |
| NJR1-EN-MT-PS-200 |  | Electrical Works | 12d | 2026-04-02 | 2026-04-15 | NJR1-SD-EE-MI-20 | 17d | 0d | Staff [20.87 h] |  | PS |
|  | 3 | **Review and Approve** |  | 2026-03-25 | 2026-04-27 |  |  |  |  |  |  |
| NJR1-EN-MT-RA-100 |  | Site Works | 10d | 2026-03-25 | 2026-04-05 | NJR1-EN-MT-PS-100 | 36d | 23d | Staff [20.87 h] |  | RA |
| NJR1-EN-MT-RA-110 |  | Concrete Works | 10d | 2026-03-25 | 2026-04-05 | NJR1-EN-MT-PS-110 | 36d | 23d | Staff [20.87 h] |  | RA |
| NJR1-EN-MT-RA-180 |  | Pre-engineered Structure | 10d | 2026-03-25 | 2026-04-05 | NJR1-EN-MT-PS-180 | 36d | 23d | Staff [20.87 h] |  | RA |
| NJR1-EN-MT-RA-120 |  | Masonry Works | 10d | 2026-04-16 | 2026-04-27 | NJR1-EN-MT-PS-120 | 17d | 4d | Staff [20.87 h] |  | RA |
| NJR1-EN-MT-RA-130 |  | Metal Works | 10d | 2026-04-16 | 2026-04-27 | NJR1-EN-MT-PS-130 | 17d | 4d | Staff [20.87 h] |  | RA |
| NJR1-EN-MT-RA-140 |  | Thermal & Moisture Protection | 10d | 2026-04-16 | 2026-04-27 | NJR1-EN-MT-PS-140 | 17d | 4d | Staff [20.87 h] |  | RA |
| NJR1-EN-MT-RA-150 |  | Door and Windows | 10d | 2026-04-16 | 2026-04-27 | NJR1-EN-MT-PS-150 | 17d | 4d | Staff [20.87 h] |  | RA |
| NJR1-EN-MT-RA-160 |  | Finishes | 10d | 2026-04-16 | 2026-04-27 | NJR1-EN-MT-PS-160 | 17d | 4d | Staff [20.87 h] |  | RA |
| NJR1-EN-MT-RA-170 |  | Specialties | 10d | 2026-04-16 | 2026-04-27 | NJR1-EN-MT-PS-170 | 17d | 4d | Staff [20.87 h] |  | RA |
| NJR1-EN-MT-RA-190 |  | Mechanical Works | 10d | 2026-04-16 | 2026-04-27 | NJR1-EN-MT-PS-190 | 17d | 4d | Staff [20.87 h] |  | RA |
| NJR1-EN-MT-RA-200 |  | Electrical Works | 10d | 2026-04-16 | 2026-04-27 | NJR1-EN-MT-PS-200 | 17d | 4d | Staff [20.87 h] |  | RA |

| ID | WBS | Activity | Duration | Start | Finish | Predecessors | Total float | Free float | Resources | WBS-Procurement |
| --- | --- | --- | --- | --- | --- | --- | --- | --- | --- | --- |
|  | 4 | **PROCUREMENT** |  | 2026-03-19 | 2026-10-29 |  |  |  |  |  |
|  | 1 | **Long Lead Items** |  | 2026-03-19 | 2026-10-27 |  |  |  |  |  |
|  | 1 | **Issue Purchase Order** |  | 2026-03-19 | 2026-05-16 |  |  |  |  |  |
|  | 2 | **Concrete Work** |  | 2026-04-30 | 2026-05-16 |  |  |  |  |  |
| NJR1-PO-LL-CO-100 |  | Autoclaved aerated panel | 14d | 2026-04-30 | 2026-05-16 | NJR1-MS-LL-CO-RA-100 | 0d |  | Staff [174.47 h] | PO |
|  | 5 | **Doors and Windows** |  | 2026-04-30 | 2026-05-16 |  |  |  |  |  |
| NJR1-PO-LL-DW-100 |  | Roll up shutter door | 14d | 2026-04-30 | 2026-05-16 | NJR1-MS-LL-DW-RA-100 | 32d | 0d | Staff [174.47 h] | PO |
| NJR1-PO-LL-DW-110 |  | Steel door | 14d | 2026-04-30 | 2026-05-16 | NJR1-MS-LL-DW-RA-110 | 33d | 0d | Staff [174.47 h] | PO |
| NJR1-PO-LL-DW-120 |  | Galvanized steel door | 14d | 2026-04-30 | 2026-05-16 | NJR1-MS-LL-DW-RA-120 | 29d | 0d | Staff [174.47 h] | PO |
| NJR1-PO-LL-DW-130 |  | Solid wood door | 14d | 2026-04-30 | 2026-05-16 | NJR1-MS-LL-DW-RA-130 | 27d | 0d | Staff [174.47 h] | PO |
| NJR1-PO-LL-DW-140 |  | Aluminum framed double glazed windows | 14d | 2026-04-30 | 2026-05-16 | NJR1-MS-LL-DW-RA-140 | 34d | 0d | Staff [174.47 h] | PO |
| NJR1-PO-LL-DW-150 |  | Glass and aluminum door | 14d | 2026-04-30 | 2026-05-16 | NJR1-MS-LL-DW-RA-150 | 34d | 0d | Staff [174.47 h] | PO |
|  | 1 | **Pre-Engineered Structural Works** |  | 2026-03-19 | 2026-04-06 |  |  |  |  |  |
| NJR1-PO-LL-PR-100 |  | RBF Steel Structure | 14d | 2026-03-19 | 2026-04-06 | NJR1-MS-LL-PR-RA-100 SS | 11d | 0d | Staff [174.47 h] | PO |
| NJR1-PO-LL-PR-110 |  | Sandwich Panel | 14d | 2026-03-19 | 2026-04-06 | NJR1-MS-LL-PR-RA-110 SS | 11d | 0d | Staff [174.47 h] | PO |
| NJR1-PO-LL-PR-120 |  | Pump Shed | 14d | 2026-03-19 | 2026-04-06 | NJR1-MS-LL-PR-RA-120 SS | 11d | 0d | Staff [174.47 h] | PO |
|  | 4 | **Mechanical Works** |  | 2026-03-28 | 2026-04-09 |  |  |  |  |  |
|  | 3 | **External Works** |  | 2026-03-28 | 2026-04-09 |  |  |  |  |  |
|  | 2 | **Fire Fighting** |  | 2026-03-28 | 2026-04-09 |  |  |  |  |  |
| NJR1-PO-LL-FF-100 |  | Fire Pump system | 12d | 2026-03-28 | 2026-04-09 | NJR1-MS-LL-FF-RA-100 SS | 21d | 0d | Staff [174.47 h] | PO |
|  | 1 | **Water Supply System** |  | 2026-03-28 | 2026-04-09 |  |  |  |  |  |
| NJR1-PO-LL-WS-100 |  | Facility water storage tanks | 12d | 2026-03-28 | 2026-04-09 | NJR1-MS-LL-WS-RA-100 SS | 21d | 0d | Staff [174.47 h] |  |
|  | 3 | **Electrical Works** |  | 2026-04-02 | 2026-04-16 |  |  |  |  |  |
|  | 3 | **Exterior Work** |  | 2026-04-04 | 2026-04-16 |  |  |  |  |  |
| NJR1-PO-LL-EE-100 |  | Street lighting network | 12d | 2026-04-04 | 2026-04-16 | NJR1-MS-LL-EE-RA-100 | 23d | 0d | Staff [174.47 h] | PO |

| ID | WBS | Activity | Duration | Start | Finish | Predecessors | Total float | Free float | Resources | WBS-Procurement |
| --- | --- | --- | --- | --- | --- | --- | --- | --- | --- | --- |
|  | 1 | **Internal Works** |  | 2026-04-02 | 2026-04-15 |  |  |  |  |  |
| NJR1-PO-LL-EE-110 |  | Lighting, Power Panelboards, and Control | 12d | 2026-04-02 | 2026-04-15 | NJR1-MS-LL-EE-RA-110 | 26d | 0d | Staff [174.47 h] | PO |
| NJR1-PO-LL-EE-120 |  | Lighting Fixtures + Switches | 12d | 2026-04-02 | 2026-04-15 | NJR1-MS-LL-EE-RA-120 | 26d | 0d | Staff [174.47 h] | PO |
| NJR1-PO-LL-EE-130 |  | Fire Alarm System | 12d | 2026-04-02 | 2026-04-15 | NJR1-MS-LL-EE-RA-130 | 30d | 0d | Staff [174.47 h] | PO |
| NJR1-PO-LL-EE-140 |  | Solar Power Plant | 12d | 2026-04-02 | 2026-04-15 | NJR1-MS-LL-EE-RA-140 | 12d | 0d | Staff [174.47 h] | PO |
| NJR1-PO-LL-EE-150 |  | Skylight Fixtures | 12d | 2026-04-02 | 2026-04-15 | NJR1-MS-LL-EE-RA-150 | 12d | 0d | Staff [174.47 h] | PO |
|  | 2 | **Manufacture / Fabricate** |  | 2026-04-07 | 2026-10-24 |  |  |  |  |  |
|  | 2 | **Concrete Work** |  | 2026-05-17 | 2026-08-20 |  |  |  |  |  |
| NJR1-MF-LL-CO-100 |  | Autoclaved aerated panel | 80d | 2026-05-17 | 2026-08-20 | NJR1-PO-LL-CO-100 | 0d |  | Staff [623.11 h] | MF |
|  | 5 | **Doors and Windows** |  | 2026-05-17 | 2026-09-26 |  |  |  |  |  |
| NJR1-MF-LL-DW-100 |  | Roll up shutter door | 110d | 2026-05-17 | 2026-09-26 | NJR1-PO-LL-DW-100 | 32d | 0d | Staff [623.11 h] | MF |
| NJR1-MF-LL-DW-110 |  | Steel door | 100d | 2026-05-17 | 2026-09-13 | NJR1-PO-LL-DW-110 | 33d | 0d | Staff [623.11 h] | MF |
| NJR1-MF-LL-DW-120 |  | Galvanized steel door | 100d | 2026-05-17 | 2026-09-13 | NJR1-PO-LL-DW-120 | 29d | 0d | Staff [623.11 h] | MF |
| NJR1-MF-LL-DW-130 |  | Solid wood door | 110d | 2026-05-17 | 2026-09-26 | NJR1-PO-LL-DW-130 | 27d | 0d | Staff [623.11 h] | MF |
| NJR1-MF-LL-DW-140 |  | Aluminum framed double glazed windows | 110d | 2026-05-17 | 2026-09-26 | NJR1-PO-LL-DW-140 | 34d | 0d | Staff [623.11 h] | MF |
| NJR1-MF-LL-DW-150 |  | Glass and aluminum door | 110d | 2026-05-17 | 2026-09-26 | NJR1-PO-LL-DW-150 | 34d | 0d | Staff [623.11 h] | MF |
|  | 1 | **Pre-Engineered Structural Works** |  | 2026-04-07 | 2026-06-07 |  |  |  |  |  |
| NJR1-MF-LL-PR-100 |  | RBF Steel Structure | 50d | 2026-04-07 | 2026-06-07 | NJR1-PO-LL-PR-100 | 11d | 0d | Staff [623.11 h] | MF |
| NJR1-MF-LL-PR-110 |  | Sandwich Panel | 50d | 2026-04-07 | 2026-06-07 | NJR1-PO-LL-PR-110, NJR1-MF-LL-PR-100 SS | 11d | 0d | Staff [623.11 h] | MF |
| NJR1-MF-LL-PR-120 |  | Pump Shed | 50d | 2026-04-07 | 2026-06-07 | NJR1-PO-LL-PR-120, NJR1-MF-LL-PR-110 SS | 11d | 0d | Staff [623.11 h] | MF |
|  | 4 | **Mechanical Works** |  | 2026-04-11 | 2026-06-28 |  |  |  |  |  |
|  | 3 | **External Works** |  | 2026-04-11 | 2026-06-28 |  |  |  |  |  |
|  | 2 | **Fire Fighting** |  | 2026-04-11 | 2026-06-28 |  |  |  |  |  |
| NJR1-MF-LL-FF-100 |  | Fire Pump system | 65d | 2026-04-11 | 2026-06-28 | NJR1-PO-LL-FF-100 | 21d | 0d | Staff [623.11 h] | MF |

| ID | WBS | Activity | Duration | Start | Finish | Predecessors | Total float | Free float | Resources | Cost | WBS-Procurement |
| --- | --- | --- | --- | --- | --- | --- | --- | --- | --- | --- | --- |
|  | 4 | **Water Supply System** |  | 2026-04-11 | 2026-06-28 |  |  |  |  |  |  |
| NJR1-MF-LL-WS-100 |  | Facility water storage tanks | 65d | 2026-04-11 | 2026-06-28 | NJR1-PO-LL-WS-100 | 21d | 0d | Staff [623.11 h] |  |  |
|  | 3 | **Electrical Works** |  | 2026-04-16 | 2026-10-24 |  |  |  |  |  |  |
|  | 3 | **Exterior Work** |  | 2026-04-18 | 2026-08-03 |  |  |  |  |  |  |
| NJR1-MF-LL-EE-100 |  | Street lighting network | 90d | 2026-04-18 | 2026-08-03 | NJR1-PO-LL-EE-100 | 23d | 0d | Staff [623.11 h] |  | MF |
|  | 1 | **Internal Works** |  | 2026-04-16 | 2026-10-24 |  |  |  |  |  |  |
| NJR1-MF-LL-EE-110 |  | Lighting, Power Panelboards, and Control | 130d | 2026-04-16 | 2026-09-17 | NJR1-PO-LL-EE-110 | 26d | 0d | Staff [623.11 h] |  | MF |
| NJR1-MF-LL-EE-120 |  | Lighting Fixtures + Switches | 140d | 2026-04-16 | 2026-09-30 | NJR1-PO-LL-EE-120 | 26d | 0d | Staff [623.11 h] |  | MF |
| NJR1-MF-LL-EE-130 |  | Fire Alarm System | 160d | 2026-04-16 | 2026-10-24 | NJR1-PO-LL-EE-130 | 30d | 0d | Staff [623.11 h] |  | MF |
| NJR1-MF-LL-EE-140 |  | Solar Power Plant | 100d | 2026-04-16 | 2026-08-13 | NJR1-PO-LL-EE-140 | 12d | 0d | Staff [623.11 h] |  | MF |
| NJR1-MF-LL-EE-150 |  | Skylight Fixtures | 100d | 2026-04-16 | 2026-08-13 | NJR1-PO-LL-EE-150 | 12d | 0d | Staff [623.11 h] |  | MF |
|  | 3 | **Delivery to Site + Staging** |  | 2026-06-08 | 2026-10-27 |  |  |  |  |  |  |
|  | 2 | **Concrete Work** |  | 2026-08-22 | 2026-08-24 |  |  |  |  |  |  |
| NJR1-DE-LL-CO-100 |  | Autoclaved aerated panel | 3d | 2026-08-22 | 2026-08-24 | NJR1-MF-LL-CO-100 | 11d |  | Autoclaved aerated panel [14.85]; Staff [436.18 h] | 4,455 | DE |
|  | 5 | **Doors and Windows** |  | 2026-09-14 | 2026-09-29 |  |  |  |  |  |  |
| NJR1-DE-LL-DW-110 |  | Steel door | 3d | 2026-09-14 | 2026-09-16 | NJR1-MF-LL-DW-110 | 33d | 17d | (D5) 1000*2200mm single leaf steel door [3.24]; Staff [436.18 h] | 9,720 | DE |
| NJR1-DE-LL-DW-120 |  | Galvanized steel door | 3d | 2026-09-14 | 2026-09-16 | NJR1-MF-LL-DW-120 | 29d | 17d | (D2) 1000*2200 mm single leaf galvanized steel door [0.54]; (D1) single leaf galvanized steel door [0.27]; Staff [436.18 h] | 2,430 | DE |
| NJR1-DE-LL-DW-100 |  | Roll up shutter door | 3d | 2026-09-27 | 2026-09-29 | NJR1-MF-LL-DW-100 | 32d | 0d | (D6) 3000*3500mm galvanized steel heavy duty industrial isolated type roll up shutter door [3.24]; Staff [436.18 h] | 64,800 | DE |
| NJR1-DE-LL-DW-130 |  | Solid wood door | 3d | 2026-09-27 | 2026-09-29 | NJR1-MF-LL-DW-130 | 27d | 7d | (D3) 800*2200 mm single leaf semi solid wood door [0.54]; Staff [436.18 h] | 1,890 | DE |
| NJR1-DE-LL-DW-140 |  | Aluminum framed double glazed windows | 3d | 2026-09-27 | 2026-09-29 | NJR1-MF-LL-DW-140 | 34d | 0d | Window W1 (size 1000*1300) [3.24]; Window W2 (size 1600*1200) [0.54]; Staff [436.18 h] | 5,184 | DE |
| NJR1-DE-LL-DW-150 |  | Glass and aluminum door | 3d | 2026-09-27 | 2026-09-29 | NJR1-MF-LL-DW-150, NJR1-DE-LL-DW-140 SS | 34d | 18d | Outside Mosque - Install Door D1 [0.27]; Outside Mosque - Install Window W1 [0.54]; Staff [436.18 h] | 5,427 | DE |
|  | 1 | **Pre-Engineered Structural Works** |  | 2026-06-08 | 2026-06-10 |  |  |  |  |  |  |
| NJR1-DE-LL-PR-100 |  | RBF Steel Structure | 3d | 2026-06-08 | 2026-06-10 | NJR1-MF-LL-PR-100 | 11d | 0d | PEB for one block with an area 1990 square meter [0.18]; Staff [436.18 h] | 306,000 | DE |
| NJR1-DE-LL-PR-110 |  | Sandwich Panel | 3d | 2026-06-08 | 2026-06-10 | NJR1-MF-LL-PR-110, NJR1-DE-LL-PR-100 SS | 11d | 0d | PEB for one block with an area 1990 square meter [0.09]; Staff [436.18 h] | 153,000 | DE |
| NJR1-DE-LL-PR-120 |  | Pump Shed | 3d | 2026-06-08 | 2026-06-10 | NJR1-MF-LL-PR-120, NJR1-DE-LL-PR-110 SS | 11d | 0d | Pump Shed [0.27]; Staff [436.18 h] | 9,450 | DE |

| ID | WBS | Activity | Duration | Start | Finish | Predecessors | Total float | Free float | Resources | Cost | WBS-Procurement |
| --- | --- | --- | --- | --- | --- | --- | --- | --- | --- | --- | --- |
|  | 4 | **Mechanical Works** |  | 2026-06-29 | 2026-07-01 |  |  |  |  |  |  |
|  | 3 | **External Works** |  | 2026-06-29 | 2026-07-01 |  |  |  |  |  |  |
|  | 2 | **Fire Fighting** |  | 2026-06-29 | 2026-07-01 |  |  |  |  |  |  |
| NJR1-DE-LL-FF-100 |  | Fire Pump system | 3d | 2026-06-29 | 2026-07-01 | NJR1-MF-LL-FF-100, NJR1-DE-LL-WS-100 SS | 21d | 0d | Fire Pump system [0.27]; Staff [436.18 h] | 113,400 | DE |
|  | 5 | **Water Supply System** |  | 2026-06-29 | 2026-07-01 |  |  |  |  |  |  |
| NJR1-DE-LL-WS-100 |  | Facility water storage tanks | 3d | 2026-06-29 | 2026-07-01 | NJR1-MF-LL-WS-100 | 21d | 0d | Hot Press GRP Sectional Panel Water Tanks (10x8x4m) [0.27]; Staff [436.18 h] | 135,000 |  |
|  | 3 | **Electrical Works** |  | 2026-08-04 | 2026-10-27 |  |  |  |  |  |  |
|  | 3 | **Exterior Work** |  | 2026-08-04 | 2026-08-06 |  |  |  |  |  |  |
| NJR1-DE-LL-EE-100 |  | Street lighting network | 3d | 2026-08-04 | 2026-08-06 | NJR1-MF-LL-EE-100 | 23d | 0d | Street lighting feeder pillar [0.27]; Street lighting poles with LED lighting fixtures [6.75]; Concrete wall for KWHM for street lighting feeder pillar [0.27]; 4C x 50mm2 +1C x 25 mm2 [5.4]; 4C x 16mm2 +1C x 10mm2 [110.7]; Staff [436.18 h] | 57,132 | DE |
|  | 1 | **Internal Works** |  | 2026-08-15 | 2026-10-27 |  |  |  |  |  |  |
| NJR1-DE-LL-EE-140 |  | Solar Power Plant | 3d | 2026-08-15 | 2026-08-17 | NJR1-MF-LL-EE-140 | 12d | 0d | Solar Power Plant [3.24]; Staff [436.18 h] | 119,232 | DE |
| NJR1-DE-LL-EE-150 |  | Skylight Fixtures | 3d | 2026-08-15 | 2026-08-17 | NJR1-MF-LL-EE-150 | 12d | 0d | Skylight Fixtures [6.48]; Staff [436.18 h] | 17,107.2 | DE |
| NJR1-DE-LL-EE-110 |  | Lighting, Power Panelboards, and Control | 3d | 2026-09-19 | 2026-09-21 | NJR1-MF-LL-EE-110 | 30d | 0d | Lighting, Power Panelboards, and Control [0.27]; Staff [436.18 h] | 73,872 | DE |
| NJR1-DE-LL-EE-120 |  | Lighting Fixtures + Switches | 3d | 2026-10-01 | 2026-10-04 | NJR1-MF-LL-EE-120, NJR1-DE-LL-EE-110 | 26d | 0d | Lighting Fixtures and Their Switches [0.27]; Staff [436.18 h] | 51,472.8 | DE |
| NJR1-DE-LL-EE-130 |  | Fire Alarm System | 3d | 2026-10-25 | 2026-10-27 | NJR1-MF-LL-EE-130, NJR1-DE-LL-EE-120 | 30d | 0d | Fire Alarm System [0.27]; Staff [436.18 h] | 28,695.6 | DE |
|  | 2 | **Short Lead Items** |  | 2026-04-02 | 2026-10-29 |  |  |  |  |  |  |
|  | 1 | **Issue Purchase Order** |  | 2026-04-02 | 2026-10-26 |  |  |  |  |  |  |
|  | 5 | **Earthworks** |  | 2026-05-03 | 2026-10-26 |  |  |  |  |  |  |
| NJR1-PO-SL-EA-100 |  | Backfill Material | 14d | 2026-05-03 | 2026-05-18 | NJR1-MS-SL-EA-RA-100, NJR1-MI-CM-140 | 13d | 0d | Staff [14.95 h] |  | PO |
| NJR1-PO-SL-EA-140 |  | Subgrade material | 20d | 2026-06-08 | 2026-06-30 | NJR1-MS-SL-EA-RA-140, NJR1-MF-LL-PR-100, NJR1-PO-SL-PR-120 | 14d | 0d | Staff [14.95 h] |  | PO |
| NJR1-PO-SL-EA-130 |  | Base course layer | 20d | 2026-07-01 | 2026-07-23 | NJR1-MS-SL-EA-RA-130, NJR1-PO-SL-EA-140 | 14d | 0d | Staff [14.95 h] |  | PO |
| NJR1-PO-SL-EA-120 |  | Bituminous base course asphalt layer | 20d | 2026-07-25 | 2026-08-16 | NJR1-MS-SL-EA-RA-120, NJR1-PO-SL-EA-130 | 14d | 0d | Staff [14.95 h] |  | PO |
| NJR1-PO-SL-EA-160 |  | Concrete parking bumper | 20d | 2026-07-25 | 2026-08-16 | NJR1-MS-SL-EA-RA-160, NJR1-PO-SL-EA-170 SS | 23d | 0d | Staff [14.95 h] |  | PO |
| NJR1-PO-SL-EA-170 |  | Interlocking block pavers | 20d | 2026-07-25 | 2026-08-16 | NJR1-MS-SL-EA-RA-170, NJR1-PO-SL-EA-180 SS | 23d | 0d | Staff [14.95 h] |  | PO |
| NJR1-PO-SL-EA-180 |  | Precast concrete curbstone | 20d | 2026-07-25 | 2026-08-16 | NJR1-MS-SL-EA-RA-180, NJR1-PO-SL-EA-130 | 23d | 0d | Staff [14.95 h] |  | PO |
| NJR1-PO-SL-EA-110 |  | Bituminous wearing course asphalt layer | 20d | 2026-08-17 | 2026-09-08 | NJR1-MS-SL-EA-RA-110, NJR1-PO-SL-EA-120 | 14d | 0d | Staff [14.95 h] |  | PO |
| NJR1-PO-SL-EA-150 |  | Road Paints | 20d | 2026-09-09 | 2026-10-03 | NJR1-MS-SL-EA-RA-150, NJR1-PO-SL-EA-110, NJR1-PO-SL-EA-160 | 14d | 0d | Staff [14.95 h] |  | PO |
| NJR1-PO-SL-EA-190 |  | Traffic signs | 20d | 2026-10-04 | 2026-10-26 | NJR1-MS-SL-EA-RA-190, NJR1-PO-SL-EA-150 | 14d | 0d | Staff [14.95 h] |  | PO |

| ID | WBS | Activity | Duration | Start | Finish | Predecessors | Total float | Free float | Resources | WBS-Procurement |
| --- | --- | --- | --- | --- | --- | --- | --- | --- | --- | --- |
|  | 1 | **Concrete** |  | 2026-04-05 | 2026-04-21 |  |  |  |  |  |
| NJR1-PO-SL-CO-100 |  | Concrete Mix Design | 14d | 2026-04-05 | 2026-04-21 | NJR1-MS-SL-CO-RA-100 | 23.5d | 0d | Staff [14.95 h] | PO |
| NJR1-PO-SL-CO-110 |  | Reinforcing Steel Bars | 14d | 2026-04-05 | 2026-04-21 | NJR1-MS-SL-CO-RA-110 | 23.5d | 0d | Staff [14.95 h] | PO |
|  | 7 | **Masonry Works** |  | 2026-08-22 | 2026-09-06 |  |  |  |  |  |
| NJR1-PO-SL-MA-100 |  | Concrete Masonry Unit | 14d | 2026-08-22 | 2026-09-06 | NJR1-MF-LL-CO-100 | 0d |  | Staff [14.95 h] | PO |
|  | 8 | **Metal Works** |  | 2026-06-06 | 2026-10-14 |  |  |  |  |  |
| NJR1-PO-SL-MW-100 |  | Steel ladder with safety cage | 14d | 2026-06-06 | 2026-06-21 | NJR1-MS-SL-MV-RA-100, NJR1-PO-SL-SP-120 | 35d | 0d | Staff [14.95 h] | PO |
| NJR1-PO-SL-MW-120 |  | Galvanised steel gratings | 14d | 2026-08-22 | 2026-09-06 | NJR1-MS-SL-MV-RA-120, NJR1-PO-SL-TH-130 SS | 16d | 0d | Staff [14.95 h] | PO |
| NJR1-PO-SL-MW-130 |  | Overflow galvanized steel roof scupper | 14d | 2026-09-07 | 2026-09-22 | NJR1-MS-SL-MV-RA-130, NJR1-PO-SL-TH-160 | 42d | 0d | Staff [14.95 h] | PO |
| NJR1-PO-SL-MW-110 |  | Steel bollards | 30d | 2026-09-09 | 2026-10-14 | NJR1-MS-SL-MV-RA-110, NJR1-PO-SL-EA-110 | 24d | 0d | Staff [14.95 h] | PO |
|  | 9 | **Thermal and Moisture Protection** |  | 2026-04-02 | 2026-09-06 |  |  |  |  |  |
| NJR1-PO-SL-TH-120 |  | Anti termite control | 14d | 2026-04-02 | 2026-04-18 | NJR1-MS-SL-TH-RA-120 | 22d | 0d | Staff [14.95 h] | PO |
| NJR1-PO-SL-TH-100 |  | Bitumen waterproofing paint | 14d | 2026-04-05 | 2026-04-21 | NJR1-MS-SL-TH-RA-100 | 34.5d | 0d | Staff [14.95 h] | PO |
| NJR1-PO-SL-TH-110 |  | Polyethylene sheet | 14d | 2026-04-05 | 2026-04-21 | NJR1-MS-SL-TH-RA-110 | 23.5d | 0d | Staff [14.95 h] | PO |
| NJR1-PO-SL-TH-130 |  | Liquid applied waterproofing membrane | 14d | 2026-08-22 | 2026-09-06 | NJR1-MF-LL-CO-100 | 11d | 0d | Staff [14.95 h] | PO |
| NJR1-PO-SL-TH-140 |  | Geotextile sheet | 14d | 2026-08-22 | 2026-09-06 | NJR1-MS-SL-TH-RA-140, NJR1-PO-SL-TH-130 SS | 11d | 0d | Staff [14.95 h] | PO |
| NJR1-PO-SL-TH-150 |  | Polyurethane waterpoof coating | 14d | 2026-08-22 | 2026-09-06 | NJR1-MS-SL-TH-RA-150, NJR1-PO-SL-TH-140 SS | 11d | 0d | Staff [14.95 h] | PO |
| NJR1-PO-SL-TH-160 |  | Roofdeck waterproofing system | 14d | 2026-08-22 | 2026-09-06 | NJR1-MS-SL-TH-RA-160, NJR1-PO-SL-TH-150 SS | 11d | 0d | Staff [14.95 h] | PO |
| NJR1-PO-SL-TH-170 |  | Aluminium cladding | 14d | 2026-08-22 | 2026-09-06 | NJR1-MS-SL-TH-RA-170, NJR1-PO-SL-TH-160 SS | 15d | 0d | Staff [14.95 h] | PO |
|  | 2 | **Finishes** |  | 2026-04-30 | 2026-10-10 |  |  |  |  |  |
| NJR1-PO-SL-FW-100 |  | Ceramic tiles | 14d | 2026-04-30 | 2026-05-16 | NJR1-MS-SL-FW-RA-100 | 35d | 0d | Staff [14.95 h] | PO |
| NJR1-PO-SL-FW-110 |  | Carpet rolls | 14d | 2026-04-30 | 2026-05-16 | NJR1-MS-SL-FW-RA-110, NJR1-PO-SL-FW-100 SS | 35d | 0d | Staff [14.95 h] | PO |
| NJR1-PO-SL-FW-130 |  | Granite tiles | 14d | 2026-04-30 | 2026-05-16 | NJR1-MS-SL-FW-RA-130, NJR1-PO-SL-FW-110 SS | 35d | 0d | Staff [14.95 h] | PO |
| NJR1-PO-SL-FW-140 |  | Marble strip | 14d | 2026-04-30 | 2026-05-16 | NJR1-MS-SL-FW-RA-140, NJR1-PO-SL-FW-130 SS | 35d | 0d | Staff [14.95 h] | PO |
| NJR1-PO-SL-FW-150 |  | Wood skirt | 14d | 2026-04-30 | 2026-05-16 | NJR1-MS-SL-FW-RA-150, NJR1-PO-SL-FW-140 SS | 35d | 0d | Staff [14.95 h] | PO |
| NJR1-PO-SL-FW-160 |  | Acrylic paint | 14d | 2026-04-30 | 2026-05-16 | NJR1-MS-SL-FW-RA-160, NJR1-PO-SL-FW-150 SS | 35d | 0d | Staff [14.95 h] | PO |
| NJR1-PO-SL-FW-170 |  | Marble chips | 14d | 2026-04-30 | 2026-05-16 | NJR1-MS-SL-FW-RA-170, NJR1-PO-SL-FW-160 SS | 35d | 0d | Staff [14.95 h] | PO |
| NJR1-PO-SL-FW-180 |  | GRC panels | 14d | 2026-04-30 | 2026-05-16 | NJR1-MS-SL-FW-RA-180, NJR1-PO-SL-FW-170 SS | 35d | 0d | Staff [14.95 h] | PO |
| NJR1-PO-SL-FW-190 |  | Phenolic partitions | 14d | 2026-04-30 | 2026-05-16 | NJR1-MS-SL-FW-RA-190, NJR1-PO-SL-FW-180 SS | 35d | 0d | Staff [14.95 h] | PO |
| NJR1-PO-SL-FW-200 |  | Moisture resistant gypsum board | 14d | 2026-04-30 | 2026-05-16 | NJR1-MS-SL-FW-RA-200, NJR1-PO-SL-FW-190 SS | 35d | 0d | Staff [14.95 h] | PO |
| NJR1-PO-SL-FW-120 |  | Epoxy paint | 14d | 2026-09-24 | 2026-10-10 | NJR1-MS-SL-FW-RA-120, NJR1-DE-LL-PR-110, NJR1-PO-SL-SW-160 | 28d | 0d | Staff [14.95 h] | PO |

| ID | WBS | Activity | Duration | Start | Finish | Predecessors | Total float | Free float | Resources | WBS-Procurement |
| --- | --- | --- | --- | --- | --- | --- | --- | --- | --- | --- |
|  | 10 | **Specialties** |  | 2026-04-30 | 2026-06-04 |  |  |  |  |  |
| NJR1-PO-SL-SP-100 |  | Toilet Fittings | 14d | 2026-04-30 | 2026-05-16 | NJR1-MS-SL-SP-RA-100, NJR1-PO-SL-FW-200 SS | 35d | 0d | Staff [14.95 h] | PO |
| NJR1-PO-SL-SP-110 |  | Signage | 14d | 2026-05-17 | 2026-06-04 | NJR1-MS-SL-SP-RA-110, NJR1-PO-SL-FW-170, NJR1-PO-SL-SP-100 | 35d | 0d | Staff [14.95 h] | PO |
| NJR1-PO-SL-SP-120 |  | MODON Logo | 14d | 2026-05-17 | 2026-06-04 | NJR1-MS-SL-SP-RA-120, NJR1-PO-SL-SP-110 SS | 35d | 0d | Staff [14.95 h] | PO |
|  | 11 | **Pre Engineered Structure** |  | 2026-04-30 | 2026-06-23 |  |  |  |  |  |
| NJR1-PO-SL-PR-110 |  | Galvanized steel fence | 14d | 2026-04-30 | 2026-05-16 | NJR1-MS-SL-PR-RA-110 | 16d | 0d | Staff [14.95 h] | PO |
| NJR1-PO-SL-PR-120 |  | Steel fence gate | 14d | 2026-05-17 | 2026-06-04 | NJR1-MS-SL-PR-RA-120, NJR1-PO-SL-PR-110 | 16d | 2d | Staff [14.95 h] | PO |
| NJR1-PO-SL-PR-100 |  | Intumescent paint | 14d | 2026-06-08 | 2026-06-23 | NJR1-MS-SL-PR-RA-100, NJR1-MF-LL-PR-100, NJR1-PO-SL-SP-120 | 51d | 0d | Staff [14.95 h] | PO |
|  | 3 | **Mechanical** |  | 2026-04-02 | 2026-09-22 |  |  |  |  |  |
|  | 5 | **External Works** |  | 2026-04-02 | 2026-06-25 |  |  |  |  |  |
|  | 4 | **Fire Fighting** |  | 2026-04-02 | 2026-05-04 |  |  |  |  |  |
| NJR1-PO-SL-FF-100 |  | HDPE pipes | 14d | 2026-04-02 | 2026-04-18 | NJR1-MS-SL-FF-RA-100 | 19d | 0d | Staff [14.95 h] | PO |
| NJR1-PO-SL-FF-110 |  | Directly Buried Gate valve | 14d | 2026-04-19 | 2026-05-04 | NJR1-MS-SL-FF-RA-110, NJR1-PO-SL-FF-100 | 19d | 0d | Staff [14.95 h] | PO |
|  | 1 | **Water supply system** |  | 2026-04-02 | 2026-06-09 |  |  |  |  |  |
| NJR1-PO-SL-WS-100 |  | HDPE pipes | 14d | 2026-04-02 | 2026-04-18 | NJR1-MS-SL-WS-RA-100, NJR1-PO-SL-FF-100 SS | 19d | 0d | Staff [14.95 h] | PO |
| NJR1-PO-SL-WS-110 |  | Directly Buried Gate valve | 14d | 2026-04-19 | 2026-05-04 | NJR1-MS-SL-WS-RA-110, NJR1-PO-SL-WS-100, NJR1-PO-SL-FF-110 SS | 19d | 0d | Staff [14.95 h] | PO |
| NJR1-PO-SL-WS-120 |  | Air Valve | 14d | 2026-05-05 | 2026-05-20 | NJR1-MS-SL-WS-RA-120, NJR1-PO-SL-WS-110 | 19d | 0d | Staff [14.95 h] | PO |
| NJR1-PO-SL-WS-130 |  | Washout Valve | 14d | 2026-05-21 | 2026-06-09 | NJR1-MS-SL-WS-RA-130, NJR1-PO-SL-WS-120 | 19d | 0d | Staff [14.95 h] | PO |
| NJR1-PO-SL-WS-140 |  | Valve Chamber Cover | 14d | 2026-05-21 | 2026-06-09 | NJR1-MS-SL-WS-RA-140, NJR1-PO-SL-WS-130 SS | 19d | 0d | Staff [14.95 h] | PO |
|  | 3 | **Sewerage and Drainage System** |  | 2026-04-02 | 2026-06-25 |  |  |  |  |  |
| NJR1-PO-SL-SW-110 |  | UPVC pipes | 14d | 2026-04-02 | 2026-04-18 | NJR1-MS-SL-SW-RA-110 | 15d | 0d | Staff [14.95 h] | PO |
| NJR1-PO-SL-SW-120 |  | Sewer manholes cover | 14d | 2026-04-02 | 2026-04-18 | NJR1-MS-SL-SW-RA-120 | 5d | 0d | Staff [14.95 h] | PO |
| NJR1-PO-SL-SW-130 |  | Gully traps | 14d | 2026-04-19 | 2026-05-04 | NJR1-MS-SL-SW-RA-130, NJR1-PO-SL-SW-120 | 15d | 0d | Staff [14.95 h] | PO |
| NJR1-PO-SL-SW-100 |  | Sewage tank Cover | 14d | 2026-06-10 | 2026-06-25 | NJR1-MS-SL-SW-RA-100, NJR1-PO-SL-WS-140 | 19d | 0d | Staff [14.95 h] | PO |

| ID | WBS | Activity | Duration | Start | Finish | Predecessors | Total float | Free float | Resources | WBS-Procurement |
| --- | --- | --- | --- | --- | --- | --- | --- | --- | --- | --- |
|  | 1 | **Internal Works** |  | 2026-04-02 | 2026-09-22 |  |  |  |  |  |
|  | 4 | **Fire Fighting** |  | 2026-04-02 | 2026-05-04 |  |  |  |  |  |
| NJR1-PO-SL-FF-120 |  | HDPE pipes | 14d | 2026-04-02 | 2026-04-18 | NJR1-MS-SL-FF-RA-111 | 55d | 0d | Staff [14.95 h] | PO |
| NJR1-PO-SL-FF-130 |  | Seamless black steel pipes & fittings | 14d | 2026-04-02 | 2026-04-18 | NJR1-MS-SL-FF-RA-112 SS, NJR1-PO-SL-FF-120 SS | 55d | 0d | Staff [14.95 h] | PO |
| NJR1-PO-SL-FF-140 |  | Water sprinklers | 14d | 2026-04-02 | 2026-04-18 | NJR1-MS-SL-FF-RA-120, NJR1-PO-SL-FF-130 SS | 55d | 0d | Staff [14.95 h] | PO |
| NJR1-PO-SL-FF-150 |  | Fire hose cabinet | 14d | 2026-04-19 | 2026-05-04 | NJR1-MS-SL-FF-RA-130, NJR1-PO-SL-FF-140 | 55d | 0d | Staff [14.95 h] | PO |
| NJR1-PO-SL-FF-160 |  | OS&Y Gate valve | 14d | 2026-04-19 | 2026-05-04 | NJR1-MS-SL-FF-RA-140, NJR1-PO-SL-FF-150 SS | 55d | 0d | Staff [14.95 h] | PO |
| NJR1-PO-SL-FF-170 |  | Fire Alarm Check Valve (ACV) | 14d | 2026-04-19 | 2026-05-04 | NJR1-MS-SL-FF-RA-150, NJR1-PO-SL-FF-160 SS | 55d | 0d | Staff [14.95 h] | PO |
| NJR1-PO-SL-FF-180 |  | Fire Department Connection (FDC) | 14d | 2026-04-19 | 2026-05-04 | NJR1-MS-SL-FF-RA-160, NJR1-PO-SL-FF-170 SS | 55d | 0d | Staff [14.95 h] | PO |
| NJR1-PO-SL-FF-190 |  | Automatic air release valve | 14d | 2026-04-19 | 2026-05-04 | NJR1-MS-SL-FF-RA-170, NJR1-PO-SL-FF-180 SS | 55d | 0d | Staff [14.95 h] | PO |
|  | 1 | **Water supply system** |  | 2026-04-19 | 2026-05-20 |  |  |  |  |  |
| NJR1-PO-SL-WS-150 |  | HDPE pipes | 14d | 2026-04-19 | 2026-05-04 | NJR1-MS-SL-WS-RA-150, NJR1-PO-SL-FF-190 SS | 55d | 0d | Staff [14.95 h] | PO |
| NJR1-PO-SL-WS-160 |  | PPR pipe | 14d | 2026-04-19 | 2026-05-04 | NJR1-MS-SL-WS-RA-160, NJR1-PO-SL-WS-150 SS | 56d | 0d | Staff [14.95 h] | PO |
| NJR1-PO-SL-WS-170 |  | Ball Valve | 14d | 2026-05-05 | 2026-05-20 | NJR1-PO-SL-WS-160, NJR1-MS-SL-WS-RA-170 | 56d | 0d | Staff [14.95 h] | PO |
| NJR1-PO-SL-WS-180 |  | Valve box | 14d | 2026-05-05 | 2026-05-20 | NJR1-PO-SL-WS-170 SS, NJR1-MS-SL-WS-RA-180 | 56d | 0d | Staff [14.95 h] | PO |
|  | 3 | **Sewerage and Drainage System** |  | 2026-04-19 | 2026-09-22 |  |  |  |  |  |
| NJR1-PO-SL-SW-140 |  | uPVC pipes | 14d | 2026-04-19 | 2026-05-04 | NJR1-MS-SL-SW-RA-131 | 58d | 3d | Staff [14.95 h] | PO |
| NJR1-PO-SL-SW-190 |  | Electric water heater | 14d | 2026-04-30 | 2026-05-16 | NJR1-MS-SL-SW-RA-150 | 63d | 0d | Staff [14.95 h] | PO |
| NJR1-PO-SL-SW-200 |  | Western water closet | 14d | 2026-04-30 | 2026-05-16 | NJR1-MS-SL-SW-RA-160, NJR1-PO-SL-SW-190 SS | 63d | 0d | Staff [14.95 h] | PO |
| NJR1-PO-SL-SW-210 |  | Bib tap with Perenial Hose | 14d | 2026-04-30 | 2026-05-16 | NJR1-MS-SL-SW-RA-170, NJR1-PO-SL-SW-200 SS | 63d | 0d | Staff [14.95 h] | PO |
| NJR1-PO-SL-SW-220 |  | Wash Basin | 14d | 2026-04-30 | 2026-05-16 | NJR1-MS-SL-SW-RA-180, NJR1-PO-SL-SW-210 SS | 63d | 0d | Staff [14.95 h] | PO |
| NJR1-PO-SL-SW-230 |  | Corian Marble Countertop | 14d | 2026-04-30 | 2026-05-16 | NJR1-MS-SL-SW-RA-190, NJR1-PO-SL-SW-220 SS | 63d | 0d | Staff [14.95 h] | PO |
| NJR1-PO-SL-SW-150 |  | Roof Vent Caps | 14d | 2026-09-07 | 2026-09-22 | NJR1-MS-SL-SW-RA-132, NJR1-PO-SL-TH-160 | 11d | 0d | Staff [14.95 h] | PO |
| NJR1-PO-SL-SW-160 |  | Floor drain | 14d | 2026-09-07 | 2026-09-22 | NJR1-MS-SL-SW-RA-133, NJR1-PO-SL-SW-150 SS | 11d | 0d | Staff [14.95 h] | PO |
| NJR1-PO-SL-SW-170 |  | Gully Traps cover | 14d | 2026-09-07 | 2026-09-22 | NJR1-MS-SL-SW-RA-134, NJR1-PO-SL-SW-160 SS | 11d | 0d | Staff [14.95 h] | PO |
| NJR1-PO-SL-SW-180 |  | Inspection chamber cover | 14d | 2026-09-07 | 2026-09-22 | NJR1-MS-SL-SW-RA-140, NJR1-PO-SL-SW-170 SS | 14d | 0d | Staff [14.95 h] | PO |

| ID | WBS | Activity | Duration | Start | Finish | Predecessors | Total float | Free float | Resources | Cost | WBS-Procurement |
| --- | --- | --- | --- | --- | --- | --- | --- | --- | --- | --- | --- |
|  | 2 | **HVAC** |  | 2026-04-30 | 2026-06-23 |  |  |  |  |  |  |
| NJR1-PO-SL-HV-100 |  | Inline exhaust fans/make-up air fans | 14d | 2026-04-30 | 2026-05-16 | NJR1-MS-SL-HV-RA-100, NJR1-PO-SL-FW-200 SS, NJR1-PO-SL-SW-230 SS | 63d | 0d | Staff [14.95 h] |  | PO |
| NJR1-PO-SL-HV-110 |  | Indoor ductwork | 14d | 2026-04-30 | 2026-05-16 | NJR1-MS-SL-HV-RA-110, NJR1-PO-SL-FW-200 SS, NJR1-PO-SL-HV-100 SS | 63d | 0d | Staff [14.95 h] |  | PO |
| NJR1-PO-SL-HV-120 |  | Square exhaust diffuser | 14d | 2026-04-30 | 2026-05-16 | NJR1-MS-SL-HV-RA-120, NJR1-PO-SL-HV-110 SS | 63d | 0d | Staff [14.95 h] |  | PO |
| NJR1-PO-SL-HV-130 |  | Exhaust grills | 14d | 2026-04-30 | 2026-05-16 | NJR1-MS-SL-HV-RA-130, NJR1-PO-SL-HV-120 SS | 63d | 7d | Staff [14.95 h] |  | PO |
| NJR1-PO-SL-HV-140 |  | Condensate drain pipe | 14d | 2026-06-08 | 2026-06-23 | NJR1-MS-SL-HV-RA-140, NJR1-MF-LL-PR-110 | 36d | 0d | Staff [14.95 h] |  | PO |
|  | 4 | **Electrical Works** |  | 2026-06-10 | 2026-10-05 |  |  |  |  |  |  |
|  | 1 | **External Works** |  | 2026-06-10 | 2026-07-12 |  |  |  |  |  |  |
| NJR1-PO-SL-EE-100 |  | Electrical manhole cover | 14d | 2026-06-10 | 2026-06-25 | NJR1-MS-SL-EE-RA-100 SS, NJR1-PO-SL-SW-120 SS, NJR1-PO-SL-SW-100 SS | 19d | 0d | Staff [14.95 h] |  | PO |
| NJR1-PO-SL-EE-110 |  | All pump room electrical items | 14d | 2026-06-10 | 2026-06-25 | NJR1-MS-SL-EE-RA-110, NJR1-PO-SL-EE-100 SS | 19d | 0d | Staff [14.95 h] |  | PO |
| NJR1-PO-SL-EE-120 |  | Grounding system | 14d | 2026-06-27 | 2026-07-12 | NJR1-MS-SL-EE-RA-120, NJR1-PO-SL-EE-110 | 19d | 0d | Staff [14.95 h] |  | PO |
|  | 2 | **Internal Works** |  | 2026-06-27 | 2026-10-05 |  |  |  |  |  |  |
| NJR1-PO-SL-EE-130 |  | Low Voltage Copper Cables & Wires | 14d | 2026-06-27 | 2026-07-12 | NJR1-MS-SL-EE-RA-121, NJR1-PO-SL-EE-100 | 19d | 0d | Staff [14.95 h] |  | PO |
| NJR1-PO-SL-EE-170 |  | Grounding System | 14d | 2026-06-27 | 2026-07-12 | NJR1-MS-SL-EE-RA-140, NJR1-PO-SL-EE-120 SS | 19d | 0d | Staff [14.95 h] |  | PO |
| NJR1-PO-SL-EE-140 |  | Cable Trays | 14d | 2026-07-13 | 2026-07-28 | NJR1-MS-SL-EE-RA-122, NJR1-PO-SL-EE-130, NJR1-PO-SL-EE-170 | 19d | 0d | Staff [14.95 h] |  | PO |
| NJR1-PO-SL-EE-150 |  | Safety Disconnect Switches | 14d | 2026-07-29 | 2026-08-13 | NJR1-MS-SL-EE-RA-123, NJR1-PO-SL-EE-140, NJR1-PO-SL-EE-120 | 19d | 0d | Staff [14.95 h] |  | PO |
| NJR1-PO-SL-EE-160 |  | Telecom & Data System | 14d | 2026-07-29 | 2026-08-13 | NJR1-MS-SL-EE-RA-130, NJR1-PO-SL-EE-150 SS | 19d | 0d | Staff [14.95 h] |  | PO |
| NJR1-PO-SL-EE-180 |  | Lightning Protection System | 14d | 2026-09-19 | 2026-10-05 | NJR1-MS-SL-EE-RA-150, NJR1-MF-LL-EE-110 | 26d | 0d | Staff [14.95 h] |  | PO |
| NJR1-PO-SL-EE-190 |  | Sockets + outlets + wiring devices | 14d | 2026-09-19 | 2026-10-05 | NJR1-MS-SL-EE-RA-160, NJR1-PO-SL-EE-180 SS | 26d | 0d | Staff [14.95 h] |  | PO |
|  | 2 | **Delivery to Site + Staging** |  | 2026-04-19 | 2026-10-29 |  |  |  |  |  |  |
|  | 5 | **Earthworks** |  | 2026-05-19 | 2026-10-29 |  |  |  |  |  |  |
| NJR1-DE-SL-EA-100 |  | Backfill Material | 3d | 2026-05-19 | 2026-05-21 | NJR1-PO-SL-EA-100 | 13d | 0d | Staff [37.39 h] |  | DE |
| NJR1-DE-SL-EA-140 |  | Subgrade material | 3d | 2026-07-01 | 2026-07-04 | NJR1-PO-SL-EA-140 | 57d | 17d | Subgrade material [351]; Staff [37.39 h] | 14,040 | DE |
| NJR1-DE-SL-EA-130 |  | Base course layer | 3d | 2026-07-25 | 2026-07-27 | NJR1-PO-SL-EA-130, NJR1-DE-SL-EA-140 | 40d | 17d | Base course layer [234.09]; Staff [37.39 h] | 11,704.5 | DE |
| NJR1-DE-SL-EA-160 |  | Concrete parking bumper | 3d | 2026-08-17 | 2026-08-19 | NJR1-PO-SL-EA-160, NJR1-DE-SL-EA-130 | 23d | 0d | Concrete parking bumper with dimensions 1800*150*100 mm [11.34]; Staff [37.39 h] | 2,608.2 | DE |
| NJR1-DE-SL-EA-170 |  | Interlocking block pavers | 3d | 2026-08-17 | 2026-08-19 | NJR1-PO-SL-EA-170, NJR1-DE-SL-EA-160 SS | 23d | 0d | Interlocking pedstrian paving blocks [358.02]; Staff [37.39 h] | 39,382.2 | DE |
| NJR1-DE-SL-EA-180 |  | Precast concrete curbstone | 3d | 2026-08-17 | 2026-08-19 | NJR1-PO-SL-EA-180, NJR1-DE-SL-EA-170 SS | 23d | 0d | Kerb type K1A [277.83]; Kerb type K1B [69.39]; Kerb type K3 [2.16]; Staff [37.39 h] | 33,191.1 | DE |
| NJR1-DE-SL-EA-150 |  | Road Paints | 3d | 2026-10-04 | 2026-10-06 | NJR1-PO-SL-EA-150, NJR1-DE-SL-EA-170, NJR1-DE-SL-EA-180 | 34d | 20d | Retroreflective Thermoplastic White Traffic lines [0.27]; Retroreflective Thermoplastic Yellow Traffic lines [0.27]; Staff [37.39 h] | 6,480 | DE |
| NJR1-DE-SL-EA-120 |  | Bituminous base course asphalt layer | 3d | 2026-10-10 | 2026-10-12 | NJR1-PO-SL-EA-120, NJR1-DE-SL-EE190 | 26d | 0d | Bituminous base course asphalt layer [82.08]; Staff [37.39 h] | 78,796.8 | DE |
| NJR1-DE-SL-EA-110 |  | Bituminous wearing course asphalt layer | 3d | 2026-10-13 | 2026-10-15 | NJR1-PO-SL-EA-110, NJR1-DE-SL-EA-120 | 26d | 12d | Bituminous wearing course asphalt layer [58.59]; Staff [37.39 h] | 56,246.4 | DE |
| NJR1-DE-SL-EA-190 |  | Traffic signs | 3d | 2026-10-27 | 2026-10-29 | NJR1-PO-SL-EA-190 | 14d | 0d | Install traffic signs aluminum sheet, (breakaway) Single post I.P.E. [6.75]; Staff [37.39 h] | 8,100 | DE |

| ID | WBS | Activity | Duration | Start | Finish | Predecessors | Total float | Free float | Resources | Cost | WBS-Procurement |
| --- | --- | --- | --- | --- | --- | --- | --- | --- | --- | --- | --- |
|  | 1 | **Concrete** |  | 2026-04-21 | 2026-04-25 |  |  |  |  |  |  |
| NJR1-DE-SL-CO-100 |  | Concrete Mix Design | 3d | 2026-04-21 | 2026-04-25 | NJR1-PO-SL-CO-100 | 23.5d | 1.5d | Lean Concrete [45.36]; Isolated Footings [34.02]; Grade beams [42.93]; Tank Footing [13.23]; Pedestal [8.91]; GRP Water Tank and Pump Shed - Concrete Pad [0.81]; Toilet, Mosque & EE Room - Roof Slab [4.05]; Toilet, Mosque & EE Room - Roof Beam [2.43]; GRP Water Tank and Pump Shed - SOG [5.4]; Underground Septic Tank - Wall [6.75]; Underground Septic Tank - Slab [2.7]; 150 mm thk concrete floor slab on grade [82.89]; Electrical substation - Foundation [0.54]; Staff [37.39 h] | 235,210.5 | DE |
| NJR1-DE-SL-CO-110 |  | Reinforcing Steel Bars | 3d | 2026-04-21 | 2026-04-25 | NJR1-PO-SL-CO-110 | 23.5d | 1.5d | Staff [37.39 h] |  | DE |
|  | 7 | **Masonry Works** |  | 2026-09-07 | 2026-09-09 |  |  |  |  |  |  |
| NJR1-DE-SL-MA-100 |  | Concrete Masonry Unit | 3d | 2026-09-07 | 2026-09-09 | NJR1-PO-SL-MA-100 | 0d |  | Install CMU wall at internal walls (100mm thick) [9.18]; Install CMU wall at internal walls (200mm thick) [54]; Install CMU wall at external walls (200mm thick insulated) [32.4]; Install CMU wall at electrical room (200mm thick, 2 hr fire rated) [24.3]; Staff [37.39 h] | 11,264.4 | DE |
|  | 8 | **Metal Works** |  | 2026-06-22 | 2026-10-18 |  |  |  |  |  |  |
| NJR1-DE-SL-MW-100 |  | Steel ladder with safety cage | 3d | 2026-06-22 | 2026-06-24 | NJR1-PO-SL-MW-100 | 35d | 1d | Steel ladder with safety cage [0.27]; Staff [37.39 h] | 2,430 | DE |
| NJR1-DE-SL-MW-120 |  | Galvanised steel gratings | 3d | 2026-09-07 | 2026-09-09 | NJR1-PO-SL-MW-120 | 16d | 4d | Galvanised steel gratings 400mm wide*4000mm long [3.24]; Staff [37.39 h] | 9,720 | DE |
| NJR1-DE-SL-MW-130 |  | Overflow galvanized steel roof scupper | 3d | 2026-09-24 | 2026-09-27 | NJR1-PO-SL-MW-130, NJR1-DE-SL-MW-120 | 42d | 15d | Overflow galvanized steel roof scupper [3.24]; Staff [37.39 h] | 2,916 | DE |
| NJR1-DE-SL-MW-110 |  | Steel bollards | 3d | 2026-10-15 | 2026-10-18 | NJR1-PO-SL-MW-110 | 24d | 10d | Steel bollards 1135mm height [6.48]; Staff [37.39 h] | 4,536 | DE |
|  | 9 | **Thermal and Moisture Protection** |  | 2026-04-19 | 2026-09-09 |  |  |  |  |  |  |
| NJR1-DE-SL-TH-120 |  | Anti termite control | 3d | 2026-04-19 | 2026-04-21 | NJR1-PO-SL-TH-120 | 22d | 0d | Anti termite under all concrete in touch with earth [590.22]; Staff [37.39 h] | 4,721.76 | DE |
| NJR1-DE-SL-TH-100 |  | Bitumen waterproofing paint | 3d | 2026-04-21 | 2026-04-25 | NJR1-PO-SL-TH-100 | 34.5d | 8d | 2 coats of bitumen waterproofing paint on concrete surface [532.44]; Staff [37.39 h] | 7,986.6 | DE |
| NJR1-DE-SL-TH-110 |  | Polyethylene sheet | 3d | 2026-04-21 | 2026-04-25 | NJR1-PO-SL-TH-110 | 23.5d | 0d | 250 micron thk polyethylene sheet under grade slab and footings [579.96]; Staff [37.39 h] | 5,799.6 | DE |
| NJR1-DE-SL-TH-130 |  | Liquid applied waterproofing membrane | 3d | 2026-09-07 | 2026-09-09 | NJR1-PO-SL-TH-130 | 33d | 30d | Liquid applied waterproofing membrane for toilets [21.6]; Staff [37.39 h] | 2,160 | DE |
| NJR1-DE-SL-TH-140 |  | Geotextile sheet | 3d | 2026-09-07 | 2026-09-09 | NJR1-PO-SL-TH-140 | 33d | 30d | Geotextile sheet [21.6]; Staff [37.39 h] | 345.6 | DE |
| NJR1-DE-SL-TH-150 |  | Polyurethane waterpoof coating | 3d | 2026-09-07 | 2026-09-09 | NJR1-PO-SL-TH-150 | 12d | 0d | Polyurethane waterpoof coating to internal surfaces of concrete trench [5.13]; Staff [37.39 h] | 615.6 | DE |
| NJR1-DE-SL-TH-160 |  | Roofdeck waterproofing system | 3d | 2026-09-07 | 2026-09-09 | NJR1-PO-SL-TH-160 | 25d | 0d | 4mm thick APP modified bituminous membrane [35.37]; 50mm thk rigid insulation [35.37]; Foam concrete screed 50mm thk [35.37]; 300 micron polyethylene sheet [35.37]; 50mm thk loose gravel toppings [35.37]; High density polyisocynurate cover board (12.7mm) [35.37]; Geotextile sheets (200 g/m2) [35.37]; 3mm thk extruded aluminum flashing [22.68]; Staff [37.39 h] | 9,480.24 | DE |
| NJR1-DE-SL-TH-170 |  | Aluminium cladding | 3d | 2026-09-07 | 2026-09-09 | NJR1-PO-SL-TH-170 | 15d | 0d | Workshop - Aluminium cladding [67.5]; Staff [37.39 h] | 20,250 | DE |
|  | 2 | **Finishes** |  | 2026-05-17 | 2026-10-13 |  |  |  |  |  |  |
| NJR1-DE-SL-FW-100 |  | Ceramic tiles | 3d | 2026-05-17 | 2026-05-19 | NJR1-PO-SL-FW-100 | 52d | 0d | 300*300mm ceramic tiles for toilets [20.25]; 300*300mm glazed ceramic wall tiles for toilets [64.8]; Staff [37.39 h] | 9,355.5 | DE |
| NJR1-DE-SL-FW-110 |  | Carpet rolls | 3d | 2026-05-17 | 2026-05-19 | NJR1-PO-SL-FW-110, NJR1-DE-SL-FW-100 SS | 52d | 0d | Carpet rolls to prayer room [15.12]; Staff [37.39 h] | 4,989.6 | DE |
| NJR1-DE-SL-FW-130 |  | Granite tiles | 3d | 2026-05-17 | 2026-05-19 | NJR1-PO-SL-FW-130, NJR1-DE-SL-FW-110 SS | 52d | 0d | Granite tiles [9.45]; Staff [37.39 h] | 2,362.5 | DE |
| NJR1-DE-SL-FW-140 |  | Marble strip | 3d | 2026-05-17 | 2026-05-19 | NJR1-PO-SL-FW-140, NJR1-DE-SL-FW-130 SS | 52d | 0d | Marble strip 30mm thk, Threshold [0.81]; Staff [37.39 h] | 202.5 | DE |
| NJR1-DE-SL-FW-150 |  | Wood skirt | 3d | 2026-05-17 | 2026-05-19 | NJR1-PO-SL-FW-150, NJR1-DE-SL-FW-140 SS | 52d | 0d | Wood skirt 100mm height [11.61]; Staff [37.39 h] | 406.35 | DE |
| NJR1-DE-SL-FW-160 |  | Acrylic paint | 3d | 2026-05-17 | 2026-05-19 | NJR1-PO-SL-FW-160, NJR1-DE-SL-FW-150 SS | 52d | 0d | 2 coats of acrylic paint at internal walls and roof [85.32]; 2 coats of acrylic paint at external walls and parapet [67.5]; Staff [37.39 h] | 4,922.1 | DE |
| NJR1-DE-SL-FW-170 |  | Marble chips | 3d | 2026-05-17 | 2026-05-19 | NJR1-PO-SL-FW-170, NJR1-DE-SL-FW-160 SS | 52d | 0d | Marble chips on external walls and grooves [20.25]; Staff [37.39 h] | 1,215 | DE |
| NJR1-DE-SL-FW-180 |  | GRC panels | 3d | 2026-05-17 | 2026-05-19 | NJR1-PO-SL-FW-180, NJR1-DE-SL-FW-170 SS | 52d | 0d | GRC panels [2.97]; Staff [37.39 h] | 1,188 | DE |
| NJR1-DE-SL-FW-190 |  | Phenolic partitions | 3d | 2026-05-17 | 2026-05-19 | NJR1-PO-SL-FW-190, NJR1-DE-SL-FW-180 SS | 52d | 0d | Phenolic partitions with doors for toilets [20.25]; Staff [37.39 h] | 12,150 | DE |
| NJR1-DE-SL-FW-200 |  | Moisture resistant gypsum board | 3d | 2026-05-17 | 2026-05-19 | NJR1-PO-SL-FW-200, NJR1-DE-SL-FW-190 SS | 52d | 0d | 12.5mm thk, moisture resistant gypsum board suspended ceiling for toilets [20.25]; 12.5mm thk, moisture resistant gypsum board suspended ceiling for prayer room [5.4]; Staff [37.39 h] | 3,847.5 | DE |
| NJR1-DE-SL-FW-120 |  | Epoxy paint | 3d | 2026-10-11 | 2026-10-13 | NJR1-PO-SL-FW-120 | 28d | 14d | Epoxy paint to concrete surface in the factory area [499.5]; Staff [37.39 h] | 29,970 | DE |

| ID | WBS | Activity | Duration | Start | Finish | Predecessors | Total float | Free float | Resources | Cost | WBS-Procurement |
| --- | --- | --- | --- | --- | --- | --- | --- | --- | --- | --- | --- |
|  | 10 | **Specialties** |  | 2026-05-17 | 2026-06-11 |  |  |  |  |  |  |
| NJR1-DE-SL-SP-100 |  | Toilet Fittings | 3d | 2026-05-17 | 2026-05-19 | NJR1-PO-SL-SP-100, NJR1-DE-SL-FW-200 SS | 52d | 14d | Soap dispenser [1.62]; Mirror, Size 3300*1200mm [0.54]; Mirror, Size 800*1200mm [1.08]; Toilet tissue holder [1.62]; Paper towel dispenser [0.54]; Waste receptacle [2.16]; Stainless steel hand dryer [0.54]; Robe hook [2.16]; Grab bars [0.54]; Extruded EPDM rubber bumper 200mm high [54]; Staff [37.39 h] | 6,750 | DE |
| NJR1-DE-SL-SP-110 |  | Signage | 3d | 2026-06-06 | 2026-06-08 | NJR1-PO-SL-SP-110, NJR1-DE-SL-SP-100 SS | 38d | 0d | Internal and External Signage [0.81]; Staff [37.39 h] | 202.5 | DE |
| NJR1-DE-SL-SP-120 |  | MODON Logo | 3d | 2026-06-09 | 2026-06-11 | NJR1-PO-SL-SP-120, NJR1-DE-SL-SP-110 | 38d | 0d | Install MODON logo on entrance [1.08]; Staff [37.39 h] | 5,400 | DE |
|  | 11 | **Pre Engineered Structure** |  | 2026-05-17 | 2026-06-27 |  |  |  |  |  |  |
| NJR1-DE-SL-PR-110 |  | Galvanized steel fence | 3d | 2026-05-17 | 2026-05-19 | NJR1-PO-SL-PR-110 | 39d | 28d | Fencing For Pump Room [9.72]; Staff [37.39 h] | 13,608 | DE |
| NJR1-DE-SL-PR-120 |  | Steel fence gate | 3d | 2026-06-09 | 2026-06-11 | NJR1-PO-SL-PR-120, NJR1-DE-SL-SP-120 SS | 38d | 27d | Install swing gate for fence with similar design with opening of 3m. [0.54]; Install swing gate for fence with similar design with opening of 1.5m. [0.54]; Staff [37.39 h] | 9,180 | DE |
| NJR1-DE-SL-PR-100 |  | Intumescent paint | 3d | 2026-06-24 | 2026-06-27 | NJR1-PO-SL-PR-100 | 51d | 29d | Intumescent paint to steel works [0.27]; Staff [37.39 h] | 59,400 | DE |
|  | 3 | **Mechanical** |  | 2026-04-19 | 2026-09-27 |  |  |  |  |  |  |
|  | 5 | **External Works** |  | 2026-04-19 | 2026-06-29 |  |  |  |  |  |  |
|  | 4 | **Fire Fighting** |  | 2026-04-19 | 2026-05-07 |  |  |  |  |  |  |
| NJR1-DE-SL-FF-100 |  | HDPE pipes | 3d | 2026-04-19 | 2026-04-21 | NJR1-PO-SL-FF-100 | 65d | 41d | 200 mm Ø HDPE Fire Fighting [12.96]; 150 mm Ø HDPE Fire Fighting [54]; Staff [37.39 h] | 15,660 | DE |
| NJR1-DE-SL-FF-110 |  | Directly Buried Gate valve | 3d | 2026-05-05 | 2026-05-07 | NJR1-PO-SL-FF-110 | 55d | 27d | 200 mm Ø Directly Buried Gate valve [0.27]; 150 mm Ø Directly Buried Gate valve [0.27]; Staff [37.39 h] | 2,565 | DE |
|  | 1 | **Water supply system** |  | 2026-04-19 | 2026-06-13 |  |  |  |  |  |  |
| NJR1-DE-SL-WS-100 |  | HDPE pipes | 3d | 2026-04-19 | 2026-04-21 | NJR1-PO-SL-WS-100 | 41d |  | 100 mm Ø HDPE Water Supply [5.4]; 90 mm Ø HDPE Water Supply [63.45]; 63 mm Ø HDPE Water Supply [2.16]; 50 mm Ø HDPE Water Supply [10.8]; 63 mm Ø Service connection - HDPE [0.27]; For 100 mm Ø pipe Road Crossing sleeve [6.75]; Staff [37.39 h] | 17,733.6 | DE |
| NJR1-DE-SL-WS-110 |  | Directly Buried Gate valve | 3d | 2026-05-05 | 2026-05-07 | NJR1-PO-SL-WS-110 | 28d | 27d | 100 mm Ø Directly Buried Gate valve [0.27]; 90 mm Ø Directly Buried Gate valve [0.27]; 63 mm Ø Directly Buried Gate valve [0.54]; 50 mm Ø Directly Buried Gate valve [3.24]; Staff [37.39 h] | 4,320 | DE |
| NJR1-DE-SL-WS-120 |  | Air Valve | 3d | 2026-05-21 | 2026-05-24 | NJR1-PO-SL-WS-120 | 64d | 39d | Air Valve [0.27]; Staff [37.39 h] | 2,025 | DE |
| NJR1-DE-SL-WS-130 |  | Washout Valve | 3d | 2026-06-10 | 2026-06-13 | NJR1-PO-SL-WS-130 | 56d | 31d | Washout Valve [0.27]; Staff [37.39 h] | 2,565 | DE |
| NJR1-DE-SL-WS-140 |  | Valve Chamber Cover | 3d | 2026-06-10 | 2026-06-13 | NJR1-PO-SL-WS-140 | 56d | 31d | Staff [37.39 h] |  | DE |
|  | 3 | **Sewerage and Drainage System** |  | 2026-04-19 | 2026-06-29 |  |  |  |  |  |  |
| NJR1-DE-SL-SW-110 |  | UPVC pipes | 3d | 2026-04-19 | 2026-04-21 | NJR1-PO-SL-SW-110 | 15d | 13d | 110 mm Pipe sewer upvc pipe [28.35]; 160 mm Pipe sewer upvc pipe [20.25]; Staff [37.39 h] | 13,162.5 | DE |
| NJR1-DE-SL-SW-120 |  | Sewer manholes cover | 3d | 2026-04-19 | 2026-04-21 | NJR1-PO-SL-SW-120 | 5d |  | Sewer manholes [2.97]; Staff [37.39 h] | 29,700 | DE |
| NJR1-DE-SL-SW-130 |  | Gully traps | 3d | 2026-05-05 | 2026-05-07 | NJR1-PO-SL-SW-130 | 15d | 11d | Gully traps [2.16]; 110mm UPVC pipe service connections [0.27]; Staff [37.39 h] | 6,858 | DE |
| NJR1-DE-SL-SW-100 |  | Sewage tank Cover | 3d | 2026-06-27 | 2026-06-29 | NJR1-PO-SL-SW-100, NJR1-DE-SL-MW-100 | 34d | 0d | Sewage tank with dimensions (8x4x3m) [0.27]; Staff [37.39 h] | 29,700 | DE |

| ID | WBS | Activity | Duration | Start | Finish | Predecessors | Total float | Free float | Resources | Cost | WBS-Procurement |
| --- | --- | --- | --- | --- | --- | --- | --- | --- | --- | --- | --- |
|  | 1 | **Internal Works** |  | 2026-04-19 | 2026-09-27 |  |  |  |  |  |  |
|  | 4 | **Fire Fighting** |  | 2026-04-19 | 2026-05-07 |  |  |  |  |  |  |
| NJR1-DE-SL-FF-120 |  | HDPE pipes | 3d | 2026-04-19 | 2026-04-21 | NJR1-PO-SL-FF-120 | 69d | 0d | 8" Ø Fire Fighting HDPE Pipes [4.05]; Staff [37.39 h] | 1,620 | DE |
| NJR1-DE-SL-FF-130 |  | Seamless black steel pipes & fittings | 3d | 2026-04-19 | 2026-04-21 | NJR1-PO-SL-FF-130, NJR1-DE-SL-FF-120 SS | 69d | 0d | Seamless black steel pipes & fittings [0.27]; Staff [37.39 h] | 62,842.5 | DE |
| NJR1-DE-SL-FF-140 |  | Water sprinklers | 3d | 2026-04-19 | 2026-04-21 | NJR1-PO-SL-FF-140, NJR1-DE-SL-FF-130 SS | 69d | 11d | Water sprinklers [0.27]; Staff [37.39 h] | 3,458.7 | DE |
| NJR1-DE-SL-FF-150 |  | Fire hose cabinet | 3d | 2026-05-05 | 2026-05-07 | NJR1-PO-SL-FF-150, NJR1-DE-SL-FF-140 | 58d | 0d | Fire house cabinet [1.62]; Staff [37.39 h] | 4,860 | DE |
| NJR1-DE-SL-FF-160 |  | OS&Y Gate valve | 3d | 2026-05-05 | 2026-05-07 | NJR1-PO-SL-FF-160, NJR1-DE-SL-FF-150 SS | 58d | 0d | OS&Y Gate valve [0.27]; Staff [37.39 h] | 6,426 | DE |
| NJR1-DE-SL-FF-170 |  | Fire Alarm Check Valve (ACV) | 3d | 2026-05-05 | 2026-05-07 | NJR1-PO-SL-FF-170, NJR1-DE-SL-FF-160 SS | 58d | 0d | Fire Alarm Check Valve (ACV) [0.27]; Staff [37.39 h] | 1,485 | DE |
| NJR1-DE-SL-FF-180 |  | Fire Department Connection (FDC) | 3d | 2026-05-05 | 2026-05-07 | NJR1-PO-SL-FF-180, NJR1-DE-SL-FF-170 SS | 58d | 0d | Fire Department Connection (FDC) 6" [0.27]; Staff [37.39 h] | 810 | DE |
| NJR1-DE-SL-FF-190 |  | Automatic air release valve | 3d | 2026-05-05 | 2026-05-07 | NJR1-PO-SL-FF-190, NJR1-DE-SL-FF-180 SS | 58d | 3d | 1" Ø Automatic air release valve [0.27]; Staff [37.39 h] | 270 | DE |
|  | 1 | **Water supply system** |  | 2026-05-05 | 2026-05-24 |  |  |  |  |  |  |
| NJR1-DE-SL-WS-150 |  | HDPE pipes | 3d | 2026-05-05 | 2026-05-07 | NJR1-PO-SL-WS-150 | 55d | 0d | 63 mm Ø HDPE pipes Water Supply [10.8]; Staff [37.39 h] | 2,160 | DE |
| NJR1-DE-SL-WS-160 |  | PPR pipe | 3d | 2026-05-05 | 2026-05-07 | NJR1-PO-SL-WS-160 SS, NJR1-DE-SL-WS-150 SS | 55d | 0d | PPR SDR 7.4 PN 16, DIN 8077/78 pipes [0.27]; Staff [37.39 h] | 3,137.4 | DE |
| NJR1-DE-SL-WS-170 |  | Ball Valve | 3d | 2026-05-21 | 2026-05-24 | NJR1-PO-SL-WS-170, NJR1-DE-SL-WS-160 | 56d | 0d | Ball Valve [0.27]; Staff [37.39 h] | 691.2 | DE |
| NJR1-DE-SL-WS-180 |  | Valve box | 3d | 2026-05-21 | 2026-05-24 | NJR1-PO-SL-WS-180, NJR1-DE-SL-WS-170 SS | 56d | 0d | 63 mm Ø Valve with Valve Box [0.54]; 50 mm Ø Valve with Valve Box [3.24]; Staff [37.39 h] | 7,668 | DE |
|  | 3 | **Sewerage and Drainage System** |  | 2026-05-09 | 2026-09-27 |  |  |  |  |  |  |
| NJR1-DE-SL-SW-140 |  | uPVC pipes | 3d | 2026-05-09 | 2026-05-11 | NJR1-PO-SL-SW-140, NJR1-DE-SL-WS-160, NJR1-DE-SL-FF-190 SS | 55d | 33d | Install uPVC Pipe Sewer & Drainage [0.27]; Staff [37.39 h] | 21,983.4 | DE |
| NJR1-DE-SL-SW-190 |  | Electric water heater | 3d | 2026-05-25 | 2026-05-31 | NJR1-PO-SL-SW-190, NJR1-DE-SL-WS-180 | 56d | 0d | Plumbing fixtures [0.05]; Staff [37.39 h] | 2,673 | DE |
| NJR1-DE-SL-SW-200 |  | Western water closet | 3d | 2026-05-25 | 2026-05-31 | NJR1-PO-SL-SW-200, NJR1-DE-SL-SW-190 SS | 56d | 0d | Plumbing fixtures [0.05]; Staff [37.39 h] | 2,673 | DE |
| NJR1-DE-SL-SW-210 |  | Bib tap with Perenial Hose | 3d | 2026-05-25 | 2026-05-31 | NJR1-PO-SL-SW-210, NJR1-DE-SL-SW-200 SS | 56d | 0d | Plumbing fixtures [0.05]; Staff [37.39 h] | 2,673 | DE |
| NJR1-DE-SL-SW-220 |  | Wash Basin | 3d | 2026-05-25 | 2026-05-31 | NJR1-PO-SL-SW-220, NJR1-DE-SL-SW-210 SS | 56d | 0d | Plumbing fixtures [0.05]; Staff [37.39 h] | 2,673 | DE |
| NJR1-DE-SL-SW-230 |  | Corian Marble Countertop | 3d | 2026-05-25 | 2026-05-31 | NJR1-PO-SL-SW-230, NJR1-DE-SL-SW-220 SS | 56d | 0d | Plumbing fixtures [0.05]; Staff [37.39 h] | 2,673 | DE |
| NJR1-DE-SL-SW-150 |  | Roof Vent Caps | 3d | 2026-09-24 | 2026-09-27 | NJR1-PO-SL-SW-150 | 40d | 15d | Roof Vent Caps [0.54]; Staff [37.39 h] | 270 | DE |
| NJR1-DE-SL-SW-160 |  | Floor drain | 3d | 2026-09-24 | 2026-09-27 | NJR1-PO-SL-SW-160 | 42d | 28d | Floor drain (FD-1) [5.94]; Staff [37.39 h] | 2,376 | DE |
| NJR1-DE-SL-SW-170 |  | Gully Traps cover | 3d | 2026-09-24 | 2026-09-27 | NJR1-PO-SL-SW-170 | 11d | 0d | Gully Traps with heavy duty cover [2.16]; Staff [37.39 h] | 3,132 | DE |
| NJR1-DE-SL-SW-180 |  | Inspection chamber cover | 3d | 2026-09-24 | 2026-09-27 | NJR1-PO-SL-SW-180 | 14d | 3d | Inspection chamber with heavy duty cover [0.81]; Staff [37.39 h] | 3,645 | DE |

| ID | WBS | Activity | Duration | Start | Finish | Predecessors | Total float | Free float | Resources | Cost | WBS-Procurement | WBS-BOQ |
| --- | --- | --- | --- | --- | --- | --- | --- | --- | --- | --- | --- | --- |
|  | 2 | **HVAC** |  | 2026-05-25 | 2026-06-27 |  |  |  |  |  |  |  |
| NJR1-DE-SL-HV-100 |  | Inline exhaust fans/make-up air fans | 3d | 2026-05-25 | 2026-05-31 | NJR1-PO-SL-HV-100, NJR1-DE-SL-SW-230 SS | 56d | 0d | Inline exhaust fans/make-up air fans [0.27]; Staff [37.39 h] | 2,808 | DE |  |
| NJR1-DE-SL-HV-110 |  | Indoor ductwork | 3d | 2026-05-25 | 2026-05-31 | NJR1-PO-SL-HV-110, NJR1-DE-SL-HV-100 SS | 56d | 0d | Indoor ductwork [16.2]; Staff [37.39 h] | 2,106 | DE |  |
| NJR1-DE-SL-HV-120 |  | Square exhaust diffuser | 3d | 2026-05-25 | 2026-05-31 | NJR1-PO-SL-HV-120, NJR1-DE-SL-HV-110 SS | 56d | 0d | Square exhaust diffuser [2.7]; Staff [37.39 h] | 675 | DE |  |
| NJR1-DE-SL-HV-130 |  | Exhaust grills | 3d | 2026-05-25 | 2026-05-31 | NJR1-PO-SL-HV-130, NJR1-DE-SL-HV-120 SS | 56d | 22d | Exhaust grills [0.54]; Flexible ducts [2.16]; Staff [37.39 h] | 594 | DE |  |
| NJR1-DE-SL-HV-140 |  | Condensate drain pipe | 3d | 2026-06-24 | 2026-06-27 | NJR1-PO-SL-HV-140, NJR1-DE-SL-HV-130 SS | 36d | 2d | Condensate drain piping [10.26]; Staff [37.39 h] | 9,234 | DE |  |
|  | 4 | **Electrical Works** |  | 2026-06-27 | 2026-10-08 |  |  |  |  |  |  |  |
|  | 1 | **External Works** |  | 2026-06-27 | 2026-07-15 |  |  |  |  |  |  |  |
| NJR1-DE-SL-EE100 |  | Electrical manhole cover | 3d | 2026-06-27 | 2026-06-29 | NJR1-PO-SL-EE-100, NJR1-DE-SL-SW-100 SS, NJR1-DE-SL-HV-130, NJR1-DE-SL-HV-140 SS | 34d | 10d | Branch Telecom Manhole (MH1) with pipes [2.16]; Main Telecom Manhole (MH2) with pipes [0.27]; Telecom Handhole (HH) with pipes [1.35]; Main Electrical Manhole with pipes [2.7]; Branch Electrical Manhole with pipes [8.64]; Street Lighting Manhole with pipes [0.54]; Pipes for all telecom network at site [109.35]; Pipes for all electrical network at site [256.5]; Road crossing duct bank for street lighting cables [4.05]; Road crossing duct bank for site electrical cables [20.25]; Road crossing duct bank for site telecom cables [44.55]; Staff [37.39 h] | 160,029 | DE |  |
| NJR1-DE-SL-EE110 |  | All pump room electrical items | 3d | 2026-06-27 | 2026-06-29 | NJR1-PO-SL-EE-110 | 60d | 11d | LED Lighting fixtures [2.43]; Emergency LED lighting [0.54]; Lighting switch [0.54]; Motor Circuit Protector for pumps [0.54]; Pump room power panel [0.27]; Control Panel for pumps [0.54]; Isolator switch [0.54]; Disconnect switch [1.08]; Concrete wall for KWHM for pump room [0.27]; Cable trays [0.27]; Staff [37.39 h] | 18,165.6 | DE |  |
| NJR1-DE-SL-EE120 |  | Grounding system | 3d | 2026-07-13 | 2026-07-15 | NJR1-PO-SL-EE-120, NJR1-DE-SL-EE110 | 49d | 26d | Feeder pillars [0.27]; Pump Room [0.27]; KWHM's [1.08]; Street lighting Poles [6.75]; Staff [37.39 h] | 9,180 | DE |  |
|  | 2 | **Internal Works** |  | 2026-07-13 | 2026-10-08 |  |  |  |  |  |  |  |
| NJR1-DE-SL-EE130 |  | Low Voltage Copper Cables & Wires | 3d | 2026-07-13 | 2026-07-15 | NJR1-PO-SL-EE-130 | 58d | 39d | Low Voltage Copper Cables & Wires [0.27]; Staff [37.39 h] | 24,048.9 | DE |  |
| NJR1-DE-SL-EE150 |  | Safety Disconnect Switches | 3d | 2026-08-15 | 2026-08-17 | NJR1-PO-SL-EE-150 | 19d | 0d | Safety Disconnect Switches [0.27]; Staff [37.39 h] | 14,048.64 | DE |  |
| NJR1-DE-SL-EE160 |  | Telecom & Data System | 3d | 2026-08-15 | 2026-08-17 | NJR1-PO-SL-EE-160, NJR1-DE-SL-EE150 SS | 19d | 0d | Telecom & Data System [0.27]; Staff [37.39 h] | 53,568 | DE |  |
| NJR1-DE-SL-EE170 |  | Grounding System | 3d | 2026-08-15 | 2026-08-17 | NJR1-PO-SL-EE-170, NJR1-DE-SL-EE160 SS | 19d | 0d | Grounding System [0.27]; Staff [37.39 h] | 14,256 | DE |  |
| NJR1-DE-SL-EE140 |  | Cable Trays | 3d | 2026-08-17 | 2026-08-19 | NJR1-PO-SL-EE-140, NJR1-DE-SL-EA-180 SS | 23d | 4d | Cable Trays [0.27]; Staff [37.39 h] | 34,560 | DE |  |
| NJR1-DE-SL-EE180 |  | Lightning Protection System | 3d | 2026-10-06 | 2026-10-08 | NJR1-PO-SL-EE-180 | 32d | 0d | Lightning Protection System [0.54]; Staff [37.39 h] | 10,800 | DE |  |
| NJR1-DE-SL-EE190 |  | Sockets + outlets + wiring devices | 3d | 2026-10-06 | 2026-10-08 | NJR1-PO-SL-EE-190 | 26d | 0d | Sockets, outlets, and wiring devices [0.27]; Staff [37.39 h] | 26,461.89 | DE |  |
|  | 5 | **CONSTRUCTION** |  | 2026-04-01 | 2026-12-08 |  |  |  |  |  |  |  |
|  | 1 | **DIVISION 02 - SITE WORKS** |  | 2026-04-01 | 2026-11-25 |  |  |  |  |  |  |  |
|  | 1 | **Excavation and Backfilling** |  | 2026-04-01 | 2026-11-25 |  |  |  |  |  |  |  |
|  | 1 | **Excavation** |  | 2026-04-01 | 2026-07-21 |  |  |  |  |  |  |  |
| NJR1-CO-SW-100 |  | Toilet, Mosque, EE Room & Workshop - Excavation | 15d | 2026-04-01 | 2026-04-18 | NJR1-MI-BM-100 | 0d |  | Excavator [120 h]; Skid Loader (Bobcat) [120 h]; Dump Truck [120 h]; Water Tank Truck [120 h]; Excavation [912.27]; General Labor [240 h]; Operator [480 h] | 31,929.41 |  | 1 |
| NJR1-CO-SW-130 |  | GRP Water Tank and Pump Shed - Excavation | 8d | 2026-04-01 | 2026-04-09 | NJR1-MI-BM-200 | 15d | 10d | Excavator [64 h]; Skid Loader (Bobcat) [64 h]; Dump Truck [64 h]; Water Tank Truck [64 h]; Excavation [93.2]; General Labor [128 h]; Operator [256 h] | 3,262.11 |  | 1 |
| NJR1-CO-SW-120 |  | Underground Septic Tank - Excavation | 8d | 2026-04-19 | 2026-04-27 | NJR1-CO-SW-100 | 0d |  | Excavator [64 h]; Skid Loader (Bobcat) [64 h]; Dump Truck [64 h]; Water Tank Truck [64 h]; Excavation [14.91]; General Labor [128 h]; Operator [256 h] | 521.94 |  | 1 |
| NJR1-CO-SW-110 |  | Outside Mosque - Excavation | 8d | 2026-07-13 | 2026-07-21 | NJR1-CO-SW-100, NJR1-CO-SW-130, NJR1-MI-BM-150 | 0d |  | Excavator [64 h]; Skid Loader (Bobcat) [64 h]; Dump Truck [64 h]; Water Tank Truck [64 h]; Excavation [12.82]; General Labor [128 h]; Operator [256 h] | 448.54 |  | 1 |

| ID | WBS | Activity | Duration | Start | Finish | Predecessors | Total float | Free float | Resources | Cost | WBS-BOQ |
| --- | --- | --- | --- | --- | --- | --- | --- | --- | --- | --- | --- |
|  | 2 | **Street lighting poles relocation** |  | 2026-10-05 | 2026-10-21 |  |  |  |  |  |  |
| NJR1-CO-SW-140 |  | Street lighting poles relocation | 15d | 2026-10-05 | 2026-10-21 | NJR1-CO-SW-310 SS, NJR1-CO-SW-320 SS | 11d | 0d | Dump Truck [120 h]; Street lighting poles relocation [1.8]; General Labor [240 h]; Operator [120 h] | 900 | 2 |
|  | 3 | **Demolition of the existing curbstone** |  | 2026-10-05 | 2026-10-21 |  |  |  |  |  |  |
| NJR1-CO-SW-150 |  | Demolition of the existing curbstone | 15d | 2026-10-05 | 2026-10-21 | NJR1-CO-SW-100, NJR1-CO-SW-140 SS | 11d | 0d | Dump Truck [120 h]; Jack Hammer [120 h]; Demolition of the existing curbstone [27]; General Labor [480 h]; Operator [240 h] | 1,215 | 3 |
|  | 4 | **Demolition of the existing interlock** |  | 2026-10-22 | 2026-11-08 |  |  |  |  |  |  |
| NJR1-CO-SW-160 |  | Demolition of the existing interlock | 15d | 2026-10-22 | 2026-11-08 | NJR1-CO-SW-100, NJR1-CO-SW-150 | 11d | 0d | Dump Truck [120 h]; Jack Hammer [120 h]; Demolition of the existing interlock [36]; General Labor [480 h]; Operator [240 h] | 1,620 | 4 |
|  | 5 | **Relocating of existing Trees** |  | 2026-11-09 | 2026-11-25 |  |  |  |  |  |  |
| NJR1-CO-SW-170 |  | Relocating of existing Trees | 15d | 2026-11-09 | 2026-11-25 | NJR1-CO-SW-160 | 11d |  | Fork Lift [120 h]; Relocating of existing Trees [1.8]; General Labor [240 h]; Operator [120 h] | 900 | 5 |
|  | 6 | **Backfilling** |  | 2026-05-23 | 2026-08-24 |  |  |  |  |  |  |
| NJR1-CO-SW-210 |  | GRP Water Tank and Pump Shed - Backfilling | 3d | 2026-05-23 | 2026-05-25 | NJR1-CO-CW-230, NJR1-DE-SL-EA-100, NJR1-CO-TH-120 | 13d | 0d | Excavator [24 h]; Skid Loader (Bobcat) [24 h]; Dump Truck [24 h]; Water Tank Truck [24 h]; Compactor [24 h]; Backfilling [212.31]; General Labor [48 h]; Operator [120 h] | 7,642.99 | 6 |
| NJR1-CO-SW-180 |  | Toilet, Mosque, EE Room & Workshop - Backfilling | 8d | 2026-05-31 | 2026-06-08 | NJR1-CO-CW-210, NJR1-DE-SL-EA-100, NJR1-CO-TH-100, NJR1-CO-SW-200 SS | 22d | 0d | Excavator [64 h]; Skid Loader (Bobcat) [64 h]; Dump Truck [64 h]; Water Tank Truck [64 h]; Compactor [64 h]; Backfilling [2078.03]; General Labor [128 h]; Operator [320 h] | 74,809.22 | 6 |
| NJR1-CO-SW-200 |  | Underground Septic Tank - Backfilling | 4d | 2026-05-31 | 2026-06-03 | NJR1-CO-CW-290, NJR1-DE-SL-EA-100, NJR1-CO-ME-EX-SW-100, NJR1-CO-TH-130 | 22d | 0d | Excavator [32 h]; Skid Loader (Bobcat) [32 h]; Dump Truck [32 h]; Water Tank Truck [32 h]; Compactor [32 h]; Backfilling [33.97]; General Labor [64 h]; Operator [160 h] | 1,222.88 | 6 |
| NJR1-CO-SW-190 |  | Outside Mosque - Backfilling | 8d | 2026-08-16 | 2026-08-24 | NJR1-CO-CW-220, NJR1-DE-SL-EA-100, NJR1-CO-TH-110 | 0d |  | Excavator [64 h]; Skid Loader (Bobcat) [64 h]; Dump Truck [64 h]; Water Tank Truck [64 h]; Compactor [64 h]; Backfilling [29.19]; General Labor [128 h]; Operator [320 h] | 1,050.91 | 6 |
|  | 2 | **Pavements and Parkings** |  | 2026-09-28 | 2026-11-18 |  |  |  |  |  |  |
|  | 2 | **Bituminous wearing course asphalt layer** |  | 2026-11-03 | 2026-11-12 |  |  |  |  |  |  |
| NJR1-CO-SW-260 |  | Road 2 - Bituminous wearing course asphalt layer | 5d | 2026-11-03 | 2026-11-08 | NJR1-CO-SW-280, NJR1-CO-SW-230, NJR1-DE-SL-EA-110 | 18d | 0d | Compactor [80 h]; Asphalt Paver [40 h]; Bituminous wearing course asphalt layer [104.16]; Asphalt Labor [80 h]; Operator [120 h] | 99,993.6 | 2 |
| NJR1-CO-SW-250 |  | Road 1 - Bituminous wearing course asphalt layer | 5d | 2026-11-08 | 2026-11-12 | NJR1-CO-SW-270, NJR1-CO-SW-220, NJR1-DE-SL-EA-110 | 14d | 0d | Compactor [80 h]; Asphalt Paver [40 h]; Bituminous wearing course asphalt layer [26.04]; Asphalt Labor [80 h]; Operator [120 h] | 24,998.4 | 2 |
|  | 3 | **Bituminous base course asphalt layer** |  | 2026-10-26 | 2026-11-02 |  |  |  |  |  |  |
| NJR1-CO-SW-280 |  | Road 2 - Bituminous base course asphalt layer | 3d | 2026-10-26 | 2026-10-28 | NJR1-CO-SW-300, NJR1-DE-SL-EA-120 | 18d | 0d | Compactor [48 h]; Asphalt Paver [24 h]; Bituminous base course asphalt layer [145.92]; Asphalt Labor [48 h]; Operator [72 h] | 140,083.2 | 2 |
| NJR1-CO-SW-270 |  | Road 1 - Bituminous base course asphalt layer | 3d | 2026-10-31 | 2026-11-02 | NJR1-CO-SW-290, NJR1-DE-SL-EA-120, NJR1-MI-CM-160 | 14d | 0d | Compactor [48 h]; Asphalt Paver [24 h]; Bituminous base course asphalt layer [36.48]; Asphalt Labor [48 h]; Operator [72 h] | 35,020.8 | 2 |
|  | 4 | **Base course layer** |  | 2026-10-12 | 2026-10-25 |  |  |  |  |  |  |
| NJR1-CO-SW-290 |  | Road 1 - Base course layer | 6d | 2026-10-12 | 2026-10-18 | NJR1-CO-SW-310, NJR1-CO-SW-390, NJR1-CO-SW-410, NJR1-DE-SL-EA-130 | 24d | 10d | Pay Loader [48 h]; Skid Loader (Bobcat) [48 h]; Dump Truck [48 h]; Water Tank Truck [48 h]; Compactor [48 h]; Base course layer [104.04]; General Labor [96 h]; Operator [240 h] | 5,202 | 3 |
| NJR1-CO-SW-300 |  | Road 2 - Base course layer | 6d | 2026-10-19 | 2026-10-25 | NJR1-CO-SW-320, NJR1-CO-SW-400, NJR1-CO-SW-420, NJR1-CO-SW-430, NJR1-DE-SL-EA-130 | 18d | 0d | Pay Loader [48 h]; Skid Loader (Bobcat) [48 h]; Dump Truck [48 h]; Water Tank Truck [48 h]; Compactor [48 h]; Base course layer [416.16]; General Labor [96 h]; Operator [240 h] | 20,808 | 3 |
|  | 5 | **Subgrade material** |  | 2026-09-28 | 2026-10-11 |  |  |  |  |  |  |
| NJR1-CO-SW-310 |  | Road 1 - Subgrade material | 6d | 2026-09-28 | 2026-10-04 | NJR1-DE-SL-EA-140, NJR1-CO-PR-120, NJR1-CO-ME-EX-FF-130, NJR1-CO-ME-EX-WS-190, NJR1-CO-ME-EX-WS-200, NJR1-CO-ME-EX-WS-210, NJR1-CO-EE-EX-250, NJR1-CO-EE-EX-260, NJR1-CO-ME-EX-FF-120, NJR1-CO-TH-860, NJR1-CO-ME-EX-SW-122, NJR1-CO-ME-EX-SW-112, NJR1-CO-ME-IN-FF-560, NJR1-CO-ME-IN-WS-270, NJR1-MI-BM-270 | 11d | 0d | Pay Loader [48 h]; Skid Loader (Bobcat) [48 h]; Dump Truck [48 h]; Water Tank Truck [48 h]; Compactor [48 h]; Subgrade material [156]; General Labor [96 h]; Operator [240 h] | 6,240 | 4 |
| NJR1-CO-SW-320 |  | Road 2 - Subgrade material | 6d | 2026-10-05 | 2026-10-11 | NJR1-DE-SL-EA-140, NJR1-CO-SW-310, NJR1-CO-TH-860, NJR1-CO-SW-200, NJR1-CO-ME-IN-FF-560, NJR1-CO-ME-IN-WS-270, NJR1-MI-BM-270 | 11d | 0d | Pay Loader [48 h]; Skid Loader (Bobcat) [48 h]; Dump Truck [48 h]; Water Tank Truck [48 h]; Compactor [48 h]; Subgrade material [624]; General Labor [96 h]; Operator [240 h] | 24,960 | 4 |

| ID | WBS | Activity | Duration | Start | Finish | Predecessors | Total float | Free float | Resources | Cost | WBS-BOQ |
| --- | --- | --- | --- | --- | --- | --- | --- | --- | --- | --- | --- |
|  | 6 | **Retroreflective Thermoplastic White Traffic lines** |  | 2026-11-09 | 2026-11-18 |  |  |  |  |  |  |
| NJR1-CO-SW-340 |  | Road 2 - Retroreflective Thermoplastic White Traffic lines | 5d | 2026-11-09 | 2026-11-14 | NJR1-CO-SW-260, NJR1-DE-SL-EA-150 | 21d |  | Retroreflective Thermoplastic White Traffic lines [0.48]; Painter [120 h] | 5,760 | 5 |
| NJR1-CO-SW-330 |  | Road 1 - Retroreflective Thermoplastic White Traffic lines | 5d | 2026-11-14 | 2026-11-18 | NJR1-CO-SW-250, NJR1-DE-SL-EA-150, NJR1-MI-CM-150 | 17d |  | Retroreflective Thermoplastic White Traffic lines [0.12]; Painter [120 h] | 1,440 | 5 |
|  | 7 | **Retroreflective Thermoplastic Yellow Traffic lines** |  | 2026-11-09 | 2026-11-18 |  |  |  |  |  |  |
| NJR1-CO-SW-360 |  | Road 2 - Retroreflective Thermoplastic Yellow Traffic lines | 5d | 2026-11-09 | 2026-11-14 | NJR1-CO-SW-260, NJR1-DE-SL-EA-150 | 21d |  | Retroreflective Thermoplastic Yellow Traffic lines [0.48]; Painter [120 h] | 5,760 | 6 |
| NJR1-CO-SW-350 |  | Road 1 - Retroreflective Thermoplastic Yellow Traffic lines | 5d | 2026-11-14 | 2026-11-18 | NJR1-CO-SW-250, NJR1-DE-SL-EA-150 | 17d |  | Retroreflective Thermoplastic Yellow Traffic lines [0.12]; Painter [120 h] | 1,440 | 6 |
|  | 8 | **Concrete parking bumper with dimensions 1800*150*100 mm** |  | 2026-11-09 | 2026-11-18 |  |  |  |  |  |  |
| NJR1-CO-SW-380 |  | Road 2 - Concrete parking bumper | 5d | 2026-11-09 | 2026-11-14 | NJR1-CO-SW-260, NJR1-DE-SL-EA-160 | 21d |  | Fork Lift [40 h]; Concrete parking bumper with dimensions 1800*150*100 mm [20.16]; General Labor [280 h]; Operator [40 h] | 4,636.8 | 7 |
| NJR1-CO-SW-370 |  | Road 1 - Concrete parking bumper | 5d | 2026-11-14 | 2026-11-18 | NJR1-CO-SW-250, NJR1-DE-SL-EA-160 | 17d |  | Fork Lift [40 h]; Concrete parking bumper with dimensions 1800*150*100 mm [5.04]; General Labor [280 h]; Operator [40 h] | 1,159.2 | 7 |
|  | 1 | **Interlocking pedstrian paving blocks** |  | 2026-10-29 | 2026-11-07 |  |  |  |  |  |  |
| NJR1-CO-SW-230 |  | Road 2 - Interlocking block pavers, 200*100*60mm | 4d | 2026-10-29 | 2026-11-02 | NJR1-CO-SW-280, NJR1-CO-SW-420, NJR1-CO-SW-430, NJR1-CO-SW-400, NJR1-DE-SL-EA-170 | 18d | 0d | Fork Lift [32 h]; Interlocking pedstrian paving blocks [636.48]; Landscape Labor [160 h]; Operator [32 h] | 70,012.8 | 8 |
| NJR1-CO-SW-220 |  | Road 1 - Interlocking block pavers, 200*100*60mm | 4d | 2026-11-03 | 2026-11-07 | NJR1-CO-SW-270, NJR1-CO-SW-390, NJR1-CO-SW-410, NJR1-DE-SL-EA-170 | 14d | 0d | Fork Lift [32 h]; Interlocking pedstrian paving blocks [159.12]; Landscape Labor [160 h]; Operator [32 h] | 17,503.2 | 8 |
|  | 4 | **Precast concrete curbstone** |  | 2026-10-05 | 2026-10-18 |  |  |  |  |  |  |
|  | 1 | **Kerb type K1A** |  | 2026-10-05 | 2026-10-18 |  |  |  |  |  |  |
| NJR1-CO-SW-390 |  | Road 1 - Kerb type K1A | 6d | 2026-10-05 | 2026-10-11 | NJR1-CO-SW-310, NJR1-DE-SL-EA-180, NJR1-CO-ME-IN-FF-560 | 24d | 0d | Fork Lift [48 h]; Kerb type K1A [123.48]; Landscape Labor [288 h]; Operator [48 h] | 11,730.6 | 1 |
| NJR1-CO-SW-400 |  | Road 2 - Kerb type K1A | 6d | 2026-10-12 | 2026-10-18 | NJR1-CO-SW-320, NJR1-DE-SL-EA-180, NJR1-CO-ME-IN-FF-560 | 18d | 0d | Fork Lift [48 h]; Kerb type K1A [493.92]; Landscape Labor [288 h]; Operator [48 h] | 46,922.4 | 1 |
|  | 2 | **Kerb type K1B** |  | 2026-10-05 | 2026-10-18 |  |  |  |  |  |  |
| NJR1-CO-SW-410 |  | Road 1 - Kerb type K1B | 6d | 2026-10-05 | 2026-10-11 | NJR1-CO-SW-310, NJR1-DE-SL-EA-180 | 24d | 0d | Fork Lift [48 h]; Kerb type K1B [30.84]; Landscape Labor [288 h]; Operator [48 h] | 2,929.8 | 2 |
| NJR1-CO-SW-420 |  | Road 2 - Kerb type K1B | 6d | 2026-10-12 | 2026-10-18 | NJR1-CO-SW-320, NJR1-DE-SL-EA-180 | 18d | 0d | Fork Lift [48 h]; Kerb type K1B [123.36]; Landscape Labor [288 h]; Operator [48 h] | 11,719.2 | 2 |
|  | 3 | **Kerb type K3** |  | 2026-10-12 | 2026-10-18 |  |  |  |  |  |  |
| NJR1-CO-SW-430 |  | Road 2 - Kerb type K3 | 6d | 2026-10-12 | 2026-10-18 | NJR1-CO-SW-320, NJR1-DE-SL-EA-180 | 18d | 0d | Fork Lift [48 h]; Kerb type K3 [4.8]; Landscape Labor [288 h]; Operator [48 h] | 456 | 3 |
|  | 3 | **Road Signs** |  | 2026-11-14 | 2026-11-21 |  |  |  |  |  |  |
|  | 1 | **Traffic signs** |  | 2026-11-14 | 2026-11-21 |  |  |  |  |  |  |
| NJR1-CO-SW-240 |  | Install traffic signs aluminum sheet, (breakaway) Single post I.P.E. | 7d | 2026-11-14 | 2026-11-21 | NJR1-CO-SW-260, NJR1-CO-SW-250, NJR1-DE-SL-EA-190 | 15d |  | Install traffic signs aluminum sheet, (breakaway) Single post I.P.E. [15]; Landscape Labor [112 h] | 18,000 | 1 |

| ID | WBS | Activity | Duration | Start | Finish | Predecessors | Total float | Free float | Resources | Cost | WBS-BOQ |
| --- | --- | --- | --- | --- | --- | --- | --- | --- | --- | --- | --- |
|  | 2 | **DIVISION 03 - CONCRETE WORKS** |  | 2026-04-27 | 2026-10-03 |  |  |  |  |  |  |
|  | 1 | **Lean Concrete** |  | 2026-04-27 | 2026-07-28 |  |  |  |  |  |  |
| NJR1-CO-CW-100 |  | Toilet, Mosque, EE Room & Workshop - Lean concrete | 4d | 2026-04-27 | 2026-04-30 | NJR1-CO-SW-100, NJR1-CO-TH-140 SS, NJR1-DE-SL-CO-100, NJR1-DE-SL-CO-110 | 22d | 0d | Fork Lift [32 h]; Lean Concrete [89]; General Labor [192 h]; Concreting Labor [64 h]; Operator [32 h] | 6,675.14 | 1 |
| NJR1-CO-CW-130 |  | GRP Water Tank and Pump Shed - Lean concrete | 2d | 2026-04-27 | 2026-04-29 | NJR1-CO-SW-130, NJR1-DE-SL-CO-100, NJR1-DE-SL-CO-110, NJR1-CO-TH-160 | 24.5d | 0d | Fork Lift [16 h]; Lean Concrete [9.09]; General Labor [32 h]; Concreting Labor [32 h]; Operator [16 h] | 681.98 | 1 |
| NJR1-CO-CW-120 |  | Underground Septic Tank - Lean concrete | 1d | 2026-05-03 | 2026-05-03 | NJR1-CO-SW-120, NJR1-DE-SL-CO-100, NJR1-DE-SL-CO-110, NJR1-CO-TH-170 | 22d | 0d | Fork Lift [8 h]; Lean Concrete [1.45]; General Labor [16 h]; Concreting Labor [16 h]; Operator [8 h] | 109.12 | 1 |
| NJR1-CO-CW-110 |  | Outside Mosque - Lean concrete | 4d | 2026-07-25 | 2026-07-28 | NJR1-CO-SW-110, NJR1-CO-TH-150 SS, NJR1-DE-SL-CO-100, NJR1-DE-SL-CO-110 | 0d |  | Fork Lift [32 h]; Lean Concrete [1.25]; General Labor [192 h]; Concreting Labor [64 h]; Operator [32 h] | 93.77 | 1 |
|  | 2 | **Reinforced concrete** |  | 2026-04-29 | 2026-10-03 |  |  |  |  |  |  |
|  | 1 | **Isolated Footings** |  | 2026-04-29 | 2026-08-09 |  |  |  |  |  |  |
| NJR1-CO-CW-160 |  | GRP Water Tank and Pump Shed - Footing | 4d | 2026-04-29 | 2026-05-04 | NJR1-CO-CW-130 | 24.5d | 0d | Water Tank Truck [32 h]; Crane [32 h]; Fork Lift [32 h]; Isolated Footings [6.92]; General Labor [96 h]; Carpenter [128 h]; Steel Fixer [128 h]; Concreting Labor [64 h]; Operator [96 h] | 7,265.6 | 1 |
| NJR1-CO-CW-140 |  | Toilet, Mosque, EE Room & Workshop - Footing | 10d | 2026-05-02 | 2026-05-12 | NJR1-CO-CW-100 | 22d | 0d | Water Tank Truck [80 h]; Crane [80 h]; Fork Lift [80 h]; Isolated Footings [67.73]; General Labor [320 h]; Carpenter [640 h]; Steel Fixer [640 h]; Concreting Labor [400 h]; Operator [240 h] | 71,115.37 | 1 |
| NJR1-CO-CW-150 |  | Outside Mosque - Footing | 10d | 2026-07-29 | 2026-08-09 | NJR1-CO-CW-110 | 0d |  | Water Tank Truck [80 h]; Crane [80 h]; Fork Lift [80 h]; Isolated Footings [0.95]; General Labor [480 h]; Carpenter [640 h]; Steel Fixer [640 h]; Concreting Labor [400 h]; Operator [240 h] | 999.02 | 1 |
|  | 2 | **Grade beams** |  | 2026-05-30 | 2026-08-30 |  |  |  |  |  |  |
| NJR1-CO-CW-190 |  | GRP Water Tank and Pump Shed - Grade Beam | 5d | 2026-05-30 | 2026-06-03 | NJR1-MI-BM-210 | 13d | 0d | Water Tank Truck [40 h]; Crane [40 h]; Fork Lift [40 h]; Grade beams [8.73]; General Labor [160 h]; Carpenter [240 h]; Steel Fixer [240 h]; Concreting Labor [160 h]; Operator [120 h] | 10,478.29 | 2 |
| NJR1-CO-CW-170 |  | Toilet, Mosque, EE Room & Workshop - Grade Beam | 12d | 2026-06-09 | 2026-06-22 | NJR1-MI-BM-110 | 22d | 0d | Water Tank Truck [96 h]; Crane [96 h]; Fork Lift [96 h]; Grade beams [85.47]; General Labor [1056 h]; Carpenter [1440 h]; Steel Fixer [1440 h]; Concreting Labor [1056 h]; Operator [288 h] | 102,560.95 | 2 |
| NJR1-CO-CW-180 |  | Outside Mosque - Grade Beam | 5d | 2026-08-25 | 2026-08-30 | NJR1-MI-BM-160 | 0d |  | Water Tank Truck [40 h]; Crane [40 h]; Fork Lift [40 h]; Grade beams [1.2]; General Labor [240 h]; Carpenter [320 h]; Steel Fixer [320 h]; Concreting Labor [200 h]; Operator [120 h] | 1,440.76 | 2 |
|  | 3 | **Tank Footing** |  | 2026-05-04 | 2026-05-07 |  |  |  |  |  |  |
| NJR1-CO-CW-200 |  | Underground Septic Tank - Tank Footing | 4d | 2026-05-04 | 2026-05-07 | NJR1-CO-CW-120 | 22d | 0d | Water Tank Truck [32 h]; Crane [32 h]; Fork Lift [32 h]; Tank Footing [29.4]; General Labor [192 h]; Carpenter [320 h]; Steel Fixer [256 h]; Concreting Labor [160 h]; Operator [96 h] | 35,280 | 3 |
|  | 4 | **Pedestal** |  | 2026-05-04 | 2026-08-15 |  |  |  |  |  |  |
| NJR1-CO-CW-230 |  | GRP Water Tank and Pump Shed - Pedestal | 4d | 2026-05-04 | 2026-05-09 | NJR1-CO-CW-160 | 24.5d | 11.5d | Water Tank Truck [32 h]; Crane [32 h]; Fork Lift [32 h]; Pedestal [1.81]; General Labor [128 h]; Carpenter [192 h]; Steel Fixer [192 h]; Concreting Labor [128 h]; Operator [96 h] | 2,355.97 | 4 |
| NJR1-CO-CW-210 |  | Toilet, Mosque, EE Room & Workshop - Pedestal | 12d | 2026-05-13 | 2026-05-30 | NJR1-CO-CW-140 | 22d | 0d | Water Tank Truck [96 h]; Crane [96 h]; Fork Lift [96 h]; Pedestal [17.74]; General Labor [576 h]; Carpenter [960 h]; Steel Fixer [960 h]; Concreting Labor [480 h]; Operator [288 h] | 23,060.09 | 4 |
| NJR1-CO-CW-220 |  | Outside Mosque - Pedestal | 5d | 2026-08-10 | 2026-08-15 | NJR1-CO-CW-150 | 0d |  | Water Tank Truck [40 h]; Crane [40 h]; Fork Lift [40 h]; Pedestal [0.25]; General Labor [240 h]; Carpenter [400 h]; Steel Fixer [400 h]; Concreting Labor [200 h]; Operator [120 h] | 323.95 | 4 |
|  | 5 | **Concrete Pad** |  | 2026-06-25 | 2026-07-01 |  |  |  |  |  |  |
| NJR1-CO-CW-240 |  | GRP Water Tank and Pump Shed - Concrete Pad | 6d | 2026-06-25 | 2026-07-01 | NJR1-CO-PR-180, NJR1-MI-BM-220 | 21d | 0d | Water Tank Truck [48 h]; Crane [48 h]; Fork Lift [48 h]; GRP Water Tank and Pump Shed - Concrete Pad [1.8]; General Labor [288 h]; Carpenter [384 h]; Steel Fixer [384 h]; Concreting Labor [240 h]; Operator [144 h] | 2,520 | 5 |
|  | 6 | **Roof Slab** |  | 2026-07-07 | 2026-07-20 |  |  |  |  |  |  |
| NJR1-CO-CW-250 |  | Toilet, Mosque & EE Room - Roof Slab | 12d | 2026-07-07 | 2026-07-20 | NJR1-CO-CW-300 | 31d | 0d | Water Tank Truck [96 h]; Crane [96 h]; Fork Lift [96 h]; Toilet, Mosque & EE Room - Roof Slab [9]; General Labor [1152 h]; Carpenter [1344 h]; Steel Fixer [1344 h]; Concreting Labor [480 h]; Operator [288 h] | 12,150 | 6 |

| ID | WBS | Activity | Duration | Start | Finish | Predecessors | Total float | Free float | Resources | Cost | WBS-BOQ |
| --- | --- | --- | --- | --- | --- | --- | --- | --- | --- | --- | --- |
|  | 7 | **Roof Beams** |  | 2026-07-21 | 2026-08-03 |  |  |  |  |  |  |
| NJR1-CO-CW-260 |  | Toilet, Mosque & EE Room - Roof Beam | 12d | 2026-07-21 | 2026-08-03 | NJR1-CO-CW-300, NJR1-CO-CW-250 | 31d | 0d | Water Tank Truck [96 h]; Crane [96 h]; Fork Lift [96 h]; Toilet, Mosque & EE Room - Roof Beam [5.4]; General Labor [1152 h]; Carpenter [1344 h]; Steel Fixer [1344 h]; Concreting Labor [480 h]; Operator [288 h] | 7,290 | 12 |
|  | 8 | **For Pump room SOG + external steps and ramps** |  | 2026-06-04 | 2026-06-08 |  |  |  |  |  |  |
| NJR1-CO-CW-270 |  | GRP Water Tank and Pump Shed - SOG | 4d | 2026-06-04 | 2026-06-08 | NJR1-CO-CW-190 | 13d | 2d | Water Tank Truck [32 h]; Fork Lift [32 h]; GRP Water Tank and Pump Shed - SOG [12]; General Labor [64 h]; Carpenter [96 h]; Steel Fixer [96 h]; Concreting Labor [64 h]; Operator [64 h] | 12,000 | 7 |
|  | 9 | **Tank Walls** |  | 2026-05-09 | 2026-05-14 |  |  |  |  |  |  |
| NJR1-CO-CW-280 |  | Underground Septic Tank - Wall | 6d | 2026-05-09 | 2026-05-14 | NJR1-CO-CW-200 | 22d | 0d | Water Tank Truck [48 h]; Crane [48 h]; Fork Lift [48 h]; Underground Septic Tank - Wall [15]; General Labor [96 h]; Carpenter [144 h]; Steel Fixer [144 h]; Concreting Labor [96 h]; Operator [144 h] | 19,500 | 8 |
|  | 10 | **Tank Slab** |  | 2026-05-16 | 2026-05-24 |  |  |  |  |  |  |
| NJR1-CO-CW-290 |  | Underground Septic Tank - Slab | 8d | 2026-05-16 | 2026-05-24 | NJR1-CO-CW-280 | 22d | 0d | Water Tank Truck [64 h]; Fork Lift [64 h]; Underground Septic Tank - Slab [6]; General Labor [128 h]; Carpenter [192 h]; Steel Fixer [192 h]; Concreting Labor [128 h]; Operator [128 h] | 7,800 | 9 |
|  | 11 | **150 mm thk concrete floor slab on grade** |  | 2026-06-27 | 2026-09-06 |  |  |  |  |  |  |
| NJR1-CO-CW-300 |  | Toilet, Mosque, EE Room & Workshop - SOG | 9d | 2026-06-27 | 2026-07-06 | NJR1-CO-CW-170, NJR1-CO-ME-IN-SW-107 | 22d | 0d | Water Tank Truck [72 h]; Fork Lift [72 h]; 150 mm thk concrete floor slab on grade [181.65]; General Labor [432 h]; Carpenter [576 h]; Steel Fixer [576 h]; Concreting Labor [360 h]; Operator [144 h] | 172,565.82 | 10 |
| NJR1-CO-CW-360 |  | Outside Mosque - SOG | 6d | 2026-08-31 | 2026-09-06 | NJR1-CO-CW-180 | 0d |  | Water Tank Truck [48 h]; Fork Lift [48 h]; 150 mm thk concrete floor slab on grade [2.55]; General Labor [288 h]; Carpenter [384 h]; Steel Fixer [384 h]; Concreting Labor [240 h]; Operator [96 h] | 2,424.18 | 10 |
|  | 12 | **Autoclaved aerated panel** |  | 2026-09-07 | 2026-10-03 |  |  |  |  |  |  |
|  | 1 | **Outside Mosque** |  | 2026-09-07 | 2026-10-03 |  |  |  |  |  |  |
| NJR1-CO-CW-320 |  | Install AAC Panels - External Walls | 10d | 2026-09-07 | 2026-09-17 | NJR1-DE-LL-CO-100, NJR1-MI-BM-170 | 0d |  | Skid Loader (Bobcat) [80 h]; Water Tank Truck [80 h]; Fork Lift [80 h]; Autoclaved aerated panel [19.8]; General Labor [240 h]; Carpenter [480 h]; Steel Fixer [400 h]; Concreting Labor [160 h]; Operator [240 h] | 5,940 | 11 |
| NJR1-CO-CW-340 |  | Install AAC Roof Slab | 6d | 2026-09-19 | 2026-09-26 | NJR1-CO-CW-320 | 0d |  | Skid Loader (Bobcat) [48 h]; Water Tank Truck [48 h]; Crane [48 h]; Fork Lift [48 h]; Autoclaved aerated panel [6.6]; General Labor [144 h]; Carpenter [288 h]; Steel Fixer [240 h]; Concreting Labor [96 h]; Operator [192 h] | 1,980 | 11 |
| NJR1-CO-CW-350 |  | Install AAC Parapet Wall | 6d | 2026-09-27 | 2026-10-03 | NJR1-CO-CW-340 | 0d |  | Skid Loader (Bobcat) [48 h]; Water Tank Truck [48 h]; Fork Lift [48 h]; Autoclaved aerated panel [6.6]; General Labor [144 h]; Carpenter [288 h]; Steel Fixer [240 h]; Concreting Labor [96 h]; Operator [144 h] | 1,980 | 11 |
|  | 3 | **DIVISION 04 - MASONRY WORKS** |  | 2026-09-10 | 2026-10-10 |  |  |  |  |  |  |
|  | 1 | **400*200mm CMU for internal walls** |  | 2026-09-10 | 2026-10-10 |  |  |  |  |  |  |
|  | 1 | **Install CMU wall at internal walls (100mm thick)** |  | 2026-10-03 | 2026-10-10 |  |  |  |  |  |  |
| NJR1-CO-MA-100 |  | Toilet 1 - Install 100mm thick CMU internal wall | 7d | 2026-10-03 | 2026-10-10 | NJR1-CO-MA-110 | 0d |  | Skid Loader (Bobcat) [56 h]; Water Tank Truck [56 h]; Fork Lift [56 h]; Install CMU wall at internal walls (100mm thick) [10.2]; Mason [280 h]; Operator [168 h] | 816 | 1 |
| NJR1-CO-MA-140 |  | Toilet 2 - Install 100mm thick CMU internal wall | 7d | 2026-10-03 | 2026-10-10 | NJR1-CO-MA-150 | 0d |  | Skid Loader (Bobcat) [56 h]; Water Tank Truck [56 h]; Fork Lift [56 h]; Install CMU wall at internal walls (100mm thick) [10.2]; Mason [280 h]; Operator [168 h] | 816 | 1 |
|  | 2 | **Install CMU wall at internal walls (200mm thick)** |  | 2026-09-20 | 2026-10-01 |  |  |  |  |  |  |
| NJR1-CO-MA-110 |  | Toilet 1 - Install 200mm thick CMU internal wall | 10d | 2026-09-20 | 2026-10-01 | NJR1-CO-MA-120 | 0d |  | Skid Loader (Bobcat) [80 h]; Water Tank Truck [80 h]; Fork Lift [80 h]; Install CMU wall at internal walls (200mm thick) [46.8]; Mason [400 h]; Operator [240 h] | 4,212 | 2 |
| NJR1-CO-MA-150 |  | Toilet 2 - Install 200mm thick CMU internal wall | 10d | 2026-09-20 | 2026-10-01 | NJR1-CO-MA-170 | 0d |  | Skid Loader (Bobcat) [80 h]; Water Tank Truck [80 h]; Fork Lift [80 h]; Install CMU wall at internal walls (200mm thick) [46.8]; Mason [400 h]; Operator [240 h] | 4,212 | 2 |
| NJR1-CO-MA-160 |  | Mosque - Install 200mm thick CMU internal wall | 10d | 2026-09-20 | 2026-10-01 | NJR1-CO-MA-180 | 1d | 0d | Skid Loader (Bobcat) [80 h]; Water Tank Truck [80 h]; Fork Lift [80 h]; Install CMU wall at internal walls (200mm thick) [26.4]; Mason [400 h]; Operator [240 h] | 2,376 | 2 |

| ID | WBS | Activity | Duration | Start | Finish | Predecessors | Total float | Free float | Resources | Cost | WBS-BOQ |
| --- | --- | --- | --- | --- | --- | --- | --- | --- | --- | --- | --- |
|  | 3 | **Install CMU wall at external walls (200mm thick insulated)** |  | 2026-09-10 | 2026-09-19 |  |  |  |  |  |  |
| NJR1-CO-MA-120 |  | Toilet 1 - Install 200mm thick insulated CMU external wall | 8d | 2026-09-10 | 2026-09-19 | NJR1-DE-SL-MA-100, NJR1-MI-BM-120 | 0d |  | Skid Loader (Bobcat) [64 h]; Water Tank Truck [64 h]; Fork Lift [64 h]; Install CMU wall at external walls (200mm thick insulated) [28.08]; Mason [320 h]; Operator [192 h] | 2,808 | 3 |
| NJR1-CO-MA-170 |  | Toilet 2 - Install 200mm thick insulated CMU external wall | 8d | 2026-09-10 | 2026-09-19 | NJR1-DE-SL-MA-100, NJR1-MI-BM-120 | 0d |  | Skid Loader (Bobcat) [64 h]; Water Tank Truck [64 h]; Fork Lift [64 h]; Install CMU wall at external walls (200mm thick insulated) [28.08]; Mason [320 h]; Operator [192 h] | 2,808 | 3 |
| NJR1-CO-MA-180 |  | Mosque - Install 200mm thick insulated CMU external wall | 8d | 2026-09-10 | 2026-09-19 | NJR1-DE-SL-MA-100, NJR1-MI-BM-120 | 1d | 0d | Skid Loader (Bobcat) [64 h]; Water Tank Truck [64 h]; Fork Lift [64 h]; Install CMU wall at external walls (200mm thick insulated) [15.84]; Mason [320 h]; Operator [192 h] | 1,584 | 3 |
|  | 4 | **Install CMU wall at electrical room (200mm thick, 2 hr fire rated)** |  | 2026-09-10 | 2026-09-15 |  |  |  |  |  |  |
| NJR1-CO-MA-130 |  | EE Room 1 - Install 200mm thick 2hr fire rated CMU wall | 5d | 2026-09-10 | 2026-09-15 | NJR1-DE-SL-MA-100, NJR1-MI-BM-120 | 4d | 0d | Skid Loader (Bobcat) [40 h]; Water Tank Truck [40 h]; Fork Lift [40 h]; Install CMU wall at electrical room (200mm thick, 2 hr fire rated) [27]; Mason [200 h]; Operator [120 h] | 2,700 | 4 |
| NJR1-CO-MA-190 |  | EE Room 2 - Install 200mm thick 2hr fire rated CMU wall | 5d | 2026-09-10 | 2026-09-15 | NJR1-DE-SL-MA-100, NJR1-MI-BM-120 | 4d | 0d | Skid Loader (Bobcat) [40 h]; Water Tank Truck [40 h]; Fork Lift [40 h]; Install CMU wall at electrical room (200mm thick, 2 hr fire rated) [27]; Mason [200 h]; Operator [120 h] | 2,700 | 4 |
|  | 9 | **DIVISION 05 - METAL WORKS** |  | 2026-09-15 | 2026-11-24 |  |  |  |  |  |  |
|  | 1 | **Steel ladder with safety cage** |  | 2026-11-08 | 2026-11-12 |  |  |  |  |  |  |
| NJR1-CO-MW-100 |  | Workshop - steel ladder | 5d | 2026-11-08 | 2026-11-12 | NJR1-CO-PR-120, NJR1-CO-SW-220, NJR1-CO-SW-230, NJR1-DE-SL-MW-100 | 22d |  | Fork Lift [40 h]; Steel ladder with safety cage [0.6]; General Labor [80 h]; Operator [40 h] | 5,400 | 1 |
|  | 2 | **Steel bollards 1135mm height** |  | 2026-11-14 | 2026-11-22 |  |  |  |  |  |  |
| NJR1-CO-MW-110 |  | Road 1 - bollard | 4d | 2026-11-14 | 2026-11-17 | NJR1-DE-SL-MW-110, NJR1-CO-SW-250, NJR1-CO-SW-260 | 14d | 0d | Steel bollards 1135mm height [7.2]; General Labor [64 h] | 5,040 | 2 |
| NJR1-CO-MW-120 |  | Road 2 - bollard | 4d | 2026-11-18 | 2026-11-22 | NJR1-DE-SL-MW-110, NJR1-CO-MW-110 | 14d |  | Steel bollards 1135mm height [7.2]; General Labor [64 h] | 5,040 | 2 |
|  | 3 | **Galvanised steel gratings 400mm wide*4000mm long** |  | 2026-09-15 | 2026-11-24 |  |  |  |  |  |  |
| NJR1-CO-MW-130 |  | Workshop 1 - Galvanised steel grating | 5d | 2026-09-15 | 2026-09-20 | NJR1-CO-TH-260, NJR1-DE-SL-MW-120 | 12d | 0d | Galvanised steel gratings 400mm wide*4000mm long [0.6]; General Labor [80 h] | 1,800 | 3 |
| NJR1-CO-MW-160 |  | Workshop 2 - Galvanised steel grating | 5d | 2026-09-21 | 2026-09-27 | NJR1-CO-TH-270, NJR1-CO-MW-130, NJR1-DE-SL-MW-120 | 12d | 0d | Galvanised steel gratings 400mm wide*4000mm long [0.6]; General Labor [80 h] | 1,800 | 3 |
| NJR1-CO-MW-170 |  | Workshop 3 - Galvanised steel grating | 5d | 2026-09-28 | 2026-10-03 | NJR1-CO-TH-280, NJR1-CO-MW-160, NJR1-DE-SL-MW-120 | 12d | 0d | Galvanised steel gratings 400mm wide*4000mm long [0.6]; General Labor [80 h] | 1,800 | 3 |
| NJR1-CO-MW-180 |  | Workshop 4 - Galvanised steel grating | 5d | 2026-10-04 | 2026-10-08 | NJR1-CO-TH-290, NJR1-CO-MW-170, NJR1-DE-SL-MW-120 | 12d | 0d | Galvanised steel gratings 400mm wide*4000mm long [0.6]; General Labor [80 h] | 1,800 | 3 |
| NJR1-CO-MW-190 |  | Workshop 5 - Galvanised steel grating | 5d | 2026-10-10 | 2026-10-14 | NJR1-CO-TH-300, NJR1-CO-MW-180, NJR1-DE-SL-MW-120 | 12d | 0d | Galvanised steel gratings 400mm wide*4000mm long [0.6]; General Labor [80 h] | 1,800 | 3 |
| NJR1-CO-MW-200 |  | Workshop 6 - Galvanised steel grating | 5d | 2026-10-15 | 2026-10-20 | NJR1-CO-TH-310, NJR1-CO-MW-190, NJR1-DE-SL-MW-120 | 12d | 0d | Galvanised steel gratings 400mm wide*4000mm long [0.6]; General Labor [80 h] | 1,800 | 3 |
| NJR1-CO-MW-210 |  | Workshop 7 - Galvanised steel grating | 5d | 2026-10-21 | 2026-10-26 | NJR1-CO-TH-320, NJR1-CO-MW-200, NJR1-DE-SL-MW-120 | 12d | 0d | Galvanised steel gratings 400mm wide*4000mm long [0.6]; General Labor [80 h] | 1,800 | 3 |
| NJR1-CO-MW-220 |  | Workshop 8 - Galvanised steel grating | 5d | 2026-10-27 | 2026-11-01 | NJR1-CO-TH-330, NJR1-CO-MW-210, NJR1-DE-SL-MW-120 | 12d | 0d | Galvanised steel gratings 400mm wide*4000mm long [0.6]; General Labor [80 h] | 1,800 | 3 |
| NJR1-CO-MW-230 |  | Workshop 9 - Galvanised steel grating | 5d | 2026-11-02 | 2026-11-07 | NJR1-CO-TH-340, NJR1-CO-MW-220, NJR1-DE-SL-MW-120 | 12d | 0d | Galvanised steel gratings 400mm wide*4000mm long [0.6]; General Labor [80 h] | 1,800 | 3 |
| NJR1-CO-MW-240 |  | Workshop 10 - Galvanised steel grating | 5d | 2026-11-08 | 2026-11-12 | NJR1-CO-TH-350, NJR1-CO-MW-230, NJR1-DE-SL-MW-120 | 12d | 0d | Galvanised steel gratings 400mm wide*4000mm long [0.6]; General Labor [80 h] | 1,800 | 3 |
| NJR1-CO-MW-250 |  | Workshop 11 - Galvanised steel grating | 5d | 2026-11-14 | 2026-11-18 | NJR1-CO-TH-360, NJR1-CO-MW-240, NJR1-DE-SL-MW-120 | 12d | 0d | Galvanised steel gratings 400mm wide*4000mm long [0.6]; General Labor [80 h] | 1,800 | 3 |
| NJR1-CO-MW-260 |  | Workshop 12 - Galvanised steel grating | 5d | 2026-11-19 | 2026-11-24 | NJR1-CO-TH-370, NJR1-CO-MW-250, NJR1-DE-SL-MW-120 | 12d |  | Galvanised steel gratings 400mm wide*4000mm long [0.6]; General Labor [80 h] | 1,800 | 3 |

| ID | WBS | Activity | Duration | Start | Finish | Predecessors | Total float | Free float | Resources | Cost | WBS-BOQ |
| --- | --- | --- | --- | --- | --- | --- | --- | --- | --- | --- | --- |
|  | 4 | **Overflow galvanized steel roof scupper** |  | 2026-10-15 | 2026-11-04 |  |  |  |  |  |  |
| NJR1-CO-MW-140 |  | Toilet, Mosque & EE Room - roof scupper | 5d | 2026-10-15 | 2026-10-20 | NJR1-CO-TH-620, NJR1-CO-TH-630, NJR1-DE-SL-MW-130 | 42d |  | Overflow galvanized steel roof scupper [3.6]; General Labor [40 h] | 3,240 | 4 |
| NJR1-CO-MW-150 |  | Outside Mosque - roof scupper | 5d | 2026-10-31 | 2026-11-04 | NJR1-CO-TH-670, NJR1-DE-SL-MW-130 | 29d |  | Overflow galvanized steel roof scupper [3.6]; General Labor [40 h] | 3,240 | 4 |
|  | 4 | **DIVISION 07 - THERMAL & MOISTURE PROTECTION** |  | 2026-04-22 | 2026-11-05 |  |  |  |  |  |  |
|  | 6 | **2 coats of bitumen waterproofing paint on concrete surface** |  | 2026-05-04 | 2026-08-11 |  |  |  |  |  |  |
| NJR1-CO-TH-120 |  | GRP Water Tank and Pump Shed - Bitumen Paint | 2d | 2026-05-04 | 2026-05-06 | NJR1-CO-CW-160, NJR1-DE-SL-TH-100 | 26.5d | 13.5d | 2 coats of bitumen waterproofing paint on concrete surface [17.08]; Waterproofing Installer [32 h] | 256.16 | 1 |
| NJR1-CO-TH-100 |  | Toilet, Mosque, EE Room & Workshop - Bitumen Paint | 4d | 2026-05-13 | 2026-05-17 | NJR1-CO-CW-140, NJR1-DE-SL-TH-100 | 30d | 8d | 2 coats of bitumen waterproofing paint on concrete surface [1044.71]; Waterproofing Installer [64 h] | 15,670.68 | 1 |
| NJR1-CO-TH-130 |  | Underground Septic Tank - Bitumen Paint | 2d | 2026-05-25 | 2026-05-30 | NJR1-CO-CW-290, NJR1-DE-SL-TH-100 | 22d | 0d | 2 coats of bitumen waterproofing paint on concrete surface [106.73]; Waterproofing Installer [32 h] | 1,601.02 | 1 |
| NJR1-CO-TH-110 |  | Outside Mosque - Bitumen Paint | 2d | 2026-08-10 | 2026-08-11 | NJR1-CO-CW-150, NJR1-DE-SL-TH-100, NJR1-CO-TH-130 | 3d |  | 2 coats of bitumen waterproofing paint on concrete surface [14.68]; Waterproofing Installer [32 h] | 220.14 | 1 |
|  | 2 | **250 micron thk polyethylene sheet under grade slab and footings** |  | 2026-04-25 | 2026-07-26 |  |  |  |  |  |  |
| NJR1-CO-TH-160 |  | GRP Water Tank and Pump Shed - polyethylene | 2d | 2026-04-25 | 2026-04-27 | NJR1-CO-SW-130, NJR1-CO-TH-200, NJR1-DE-SL-TH-110 | 24.5d | 0d | 250 micron thk polyethylene sheet under grade slab and footings [18.6]; Waterproofing Installer [32 h] | 186.02 | 2 |
| NJR1-CO-TH-140 |  | Toilet, Mosque, EE Room & Workshop - polyethylene | 4d | 2026-04-27 | 2026-04-30 | NJR1-CO-TH-180, NJR1-DE-SL-TH-110 | 22d | 0d | 250 micron thk polyethylene sheet under grade slab and footings [1137.95]; Waterproofing Installer [64 h] | 11,379.52 | 2 |
| NJR1-CO-TH-170 |  | Underground Septic Tank - polyethylene | 2d | 2026-04-30 | 2026-05-02 | NJR1-CO-SW-120, NJR1-CO-TH-210, NJR1-DE-SL-TH-110 | 22d | 0d | 250 micron thk polyethylene sheet under grade slab and footings [116.26]; Waterproofing Installer [32 h] | 1,162.61 | 2 |
| NJR1-CO-TH-150 |  | Outside Mosque -polyethylene | 2d | 2026-07-25 | 2026-07-26 | NJR1-CO-SW-110, NJR1-CO-TH-190, NJR1-DE-SL-TH-110 | 0d |  | 250 micron thk polyethylene sheet under grade slab and footings [15.99]; Waterproofing Installer [32 h] | 159.86 | 2 |
|  | 3 | **Anti termite under all concrete in touch with earth** |  | 2026-04-22 | 2026-07-23 |  |  |  |  |  |  |
| NJR1-CO-TH-180 |  | Toilet, Mosque, EE Room & Workshop - Anti termite | 4d | 2026-04-22 | 2026-04-26 | NJR1-CO-SW-100, NJR1-DE-SL-TH-120 | 22d | 0d | Anti termite under all concrete in touch with earth [1158.08]; Waterproofing Installer [64 h] | 9,264.67 | 3 |
| NJR1-CO-TH-200 |  | GRP Water Tank and Pump Shed - Anti termite | 2d | 2026-04-22 | 2026-04-23 | NJR1-CO-SW-130, NJR1-DE-SL-TH-120 | 25d | 0.5d | Anti termite under all concrete in touch with earth [18.93]; Waterproofing Installer [32 h] | 151.45 | 3 |
| NJR1-CO-TH-210 |  | Underground Septic Tank - Anti termite | 2d | 2026-04-28 | 2026-04-29 | NJR1-CO-SW-120, NJR1-DE-SL-TH-120 | 22d | 0d | Anti termite under all concrete in touch with earth [118.32]; Waterproofing Installer [32 h] | 946.54 | 3 |
| NJR1-CO-TH-190 |  | Outside Mosque - Anti termite | 2d | 2026-07-22 | 2026-07-23 | NJR1-CO-SW-110, NJR1-DE-SL-TH-120 | 0d |  | Anti termite under all concrete in touch with earth [16.27]; Waterproofing Installer [32 h] | 130.15 | 3 |
|  | 1 | **Water proofing system** |  | 2026-09-10 | 2026-11-05 |  |  |  |  |  |  |
|  | 1 | **Liquid applied waterproofing membrane for toilets** |  | 2026-10-17 | 2026-10-18 |  |  |  |  |  |  |
| NJR1-CO-TH-220 |  | Toilet 1 - Liquid applied waterproofing membrane | 2d | 2026-10-17 | 2026-10-18 | NJR1-CO-FW-370, NJR1-DE-SL-TH-130 | 6d | 0d | Liquid applied waterproofing membrane for toilets [24]; Waterproofing Installer [32 h] | 2,400 | 1 |
| NJR1-CO-TH-230 |  | Toilet 2 - Liquid applied waterproofing membrane | 2d | 2026-10-17 | 2026-10-18 | NJR1-CO-FW-380, NJR1-DE-SL-TH-130 | 3d | 0d | Liquid applied waterproofing membrane for toilets [24]; Waterproofing Installer [32 h] | 2,400 | 1 |
|  | 2 | **Geotextile sheet** |  | 2026-10-17 | 2026-10-18 |  |  |  |  |  |  |
| NJR1-CO-TH-240 |  | Toilet 1 - Geotextile sheet | 2d | 2026-10-17 | 2026-10-18 | NJR1-CO-TH-220 SS, NJR1-DE-SL-TH-140 | 6d | 0d | Geotextile sheet [24]; Waterproofing Installer [32 h] | 384 | 2 |
| NJR1-CO-TH-250 |  | Toilet 2 - Geotextile sheet | 2d | 2026-10-17 | 2026-10-18 | NJR1-CO-TH-230 SS, NJR1-DE-SL-TH-140 | 3d | 0d | Geotextile sheet [24]; Waterproofing Installer [32 h] | 384 | 2 |

| ID | WBS | Activity | Duration | Start | Finish | Predecessors | Total float | Free float | Resources | Cost | WBS-BOQ |
| --- | --- | --- | --- | --- | --- | --- | --- | --- | --- | --- | --- |
|  | 3 | **Polyurethane waterpoof coating to internal surfaces of concrete trench** |  | 2026-09-10 | 2026-11-05 |  |  |  |  |  |  |
| NJR1-CO-TH-260 |  | Workshop 1 - Polyurethane waterproof coating | 4d | 2026-09-10 | 2026-09-14 | NJR1-CO-PR-120, NJR1-DE-SL-TH-150 | 12d | 0d | Polyurethane waterpoof coating to internal surfaces of concrete trench [0.95]; Waterproofing Installer [96 h] | 114 | 3 |
| NJR1-CO-TH-270 |  | Workshop 2 - Polyurethane waterproof coating | 4d | 2026-09-15 | 2026-09-19 | NJR1-CO-TH-260, NJR1-DE-SL-TH-150 | 13d | 0d | Polyurethane waterpoof coating to internal surfaces of concrete trench [0.95]; Waterproofing Installer [96 h] | 114 | 3 |
| NJR1-CO-TH-280 |  | Workshop 3 - Polyurethane waterproof coating | 4d | 2026-09-20 | 2026-09-24 | NJR1-CO-TH-270, NJR1-DE-SL-TH-150 | 14d | 0d | Polyurethane waterpoof coating to internal surfaces of concrete trench [0.95]; Waterproofing Installer [96 h] | 114 | 3 |
| NJR1-CO-TH-290 |  | Workshop 4 - Polyurethane waterproof coating | 4d | 2026-09-26 | 2026-09-29 | NJR1-CO-TH-280, NJR1-DE-SL-TH-150 | 15d | 0d | Polyurethane waterpoof coating to internal surfaces of concrete trench [0.95]; Waterproofing Installer [96 h] | 114 | 3 |
| NJR1-CO-TH-300 |  | Workshop 5 - Polyurethane waterproof coating | 4d | 2026-09-30 | 2026-10-04 | NJR1-CO-TH-290, NJR1-DE-SL-TH-150 | 16d | 0d | Polyurethane waterpoof coating to internal surfaces of concrete trench [0.95]; Waterproofing Installer [96 h] | 114 | 3 |
| NJR1-CO-TH-310 |  | Workshop 6 - Polyurethane waterproof coating | 4d | 2026-10-05 | 2026-10-08 | NJR1-CO-TH-300, NJR1-DE-SL-TH-150 | 17d | 0d | Polyurethane waterpoof coating to internal surfaces of concrete trench [0.95]; Waterproofing Installer [96 h] | 114 | 3 |
| NJR1-CO-TH-320 |  | Workshop 7 - Polyurethane waterproof coating | 4d | 2026-10-10 | 2026-10-13 | NJR1-CO-TH-310, NJR1-DE-SL-TH-150 | 18d | 0d | Polyurethane waterpoof coating to internal surfaces of concrete trench [0.95]; Waterproofing Installer [96 h] | 114 | 3 |
| NJR1-CO-TH-330 |  | Workshop 8 - Polyurethane waterproof coating | 4d | 2026-10-14 | 2026-10-18 | NJR1-CO-TH-320, NJR1-DE-SL-TH-150 | 19d | 0d | Polyurethane waterpoof coating to internal surfaces of concrete trench [0.95]; Waterproofing Installer [96 h] | 114 | 3 |
| NJR1-CO-TH-340 |  | Workshop 9 - Polyurethane waterproof coating | 4d | 2026-10-19 | 2026-10-22 | NJR1-CO-TH-330, NJR1-DE-SL-TH-150 | 20d | 0d | Polyurethane waterpoof coating to internal surfaces of concrete trench [0.95]; Waterproofing Installer [96 h] | 114 | 3 |
| NJR1-CO-TH-350 |  | Workshop 10 - Polyurethane waterproof coating | 4d | 2026-10-24 | 2026-10-27 | NJR1-CO-TH-340, NJR1-DE-SL-TH-150 | 21d | 0d | Polyurethane waterpoof coating to internal surfaces of concrete trench [0.95]; Waterproofing Installer [96 h] | 114 | 3 |
| NJR1-CO-TH-360 |  | Workshop 11 - Polyurethane waterproof coating | 4d | 2026-10-28 | 2026-11-01 | NJR1-CO-TH-350, NJR1-DE-SL-TH-150 | 22d | 0d | Polyurethane waterpoof coating to internal surfaces of concrete trench [0.95]; Waterproofing Installer [96 h] | 114 | 3 |
| NJR1-CO-TH-370 |  | Workshop 12 - Polyurethane waterproof coating | 4d | 2026-11-02 | 2026-11-05 | NJR1-CO-TH-360, NJR1-DE-SL-TH-150 | 23d | 11d | Polyurethane waterpoof coating to internal surfaces of concrete trench [0.95]; Waterproofing Installer [96 h] | 114 | 3 |
|  | 4 | **4mm thick APP modified bituminous membrane** |  | 2026-09-17 | 2026-10-08 |  |  |  |  |  |  |
| NJR1-CO-TH-380 |  | Toilet 1 Roof - 4mm thick APP modified bituminous membrane | 5d | 2026-09-17 | 2026-09-22 | NJR1-CO-TH-500, NJR1-CO-CW-250, NJR1-CO-CW-260 | 25d | 0d | 4mm thick APP modified bituminous membrane [21.22]; Waterproofing Installer [120 h] | 1,273.32 | 4 |
| NJR1-CO-TH-390 |  | Toilet 2 Roof - 4mm thick APP modified bituminous membrane | 5d | 2026-09-17 | 2026-09-22 | NJR1-CO-TH-510 | 25d | 0d | 4mm thick APP modified bituminous membrane [21.22]; Waterproofing Installer [120 h] | 1,273.32 | 4 |
| NJR1-CO-TH-400 |  | Mosque Roof - 4mm thick APP modified bituminous membrane | 5d | 2026-09-17 | 2026-09-22 | NJR1-CO-TH-520 | 42d | 0d | 4mm thick APP modified bituminous membrane [11]; Waterproofing Installer [120 h] | 660.24 | 4 |
| NJR1-CO-TH-410 |  | EE Room 1 Roof - 4mm thick APP modified bituminous membrane | 5d | 2026-09-17 | 2026-09-22 | NJR1-CO-TH-530 | 42d | 0d | 4mm thick APP modified bituminous membrane [5.5]; Waterproofing Installer [120 h] | 330.12 | 4 |
| NJR1-CO-TH-420 |  | EE Room 2 Roof - 4mm thick APP modified bituminous membrane | 5d | 2026-09-17 | 2026-09-22 | NJR1-CO-TH-540 | 42d | 0d | 4mm thick APP modified bituminous membrane [5.5]; Waterproofing Installer [120 h] | 330.12 | 4 |
| NJR1-CO-TH-430 |  | Outside Mosque Roof - 4mm thick APP modified bituminous membranerane | 5d | 2026-10-04 | 2026-10-08 | NJR1-CO-TH-550 | 29d | 0d | 4mm thick APP modified bituminous membrane [14.15]; Waterproofing Installer [120 h] | 848.88 | 4 |
|  | 5 | **50mm thk rigid insulation** |  | 2026-09-26 | 2026-10-13 |  |  |  |  |  |  |
| NJR1-CO-TH-440 |  | Toilet 1 Roof - 50mm thk rigid insulation | 3d | 2026-09-26 | 2026-09-28 | NJR1-CO-TH-560 | 25d | 0d | 50mm thk rigid insulation [21.22]; Waterproofing Installer [72 h] | 848.88 | 5 |
| NJR1-CO-TH-450 |  | Toilet 2 Roof - 50mm thk rigid insulation | 3d | 2026-09-26 | 2026-09-28 | NJR1-CO-TH-570 | 25d | 0d | 50mm thk rigid insulation [21.22]; Waterproofing Installer [72 h] | 848.88 | 5 |
| NJR1-CO-TH-460 |  | Mosque Roof - 50mm thk rigid insulation | 3d | 2026-09-26 | 2026-09-28 | NJR1-CO-TH-580 | 42d | 0d | 50mm thk rigid insulation [11]; Waterproofing Installer [72 h] | 440.16 | 5 |
| NJR1-CO-TH-470 |  | EE Room 1 Roof - 50mm thk rigid insulation | 3d | 2026-09-26 | 2026-09-28 | NJR1-CO-TH-590 | 42d | 0d | 50mm thk rigid insulation [5.5]; Waterproofing Installer [72 h] | 220.08 | 5 |
| NJR1-CO-TH-480 |  | EE Room 2 Roof - 50mm thk rigid insulation | 3d | 2026-09-26 | 2026-09-28 | NJR1-CO-TH-600 | 42d | 0d | 50mm thk rigid insulation [5.5]; Waterproofing Installer [72 h] | 220.08 | 5 |
| NJR1-CO-TH-490 |  | Outside Mosque Roof - 50mm thk rigid insulation | 3d | 2026-10-11 | 2026-10-13 | NJR1-CO-TH-610 | 29d | 0d | 50mm thk rigid insulation [14.15]; Waterproofing Installer [72 h] | 565.92 | 5 |

| ID | WBS | Activity | Duration | Start | Finish | Predecessors | Total float | Free float | Resources | Cost | WBS-BOQ |
| --- | --- | --- | --- | --- | --- | --- | --- | --- | --- | --- | --- |
|  | 6 | **Foam concrete screed 50mm thk** |  | 2026-09-10 | 2026-10-03 |  |  |  |  |  |  |
| NJR1-CO-TH-500 |  | Toilet 1 Roof - Foam concrete screed 50mm thk | 6d | 2026-09-10 | 2026-09-16 | NJR1-DE-SL-TH-160, NJR1-MI-BM-120 | 25d | 0d | Foam concrete screed 50mm thk [21.22]; Waterproofing Installer [240 h] | 954.99 | 6 |
| NJR1-CO-TH-510 |  | Toilet 2 Roof - Foam concrete screed 50mm thk | 6d | 2026-09-10 | 2026-09-16 | NJR1-DE-SL-TH-160, NJR1-MI-BM-120 | 25d | 0d | Foam concrete screed 50mm thk [21.22]; Waterproofing Installer [240 h] | 954.99 | 6 |
| NJR1-CO-TH-520 |  | Mosque Roof - Foam concrete screed 50mm thk | 6d | 2026-09-10 | 2026-09-16 | NJR1-DE-SL-TH-160, NJR1-MI-BM-120 | 42d | 0d | Foam concrete screed 50mm thk [11]; Waterproofing Installer [240 h] | 495.18 | 6 |
| NJR1-CO-TH-530 |  | EE Room 1 Roof - Foam concrete screed 50mm thk | 6d | 2026-09-10 | 2026-09-16 | NJR1-DE-SL-TH-160, NJR1-MI-BM-120 | 42d | 0d | Foam concrete screed 50mm thk [5.5]; Waterproofing Installer [240 h] | 247.59 | 6 |
| NJR1-CO-TH-540 |  | EE Room 2 Roof - Foam concrete screed 50mm thk | 6d | 2026-09-10 | 2026-09-16 | NJR1-DE-SL-TH-160, NJR1-MI-BM-120 | 42d | 0d | Foam concrete screed 50mm thk [5.5]; Waterproofing Installer [240 h] | 247.59 | 6 |
| NJR1-CO-TH-550 |  | Outside Mosque Roof - Foam concrete screed 50mm thk | 6d | 2026-09-27 | 2026-10-03 | NJR1-CO-CW-340, NJR1-DE-SL-TH-160 | 29d | 0d | Foam concrete screed 50mm thk [14.15]; Waterproofing Installer [240 h] | 636.66 | 6 |
|  | 7 | **300 micron polyethylene sheet** |  | 2026-09-24 | 2026-10-10 |  |  |  |  |  |  |
| NJR1-CO-TH-560 |  | Toilet 1 Roof - 300 micron polyethylene sheet | 1d | 2026-09-24 | 2026-09-24 | NJR1-CO-TH-380 | 25d | 0d | 300 micron polyethylene sheet [21.22]; Waterproofing Installer [16 h] | 254.66 | 7 |
| NJR1-CO-TH-570 |  | Toilet 2 Roof - 300 micron polyethylene sheet | 1d | 2026-09-24 | 2026-09-24 | NJR1-CO-TH-390 | 25d | 0d | 300 micron polyethylene sheet [21.22]; Waterproofing Installer [16 h] | 254.66 | 7 |
| NJR1-CO-TH-580 |  | Mosque Roof - 300 micron polyethylene sheet | 1d | 2026-09-24 | 2026-09-24 | NJR1-CO-TH-400 | 42d | 0d | 300 micron polyethylene sheet [11]; Waterproofing Installer [16 h] | 132.05 | 7 |
| NJR1-CO-TH-590 |  | EE Room 1 Roof - 300 micron polyethylene sheet | 1d | 2026-09-24 | 2026-09-24 | NJR1-CO-TH-410 | 42d | 0d | 300 micron polyethylene sheet [5.5]; Waterproofing Installer [16 h] | 66.02 | 7 |
| NJR1-CO-TH-600 |  | EE Room 2 Roof - 300 micron polyethylene sheet | 1d | 2026-09-24 | 2026-09-24 | NJR1-CO-TH-420 | 42d | 0d | 300 micron polyethylene sheet [5.5]; Waterproofing Installer [16 h] | 66.02 | 7 |
| NJR1-CO-TH-610 |  | Outside Mosque Roof - 300 micron polyethylene sheet | 1d | 2026-10-10 | 2026-10-10 | NJR1-CO-TH-430 | 29d | 0d | 300 micron polyethylene sheet [14.15]; Waterproofing Installer [16 h] | 169.78 | 7 |
|  | 8 | **50mm thk loose gravel toppings** |  | 2026-10-13 | 2026-10-29 |  |  |  |  |  |  |
| NJR1-CO-TH-620 |  | Toilet 1 Roof - 50mm thk loose gravel toppings | 2d | 2026-10-13 | 2026-10-14 | NJR1-CO-TH-740 | 25d | 0d | 50mm thk loose gravel toppings [21.22]; General Labor [32 h] | 742.77 | 8 |
| NJR1-CO-TH-630 |  | Toilet 2 Roof - 50mm thk loose gravel toppings | 2d | 2026-10-13 | 2026-10-14 | NJR1-CO-TH-750 | 25d | 0d | 50mm thk loose gravel toppings [21.22]; General Labor [32 h] | 742.77 | 8 |
| NJR1-CO-TH-640 |  | Mosque Roof - 50mm thk loose gravel toppings | 2d | 2026-10-13 | 2026-10-14 | NJR1-CO-TH-760 | 42d | 0d | 50mm thk loose gravel toppings [11]; General Labor [32 h] | 385.14 | 8 |
| NJR1-CO-TH-650 |  | EE Room 1 Roof - 50mm thk loose gravel toppings | 2d | 2026-10-13 | 2026-10-14 | NJR1-CO-TH-770 | 42d | 0d | 50mm thk loose gravel toppings [5.5]; General Labor [32 h] | 192.57 | 8 |
| NJR1-CO-TH-660 |  | EE Room 2 Roof - 50mm thk loose gravel toppings | 2d | 2026-10-13 | 2026-10-14 | NJR1-CO-TH-780 | 42d | 0d | 50mm thk loose gravel toppings [5.5]; General Labor [32 h] | 192.57 | 8 |
| NJR1-CO-TH-670 |  | Outside Mosque Roof - 50mm thk loose gravel toppings | 2d | 2026-10-28 | 2026-10-29 | NJR1-CO-TH-790 | 29d | 0d | 50mm thk loose gravel toppings [14.15]; General Labor [32 h] | 495.18 | 8 |
|  | 9 | **High density polyisocynurate cover board (12.7mm)** |  | 2026-09-29 | 2026-10-20 |  |  |  |  |  |  |
| NJR1-CO-TH-680 |  | Toilet 1 Roof - High density polyisocynurate cover board | 6d | 2026-09-29 | 2026-10-05 | NJR1-CO-TH-440 | 25d | 0d | High density polyisocynurate cover board (12.7mm) [21.22]; Waterproofing Installer [96 h] | 1,061.1 | 9 |
| NJR1-CO-TH-690 |  | Toilet 2 Roof - High density polyisocynurate cover board | 6d | 2026-09-29 | 2026-10-05 | NJR1-CO-TH-450 | 25d | 0d | High density polyisocynurate cover board (12.7mm) [21.22]; Waterproofing Installer [96 h] | 1,061.1 | 9 |
| NJR1-CO-TH-700 |  | Mosque Roof - High density polyisocynurate cover board | 6d | 2026-09-29 | 2026-10-05 | NJR1-CO-TH-460 | 42d | 0d | High density polyisocynurate cover board (12.7mm) [11]; Waterproofing Installer [96 h] | 550.2 | 9 |
| NJR1-CO-TH-710 |  | EE Room 1 Roof - High density polyisocynurate cover board | 6d | 2026-09-29 | 2026-10-05 | NJR1-CO-TH-470 | 42d | 0d | High density polyisocynurate cover board (12.7mm) [5.5]; Waterproofing Installer [96 h] | 275.1 | 9 |
| NJR1-CO-TH-720 |  | EE Room 2 Roof - High density polyisocynurate cover board | 6d | 2026-09-29 | 2026-10-05 | NJR1-CO-TH-480 | 42d | 0d | High density polyisocynurate cover board (12.7mm) [5.5]; Waterproofing Installer [96 h] | 275.1 | 9 |
| NJR1-CO-TH-730 |  | Outside Mosque Roof - High density polyisocynurate cover board | 6d | 2026-10-14 | 2026-10-20 | NJR1-CO-TH-490 | 29d | 0d | High density polyisocynurate cover board (12.7mm) [14.15]; Waterproofing Installer [96 h] | 707.4 | 9 |

| ID | WBS | Activity | Duration | Start | Finish | Predecessors | Total float | Free float | Resources | Cost | WBS-BOQ |
| --- | --- | --- | --- | --- | --- | --- | --- | --- | --- | --- | --- |
|  | 10 | **Geotextile sheets (200 g/m2)** |  | 2026-10-06 | 2026-10-27 |  |  |  |  |  |  |
| NJR1-CO-TH-740 |  | Toilet 1 Roof - Geotextile sheets (200 g/m2) | 6d | 2026-10-06 | 2026-10-12 | NJR1-CO-TH-680 | 25d | 0d | Geotextile sheets (200 g/m2) [21.22]; Waterproofing Installer [48 h] | 212.22 | 10 |
| NJR1-CO-TH-750 |  | Toilet 2 Roof - Geotextile sheets (200 g/m2) | 6d | 2026-10-06 | 2026-10-12 | NJR1-CO-TH-690 | 25d | 0d | Geotextile sheets (200 g/m2) [21.22]; Waterproofing Installer [48 h] | 212.22 | 10 |
| NJR1-CO-TH-760 |  | Mosque Roof - Geotextile sheets (200 g/m2) | 6d | 2026-10-06 | 2026-10-12 | NJR1-CO-TH-700 | 42d | 0d | Geotextile sheets (200 g/m2) [11]; Waterproofing Installer [48 h] | 110.04 | 10 |
| NJR1-CO-TH-770 |  | EE Room 1 Roof - Geotextile sheets (200 g/m2) | 6d | 2026-10-06 | 2026-10-12 | NJR1-CO-TH-710 | 42d | 0d | Geotextile sheets (200 g/m2) [5.5]; Waterproofing Installer [48 h] | 55.02 | 10 |
| NJR1-CO-TH-780 |  | EE Room 2 Roof - Geotextile sheets (200 g/m2) | 6d | 2026-10-06 | 2026-10-12 | NJR1-CO-TH-720 | 42d | 0d | Geotextile sheets (200 g/m2) [5.5]; Waterproofing Installer [48 h] | 55.02 | 10 |
| NJR1-CO-TH-790 |  | Outside Mosque Roof - Geotextile sheets (200 g/m2) | 6d | 2026-10-21 | 2026-10-27 | NJR1-CO-TH-730 | 29d | 0d | Geotextile sheets (200 g/m2) [14.15]; Waterproofing Installer [48 h] | 141.48 | 10 |
|  | 11 | **3mm thk extruded aluminum flashing** |  | 2026-10-15 | 2026-11-04 |  |  |  |  |  |  |
| NJR1-CO-TH-800 |  | Toilet 1 Roof - 3mm thk extruded aluminum flashing | 5d | 2026-10-15 | 2026-10-20 | NJR1-CO-TH-620 | 42d |  | 3mm thk extruded aluminum flashing [13.61]; Waterproofing Installer [40 h] | 340.2 | 11 |
| NJR1-CO-TH-810 |  | Toilet 2 Roof - 3mm thk extruded aluminum flashing | 5d | 2026-10-15 | 2026-10-20 | NJR1-CO-TH-630 | 42d |  | 3mm thk extruded aluminum flashing [13.61]; Waterproofing Installer [40 h] | 340.2 | 11 |
| NJR1-CO-TH-820 |  | Mosque Roof - 3mm thk extruded aluminum flashing | 5d | 2026-10-15 | 2026-10-20 | NJR1-CO-TH-640 | 42d |  | 3mm thk extruded aluminum flashing [7.06]; Waterproofing Installer [40 h] | 176.4 | 11 |
| NJR1-CO-TH-830 |  | EE Room 1 Roof - 3mm thk extruded aluminum flashing | 5d | 2026-10-15 | 2026-10-20 | NJR1-CO-TH-650 | 42d |  | 3mm thk extruded aluminum flashing [3.53]; Waterproofing Installer [40 h] | 88.2 | 11 |
| NJR1-CO-TH-840 |  | EE Room 2 Roof - 3mm thk extruded aluminum flashing | 5d | 2026-10-15 | 2026-10-20 | NJR1-CO-TH-660 | 42d |  | 3mm thk extruded aluminum flashing [3.53]; Waterproofing Installer [40 h] | 88.2 | 11 |
| NJR1-CO-TH-850 |  | Outside Mosque Roof - 3mm thk extruded aluminum flashing | 5d | 2026-10-31 | 2026-11-04 | NJR1-CO-TH-670 | 29d |  | 3mm thk extruded aluminum flashing [9.07]; Waterproofing Installer [40 h] | 226.8 | 11 |
|  | 12 | **Aluminium cladding** |  | 2026-09-10 | 2026-09-21 |  |  |  |  |  |  |
| NJR1-CO-TH-860 |  | Workshop - Aluminium cladding | 10d | 2026-09-10 | 2026-09-21 | NJR1-CO-PR-120, NJR1-DE-SL-TH-170 | 15d | 4d | Workshop - Aluminium cladding [150]; Waterproofing Installer [240 h] | 45,000 | 5 |
|  | 10 | **DIVISION 08 - DOOR AND WINDOWS** |  | 2026-09-30 | 2026-11-08 |  |  |  |  |  |  |
|  | 1 | **For Low Process Unit type 150m2** |  | 2026-09-30 | 2026-11-08 |  |  |  |  |  |  |
|  | 1 | **Doors** |  | 2026-09-30 | 2026-11-08 |  |  |  |  |  |  |
|  | 1 | **(D6) 3000*3500mm galvanized steel heavy duty industrial isolated type roll up shutter door** |  | 2026-09-30 | 2026-10-11 |  |  |  |  |  |  |
| NJR1-CO-DW-100 |  | Workshop 1 - Install Door D6 | 10d | 2026-09-30 | 2026-10-11 | NJR1-CO-PR-120, NJR1-DE-LL-DW-100 | 32d | 0d | Fork Lift [80 h]; (D6) 3000*3500mm galvanized steel heavy duty industrial isolated type roll up shutter door [0.6]; Door & Window Installer [80 h]; Operator [80 h] | 12,000 | 1 |
| NJR1-CO-DW-110 |  | Workshop 2 - Install Door D6 | 10d | 2026-09-30 | 2026-10-11 | NJR1-CO-PR-120, NJR1-DE-LL-DW-100 | 32d | 0d | Fork Lift [80 h]; (D6) 3000*3500mm galvanized steel heavy duty industrial isolated type roll up shutter door [0.6]; Door & Window Installer [80 h]; Operator [80 h] | 12,000 | 1 |
| NJR1-CO-DW-120 |  | Workshop 3 - Install Door D6 | 10d | 2026-09-30 | 2026-10-11 | NJR1-CO-PR-120, NJR1-DE-LL-DW-100 | 32d | 0d | Fork Lift [80 h]; (D6) 3000*3500mm galvanized steel heavy duty industrial isolated type roll up shutter door [0.6]; Door & Window Installer [80 h]; Operator [80 h] | 12,000 | 1 |
| NJR1-CO-DW-130 |  | Workshop 4 - Install Door D6 | 10d | 2026-09-30 | 2026-10-11 | NJR1-CO-PR-120, NJR1-DE-LL-DW-100 | 32d | 0d | Fork Lift [80 h]; (D6) 3000*3500mm galvanized steel heavy duty industrial isolated type roll up shutter door [0.6]; Door & Window Installer [80 h]; Operator [80 h] | 12,000 | 1 |
| NJR1-CO-DW-140 |  | Workshop 5 - Install Door D6 | 10d | 2026-09-30 | 2026-10-11 | NJR1-CO-PR-120, NJR1-DE-LL-DW-100 | 32d | 0d | Fork Lift [80 h]; (D6) 3000*3500mm galvanized steel heavy duty industrial isolated type roll up shutter door [0.6]; Door & Window Installer [80 h]; Operator [80 h] | 12,000 | 1 |
| NJR1-CO-DW-150 |  | Workshop 6 - Install Door D6 | 10d | 2026-09-30 | 2026-10-11 | NJR1-CO-PR-120, NJR1-DE-LL-DW-100 | 32d | 0d | Fork Lift [80 h]; (D6) 3000*3500mm galvanized steel heavy duty industrial isolated type roll up shutter door [0.6]; Door & Window Installer [80 h]; Operator [80 h] | 12,000 | 1 |
| NJR1-CO-DW-160 |  | Workshop 7 - Install Door D6 | 10d | 2026-09-30 | 2026-10-11 | NJR1-CO-PR-120, NJR1-DE-LL-DW-100 | 32d | 0d | Fork Lift [80 h]; (D6) 3000*3500mm galvanized steel heavy duty industrial isolated type roll up shutter door [0.6]; Door & Window Installer [80 h]; Operator [80 h] | 12,000 | 1 |
| NJR1-CO-DW-170 |  | Workshop 8 - Install Door D6 | 10d | 2026-09-30 | 2026-10-11 | NJR1-CO-PR-120, NJR1-DE-LL-DW-100 | 32d | 0d | Fork Lift [80 h]; (D6) 3000*3500mm galvanized steel heavy duty industrial isolated type roll up shutter door [0.6]; Door & Window Installer [80 h]; Operator [80 h] | 12,000 | 1 |
| NJR1-CO-DW-180 |  | Workshop 9 - Install Door D6 | 10d | 2026-09-30 | 2026-10-11 | NJR1-CO-PR-120, NJR1-DE-LL-DW-100 | 32d | 0d | Fork Lift [80 h]; (D6) 3000*3500mm galvanized steel heavy duty industrial isolated type roll up shutter door [0.6]; Door & Window Installer [80 h]; Operator [80 h] | 12,000 | 1 |
| NJR1-CO-DW-190 |  | Workshop 10 - Install Door D6 | 10d | 2026-09-30 | 2026-10-11 | NJR1-CO-PR-120, NJR1-DE-LL-DW-100 | 32d | 0d | Fork Lift [80 h]; (D6) 3000*3500mm galvanized steel heavy duty industrial isolated type roll up shutter door [0.6]; Door & Window Installer [80 h]; Operator [80 h] | 12,000 | 1 |
| NJR1-CO-DW-200 |  | Workshop 11 - Install Door D6 | 10d | 2026-09-30 | 2026-10-11 | NJR1-CO-PR-120, NJR1-DE-LL-DW-100 | 32d | 0d | Fork Lift [80 h]; (D6) 3000*3500mm galvanized steel heavy duty industrial isolated type roll up shutter door [0.6]; Door & Window Installer [80 h]; Operator [80 h] | 12,000 | 1 |
| NJR1-CO-DW-210 |  | Workshop 12 - Install Door D6 | 10d | 2026-09-30 | 2026-10-11 | NJR1-CO-PR-120, NJR1-DE-LL-DW-100 | 32d | 0d | Fork Lift [80 h]; (D6) 3000*3500mm galvanized steel heavy duty industrial isolated type roll up shutter door [0.6]; Door & Window Installer [80 h]; Operator [80 h] | 12,000 | 1 |

| ID | WBS | Activity | Duration | Start | Finish | Predecessors | Total float | Free float | Resources | Cost | WBS-BOQ |
| --- | --- | --- | --- | --- | --- | --- | --- | --- | --- | --- | --- |
|  | 2 | **(D5) 1000*2200mm single leaf steel door** |  | 2026-10-08 | 2026-10-22 |  |  |  |  |  |  |
| NJR1-CO-DW-220 |  | EE Room 1 - Install Door D5 | 10d | 2026-10-08 | 2026-10-19 | NJR1-CO-FW-400, NJR1-CO-FW-460, NJR1-DE-LL-DW-110 | 16d | 0d | Fork Lift [80 h]; (D5) 1000*2200mm single leaf steel door [0.51]; Door & Window Installer [80 h]; Operator [80 h] | 1,542.86 | 2 |
| NJR1-CO-DW-230 |  | EE Room 2 - Install Door D5 | 10d | 2026-10-08 | 2026-10-19 | NJR1-CO-FW-410, NJR1-CO-FW-470, NJR1-DE-LL-DW-110 | 16d | 0d | Fork Lift [80 h]; (D5) 1000*2200mm single leaf steel door [0.51]; Door & Window Installer [80 h]; Operator [80 h] | 1,542.86 | 2 |
| NJR1-CO-DW-240 |  | Workshop 1 - Install Door D5 | 10d | 2026-10-12 | 2026-10-22 | NJR1-CO-DW-100, NJR1-DE-LL-DW-110 | 32d | 0d | Fork Lift [80 h]; (D5) 1000*2200mm single leaf steel door [0.51]; Door & Window Installer [80 h]; Operator [80 h] | 1,542.86 | 2 |
| NJR1-CO-DW-250 |  | Workshop 2 - Install Door D5 | 10d | 2026-10-12 | 2026-10-22 | NJR1-CO-DW-110, NJR1-DE-LL-DW-110 | 32d | 0d | Fork Lift [80 h]; (D5) 1000*2200mm single leaf steel door [0.51]; Door & Window Installer [80 h]; Operator [80 h] | 1,542.86 | 2 |
| NJR1-CO-DW-260 |  | Workshop 3 - Install Door D5 | 10d | 2026-10-12 | 2026-10-22 | NJR1-CO-DW-120, NJR1-DE-LL-DW-110 | 32d | 0d | Fork Lift [80 h]; (D5) 1000*2200mm single leaf steel door [0.51]; Door & Window Installer [80 h]; Operator [80 h] | 1,542.86 | 2 |
| NJR1-CO-DW-270 |  | Workshop 4 - Install Door D5 | 10d | 2026-10-12 | 2026-10-22 | NJR1-CO-DW-130, NJR1-DE-LL-DW-110 | 32d | 0d | Fork Lift [80 h]; (D5) 1000*2200mm single leaf steel door [0.51]; Door & Window Installer [80 h]; Operator [80 h] | 1,542.86 | 2 |
| NJR1-CO-DW-280 |  | Workshop 5 - Install Door D5 | 10d | 2026-10-12 | 2026-10-22 | NJR1-CO-DW-140, NJR1-DE-LL-DW-110 | 32d | 0d | Fork Lift [80 h]; (D5) 1000*2200mm single leaf steel door [0.51]; Door & Window Installer [80 h]; Operator [80 h] | 1,542.86 | 2 |
| NJR1-CO-DW-290 |  | Workshop 6 - Install Door D5 | 10d | 2026-10-12 | 2026-10-22 | NJR1-CO-DW-150, NJR1-DE-LL-DW-110 | 32d | 0d | Fork Lift [80 h]; (D5) 1000*2200mm single leaf steel door [0.51]; Door & Window Installer [80 h]; Operator [80 h] | 1,542.86 | 2 |
| NJR1-CO-DW-300 |  | Workshop 7 - Install Door D5 | 10d | 2026-10-12 | 2026-10-22 | NJR1-CO-DW-160, NJR1-DE-LL-DW-110 | 32d | 0d | Fork Lift [80 h]; (D5) 1000*2200mm single leaf steel door [0.51]; Door & Window Installer [80 h]; Operator [80 h] | 1,542.86 | 2 |
| NJR1-CO-DW-310 |  | Workshop 8 - Install Door D5 | 10d | 2026-10-12 | 2026-10-22 | NJR1-CO-DW-170, NJR1-DE-LL-DW-110 | 32d | 0d | Fork Lift [80 h]; (D5) 1000*2200mm single leaf steel door [0.51]; Door & Window Installer [80 h]; Operator [80 h] | 1,542.86 | 2 |
| NJR1-CO-DW-320 |  | Workshop 9 - Install Door D5 | 10d | 2026-10-12 | 2026-10-22 | NJR1-CO-DW-180, NJR1-DE-LL-DW-110 | 32d | 0d | Fork Lift [80 h]; (D5) 1000*2200mm single leaf steel door [0.51]; Door & Window Installer [80 h]; Operator [80 h] | 1,542.86 | 2 |
| NJR1-CO-DW-330 |  | Workshop 10 - Install Door D5 | 10d | 2026-10-12 | 2026-10-22 | NJR1-CO-DW-190, NJR1-DE-LL-DW-110 | 32d | 0d | Fork Lift [80 h]; (D5) 1000*2200mm single leaf steel door [0.51]; Door & Window Installer [80 h]; Operator [80 h] | 1,542.86 | 2 |
| NJR1-CO-DW-340 |  | Workshop 11 - Install Door D5 | 10d | 2026-10-12 | 2026-10-22 | NJR1-CO-DW-200, NJR1-DE-LL-DW-110 | 32d | 0d | Fork Lift [80 h]; (D5) 1000*2200mm single leaf steel door [0.51]; Door & Window Installer [80 h]; Operator [80 h] | 1,542.86 | 2 |
| NJR1-CO-DW-350 |  | Workshop 12 - Install Door D5 | 10d | 2026-10-12 | 2026-10-22 | NJR1-CO-DW-210, NJR1-DE-LL-DW-110 | 32d | 0d | Fork Lift [80 h]; (D5) 1000*2200mm single leaf steel door [0.51]; Door & Window Installer [80 h]; Operator [80 h] | 1,542.86 | 2 |
|  | 3 | **(D2) 1000*2200 mm single leaf galvanized steel door** |  | 2026-10-17 | 2026-10-27 |  |  |  |  |  |  |
| NJR1-CO-DW-360 |  | Toilet 1 - Install Door D2 | 10d | 2026-10-17 | 2026-10-27 | NJR1-CO-FW-370, NJR1-CO-FW-430, NJR1-DE-LL-DW-120 | 5d | 0d | Fork Lift [80 h]; (D2) 1000*2200 mm single leaf galvanized steel door [0.6]; Door & Window Installer [160 h]; Operator [80 h] | 1,800 | 3 |
| NJR1-CO-DW-370 |  | Toilet 2 - Install Door D2 | 10d | 2026-10-17 | 2026-10-27 | NJR1-CO-FW-440, NJR1-CO-FW-380, NJR1-DE-LL-DW-120 | 5d | 0d | Fork Lift [80 h]; (D2) 1000*2200 mm single leaf galvanized steel door [0.6]; Door & Window Installer [160 h]; Operator [80 h] | 1,800 | 3 |
|  | 4 | **(D3) 800*2200 mm single leaf semi solid wood door** |  | 2026-10-28 | 2026-11-08 |  |  |  |  |  |  |
| NJR1-CO-DW-380 |  | Toilet 1 - Install Door D3 | 10d | 2026-10-28 | 2026-11-08 | NJR1-CO-DW-360, NJR1-DE-LL-DW-130 | 5d | 0d | Fork Lift [80 h]; (D3) 800*2200 mm single leaf semi solid wood door [0.6]; Door & Window Installer [160 h]; Operator [80 h] | 2,100 | 4 |
| NJR1-CO-DW-390 |  | Toilet 2 - Install Door D3 | 10d | 2026-10-28 | 2026-11-08 | NJR1-CO-DW-370, NJR1-DE-LL-DW-130 | 5d | 0d | Fork Lift [80 h]; (D3) 800*2200 mm single leaf semi solid wood door [0.6]; Door & Window Installer [160 h]; Operator [80 h] | 2,100 | 4 |
|  | 5 | **(D1) single leaf galvanized steel door** |  | 2026-10-08 | 2026-10-19 |  |  |  |  |  |  |
| NJR1-CO-DW-400 |  | Mosque - Install Door D1 | 10d | 2026-10-08 | 2026-10-19 | NJR1-CO-FW-450, NJR1-CO-FW-390, NJR1-DE-LL-DW-120, NJR1-DE-LL-DW-130 | 20d | 0d | Fork Lift [80 h]; (D1) single leaf galvanized steel door [0.6]; Door & Window Installer [160 h]; Operator [80 h] | 1,800 | 5 |
|  | 2 | **Windows** |  | 2026-10-20 | 2026-11-01 |  |  |  |  |  |  |
|  | 1 | **Aluminum framed double glazed windows** |  | 2026-10-20 | 2026-11-01 |  |  |  |  |  |  |
|  | 2 | **Window W1 (size 1000*1300)** |  | 2026-10-24 | 2026-11-01 |  |  |  |  |  |  |
| NJR1-CO-DW-410 |  | Workshop 1 - Install Window W1 | 8d | 2026-10-24 | 2026-11-01 | NJR1-CO-DW-240, NJR1-DE-LL-DW-140 | 32d |  | Fork Lift [64 h]; Window W1 (size 1000*1300) [0.6]; Door & Window Installer [128 h]; Operator [64 h] | 720 | 1 |
| NJR1-CO-DW-420 |  | Workshop 2 - Install Window W1 | 8d | 2026-10-24 | 2026-11-01 | NJR1-CO-DW-250, NJR1-DE-LL-DW-140 | 32d |  | Fork Lift [64 h]; Window W1 (size 1000*1300) [0.6]; Door & Window Installer [128 h]; Operator [64 h] | 720 | 1 |
| NJR1-CO-DW-430 |  | Workshop 3 - Install Window W1 | 8d | 2026-10-24 | 2026-11-01 | NJR1-CO-DW-260, NJR1-DE-LL-DW-140 | 32d |  | Fork Lift [64 h]; Window W1 (size 1000*1300) [0.6]; Door & Window Installer [128 h]; Operator [64 h] | 720 | 1 |
| NJR1-CO-DW-440 |  | Workshop 4 - Install Window W1 | 8d | 2026-10-24 | 2026-11-01 | NJR1-CO-DW-270, NJR1-DE-LL-DW-140 | 32d |  | Fork Lift [64 h]; Window W1 (size 1000*1300) [0.6]; Door & Window Installer [128 h]; Operator [64 h] | 720 | 1 |
| NJR1-CO-DW-450 |  | Workshop 5 - Install Window W1 | 8d | 2026-10-24 | 2026-11-01 | NJR1-CO-DW-280, NJR1-DE-LL-DW-140 | 32d |  | Fork Lift [64 h]; Window W1 (size 1000*1300) [0.6]; Door & Window Installer [128 h]; Operator [64 h] | 720 | 1 |
| NJR1-CO-DW-460 |  | Workshop 6 - Install Window W1 | 8d | 2026-10-24 | 2026-11-01 | NJR1-CO-DW-290, NJR1-DE-LL-DW-140 | 32d |  | Fork Lift [64 h]; Window W1 (size 1000*1300) [0.6]; Door & Window Installer [128 h]; Operator [64 h] | 720 | 1 |
| NJR1-CO-DW-470 |  | Workshop 7 - Install Window W1 | 8d | 2026-10-24 | 2026-11-01 | NJR1-CO-DW-300, NJR1-DE-LL-DW-140 | 32d |  | Fork Lift [64 h]; Window W1 (size 1000*1300) [0.6]; Door & Window Installer [128 h]; Operator [64 h] | 720 | 1 |
| NJR1-CO-DW-480 |  | Workshop 8 - Install Window W1 | 8d | 2026-10-24 | 2026-11-01 | NJR1-CO-DW-310, NJR1-DE-LL-DW-140 | 32d |  | Fork Lift [64 h]; Window W1 (size 1000*1300) [0.6]; Door & Window Installer [128 h]; Operator [64 h] | 720 | 1 |
| NJR1-CO-DW-490 |  | Workshop 9 - Install Window W1 | 8d | 2026-10-24 | 2026-11-01 | NJR1-CO-DW-320, NJR1-DE-LL-DW-140 | 32d |  | Fork Lift [64 h]; Window W1 (size 1000*1300) [0.6]; Door & Window Installer [128 h]; Operator [64 h] | 720 | 1 |
| NJR1-CO-DW-500 |  | Workshop 10 - Install Window W1 | 8d | 2026-10-24 | 2026-11-01 | NJR1-CO-DW-330, NJR1-DE-LL-DW-140 | 32d |  | Fork Lift [64 h]; Window W1 (size 1000*1300) [0.6]; Door & Window Installer [128 h]; Operator [64 h] | 720 | 1 |
| NJR1-CO-DW-510 |  | Workshop 11 - Install Window W1 | 8d | 2026-10-24 | 2026-11-01 | NJR1-CO-DW-340, NJR1-DE-LL-DW-140 | 32d |  | Fork Lift [64 h]; Window W1 (size 1000*1300) [0.6]; Door & Window Installer [128 h]; Operator [64 h] | 720 | 1 |
| NJR1-CO-DW-520 |  | Workshop 12 - Install Window W1 | 8d | 2026-10-24 | 2026-11-01 | NJR1-CO-DW-350, NJR1-DE-LL-DW-140 | 32d |  | Fork Lift [64 h]; Window W1 (size 1000*1300) [0.6]; Door & Window Installer [128 h]; Operator [64 h] | 720 | 1 |

| ID | WBS | Activity | Duration | Start | Finish | Predecessors | Total float | Free float | Resources | Cost | WBS-BOQ |
| --- | --- | --- | --- | --- | --- | --- | --- | --- | --- | --- | --- |
|  | 3 | **Window W2 (size 1600*1200)** |  | 2026-10-20 | 2026-10-28 |  |  |  |  |  |  |
| NJR1-CO-DW-530 |  | Mosque - Install Window W2 | 8d | 2026-10-20 | 2026-10-28 | NJR1-CO-DW-400, NJR1-DE-LL-DW-140 | 20d | 15d | Fork Lift [64 h]; Window W2 (size 1600*1200) [1.2]; Door & Window Installer [64 h]; Operator [64 h] | 2,880 | 2 |
|  | 2 | **For Prayer room** |  | 2026-10-21 | 2026-10-29 |  |  |  |  |  |  |
|  | 1 | **Doors** |  | 2026-10-21 | 2026-10-29 |  |  |  |  |  |  |
| NJR1-CO-DW-540 |  | Outside Mosque - Install Door D1 | 8d | 2026-10-21 | 2026-10-29 | NJR1-CO-FW-480, NJR1-CO-FW-420, NJR1-DE-LL-DW-150 | 16d | 0d | Fork Lift [64 h]; Outside Mosque - Install Door D1 [0.6]; Door & Window Installer [64 h]; Operator [64 h] | 4,500 | 1 |
|  | 2 | **Windows** |  | 2026-10-21 | 2026-10-29 |  |  |  |  |  |  |
| NJR1-CO-DW-550 |  | Outside Mosque - Install Window W1 | 8d | 2026-10-21 | 2026-10-29 | NJR1-CO-DW-540 SS, NJR1-DE-LL-DW-150 | 16d | 0d | Fork Lift [64 h]; Outside Mosque - Install Window W1 [1.2]; Door & Window Installer [64 h]; Operator [64 h] | 7,560 | 2 |
|  | 5 | **DIVISION 09 - FINISHES** |  | 2026-09-16 | 2026-12-05 |  |  |  |  |  |  |
|  | 1 | **Floor Finishes** |  | 2026-10-27 | 2026-12-05 |  |  |  |  |  |  |
|  | 1 | **300*300mm ceramic tiles for toilets** |  | 2026-10-27 | 2026-10-31 |  |  |  |  |  |  |
| NJR1-CO-FW-100 |  | Toilet 1 - 300*300mm ceramic tiles | 4d | 2026-10-27 | 2026-10-31 | NJR1-CO-FW-610 | 6d | 0d | Fork Lift [32 h]; 300*300mm ceramic tiles for toilets [22.5]; Operator [32 h]; Tile Installer [128 h] | 2,475 | 1 |
| NJR1-CO-FW-110 |  | Toilet 2 - 300*300mm ceramic tiles | 4d | 2026-10-27 | 2026-10-31 | NJR1-CO-FW-620 | 3d | 0d | Fork Lift [32 h]; 300*300mm ceramic tiles for toilets [22.5]; Operator [32 h]; Tile Installer [128 h] | 2,475 | 1 |
|  | 2 | **Carpet rolls to prayer room** |  | 2026-11-10 | 2026-11-30 |  |  |  |  |  |  |
| NJR1-CO-FW-130 |  | Outside Mosque - Carpet Roll | 5d | 2026-11-10 | 2026-11-15 | NJR1-CO-FW-535, NJR1-DE-SL-FW-110 | 16d | 13d | Fork Lift [40 h]; Carpet rolls to prayer room [16.8]; General Labor [80 h]; Operator [40 h] | 5,544 | 2 |
| NJR1-CO-FW-120 |  | Mosque - Carpet Roll | 5d | 2026-11-25 | 2026-11-30 | NJR1-CO-FW-510, NJR1-DE-SL-FW-110 | 3d | 0d | Fork Lift [40 h]; Carpet rolls to prayer room [16.8]; General Labor [80 h]; Operator [40 h] | 5,544 | 2 |
|  | 3 | **Epoxy paint to concrete surface in the factory area** |  | 2026-11-05 | 2026-11-22 |  |  |  |  |  |  |
| NJR1-CO-FW-140 |  | Workshop 1 - Epoxy Paint | 15d | 2026-11-05 | 2026-11-22 | NJR1-DE-SL-FW-120, NJR1-CO-ME-IN-SW-151 | 14d | 0d | Epoxy paint to concrete surface in the factory area [92.5]; Waterproofing Installer [240 h] | 5,550 | 3 |
| NJR1-CO-FW-150 |  | Workshop 2 - Epoxy Paint | 15d | 2026-11-05 | 2026-11-22 | NJR1-CO-FW-140 SS, NJR1-DE-SL-FW-120, NJR1-CO-ME-IN-SW-151 | 14d | 0d | Epoxy paint to concrete surface in the factory area [92.5]; Waterproofing Installer [240 h] | 5,550 | 3 |
| NJR1-CO-FW-160 |  | Workshop 3 - Epoxy Paint | 15d | 2026-11-05 | 2026-11-22 | NJR1-CO-FW-150 SS, NJR1-DE-SL-FW-120, NJR1-CO-ME-IN-SW-152 | 14d | 0d | Epoxy paint to concrete surface in the factory area [92.5]; Waterproofing Installer [240 h] | 5,550 | 3 |
| NJR1-CO-FW-170 |  | Workshop 4 - Epoxy Paint | 15d | 2026-11-05 | 2026-11-22 | NJR1-CO-FW-160 SS, NJR1-DE-SL-FW-120, NJR1-CO-ME-IN-SW-152 | 14d | 0d | Epoxy paint to concrete surface in the factory area [92.5]; Waterproofing Installer [240 h] | 5,550 | 3 |
| NJR1-CO-FW-180 |  | Workshop 5 - Epoxy Paint | 15d | 2026-11-05 | 2026-11-22 | NJR1-CO-FW-170 SS, NJR1-DE-SL-FW-120, NJR1-CO-ME-IN-SW-153 | 14d | 0d | Epoxy paint to concrete surface in the factory area [92.5]; Waterproofing Installer [240 h] | 5,550 | 3 |
| NJR1-CO-FW-190 |  | Workshop 6 - Epoxy Paint | 15d | 2026-11-05 | 2026-11-22 | NJR1-CO-FW-180 SS, NJR1-DE-SL-FW-120, NJR1-CO-ME-IN-SW-153 | 14d | 0d | Epoxy paint to concrete surface in the factory area [92.5]; Waterproofing Installer [240 h] | 5,550 | 3 |
| NJR1-CO-FW-200 |  | Workshop 7 - Epoxy Paint | 15d | 2026-11-05 | 2026-11-22 | NJR1-CO-FW-190 SS, NJR1-DE-SL-FW-120, NJR1-CO-ME-IN-SW-154 | 14d | 0d | Epoxy paint to concrete surface in the factory area [92.5]; Waterproofing Installer [240 h] | 5,550 | 3 |
| NJR1-CO-FW-210 |  | Workshop 8 - Epoxy Paint | 15d | 2026-11-05 | 2026-11-22 | NJR1-CO-FW-200 SS, NJR1-DE-SL-FW-120, NJR1-CO-ME-IN-SW-154 | 14d | 0d | Epoxy paint to concrete surface in the factory area [92.5]; Waterproofing Installer [240 h] | 5,550 | 3 |
| NJR1-CO-FW-220 |  | Workshop 9 - Epoxy Paint | 15d | 2026-11-05 | 2026-11-22 | NJR1-CO-FW-210 SS, NJR1-DE-SL-FW-120, NJR1-CO-ME-IN-SW-155 | 14d | 0d | Epoxy paint to concrete surface in the factory area [92.5]; Waterproofing Installer [240 h] | 5,550 | 3 |
| NJR1-CO-FW-230 |  | Workshop 10 - Epoxy Paint | 15d | 2026-11-05 | 2026-11-22 | NJR1-CO-FW-220 SS, NJR1-DE-SL-FW-120, NJR1-CO-ME-IN-SW-155 | 14d | 0d | Epoxy paint to concrete surface in the factory area [92.5]; Waterproofing Installer [240 h] | 5,550 | 3 |
| NJR1-CO-FW-240 |  | Workshop 11 - Epoxy Paint | 15d | 2026-11-05 | 2026-11-22 | NJR1-CO-FW-230 SS, NJR1-DE-SL-FW-120, NJR1-CO-ME-IN-SW-156 | 14d | 0d | Epoxy paint to concrete surface in the factory area [92.5]; Waterproofing Installer [240 h] | 5,550 | 3 |
| NJR1-CO-FW-250 |  | Workshop 12 - Epoxy Paint | 15d | 2026-11-05 | 2026-11-22 | NJR1-CO-FW-240 SS, NJR1-DE-SL-FW-120, NJR1-CO-ME-IN-SW-156, NJR1-CO-ME-EX-WS-180 | 14d |  | Epoxy paint to concrete surface in the factory area [92.5]; Waterproofing Installer [240 h] | 5,550 | 3 |

| ID | WBS | Activity | Duration | Start | Finish | Predecessors | Total float | Free float | Resources | Cost | WBS-BOQ |
| --- | --- | --- | --- | --- | --- | --- | --- | --- | --- | --- | --- |
|  | 4 | **Granite tiles** |  | 2026-11-01 | 2026-11-14 |  |  |  |  |  |  |
| NJR1-CO-FW-260 |  | Toilet 1 - Granite tiles | 6d | 2026-11-01 | 2026-11-07 | NJR1-CO-FW-100, NJR1-DE-SL-FW-130 | 19d | 0d | Skid Loader (Bobcat) [48 h]; Fork Lift [48 h]; Granite tiles [6.3]; Tile Installer [240 h]; Operator [96 h] | 1,575 | 4 |
| NJR1-CO-FW-270 |  | Toilet 2 - Granite tiles | 6d | 2026-11-01 | 2026-11-07 | NJR1-CO-FW-110, NJR1-DE-SL-FW-130 | 14d | 0d | Skid Loader (Bobcat) [48 h]; Fork Lift [48 h]; Granite tiles [6.3]; Tile Installer [240 h]; Operator [96 h] | 1,575 | 4 |
| NJR1-CO-FW-290 |  | Outside Mosque - Granite tiles | 6d | 2026-11-07 | 2026-11-12 | NJR1-CO-FW-590, NJR1-DE-SL-FW-130 | 19d | 0d | Skid Loader (Bobcat) [48 h]; Fork Lift [48 h]; Granite tiles [4.62]; Tile Installer [240 h]; Operator [96 h] | 1,155 | 4 |
| NJR1-CO-FW-280 |  | Mosque - Granite tiles | 6d | 2026-11-08 | 2026-11-14 | NJR1-CO-FW-270, NJR1-CO-FW-450, NJR1-DE-SL-FW-130 | 14d | 0d | Skid Loader (Bobcat) [48 h]; Fork Lift [48 h]; Granite tiles [3.78]; Tile Installer [240 h]; Operator [96 h] | 945 | 4 |
|  | 5 | **Marble strip 30mm thk, Threshold** |  | 2026-11-08 | 2026-11-17 |  |  |  |  |  |  |
| NJR1-CO-FW-300 |  | Toilet 1 - Marble strips | 3d | 2026-11-08 | 2026-11-10 | NJR1-CO-FW-260, NJR1-DE-SL-FW-140 | 19d | 0d | Skid Loader (Bobcat) [24 h]; Fork Lift [24 h]; Marble strip 30mm thk, Threshold [0.54]; Tile Installer [48 h]; Operator [48 h] | 135 | 5 |
| NJR1-CO-FW-310 |  | Toilet 2 - Marble strips | 3d | 2026-11-08 | 2026-11-10 | NJR1-CO-FW-270, NJR1-DE-SL-FW-140 | 19d | 0d | Skid Loader (Bobcat) [24 h]; Fork Lift [24 h]; Marble strip 30mm thk, Threshold [0.54]; Tile Installer [48 h]; Operator [48 h] | 135 | 5 |
| NJR1-CO-FW-330 |  | Outside Mosque - Marble strips | 3d | 2026-11-14 | 2026-11-16 | NJR1-CO-FW-290, NJR1-DE-SL-FW-140 | 19d |  | Skid Loader (Bobcat) [24 h]; Fork Lift [24 h]; Marble strip 30mm thk, Threshold [0.4]; Tile Installer [48 h]; Operator [48 h] | 99 | 5 |
| NJR1-CO-FW-320 |  | Mosque - Marble strips | 3d | 2026-11-15 | 2026-11-17 | NJR1-CO-FW-280, NJR1-DE-SL-FW-140 | 14d | 11d | Skid Loader (Bobcat) [24 h]; Fork Lift [24 h]; Marble strip 30mm thk, Threshold [0.32]; Tile Installer [48 h]; Operator [48 h] | 81 | 5 |
|  | 6 | **Wood skirt 100mm height** |  | 2026-11-11 | 2026-12-05 |  |  |  |  |  |  |
| NJR1-CO-FW-340 |  | Toilet 1 - Wood skirt | 5d | 2026-11-11 | 2026-11-16 | NJR1-CO-FW-300, NJR1-DE-SL-FW-150 | 19d |  | Skid Loader (Bobcat) [40 h]; Fork Lift [40 h]; Wood skirt 100mm height [10.06]; Carpenter [80 h]; Operator [80 h] | 352.17 | 6 |
| NJR1-CO-FW-350 |  | Toilet 2 - Wood skirt | 5d | 2026-11-11 | 2026-11-16 | NJR1-CO-FW-310, NJR1-DE-SL-FW-150 | 19d |  | Skid Loader (Bobcat) [40 h]; Fork Lift [40 h]; Wood skirt 100mm height [10.06]; Carpenter [80 h]; Operator [80 h] | 352.17 | 6 |
| NJR1-CO-FW-360 |  | Mosque - Wood skirt | 4d | 2026-12-01 | 2026-12-05 | NJR1-CO-FW-320, NJR1-DE-SL-FW-150, NJR1-CO-FW-120, NJR1-CO-FW-130 | 3d | 0d | Skid Loader (Bobcat) [32 h]; Fork Lift [32 h]; Wood skirt 100mm height [5.68]; Carpenter [64 h]; Operator [64 h] | 198.66 | 6 |
|  | 2 | **Wall Finishes** |  | 2026-09-16 | 2026-11-25 |  |  |  |  |  |  |
|  | 1 | **Internal plastering to walls and columns** |  | 2026-10-03 | 2026-10-15 |  |  |  |  |  |  |
| NJR1-CO-FW-390 |  | Mosque - Internal plastering | 5d | 2026-10-03 | 2026-10-07 | NJR1-CO-MA-160 | 1d | 0d | Skid Loader (Bobcat) [40 h]; Fork Lift [40 h]; Internal plastering to walls and columns [21.42]; Mason [80 h]; Operator [80 h] | 899.64 | 1 |
| NJR1-CO-FW-400 |  | EE Room 1 - Internal plastering | 5d | 2026-10-03 | 2026-10-07 | NJR1-CO-MA-130, NJR1-CO-FW-390 SS, NJR1-CO-FW-460 | 1d | 0d | Skid Loader (Bobcat) [40 h]; Fork Lift [40 h]; Internal plastering to walls and columns [10.71]; Mason [80 h]; Operator [80 h] | 449.82 | 1 |
| NJR1-CO-FW-410 |  | EE Room 2 - Internal plastering | 5d | 2026-10-03 | 2026-10-07 | NJR1-CO-MA-190, NJR1-CO-FW-400 SS, NJR1-CO-FW-470 | 1d | 0d | Skid Loader (Bobcat) [40 h]; Fork Lift [40 h]; Internal plastering to walls and columns [10.71]; Mason [80 h]; Operator [80 h] | 449.82 | 1 |
| NJR1-CO-FW-420 |  | Outside Mosque - Internal plastering | 5d | 2026-10-04 | 2026-10-08 | NJR1-CO-CW-350 | 0d |  | Skid Loader (Bobcat) [40 h]; Fork Lift [40 h]; Internal plastering to walls and columns [27.54]; Mason [80 h]; Operator [80 h] | 1,156.68 | 1 |
| NJR1-CO-FW-370 |  | Toilet 1 - Internal plastering | 5d | 2026-10-11 | 2026-10-15 | NJR1-CO-MA-100, NJR1-CO-ME-IN-WS-120 | 0d |  | Skid Loader (Bobcat) [40 h]; Fork Lift [40 h]; Internal plastering to walls and columns [41.31]; Mason [80 h]; Operator [80 h] | 1,735.02 | 1 |
| NJR1-CO-FW-380 |  | Toilet 2 - Internal plastering | 5d | 2026-10-11 | 2026-10-15 | NJR1-CO-MA-140, NJR1-CO-ME-IN-WS-130 | 0d |  | Skid Loader (Bobcat) [40 h]; Fork Lift [40 h]; Internal plastering to walls and columns [41.31]; Mason [80 h]; Operator [80 h] | 1,735.02 | 1 |
|  | 2 | **External plastering to external walls** |  | 2026-09-16 | 2026-10-20 |  |  |  |  |  |  |
| NJR1-CO-FW-430 |  | Toilet 1 - External platering | 10d | 2026-09-16 | 2026-09-28 | NJR1-CO-MA-130 | 4d | 0d | Skid Loader (Bobcat) [80 h]; Fork Lift [80 h]; External plastering to external walls [60.75]; Mason [160 h]; Operator [160 h] | 2,733.75 | 2 |
| NJR1-CO-FW-440 |  | Toilet 2 - External platering | 10d | 2026-09-16 | 2026-09-28 | NJR1-CO-MA-190, NJR1-CO-FW-430 SS | 4d | 3d | Skid Loader (Bobcat) [80 h]; Fork Lift [80 h]; External plastering to external walls [60.75]; Mason [160 h]; Operator [160 h] | 2,733.75 | 2 |
| NJR1-CO-FW-450 |  | Mosque - External platering | 10d | 2026-09-20 | 2026-10-01 | NJR1-CO-MA-180, NJR1-CO-FW-440 SS | 1d | 0d | Skid Loader (Bobcat) [80 h]; Fork Lift [80 h]; External plastering to external walls [31.5]; Mason [160 h]; Operator [160 h] | 1,417.5 | 2 |
| NJR1-CO-FW-460 |  | EE Room 1 - External platering | 10d | 2026-09-20 | 2026-10-01 | NJR1-CO-MA-120, NJR1-CO-FW-450 SS | 1d | 0d | Skid Loader (Bobcat) [80 h]; Fork Lift [80 h]; External plastering to external walls [15.75]; Mason [160 h]; Operator [160 h] | 708.75 | 2 |
| NJR1-CO-FW-470 |  | EE Room 2 - External platering | 10d | 2026-09-20 | 2026-10-01 | NJR1-CO-MA-170, NJR1-CO-FW-460 SS | 1d | 0d | Skid Loader (Bobcat) [80 h]; Fork Lift [80 h]; External plastering to external walls [15.75]; Mason [160 h]; Operator [160 h] | 708.75 | 2 |
| NJR1-CO-FW-480 |  | Outside Mosque - External platering | 10d | 2026-10-10 | 2026-10-20 | NJR1-CO-FW-420, NJR1-MI-BM-180 | 16d | 0d | Skid Loader (Bobcat) [80 h]; Fork Lift [80 h]; External plastering to external walls [40.5]; Mason [160 h]; Operator [160 h] | 1,822.5 | 2 |

| ID | WBS | Activity | Duration | Start | Finish | Predecessors | Total float | Free float | Resources | Cost | WBS-BOQ |
| --- | --- | --- | --- | --- | --- | --- | --- | --- | --- | --- | --- |
|  | 3 | **2 coats of acrylic paint at internal walls and roof** |  | 2026-10-27 | 2026-11-24 |  |  |  |  |  |  |
| NJR1-CO-FW-520 |  | EE Room 1 - Acrylic paint internal | 3d | 2026-10-27 | 2026-10-29 | NJR1-CO-FW-570 | 16d | 15d | 2 coats of acrylic paint at internal walls and roof [13.27]; Mason [72 h] | 398.16 | 3 |
| NJR1-CO-FW-530 |  | EE Room 2 - Acrylic paint internal | 3d | 2026-10-27 | 2026-10-29 | NJR1-CO-FW-580 | 16d | 15d | 2 coats of acrylic paint at internal walls and roof [13.27]; Mason [72 h] | 398.16 | 3 |
| NJR1-CO-FW-535 |  | Outside Mosque - Acrylic paint internal | 3d | 2026-11-07 | 2026-11-09 | NJR1-CO-FW-590, NJR1-CO-FW-680 | 16d | 0d | 2 coats of acrylic paint at internal walls and roof [34.13]; Mason [72 h] | 1,023.84 | 3 |
| NJR1-CO-FW-490 |  | Toilet 1 - Acrylic paint internal | 3d | 2026-11-17 | 2026-11-19 | NJR1-CO-FW-540, NJR1-CO-FW-650, NJR1-CO-ME-IN-WS-140 | 6d | 0d | 2 coats of acrylic paint at internal walls and roof [51.19]; Mason [72 h] | 1,535.76 | 3 |
| NJR1-CO-FW-500 |  | Toilet 2 - Acrylic paint internal | 3d | 2026-11-17 | 2026-11-19 | NJR1-CO-FW-550, NJR1-CO-FW-660, NJR1-CO-ME-IN-WS-150 | 6d | 0d | 2 coats of acrylic paint at internal walls and roof [51.19]; Mason [72 h] | 1,535.76 | 3 |
| NJR1-CO-FW-510 |  | Mosque - Acrylic paint internal | 3d | 2026-11-22 | 2026-11-24 | NJR1-CO-FW-560, NJR1-CO-FW-670 | 3d | 0d | 2 coats of acrylic paint at internal walls and roof [26.54]; Mason [72 h] | 796.32 | 3 |
|  | 4 | **2 coats of acrylic paint at external walls and parapet** |  | 2026-10-20 | 2026-11-15 |  |  |  |  |  |  |
| NJR1-CO-FW-560 |  | Mosque - Acrylic paint external | 6d | 2026-10-20 | 2026-10-26 | NJR1-CO-DW-400, NJR1-DE-SL-FW-160 | 22d | 17d | 2 coats of acrylic paint at external walls and parapet [30]; Mason [96 h] | 1,050 | 4 |
| NJR1-CO-FW-570 |  | EE Room 1 - Acrylic paint external | 6d | 2026-10-20 | 2026-10-26 | NJR1-CO-DW-220, NJR1-DE-SL-FW-160 | 16d | 0d | 2 coats of acrylic paint at external walls and parapet [12]; Mason [96 h] | 420 | 4 |
| NJR1-CO-FW-580 |  | EE Room 2 - Acrylic paint external | 6d | 2026-10-20 | 2026-10-26 | NJR1-CO-DW-230, NJR1-DE-SL-FW-160 | 16d | 0d | 2 coats of acrylic paint at external walls and parapet [12]; Mason [96 h] | 420 | 4 |
| NJR1-CO-FW-540 |  | Toilet 1 - Acrylic paint external | 6d | 2026-11-09 | 2026-11-15 | NJR1-CO-DW-380, NJR1-DE-SL-FW-160 | 5d | 0d | 2 coats of acrylic paint at external walls and parapet [48]; Mason [96 h] | 1,680 | 4 |
| NJR1-CO-FW-550 |  | Toilet 2 - Acrylic paint external | 6d | 2026-11-09 | 2026-11-15 | NJR1-CO-DW-390, NJR1-DE-SL-FW-160 | 5d | 0d | 2 coats of acrylic paint at external walls and parapet [48]; Mason [96 h] | 1,680 | 4 |
|  | 5 | **Marble chips on external walls and grooves** |  | 2026-10-31 | 2026-11-05 |  |  |  |  |  |  |
| NJR1-CO-FW-590 |  | Outside Mosque - Marble chips | 6d | 2026-10-31 | 2026-11-05 | NJR1-CO-FW-480, NJR1-CO-DW-550, NJR1-DE-SL-FW-170 | 16d | 0d | Marble chips on external walls and grooves [45]; Mason [144 h] | 2,700 | 5 |
|  | 6 | **GRC panels** |  | 2026-11-07 | 2026-11-15 |  |  |  |  |  |  |
| NJR1-CO-FW-600 |  | Outside Mosque - GRC penels | 8d | 2026-11-07 | 2026-11-15 | NJR1-CO-FW-590, NJR1-DE-SL-FW-180 | 20d |  | GRC panels [6.6]; Mason [192 h] | 2,640 | 6 |
|  | 7 | **300*300mm glazed ceramic wall tiles for toilets** |  | 2026-10-19 | 2026-10-26 |  |  |  |  |  |  |
| NJR1-CO-FW-610 |  | Toilet 1 - 300*300mm wall tiles | 7d | 2026-10-19 | 2026-10-26 | NJR1-CO-TH-240, NJR1-DE-SL-FW-100 | 6d | 0d | Skid Loader (Bobcat) [56 h]; Fork Lift [56 h]; 300*300mm glazed ceramic wall tiles for toilets [72]; Tile Installer [224 h]; Operator [112 h] | 7,920 | 7 |
| NJR1-CO-FW-620 |  | Toilet 2 - 300*300mm wall tiles | 7d | 2026-10-19 | 2026-10-26 | NJR1-CO-FW-380, NJR1-CO-TH-250, NJR1-DE-SL-FW-100 | 3d | 0d | Skid Loader (Bobcat) [56 h]; Fork Lift [56 h]; 300*300mm glazed ceramic wall tiles for toilets [72]; Tile Installer [224 h]; Operator [112 h] | 7,920 | 7 |
|  | 8 | **Phenolic partitions with doors for toilets** |  | 2026-11-21 | 2026-11-25 |  |  |  |  |  |  |
| NJR1-CO-FW-630 |  | Toilet 1 - Phenolic partition | 5d | 2026-11-21 | 2026-11-25 | NJR1-CO-FW-490, NJR1-DE-SL-FW-190 | 8d | 0d | Fork Lift [40 h]; Phenolic partitions with doors for toilets [22.5]; Door & Window Installer [160 h]; Operator [40 h] | 13,500 | 8 |
| NJR1-CO-FW-640 |  | Toilet 2 - Phenolic partition | 5d | 2026-11-21 | 2026-11-25 | NJR1-CO-FW-500, NJR1-DE-SL-FW-190 | 8d | 0d | Fork Lift [40 h]; Phenolic partitions with doors for toilets [22.5]; Door & Window Installer [160 h]; Operator [40 h] | 13,500 |  |
|  | 3 | **Ceiling Finishes** |  | 2026-10-21 | 2026-11-21 |  |  |  |  |  |  |
|  | 1 | **12.5mm thk, moisture resistant gypsum board suspended ceiling for toilets** |  | 2026-11-12 | 2026-11-16 |  |  |  |  |  |  |
| NJR1-CO-FW-650 |  | Toilet 1 - Moisture resistant gypsum board | 4d | 2026-11-12 | 2026-11-16 | NJR1-CO-FW-100, NJR1-CO-ME-IN-HV-300, NJR1-DE-SL-FW-200 | 6d | 0d | 12.5mm thk, moisture resistant gypsum board suspended ceiling for toilets [22.5]; Carpenter [96 h] | 3,375 | 1 |
| NJR1-CO-FW-660 |  | Toilet 2 - Moisture resistant gypsum board | 4d | 2026-11-12 | 2026-11-16 | NJR1-CO-FW-110, NJR1-CO-ME-IN-HV-310, NJR1-DE-SL-FW-200 | 3d | 0d | 12.5mm thk, moisture resistant gypsum board suspended ceiling for toilets [22.5]; Carpenter [96 h] | 3,375 | 1 |

| ID | WBS | Activity | Duration | Start | Finish | Predecessors | Total float | Free float | Resources | Cost | WBS-BOQ |
| --- | --- | --- | --- | --- | --- | --- | --- | --- | --- | --- | --- |
|  | 2 | **12.5mm thk, moisture resistant gypsum board suspended ceiling for prayer room** |  | 2026-10-21 | 2026-11-21 |  |  |  |  |  |  |
| NJR1-CO-FW-680 |  | Outside Mosque - Moisture resistant gypsum board | 4d | 2026-10-21 | 2026-10-25 | NJR1-CO-FW-480, NJR1-DE-SL-FW-200 | 26d | 10d | 12.5mm thk, moisture resistant gypsum board suspended ceiling for prayer room [6]; Carpenter [96 h] | 900 | 2 |
| NJR1-CO-FW-670 |  | Mosque - Moisture resistant gypsum board | 4d | 2026-11-17 | 2026-11-21 | NJR1-CO-FW-390, NJR1-DE-SL-FW-200, NJR1-CO-FW-660 | 3d | 0d | 12.5mm thk, moisture resistant gypsum board suspended ceiling for prayer room [6]; Carpenter [96 h] | 900 | 2 |
|  | 12 | **DIVISION 10 - SPECIALTIES** |  | 2026-11-16 | 2026-12-02 |  |  |  |  |  |  |
|  | 1 | **Fittings** |  | 2026-11-26 | 2026-12-02 |  |  |  |  |  |  |
|  | 1 | **Soap dispenser** |  | 2026-11-26 | 2026-11-29 |  |  |  |  |  |  |
| NJR1-CO-SP-100 |  | Toilet 1 - Soap dispenser | 3d | 2026-11-26 | 2026-11-29 | NJR1-CO-FW-630 | 8d | 0d | Soap dispenser [1.8]; Plumber [48 h] | 360 | 1 |
| NJR1-CO-SP-110 |  | Toilet 2 - Soap dispenser | 3d | 2026-11-26 | 2026-11-29 | NJR1-CO-FW-640 | 8d | 0d | Soap dispenser [1.8]; Plumber [48 h] | 360 | 1 |
|  | 2 | **Mirror, Size 3300*1200mm** |  | 2026-11-26 | 2026-11-29 |  |  |  |  |  |  |
| NJR1-CO-SP-120 |  | Toilet 1 - Mirror, Size 3300*1200mm | 3d | 2026-11-26 | 2026-11-29 | NJR1-CO-SP-100 SS | 8d | 0d | Mirror, Size 3300*1200mm [0.6]; General Labor [48 h] | 570 | 2 |
| NJR1-CO-SP-130 |  | Toilet 2 - Mirror, Size 3300*1200mm | 3d | 2026-11-26 | 2026-11-29 | NJR1-CO-SP-110 SS | 8d | 0d | Mirror, Size 3300*1200mm [0.6]; General Labor [48 h] | 570 | 2 |
|  | 3 | **Mirror, Size 800*1200mm** |  | 2026-11-26 | 2026-11-29 |  |  |  |  |  |  |
| NJR1-CO-SP-140 |  | Toilet 1 - Mirror, Size 800*1200mm | 3d | 2026-11-26 | 2026-11-29 | NJR1-CO-SP-120 SS | 8d | 0d | Mirror, Size 800*1200mm [1.2]; General Labor [48 h] | 360 | 3 |
| NJR1-CO-SP-150 |  | Toilet 2 - Mirror, Size 800*1200mm | 3d | 2026-11-26 | 2026-11-29 | NJR1-CO-SP-130 SS | 8d | 0d | Mirror, Size 800*1200mm [1.2]; General Labor [48 h] | 360 | 3 |
|  | 4 | **Toilet tissue holder** |  | 2026-11-26 | 2026-11-29 |  |  |  |  |  |  |
| NJR1-CO-SP-160 |  | Toilet 1 - Toilet tissue holder | 3d | 2026-11-26 | 2026-11-29 | NJR1-CO-SP-140 SS | 8d | 0d | Toilet tissue holder [1.8]; Plumber [48 h] | 360 | 4 |
| NJR1-CO-SP-170 |  | Toilet 2 - Toilet tissue holder | 3d | 2026-11-26 | 2026-11-29 | NJR1-CO-SP-150 SS | 8d | 0d | Toilet tissue holder [1.8]; Plumber [48 h] | 360 | 4 |
|  | 5 | **Paper towel dispenser** |  | 2026-11-26 | 2026-11-29 |  |  |  |  |  |  |
| NJR1-CO-SP-180 |  | Toilet 1 - Paper towel dispenser | 3d | 2026-11-26 | 2026-11-29 | NJR1-CO-SP-160 SS | 8d | 0d | Paper towel dispenser [0.6]; Plumber [48 h] | 120 | 5 |
| NJR1-CO-SP-190 |  | Toilet 2 - Paper towel dispenser | 3d | 2026-11-26 | 2026-11-29 | NJR1-CO-SP-170 SS | 8d | 0d | Paper towel dispenser [0.6]; Plumber [48 h] | 120 | 5 |
|  | 6 | **Waste receptacle** |  | 2026-11-26 | 2026-11-29 |  |  |  |  |  |  |
| NJR1-CO-SP-200 |  | Toilet 1 - Waste receptacle | 3d | 2026-11-26 | 2026-11-29 | NJR1-CO-SP-180 SS | 8d | 0d | Waste receptacle [2.4]; Plumber [48 h] | 720 | 6 |
| NJR1-CO-SP-210 |  | Toilet 2 - Waste receptacle | 3d | 2026-11-26 | 2026-11-29 | NJR1-CO-SP-190 SS | 8d | 0d | Waste receptacle [2.4]; Plumber [48 h] | 720 | 6 |
|  | 7 | **Stainless steel hand dryer** |  | 2026-11-26 | 2026-11-29 |  |  |  |  |  |  |
| NJR1-CO-SP-220 |  | Toilet 1 - Stainless steel hand dryer | 3d | 2026-11-26 | 2026-11-29 | NJR1-CO-SP-200 SS | 8d | 0d | Stainless steel hand dryer [0.6]; Plumber [48 h] | 780 | (New) |
| NJR1-CO-SP-230 |  | Toilet 2 - Stainless steel hand dryer | 3d | 2026-11-26 | 2026-11-29 | NJR1-CO-SP-210 SS | 8d | 0d | Stainless steel hand dryer [0.6]; Plumber [48 h] | 780 | (New) |

| ID | WBS | Activity | Duration | Start | Finish | Predecessors | Total float | Free float | Resources | Cost | WBS-BOQ |
| --- | --- | --- | --- | --- | --- | --- | --- | --- | --- | --- | --- |
|  | 8 | **Robe hook** |  | 2026-11-26 | 2026-11-29 |  |  |  |  |  |  |
| NJR1-CO-SP-240 |  | Toilet 1 - Robe hook | 3d | 2026-11-26 | 2026-11-29 | NJR1-CO-SP-220 SS | 8d | 0d | Robe hook [2.4]; Plumber [48 h] | 240 | (New)-1 |
| NJR1-CO-SP-250 |  | Toilet 2 - Robe hook | 3d | 2026-11-26 | 2026-11-29 | NJR1-CO-SP-230 SS | 8d | 0d | Robe hook [2.4]; Plumber [48 h] | 240 | (New)-1 |
|  | 9 | **Grab bars** |  | 2026-11-26 | 2026-11-29 |  |  |  |  |  |  |
| NJR1-CO-SP-260 |  | Toilet 1 - Grab bars | 3d | 2026-11-26 | 2026-11-29 | NJR1-CO-SP-240 SS | 8d |  | Grab bars [0.6]; Plumber [48 h] | 90 | (New)-2 |
| NJR1-CO-SP-270 |  | Toilet 2 - Grab bars | 3d | 2026-11-26 | 2026-11-29 | NJR1-CO-SP-250 SS | 8d | 0d | Grab bars [0.6]; Plumber [48 h] | 90 | (New)-2 |
|  | 10 | **Extruded EPDM rubber bumper 200mm high** |  | 2026-11-28 | 2026-12-02 |  |  |  |  |  |  |
| NJR1-CO-SP-280 |  | Warehouse - EPDM rubber bumper | 5d | 2026-11-28 | 2026-12-02 | NJR1-CO-SP-320 | 5d |  | Extruded EPDM rubber bumper 200mm high [120]; General Labor [80 h] | 7,800 | (New)-3 |
|  | 2 | **Signage** |  | 2026-11-16 | 2026-11-22 |  |  |  |  |  |  |
|  | 1 | **Internal and external signs** |  | 2026-11-16 | 2026-11-22 |  |  |  |  |  |  |
| NJR1-CO-SP-290 |  | Toilet 1 - Internal and External Signage | 6d | 2026-11-16 | 2026-11-22 | NJR1-CO-FW-430, NJR1-CO-FW-540 | 5d | 0d | Internal and External Signage [0.7]; General Labor [96 h] | 175.5 | 1 |
| NJR1-CO-SP-300 |  | Toilet 2 - Internal and External Signage | 6d | 2026-11-16 | 2026-11-22 | NJR1-CO-FW-440, NJR1-CO-FW-550, NJR1-CO-SP-290 SS | 5d | 0d | Internal and External Signage [0.7]; General Labor [96 h] | 175.5 | 1 |
| NJR1-CO-SP-310 |  | Mosque - Internal and External Signage | 6d | 2026-11-16 | 2026-11-22 | NJR1-CO-FW-450, NJR1-CO-FW-560, NJR1-CO-SP-300 SS | 5d | 0d | Internal and External Signage [0.4]; General Labor [96 h] | 99 | 1 |
|  | 3 | **Logo** |  | 2026-11-16 | 2026-11-26 |  |  |  |  |  |  |
| NJR1-CO-SP-320 |  | Install MODON logo on entrance | 10d | 2026-11-16 | 2026-11-26 | NJR1-CO-SP-310 SS, NJR1-CO-DW-530 | 5d | 0d | Install MODON logo on entrance [2.4]; General Labor [160 h] | 12,000 | 3 |
|  | 6 | **PRE ENGINEERED STRUCTURE** |  | 2026-06-11 | 2026-08-24 |  |  |  |  |  |  |
|  | 1 | **PEB for one block with an area 1990 square meter** |  | 2026-07-07 | 2026-07-30 |  |  |  |  |  |  |
| NJR1-CO-PR-100 |  | Install Steel Structure & purlins | 21d | 2026-07-07 | 2026-07-30 | NJR1-CO-CW-300, NJR1-DE-LL-PR-100 | 22d | 0d | Crane [504 h]; Fork Lift [504 h]; PEB for one block with an area 1990 square meter [0.3]; General Labor [2016 h]; Welder [1344 h]; Operator [1008 h] | 510,000 | 1 |
| NJR1-CO-PR-110 |  | Install Roof Sheeting & Insulation | 21d | 2026-07-07 | 2026-07-30 | NJR1-CO-PR-100 SS | 22d | 0d | Crane [504 h]; Fork Lift [504 h]; PEB for one block with an area 1990 square meter [0.12]; General Labor [2016 h]; Welder [1344 h]; Operator [1008 h] | 204,000 | 1 |
| NJR1-CO-PR-120 |  | Install Sandwich Panels | 21d | 2026-07-07 | 2026-07-30 | NJR1-CO-PR-110 SS, NJR1-DE-LL-PR-110 | 22d | 0d | Crane [504 h]; Fork Lift [504 h]; PEB for one block with an area 1990 square meter [0.18]; General Labor [2016 h]; Welder [1344 h]; Operator [1008 h] | 306,000 | 1 |
|  | 5 | **Intumescent paint to steel works** |  | 2026-08-01 | 2026-08-13 |  |  |  |  |  |  |
| NJR1-CO-PR-130 |  | Apply intumescent paint to steel works | 12d | 2026-08-01 | 2026-08-13 | NJR1-CO-PR-120, NJR1-DE-SL-PR-100 | 22d | 0d | Intumescent paint to steel works [0.6]; General Labor [768 h]; Painter [768 h] | 132,000 | 2 |
|  | 2 | **Fencing For Pump Room** |  | 2026-06-25 | 2026-07-13 |  |  |  |  |  |  |
| NJR1-CO-PR-140 |  | Install galvanized steel fence | 16d | 2026-06-25 | 2026-07-13 | NJR1-CO-PR-180, NJR1-DE-SL-PR-110 | 11d | 0d | Fencing For Pump Room [21.6]; General Labor [1024 h]; Welder [640 h] | 30,240 | 3 |

| ID | WBS | Activity | Duration | Start | Finish | Predecessors | Total float | Free float | Resources | Cost | WBS-BOQ |
| --- | --- | --- | --- | --- | --- | --- | --- | --- | --- | --- | --- |
|  | 3 | **Gates** |  | 2026-07-14 | 2026-08-24 |  |  |  |  |  |  |
| NJR1-CO-PR-150 |  | Install steel fence gate | 12d | 2026-07-14 | 2026-07-27 | NJR1-CO-PR-140, NJR1-DE-SL-PR-120 | 11d | 0d | General Labor [192 h]; Welder [96 h] |  | 4 |
| NJR1-CO-PR-160 |  | Install swing gate for fence with similar design with opening of 3m. | 12d | 2026-07-28 | 2026-08-10 | NJR1-CO-PR-150, NJR1-DE-SL-PR-120 | 11d | 0d | Install swing gate for fence with similar design with opening of 3m. [1.2]; General Labor [96 h]; Welder [96 h] | 12,000 | 4 |
| NJR1-CO-PR-170 |  | Install swing gate for fence with similar design with opening of 1.5m. | 12d | 2026-08-11 | 2026-08-24 | NJR1-CO-PR-150, NJR1-DE-SL-PR-120, NJR1-CO-PR-160 | 11d | 0d | Install swing gate for fence with similar design with opening of 1.5m. [1.2]; General Labor [96 h]; Welder [96 h] | 8,400 | 4 |
|  | 4 | **Pump Shed** |  | 2026-06-11 | 2026-06-24 |  |  |  |  |  |  |
| NJR1-CO-PR-180 |  | Install pump shed structure | 12d | 2026-06-11 | 2026-06-24 | NJR1-CO-CW-270, NJR1-DE-LL-PR-120 | 11d | 0d | Crane [96 h]; Fork Lift [288 h]; Pump Shed [0.6]; General Labor [672 h]; Welder [192 h]; Operator [384 h] | 21,000 | 5 |
|  | 7 | **DIVISION 15 - MECHANICAL WORKS** |  | 2026-04-28 | 2026-12-01 |  |  |  |  |  |  |
|  | 1 | **External Works** |  | 2026-04-28 | 2026-08-01 |  |  |  |  |  |  |
|  | 2 | **Fire Fighting System** |  | 2026-06-10 | 2026-07-22 |  |  |  |  |  |  |
|  | 1 | **Fire Pump system** |  | 2026-07-02 | 2026-07-22 |  |  |  |  |  |  |
| NJR1-CO-ME-EX-FF-100 |  | Install fire pump system | 18d | 2026-07-02 | 2026-07-22 | NJR1-CO-CW-240, NJR1-DE-LL-FF-100, NJR1-CO-ME-EX-FF-140, NJR1-CO-ME-EX-FF-122 | 21d | 0d | Fire Pump system [0.6]; General Labor [576 h]; Plumber [864 h] | 252,000 | 1 |
|  | 2 | **HDPE PE100 PN16 Pipes** |  | 2026-06-10 | 2026-06-28 |  |  |  |  |  |  |
|  | 1 | **200 mm Ø HDPE Fire Fighting** |  | 2026-06-10 | 2026-06-16 |  |  |  |  |  |  |
| NJR1-CO-ME-EX-FF-108 |  | Trench Excavation | 1d | 2026-06-10 | 2026-06-10 | NJR1-CO-ME-EX-SW-112 | 24d | 0d | Excavator [8 h]; 200 mm Ø HDPE Fire Fighting [5.76]; General Labor [24 h]; Operator [8 h] | 1,440 |  |
| NJR1-CO-ME-EX-FF-109 |  | Sand Bedding | 1d | 2026-06-11 | 2026-06-11 | NJR1-CO-ME-EX-FF-108 | 24d | 0d | Skid Loader (Bobcat) [8 h]; 200 mm Ø HDPE Fire Fighting [1.44]; General Labor [24 h]; Operator [8 h] | 360 |  |
| NJR1-CO-ME-EX-FF-110 |  | 200 mm Ø HDPE Fire Fighting | 2d | 2026-06-13 | 2026-06-14 | NJR1-DE-SL-FF-100, NJR1-CO-ME-EX-FF-109 | 24d | 0d | Crane [16 h]; Fork Lift [16 h]; 200 mm Ø HDPE Fire Fighting [15.84]; General Labor [48 h]; Plumber [48 h]; Operator [32 h] | 3,960 | 2 |
| NJR1-CO-ME-EX-FF-111 |  | Testing 200mm Ø HDPE Pipe | 1d | 2026-06-15 | 2026-06-15 | NJR1-CO-ME-EX-FF-110 | 24d | 0d | Water Tank Truck [8 h]; 200 mm Ø HDPE Fire Fighting [2.88]; General Labor [16 h]; Operator [8 h] | 720 |  |
| NJR1-CO-ME-EX-FF-112 |  | Backfilling | 1d | 2026-06-16 | 2026-06-16 | NJR1-CO-ME-EX-FF-111 | 24d | 0d | Skid Loader (Bobcat) [8 h]; Compactor [8 h]; 200 mm Ø HDPE Fire Fighting [2.88]; General Labor [24 h]; Operator [16 h] | 720 |  |
|  | 2 | **150 mm Ø HDPE Fire Fighting** |  | 2026-06-17 | 2026-06-28 |  |  |  |  |  |  |
| NJR1-CO-ME-EX-FF-118 |  | Trench Excavation | 1d | 2026-06-17 | 2026-06-17 | NJR1-CO-ME-EX-FF-112 | 24d | 0d | Excavator [8 h]; 150 mm Ø HDPE Fire Fighting [24]; General Labor [24 h]; Operator [8 h] | 5,520 |  |
| NJR1-CO-ME-EX-FF-119 |  | Sand Bedding | 1d | 2026-06-18 | 2026-06-18 | NJR1-CO-ME-EX-FF-118 | 24d | 0d | Skid Loader (Bobcat) [8 h]; 150 mm Ø HDPE Fire Fighting [6]; General Labor [24 h]; Operator [8 h] | 1,380 |  |
| NJR1-CO-ME-EX-FF-120 |  | 150 mm Ø HDPE Fire Fighting | 6d | 2026-06-20 | 2026-06-25 | NJR1-CO-ME-EX-FF-110, NJR1-CO-ME-EX-FF-130, NJR1-DE-SL-FF-100, NJR1-CO-ME-EX-FF-119 | 24d | 0d | Crane [48 h]; Fork Lift [48 h]; 150 mm Ø HDPE Fire Fighting [66]; General Labor [144 h]; Plumber [144 h]; Operator [96 h] | 15,180 | 2 |
| NJR1-CO-ME-EX-FF-121 |  | Testing 150mm Ø HDPE Pipe | 1d | 2026-06-27 | 2026-06-27 | NJR1-CO-ME-EX-FF-120 | 24d | 0d | Water Tank Truck [8 h]; 150 mm Ø HDPE Fire Fighting [12]; General Labor [16 h]; Operator [8 h] | 2,760 |  |
| NJR1-CO-ME-EX-FF-122 |  | Backfilling | 1d | 2026-06-28 | 2026-06-28 | NJR1-CO-ME-EX-FF-121 | 24d | 3d | Skid Loader (Bobcat) [8 h]; Compactor [8 h]; 150 mm Ø HDPE Fire Fighting [12]; General Labor [24 h]; Operator [16 h] | 2,760 |  |

| ID | WBS | Activity | Duration | Start | Finish | Predecessors | Total float | Free float | Resources | Cost | WBS-BOQ |
| --- | --- | --- | --- | --- | --- | --- | --- | --- | --- | --- | --- |
|  | 3 | **Directly Buried Gate valve** |  | 2026-06-13 | 2026-06-21 |  |  |  |  |  |  |
| NJR1-CO-ME-EX-FF-130 |  | 200 mm Ø Directly Buried Gate valve | 2d | 2026-06-13 | 2026-06-14 | NJR1-CO-ME-EX-FF-110 SS, NJR1-DE-SL-FF-110 | 28d | 4d | 200 mm Ø Directly Buried Gate valve [0.6]; General Labor [16 h]; Plumber [48 h] | 3,000 | 3 |
| NJR1-CO-ME-EX-FF-140 |  | 150 mm Ø Directly Buried Gate valve | 2d | 2026-06-20 | 2026-06-21 | NJR1-CO-ME-EX-FF-120 SS, NJR1-DE-SL-FF-110 | 30d | 9d | 150 mm Ø Directly Buried Gate valve [0.6]; General Labor [16 h]; Plumber [48 h] | 2,700 | 3 |
|  | 1 | **Water Supply System** |  | 2026-06-10 | 2026-08-01 |  |  |  |  |  |  |
|  | 1 | **HDPE PE 100 PN16 pipes, for cold water supply piping system (underground)** |  | 2026-06-10 | 2026-07-12 |  |  |  |  |  |  |
|  | 1 | **100 mm Ø HDPE Water Supply** |  | 2026-06-10 | 2026-06-18 |  |  |  |  |  |  |
| NJR1-CO-ME-EX-WS-098 |  | Trench Excavation | 1d | 2026-06-10 | 2026-06-10 | NJR1-CO-ME-EX-SW-112, NJR1-CO-ME-EX-SW-122 | 0d |  | Excavator [8 h]; 100 mm Ø HDPE Water Supply [2.4]; General Labor [24 h]; Operator [8 h] | 480 |  |
| NJR1-CO-ME-EX-WS-099 |  | Sand Bedding | 1d | 2026-06-11 | 2026-06-11 | NJR1-CO-ME-EX-WS-098 | 0d |  | Skid Loader (Bobcat) [8 h]; 100 mm Ø HDPE Water Supply [0.6]; General Labor [24 h]; Operator [8 h] | 120 |  |
| NJR1-CO-ME-EX-WS-100 |  | 100 mm Ø HDPE Water Supply | 4d | 2026-06-13 | 2026-06-16 | NJR1-CO-ME-EX-WS-099, NJR1-DE-SL-WS-100 | 0d |  | Crane [32 h]; Fork Lift [32 h]; 100 mm Ø HDPE Water Supply [6.6]; General Labor [96 h]; Plumber [160 h]; Operator [64 h] | 1,320 | 1 |
| NJR1-CO-ME-EX-WS-101 |  | Testing 100mm Ø HDPE Pipe | 1d | 2026-06-17 | 2026-06-17 | NJR1-CO-ME-EX-WS-100, NJR1-CO-ME-EX-WS-140 | 0d |  | Water Tank Truck [8 h]; 100 mm Ø HDPE Water Supply [1.2]; General Labor [16 h]; Operator [8 h] | 240 |  |
| NJR1-CO-ME-EX-WS-102 |  | Backfilling | 1d | 2026-06-18 | 2026-06-18 | NJR1-CO-ME-EX-WS-101 | 0d |  | Skid Loader (Bobcat) [8 h]; Compactor [8 h]; 100 mm Ø HDPE Water Supply [1.2]; General Labor [24 h]; Operator [16 h] | 240 |  |
|  | 2 | **90 mm Ø HDPE Water Supply** |  | 2026-06-20 | 2026-07-02 |  |  |  |  |  |  |
| NJR1-CO-ME-EX-WS-108 |  | Trench Excavation | 2d | 2026-06-20 | 2026-06-21 | NJR1-CO-ME-EX-WS-102 | 0d |  | Excavator [16 h]; 90 mm Ø HDPE Water Supply [28.2]; General Labor [48 h]; Operator [16 h] | 5,076 |  |
| NJR1-CO-ME-EX-WS-109 |  | Sand Bedding | 1d | 2026-06-22 | 2026-06-22 | NJR1-CO-ME-EX-WS-108 | 0d |  | Skid Loader (Bobcat) [8 h]; 90 mm Ø HDPE Water Supply [7.05]; General Labor [24 h]; Operator [8 h] | 1,269 |  |
| NJR1-CO-ME-EX-WS-110 |  | 90 mm Ø HDPE Water Supply | 6d | 2026-06-23 | 2026-06-29 | NJR1-DE-SL-WS-100, NJR1-CO-ME-EX-WS-109 | 0d |  | Crane [48 h]; Fork Lift [48 h]; 90 mm Ø HDPE Water Supply [77.55]; General Labor [144 h]; Plumber [240 h]; Operator [96 h] | 13,959 | 1 |
| NJR1-CO-ME-EX-WS-111 |  | Testing 90mm Ø HDPE Pipe | 1d | 2026-06-30 | 2026-06-30 | NJR1-CO-ME-EX-WS-110, NJR1-CO-ME-EX-WS-150 | 0d |  | Water Tank Truck [8 h]; 90 mm Ø HDPE Water Supply [14.1]; General Labor [16 h]; Operator [8 h] | 2,538 |  |
| NJR1-CO-ME-EX-WS-112 |  | Backfilling | 2d | 2026-07-01 | 2026-07-02 | NJR1-CO-ME-EX-WS-111 | 0d |  | Skid Loader (Bobcat) [16 h]; Compactor [16 h]; 90 mm Ø HDPE Water Supply [14.1]; General Labor [48 h]; Operator [32 h] | 2,538 |  |
|  | 3 | **63 mm Ø HDPE Water Supply** |  | 2026-07-04 | 2026-07-08 |  |  |  |  |  |  |
| NJR1-CO-ME-EX-WS-118 |  | Trench Excavation | 1d | 2026-07-04 | 2026-07-04 | NJR1-CO-ME-EX-WS-112 | 0d |  | Excavator [8 h]; 63 mm Ø HDPE Water Supply [0.96]; General Labor [24 h]; Operator [8 h] | 153.6 |  |
| NJR1-CO-ME-EX-WS-119 |  | Sand Bedding | 1d | 2026-07-05 | 2026-07-05 | NJR1-CO-ME-EX-WS-118 | 45d | 0d | Skid Loader (Bobcat) [8 h]; 63 mm Ø HDPE Water Supply [0.24]; General Labor [24 h]; Operator [8 h] | 38.4 |  |
| NJR1-CO-ME-EX-WS-120 |  | 63 mm Ø HDPE Water Supply | 1d | 2026-07-06 | 2026-07-06 | NJR1-CO-ME-EX-WS-119, NJR1-DE-SL-WS-100 | 45d | 0d | Crane [8 h]; Fork Lift [8 h]; 63 mm Ø HDPE Water Supply [2.64]; General Labor [24 h]; Plumber [40 h]; Operator [16 h] | 422.4 | 1 |
| NJR1-CO-ME-EX-WS-121 |  | Testing 63mm Ø HDPE Pipe | 1d | 2026-07-07 | 2026-07-07 | NJR1-CO-ME-EX-WS-120, NJR1-CO-ME-EX-WS-160 | 45d | 0d | Water Tank Truck [8 h]; 63 mm Ø HDPE Water Supply [0.48]; General Labor [16 h]; Operator [8 h] | 76.8 |  |
| NJR1-CO-ME-EX-WS-122 |  | Backfilling | 1d | 2026-07-08 | 2026-07-08 | NJR1-CO-ME-EX-WS-121 | 45d | 20d | Skid Loader (Bobcat) [8 h]; Compactor [8 h]; 63 mm Ø HDPE Water Supply [0.48]; General Labor [24 h]; Operator [16 h] | 76.8 |  |
|  | 4 | **50 mm Ø HDPE Water Supply** |  | 2026-07-05 | 2026-07-12 |  |  |  |  |  |  |
| NJR1-CO-ME-EX-WS-128 |  | Trench Excavation | 1d | 2026-07-05 | 2026-07-05 | NJR1-CO-ME-EX-WS-118 | 0d |  | Excavator [8 h]; 50 mm Ø HDPE Water Supply [4.8]; General Labor [24 h]; Operator [8 h] | 672 |  |
| NJR1-CO-ME-EX-WS-129 |  | Sand Bedding | 1d | 2026-07-06 | 2026-07-06 | NJR1-CO-ME-EX-WS-128 | 0d |  | Skid Loader (Bobcat) [8 h]; 50 mm Ø HDPE Water Supply [1.2]; General Labor [24 h]; Operator [8 h] | 168 | 1 |
| NJR1-CO-ME-EX-WS-130 |  | 50 mm Ø HDPE Water Supply | 3d | 2026-07-07 | 2026-07-09 | NJR1-DE-SL-WS-100, NJR1-CO-ME-EX-WS-129 | 0d |  | Crane [24 h]; Fork Lift [24 h]; 50 mm Ø HDPE Water Supply [13.2]; General Labor [72 h]; Plumber [120 h]; Operator [48 h] | 1,848 | 1 |
| NJR1-CO-ME-EX-WS-131 |  | Testing 50mm Ø HDPE Pipe | 1d | 2026-07-11 | 2026-07-11 | NJR1-CO-ME-EX-WS-130, NJR1-CO-ME-EX-WS-170 | 0d |  | Water Tank Truck [8 h]; 50 mm Ø HDPE Water Supply [2.4]; General Labor [16 h]; Operator [8 h] | 336 |  |
| NJR1-CO-ME-EX-WS-132 |  | Backfilling | 1d | 2026-07-12 | 2026-07-12 | NJR1-CO-ME-EX-WS-131 | 0d |  | Skid Loader (Bobcat) [8 h]; Compactor [8 h]; 50 mm Ø HDPE Water Supply [2.4]; General Labor [24 h]; Operator [16 h] | 336 |  |

| ID | WBS | Activity | Duration | Start | Finish | Predecessors | Total float | Free float | Resources | Cost | WBS-BOQ |
| --- | --- | --- | --- | --- | --- | --- | --- | --- | --- | --- | --- |
|  | 2 | **Directly Buried Gate valve** |  | 2026-06-13 | 2026-07-09 |  |  |  |  |  |  |
| NJR1-CO-ME-EX-WS-140 |  | 100 mm Ø Directly Buried Gate valve | 3d | 2026-06-13 | 2026-06-15 | NJR1-CO-ME-EX-WS-100 SS, NJR1-DE-SL-WS-110 | 1d |  | 100 mm Ø Directly Buried Gate valve [0.6]; Plumber [120 h] | 1,500 | 2 |
| NJR1-CO-ME-EX-WS-150 |  | 90 mm Ø Directly Buried Gate valve | 3d | 2026-06-23 | 2026-06-25 | NJR1-CO-ME-EX-WS-110 SS, NJR1-DE-SL-WS-110 | 3d |  | 90 mm Ø Directly Buried Gate valve [0.6]; Plumber [120 h] | 1,500 | 2 |
| NJR1-CO-ME-EX-WS-160 |  | 63 mm Ø Directly Buried Gate valve | 1d | 2026-07-06 | 2026-07-06 | NJR1-CO-ME-EX-WS-120 SS, NJR1-CO-ME-EX-WS-150, NJR1-DE-SL-WS-110 | 45d | 0d | 63 mm Ø Directly Buried Gate valve [1.2]; Plumber [40 h] | 1,200 | 2 |
| NJR1-CO-ME-EX-WS-170 |  | 50 mm Ø Directly Buried Gate valve | 3d | 2026-07-07 | 2026-07-09 | NJR1-CO-ME-EX-WS-130 SS, NJR1-DE-SL-WS-110 | 0d |  | 50 mm Ø Directly Buried Gate valve [7.2]; Plumber [120 h] | 5,400 | 2 |
|  | 3 | **SERVICE CONNECTIONS** |  | 2026-07-02 | 2026-08-01 |  |  |  |  |  |  |
|  | 1 | **Service connection -HDPE** |  | 2026-07-27 | 2026-08-01 |  |  |  |  |  |  |
| NJR1-CO-ME-EX-WS-180 |  | 63 mm Ø Service connection - HDPE | 5d | 2026-07-27 | 2026-08-01 | NJR1-CO-ME-EX-WS-210, NJR1-CO-ME-EX-WS-230, NJR1-MI-BM-240 | 25d | 0d | 63 mm Ø Service connection - HDPE [0.6]; Plumber [200 h] | 3,600 | 3 |
|  | 2 | **Road Crossing sleeve for under ground water supply Pipes** |  | 2026-07-07 | 2026-07-12 |  |  |  |  |  |  |
| NJR1-CO-ME-EX-WS-190 |  | For 100 mm Ø pipe Road Crossing sleeve | 5d | 2026-07-07 | 2026-07-12 | NJR1-CO-CW-300 | 25d | 0d | Excavator [40 h]; Water Tank Truck [40 h]; Compactor [40 h]; Fork Lift [40 h]; For 100 mm Ø pipe Road Crossing sleeve [15]; Plumber [200 h]; Operator [160 h] | 3,900 | 3 |
|  | 3 | **Valves including chamber** |  | 2026-07-13 | 2026-07-26 |  |  |  |  |  |  |
| NJR1-CO-ME-EX-WS-200 |  | Air Valve | 6d | 2026-07-13 | 2026-07-19 | NJR1-CO-ME-EX-WS-190, NJR1-DE-SL-WS-120 | 25d | 0d | Excavator [48 h]; Air Valve [0.6]; Carpenter [144 h]; Steel Fixer [144 h]; Concreting Labor [96 h]; Plumber [144 h]; Operator [48 h] | 4,500 | 3 |
| NJR1-CO-ME-EX-WS-210 |  | Washout Valve | 6d | 2026-07-20 | 2026-07-26 | NJR1-CO-ME-EX-WS-200, NJR1-DE-SL-WS-130, NJR1-DE-SL-WS-140 | 25d | 0d | Excavator [48 h]; Washout Valve [0.6]; Carpenter [144 h]; Steel Fixer [144 h]; Concreting Labor [96 h]; Plumber [144 h]; Operator [48 h] | 5,700 | 3 |
|  | 5 | **Facility water storage tanks** |  | 2026-07-02 | 2026-07-15 |  |  |  |  |  |  |
| NJR1-CO-ME-EX-WS-230 |  | Hot Press GRP Sectional Panel Water Tanks (10x8x4m) | 12d | 2026-07-02 | 2026-07-15 | NJR1-DE-LL-WS-100, NJR1-CO-CW-240 SS | 34d | 0d | Crane [96 h]; Hot Press GRP Sectional Panel Water Tanks (10x8x4m) [0.6]; General Labor [288 h]; Plumber [480 h]; Operator [96 h] | 300,000 | 3 |
|  | 3 | **Sewer and Drainage System** |  | 2026-04-28 | 2026-06-09 |  |  |  |  |  |  |
|  | 1 | **Sewage tank** |  | 2026-05-07 | 2026-05-20 |  |  |  |  |  |  |
| NJR1-CO-ME-EX-SW-100 |  | Sewage tank with dimensions (8x4x3m) | 12d | 2026-05-07 | 2026-05-20 | NJR1-MI-BM-250, NJR1-CO-ME-EX-SW-130 | 0d |  | Crane [96 h]; Fork Lift [96 h]; Sewage tank with dimensions (8x4x3m) [0.6]; Carpenter [288 h]; Steel Fixer [288 h]; Concreting Labor [96 h]; Plumber [192 h]; Operator [192 h] | 66,000 | 1 |
|  | 2 | **UPVC class 4 Pipes** |  | 2026-05-07 | 2026-06-09 |  |  |  |  |  |  |
|  | 1 | **110 mm Pipe sewer upvc pipe** |  | 2026-05-21 | 2026-06-09 |  |  |  |  |  |  |
| NJR1-CO-ME-EX-SW-108 |  | Trench Excavation | 2d | 2026-05-21 | 2026-05-23 | NJR1-CO-ME-EX-SW-122, NJR1-DE-SL-SW-110, NJR1-CO-ME-EX-SW-100 | 0d |  | Excavator [16 h]; Water Tank Truck [16 h]; Compactor [16 h]; Fork Lift [16 h]; 110 mm Pipe sewer upvc pipe [12.6]; General Labor [48 h]; Operator [64 h] | 3,150 |  |
| NJR1-CO-ME-EX-SW-109 |  | Sand Bedding | 1d | 2026-05-24 | 2026-05-24 | NJR1-CO-ME-EX-SW-108 | 0d |  | Skid Loader (Bobcat) [8 h]; 110 mm Pipe sewer upvc pipe [3.15]; General Labor [24 h]; Operator [8 h] | 787.5 | 1 |
| NJR1-CO-ME-EX-SW-110 |  | 110 mm Pipe sewer upvc pipe | 8d | 2026-05-25 | 2026-06-06 | NJR1-DE-SL-SW-110, NJR1-CO-ME-EX-SW-109 | 0d |  | Crane [64 h]; Fork Lift [64 h]; 110 mm Pipe sewer upvc pipe [34.65]; General Labor [192 h]; Plumber [320 h]; Operator [128 h] | 8,662.5 | 2 |
| NJR1-CO-ME-EX-SW-111 |  | Testing 110mm Ø upvc pipe | 1d | 2026-06-07 | 2026-06-07 | NJR1-CO-ME-EX-SW-110 | 0d |  | Water Tank Truck [8 h]; 110 mm Pipe sewer upvc pipe [6.3]; General Labor [16 h]; Operator [8 h] | 1,575 |  |
| NJR1-CO-ME-EX-SW-112 |  | Backfilling | 2d | 2026-06-08 | 2026-06-09 | NJR1-CO-ME-EX-SW-111, NJR1-CO-ME-EX-SW-150 | 0d |  | Skid Loader (Bobcat) [16 h]; Compactor [16 h]; 110 mm Pipe sewer upvc pipe [6.3]; General Labor [48 h]; Operator [32 h] | 1,575 |  |

| ID | WBS | Activity | Duration | Start | Finish | Predecessors | Total float | Free float | Resources | Cost | WBS-BOQ |
| --- | --- | --- | --- | --- | --- | --- | --- | --- | --- | --- | --- |
|  | 2 | **160 mm Pipe sewer upvc pipe** |  | 2026-05-07 | 2026-05-18 |  |  |  |  |  |  |
| NJR1-CO-ME-EX-SW-118 |  | Trench Excavation | 2d | 2026-05-07 | 2026-05-09 | NJR1-CO-ME-EX-SW-130, NJR1-DE-SL-SW-110 | 2d | 0d | Excavator [16 h]; 160 mm Pipe sewer upvc pipe [9]; General Labor [48 h]; Operator [16 h] | 2,700 |  |
| NJR1-CO-ME-EX-SW-119 |  | Sand Bedding | 1d | 2026-05-10 | 2026-05-10 | NJR1-CO-ME-EX-SW-118 | 2d | 0d | Skid Loader (Bobcat) [8 h]; 160 mm Pipe sewer upvc pipe [2.25]; General Labor [24 h]; Operator [8 h] | 675 | 1 |
| NJR1-CO-ME-EX-SW-120 |  | 160 mm Pipe sewer upvc pipe | 4d | 2026-05-11 | 2026-05-14 | NJR1-CO-ME-EX-SW-119, NJR1-DE-SL-SW-110 | 2d | 0d | Water Tank Truck [32 h]; Crane [32 h]; Fork Lift [32 h]; 160 mm Pipe sewer upvc pipe [24.75]; General Labor [96 h]; Plumber [160 h]; Operator [96 h] | 7,425 | 2 |
| NJR1-CO-ME-EX-SW-121 |  | Testing 160mm Ø upvc pipe | 1d | 2026-05-16 | 2026-05-16 | NJR1-CO-ME-EX-SW-120 | 2d | 0d | 160 mm Pipe sewer upvc pipe [4.5]; General Labor [16 h] | 1,350 |  |
| NJR1-CO-ME-EX-SW-122 |  | Backfilling | 2d | 2026-05-17 | 2026-05-18 | NJR1-CO-ME-EX-SW-121 | 2d |  | Skid Loader (Bobcat) [16 h]; Compactor [16 h]; 160 mm Pipe sewer upvc pipe [4.5]; General Labor [48 h]; Operator [32 h] | 1,350 |  |
|  | 3 | **Sewer manholes** |  | 2026-04-28 | 2026-05-06 |  |  |  |  |  |  |
| NJR1-CO-ME-EX-SW-130 |  | Sewer manholes | 8d | 2026-04-28 | 2026-05-06 | NJR1-MI-BM-250, NJR1-DE-SL-SW-120 | 0d |  | Excavator [64 h]; Compactor [64 h]; Crane [64 h]; Sewer manholes [6.6]; Plumber [192 h]; Operator [192 h] | 66,000 | 3 |
|  | 4 | **Gully traps** |  | 2026-05-21 | 2026-06-02 |  |  |  |  |  |  |
| NJR1-CO-ME-EX-SW-140 |  | Gully traps | 8d | 2026-05-21 | 2026-06-02 | NJR1-DE-SL-SW-130, NJR1-CO-ME-EX-SW-100 | 4d | 0d | Excavator [64 h]; Gully traps [4.8]; Plumber [128 h]; Operator [64 h] | 6,240 | 4 |
| NJR1-CO-ME-EX-SW-150 |  | 110mm UPVC pipe service connections | 8d | 2026-05-21 | 2026-06-02 | NJR1-CO-ME-EX-SW-140 SS | 4d |  | 110mm UPVC pipe service connections [0.6]; Plumber [128 h] | 9,000 | 4 |
|  | 2 | **Internal Works** |  | 2026-06-23 | 2026-12-01 |  |  |  |  |  |  |
|  | 2 | **Fire Fighting System** |  | 2026-07-02 | 2026-09-14 |  |  |  |  |  |  |
|  | 1 | **HDPE PE100 PN 16 Pipes** |  | 2026-07-02 | 2026-07-07 |  |  |  |  |  |  |
| NJR1-CO-ME-IN-FF-100 |  | 8" Ø Fire Fighting HDPE Pipes | 5d | 2026-07-02 | 2026-07-07 | NJR1-CO-ME-EX-FF-140, NJR1-DE-SL-FF-120, NJR1-CO-ME-EX-FF-100 SS | 21d | 0d | 8" Ø Fire Fighting HDPE Pipes [9]; Plumber [160 h] | 3,600 | 1 |
|  | 2 | **Seamless black steel pipes & fittings** |  | 2026-07-14 | 2026-08-06 |  |  |  |  |  |  |
| NJR1-CO-ME-IN-FF-110 |  | Mosque - Install Seamless black steel pipes & fittings | 3d | 2026-07-14 | 2026-07-16 | NJR1-CO-PR-120 SS, NJR1-DE-SL-FF-130, NJR1-CO-ME-IN-FF-550, NJR1-CO-ME-IN-FF-570 | 21d | 0d | Seamless black steel pipes & fittings [0.05]; Plumber [192 h] | 10,742.31 | 2 |
| NJR1-CO-ME-IN-FF-120 |  | Workshop 1 - Install Seamless black steel pipes & fittings | 3d | 2026-07-18 | 2026-07-20 | NJR1-CO-PR-120 SS, NJR1-DE-SL-FF-130, NJR1-CO-ME-IN-FF-110 | 21d | 0d | Seamless black steel pipes & fittings [0.05]; Plumber [192 h] | 10,742.31 | 2 |
| NJR1-CO-ME-IN-FF-130 |  | Workshop 2 - Install Seamless black steel pipes & fittings | 3d | 2026-07-18 | 2026-07-20 | NJR1-CO-ME-IN-FF-120 SS, NJR1-DE-SL-FF-130 | 21d | 0d | Seamless black steel pipes & fittings [0.05]; Plumber [192 h] | 10,742.31 | 2 |
| NJR1-CO-ME-IN-FF-140 |  | Workshop 3 - Install Seamless black steel pipes & fittings | 3d | 2026-07-21 | 2026-07-23 | NJR1-CO-ME-IN-FF-130, NJR1-DE-SL-FF-130 | 23d | 0d | Seamless black steel pipes & fittings [0.05]; Plumber [192 h] | 10,742.31 | 2 |
| NJR1-CO-ME-IN-FF-150 |  | Workshop 4 - Install Seamless black steel pipes & fittings | 3d | 2026-07-21 | 2026-07-23 | NJR1-CO-ME-IN-FF-140 SS, NJR1-DE-SL-FF-130 | 23d | 0d | Seamless black steel pipes & fittings [0.05]; Plumber [192 h] | 10,742.31 | 2 |
| NJR1-CO-ME-IN-FF-160 |  | Workshop 5 - Install Seamless black steel pipes & fittings | 3d | 2026-07-25 | 2026-07-27 | NJR1-CO-ME-IN-FF-150, NJR1-DE-SL-FF-130 | 25d | 0d | Seamless black steel pipes & fittings [0.05]; Plumber [192 h] | 10,742.31 | 2 |
| NJR1-CO-ME-IN-FF-170 |  | Workshop 6 - Install Seamless black steel pipes & fittings | 3d | 2026-07-25 | 2026-07-27 | NJR1-CO-ME-IN-FF-160 SS, NJR1-DE-SL-FF-130 | 25d | 0d | Seamless black steel pipes & fittings [0.05]; Plumber [192 h] | 10,742.31 | 2 |
| NJR1-CO-ME-IN-FF-180 |  | Workshop 7 - Install Seamless black steel pipes & fittings | 3d | 2026-07-28 | 2026-07-30 | NJR1-CO-ME-IN-FF-170, NJR1-DE-SL-FF-130 | 27d | 0d | Seamless black steel pipes & fittings [0.05]; Plumber [192 h] | 10,742.31 | 2 |
| NJR1-CO-ME-IN-FF-190 |  | Workshop 8 - Install Seamless black steel pipes & fittings | 3d | 2026-07-28 | 2026-07-30 | NJR1-CO-ME-IN-FF-180 SS, NJR1-DE-SL-FF-130 | 27d | 0d | Seamless black steel pipes & fittings [0.05]; Plumber [192 h] | 10,742.31 | 2 |
| NJR1-CO-ME-IN-FF-200 |  | Workshop 9 - Install Seamless black steel pipes & fittings | 3d | 2026-08-01 | 2026-08-03 | NJR1-CO-ME-IN-FF-190, NJR1-DE-SL-FF-130 | 29d | 0d | Seamless black steel pipes & fittings [0.05]; Plumber [192 h] | 10,742.31 | 2 |
| NJR1-CO-ME-IN-FF-210 |  | Workshop 10 - Install Seamless black steel pipes & fittings | 3d | 2026-08-01 | 2026-08-03 | NJR1-CO-ME-IN-FF-200 SS, NJR1-DE-SL-FF-130 | 29d | 0d | Seamless black steel pipes & fittings [0.05]; Plumber [192 h] | 10,742.31 | 2 |
| NJR1-CO-ME-IN-FF-220 |  | Workshop 11 - Install Seamless black steel pipes & fittings | 3d | 2026-08-04 | 2026-08-06 | NJR1-CO-ME-IN-FF-210, NJR1-DE-SL-FF-130 | 31d | 0d | Seamless black steel pipes & fittings [0.05]; Plumber [192 h] | 10,742.31 | 2 |
| NJR1-CO-ME-IN-FF-230 |  | Workshop 12 - Install Seamless black steel pipes & fittings | 3d | 2026-08-04 | 2026-08-06 | NJR1-CO-ME-IN-FF-220 SS, NJR1-DE-SL-FF-130 | 31d | 0d | Seamless black steel pipes & fittings [0.05]; Plumber [192 h] | 10,742.31 | 2 |

| ID | WBS | Activity | Duration | Start | Finish | Predecessors | Total float | Free float | Resources | Cost | WBS-BOQ |
| --- | --- | --- | --- | --- | --- | --- | --- | --- | --- | --- | --- |
|  | 3 | **Water sprinklers** |  | 2026-07-18 | 2026-08-22 |  |  |  |  |  |  |
| NJR1-CO-ME-IN-FF-240 |  | Mosque - Water sprinklers | 8d | 2026-07-18 | 2026-07-26 | NJR1-CO-ME-IN-FF-110, NJR1-DE-SL-FF-140 | 21d | 0d | Water sprinklers [0.05]; Plumber [384 h] | 591.23 | 3 |
| NJR1-CO-ME-IN-FF-250 |  | Workshop 1 - Water sprinklers | 8d | 2026-07-27 | 2026-08-04 | NJR1-CO-ME-IN-FF-430, NJR1-CO-ME-IN-FF-240, NJR1-DE-SL-FF-140 | 21d | 0d | Water sprinklers [0.05]; Plumber [384 h] | 591.23 | 3 |
| NJR1-CO-ME-IN-FF-260 |  | Workshop 2 - Water sprinklers | 8d | 2026-07-27 | 2026-08-04 | NJR1-CO-ME-IN-FF-440, NJR1-DE-SL-FF-140 | 21d | 0d | Water sprinklers [0.05]; Plumber [384 h] | 591.23 | 3 |
| NJR1-CO-ME-IN-FF-270 |  | Workshop 3 - Water sprinklers | 8d | 2026-07-30 | 2026-08-08 | NJR1-CO-ME-IN-FF-450, NJR1-DE-SL-FF-140 | 23d | 2d | Water sprinklers [0.05]; Plumber [384 h] | 591.23 | 3 |
| NJR1-CO-ME-IN-FF-280 |  | Workshop 4 - Water sprinklers | 8d | 2026-07-30 | 2026-08-08 | NJR1-CO-ME-IN-FF-460, NJR1-DE-SL-FF-140 | 23d | 2d | Water sprinklers [0.05]; Plumber [384 h] | 591.23 | 3 |
| NJR1-CO-ME-IN-FF-290 |  | Workshop 5 - Water sprinklers | 8d | 2026-08-03 | 2026-08-11 | NJR1-CO-ME-IN-FF-470, NJR1-DE-SL-FF-140 | 25d | 4d | Water sprinklers [0.05]; Plumber [384 h] | 591.23 | 3 |
| NJR1-CO-ME-IN-FF-300 |  | Workshop 6 - Water sprinklers | 8d | 2026-08-03 | 2026-08-11 | NJR1-CO-ME-IN-FF-480, NJR1-DE-SL-FF-140 | 25d | 4d | Water sprinklers [0.05]; Plumber [384 h] | 591.23 | 3 |
| NJR1-CO-ME-IN-FF-310 |  | Workshop 7 - Water sprinklers | 8d | 2026-08-06 | 2026-08-15 | NJR1-CO-ME-IN-FF-490, NJR1-DE-SL-FF-140 | 27d | 6d | Water sprinklers [0.05]; Plumber [384 h] | 591.23 | 3 |
| NJR1-CO-ME-IN-FF-320 |  | Workshop 8 - Water sprinklers | 8d | 2026-08-06 | 2026-08-15 | NJR1-CO-ME-IN-FF-500, NJR1-DE-SL-FF-140 | 27d | 6d | Water sprinklers [0.05]; Plumber [384 h] | 591.23 | 3 |
| NJR1-CO-ME-IN-FF-330 |  | Workshop 9 - Water sprinklers | 8d | 2026-08-10 | 2026-08-18 | NJR1-CO-ME-IN-FF-510, NJR1-DE-SL-FF-140 | 29d | 8d | Water sprinklers [0.05]; Plumber [384 h] | 591.23 | 3 |
| NJR1-CO-ME-IN-FF-340 |  | Workshop 10 - Water sprinklers | 8d | 2026-08-10 | 2026-08-18 | NJR1-CO-ME-IN-FF-520, NJR1-DE-SL-FF-140 | 29d | 8d | Water sprinklers [0.05]; Plumber [384 h] | 591.23 | 3 |
| NJR1-CO-ME-IN-FF-350 |  | Workshop 11 - Water sprinklers | 8d | 2026-08-13 | 2026-08-22 | NJR1-CO-ME-IN-FF-530, NJR1-DE-SL-FF-140 | 31d | 10d | Water sprinklers [0.05]; Plumber [384 h] | 591.23 | 3 |
| NJR1-CO-ME-IN-FF-360 |  | Workshop 12 - Water sprinklers | 8d | 2026-08-13 | 2026-08-22 | NJR1-CO-ME-IN-FF-540, NJR1-DE-SL-FF-140 | 31d | 10d | Water sprinklers [0.05]; Plumber [384 h] | 591.23 | 3 |
|  | 5 | **Fire house cabinet** |  | 2026-08-05 | 2026-09-08 |  |  |  |  |  |  |
| NJR1-CO-ME-IN-FF-370 |  | Workshop 1 & 2 - Fire hose cabinet (FHC-2) | 5d | 2026-08-05 | 2026-08-10 | NJR1-CO-ME-IN-FF-250, NJR1-CO-ME-IN-FF-260, NJR1-DE-SL-FF-150 | 21d | 0d | Fire house cabinet [0.6]; Plumber [160 h] | 1,800 | 4 |
| NJR1-CO-ME-IN-FF-380 |  | Workshop 3 & 4 - Fire hose cabinet (FHC-2) | 5d | 2026-08-11 | 2026-08-16 | NJR1-CO-ME-IN-FF-270, NJR1-CO-ME-IN-FF-280, NJR1-DE-SL-FF-150, NJR1-CO-ME-IN-FF-370 | 21d | 0d | Fire house cabinet [0.6]; Plumber [160 h] | 1,800 | 4 |
| NJR1-CO-ME-IN-FF-390 |  | Workshop 5 & 6 - Fire hose cabinet (FHC-2) | 5d | 2026-08-17 | 2026-08-22 | NJR1-CO-ME-IN-FF-290, NJR1-CO-ME-IN-FF-300, NJR1-DE-SL-FF-150, NJR1-CO-ME-IN-FF-380 | 21d | 0d | Fire house cabinet [0.6]; Plumber [160 h] | 1,800 | 4 |
| NJR1-CO-ME-IN-FF-400 |  | Workshop 7 & 8 - Fire hose cabinet (FHC-2) | 5d | 2026-08-23 | 2026-08-27 | NJR1-CO-ME-IN-FF-310, NJR1-CO-ME-IN-FF-320, NJR1-DE-SL-FF-150, NJR1-CO-ME-IN-FF-390 | 21d | 0d | Fire house cabinet [0.6]; Plumber [160 h] | 1,800 | 4 |
| NJR1-CO-ME-IN-FF-410 |  | Workshop 9 & 10 - Fire hose cabinet (FHC-2) | 5d | 2026-08-29 | 2026-09-02 | NJR1-CO-ME-IN-FF-330, NJR1-CO-ME-IN-FF-340, NJR1-DE-SL-FF-150, NJR1-CO-ME-IN-FF-400 | 21d | 0d | Fire house cabinet [0.6]; Plumber [160 h] | 1,800 | 4 |
| NJR1-CO-ME-IN-FF-420 |  | Workshop 11 & 12 - Fire hose cabinet (FHC-2) | 5d | 2026-09-03 | 2026-09-08 | NJR1-CO-ME-IN-FF-350, NJR1-CO-ME-IN-FF-360, NJR1-DE-SL-FF-150, NJR1-CO-ME-IN-FF-410 | 21d | 0d | Fire house cabinet [0.6]; Plumber [160 h] | 1,800 | 4 |
|  | 4 | **OS&Y Gate valve** |  | 2026-07-21 | 2026-08-12 |  |  |  |  |  |  |
| NJR1-CO-ME-IN-FF-430 |  | Workshop 1 - Install OS&Y Gate valve | 5d | 2026-07-21 | 2026-07-26 | NJR1-CO-ME-IN-FF-120, NJR1-DE-SL-FF-160 | 21d | 0d | OS&Y Gate valve [0.05]; Plumber [160 h] | 1,190 | 5 |
| NJR1-CO-ME-IN-FF-440 |  | Workshop 2 - Install OS&Y Gate valve | 5d | 2026-07-21 | 2026-07-26 | NJR1-CO-ME-IN-FF-130, NJR1-DE-SL-FF-160 | 21d | 0d | OS&Y Gate valve [0.05]; Plumber [160 h] | 1,190 | 5 |
| NJR1-CO-ME-IN-FF-450 |  | Workshop 3 - Install OS&Y Gate valve | 5d | 2026-07-25 | 2026-07-29 | NJR1-CO-ME-IN-FF-140, NJR1-DE-SL-FF-160 | 23d | 0d | OS&Y Gate valve [0.05]; Plumber [160 h] | 1,190 | 5 |
| NJR1-CO-ME-IN-FF-460 |  | Workshop 4 - Install OS&Y Gate valve | 5d | 2026-07-25 | 2026-07-29 | NJR1-CO-ME-IN-FF-150, NJR1-DE-SL-FF-160 | 23d | 0d | OS&Y Gate valve [0.05]; Plumber [160 h] | 1,190 | 5 |
| NJR1-CO-ME-IN-FF-470 |  | Workshop 5 - Install OS&Y Gate valve | 5d | 2026-07-28 | 2026-08-02 | NJR1-CO-ME-IN-FF-160, NJR1-DE-SL-FF-160 | 25d | 0d | OS&Y Gate valve [0.05]; Plumber [160 h] | 1,190 | 5 |
| NJR1-CO-ME-IN-FF-480 |  | Workshop 6 - Install OS&Y Gate valve | 5d | 2026-07-28 | 2026-08-02 | NJR1-CO-ME-IN-FF-170, NJR1-DE-SL-FF-160 | 25d | 0d | OS&Y Gate valve [0.05]; Plumber [160 h] | 1,190 | 5 |
| NJR1-CO-ME-IN-FF-490 |  | Workshop 7 - Install OS&Y Gate valve | 5d | 2026-08-01 | 2026-08-05 | NJR1-CO-ME-IN-FF-180, NJR1-DE-SL-FF-160 | 27d | 0d | OS&Y Gate valve [0.05]; Plumber [160 h] | 1,190 | 5 |
| NJR1-CO-ME-IN-FF-500 |  | Workshop 8 - Install OS&Y Gate valve | 5d | 2026-08-01 | 2026-08-05 | NJR1-CO-ME-IN-FF-190, NJR1-DE-SL-FF-160 | 27d | 0d | OS&Y Gate valve [0.05]; Plumber [160 h] | 1,190 | 5 |
| NJR1-CO-ME-IN-FF-510 |  | Workshop 9 - Install OS&Y Gate valve | 5d | 2026-08-04 | 2026-08-09 | NJR1-CO-ME-IN-FF-200, NJR1-DE-SL-FF-160 | 29d | 0d | OS&Y Gate valve [0.05]; Plumber [160 h] | 1,190 | 5 |
| NJR1-CO-ME-IN-FF-520 |  | Workshop 10 - Install OS&Y Gate valve | 5d | 2026-08-04 | 2026-08-09 | NJR1-CO-ME-IN-FF-210, NJR1-DE-SL-FF-160 | 29d | 0d | OS&Y Gate valve [0.05]; Plumber [160 h] | 1,190 | 5 |
| NJR1-CO-ME-IN-FF-530 |  | Workshop 11 - Install OS&Y Gate valve | 5d | 2026-08-08 | 2026-08-12 | NJR1-CO-ME-IN-FF-220, NJR1-DE-SL-FF-160 | 31d | 0d | OS&Y Gate valve [0.05]; Plumber [160 h] | 1,190 | 5 |
| NJR1-CO-ME-IN-FF-540 |  | Workshop 12 - Install OS&Y Gate valve | 5d | 2026-08-08 | 2026-08-12 | NJR1-CO-ME-IN-FF-230, NJR1-DE-SL-FF-160 | 31d | 0d | OS&Y Gate valve [0.05]; Plumber [160 h] | 1,190 | 5 |

| ID | WBS | Activity | Duration | Start | Finish | Predecessors | Total float | Free float | Resources | Cost | WBS-BOQ |
| --- | --- | --- | --- | --- | --- | --- | --- | --- | --- | --- | --- |
|  | 6 | **Fire Alarm Check Valve (ACV)** |  | 2026-07-08 | 2026-07-13 |  |  |  |  |  |  |
| NJR1-CO-ME-IN-FF-550 |  | Workshop - Fire Alarm Check Valve (ACV) | 5d | 2026-07-08 | 2026-07-13 | NJR1-CO-ME-IN-FF-100, NJR1-DE-SL-FF-170 | 21d | 0d | Fire Alarm Check Valve (ACV) [0.6]; Plumber [160 h] | 3,300 | 6 |
|  | 7 | **Fire Department Connection (FDC) 6"** |  | 2026-09-09 | 2026-09-14 |  |  |  |  |  |  |
| NJR1-CO-ME-IN-FF-560 |  | Workshop - Fire Department Connection (FDC) 6" | 5d | 2026-09-09 | 2026-09-14 | NJR1-DE-SL-FF-180, NJR1-CO-ME-IN-FF-420 | 21d | 10d | Fire Department Connection (FDC) 6" [0.6]; Plumber [160 h] | 1,800 | 7 |
|  | 8 | **1" Ø Automatic air release valve** |  | 2026-07-08 | 2026-07-13 |  |  |  |  |  |  |
| NJR1-CO-ME-IN-FF-570 |  | Workshop - 1" Ø Automatic air release valve | 5d | 2026-07-08 | 2026-07-13 | NJR1-CO-ME-IN-FF-100, NJR1-DE-SL-FF-190 | 21d | 0d | 1" Ø Automatic air release valve [0.6]; Plumber [160 h] | 600 | 8 |
|  | 1 | **Water Supply System** |  | 2026-08-02 | 2026-10-08 |  |  |  |  |  |  |
|  | 1 | **HDPE PE100 PN16 pipes, for cold water supply piping system (underground)** |  | 2026-08-02 | 2026-08-05 |  |  |  |  |  |  |
| NJR1-CO-ME-IN-WS-100 |  | Toilet 1 - Install 63 mm Ø HDPE pipes Water Supply | 4d | 2026-08-02 | 2026-08-05 | NJR1-CO-ME-EX-WS-160, NJR1-DE-SL-WS-150, NJR1-CO-ME-EX-WS-122, NJR1-CO-ME-EX-WS-180 | 25d | 0d | 63 mm Ø HDPE pipes Water Supply [12]; Plumber [256 h] | 2,400 | 1 |
| NJR1-CO-ME-IN-WS-110 |  | Toilet 2 - Install 63 mm Ø HDPE pipes Water Supply | 4d | 2026-08-02 | 2026-08-05 | NJR1-CO-ME-EX-WS-160, NJR1-DE-SL-WS-150, NJR1-CO-ME-EX-WS-122, NJR1-CO-ME-IN-WS-100 SS | 27d | 2d | 63 mm Ø HDPE pipes Water Supply [12]; Plumber [256 h] | 2,400 | 1 |
|  | 2 | **PPR SDR 7.4 PN 16, DIN 8077/78 pipes** |  | 2026-10-03 | 2026-10-06 |  |  |  |  |  |  |
| NJR1-CO-ME-IN-WS-120 |  | Toilet 1 - Install PPR Pipe | 4d | 2026-10-03 | 2026-10-06 | NJR1-CO-ME-IN-WS-280, NJR1-CO-MA-110, NJR1-DE-SL-WS-160 | 3d | 0d | PPR SDR 7.4 PN 16, DIN 8077/78 pipes [0.3]; Plumber [160 h] | 3,486 | 2 |
| NJR1-CO-ME-IN-WS-130 |  | Toilet 2 - Install PPR Pipe | 4d | 2026-10-03 | 2026-10-06 | NJR1-CO-ME-IN-WS-290, NJR1-CO-MA-150, NJR1-DE-SL-WS-160 | 3d | 0d | PPR SDR 7.4 PN 16, DIN 8077/78 pipes [0.3]; Plumber [160 h] | 3,486 | 2 |
|  | 3 | **Ball Valve** |  | 2026-10-07 | 2026-10-08 |  |  |  |  |  |  |
| NJR1-CO-ME-IN-WS-140 |  | Toilet 1 - Install ball valve | 2d | 2026-10-07 | 2026-10-08 | NJR1-CO-ME-IN-WS-120, NJR1-DE-SL-WS-170 | 39d | 33d | Ball Valve [0.3]; Plumber [32 h] | 768 | 3 |
| NJR1-CO-ME-IN-WS-150 |  | Toilet 2 - Install ball valve | 2d | 2026-10-07 | 2026-10-08 | NJR1-CO-ME-IN-WS-130, NJR1-DE-SL-WS-170 | 39d | 33d | Ball Valve [0.3]; Plumber [32 h] | 768 | 3 |
|  | 4 | **Capped connection (For tenant use)** |  | 2026-08-13 | 2026-09-09 |  |  |  |  |  |  |
| NJR1-CO-ME-IN-WS-160 |  | Workshop 1 - 50 mm Ø Capped connection | 2d | 2026-08-13 | 2026-08-15 | NJR1-CO-ME-IN-WS-300 | 25d | 0d | Capped connection (For tenant use) [0.9]; Plumber [32 h] | 157.5 | 4 |
| NJR1-CO-ME-IN-WS-170 |  | Workshop 2 - 50 mm Ø Capped connection | 2d | 2026-08-16 | 2026-08-17 | NJR1-CO-ME-IN-WS-310, NJR1-CO-ME-IN-WS-160 | 25d | 0d | Capped connection (For tenant use) [0.9]; Plumber [32 h] | 157.5 | 4 |
| NJR1-CO-ME-IN-WS-180 |  | Workshop 3 - 50 mm Ø Capped connection | 2d | 2026-08-18 | 2026-08-19 | NJR1-CO-ME-IN-WS-320, NJR1-CO-ME-IN-WS-170 | 25d | 0d | Capped connection (For tenant use) [0.9]; Plumber [32 h] | 157.5 | 4 |
| NJR1-CO-ME-IN-WS-190 |  | Workshop 4 - 50 mm Ø Capped connection | 2d | 2026-08-20 | 2026-08-22 | NJR1-CO-ME-IN-WS-330, NJR1-CO-ME-IN-WS-180 | 25d | 0d | Capped connection (For tenant use) [0.9]; Plumber [32 h] | 157.5 | 4 |
| NJR1-CO-ME-IN-WS-200 |  | Workshop 5 - 50 mm Ø Capped connection | 2d | 2026-08-23 | 2026-08-24 | NJR1-CO-ME-IN-WS-340, NJR1-CO-ME-IN-WS-190 | 25d | 0d | Capped connection (For tenant use) [0.9]; Plumber [32 h] | 157.5 | 4 |
| NJR1-CO-ME-IN-WS-210 |  | Workshop 6 - 50 mm Ø Capped connection | 2d | 2026-08-25 | 2026-08-26 | NJR1-CO-ME-IN-WS-350, NJR1-CO-ME-IN-WS-200 | 25d | 0d | Capped connection (For tenant use) [0.9]; Plumber [32 h] | 157.5 | 4 |
| NJR1-CO-ME-IN-WS-220 |  | Workshop 7 - 50 mm Ø Capped connection | 2d | 2026-08-27 | 2026-08-29 | NJR1-CO-ME-IN-WS-360, NJR1-CO-ME-IN-WS-210 | 25d | 0d | Capped connection (For tenant use) [0.9]; Plumber [32 h] | 157.5 | 4 |
| NJR1-CO-ME-IN-WS-230 |  | Workshop 8 - 50 mm Ø Capped connection | 2d | 2026-08-30 | 2026-08-31 | NJR1-CO-ME-IN-WS-370, NJR1-CO-ME-IN-WS-220 | 25d | 0d | Capped connection (For tenant use) [0.9]; Plumber [32 h] | 157.5 | 4 |
| NJR1-CO-ME-IN-WS-240 |  | Workshop 9 - 50 mm Ø Capped connection | 2d | 2026-09-01 | 2026-09-02 | NJR1-CO-ME-IN-WS-380, NJR1-CO-ME-IN-WS-230 | 25d | 0d | Capped connection (For tenant use) [0.9]; Plumber [32 h] | 157.5 | 4 |
| NJR1-CO-ME-IN-WS-250 |  | Workshop 10 - 50 mm Ø Capped connection | 2d | 2026-09-03 | 2026-09-05 | NJR1-CO-ME-IN-WS-390, NJR1-CO-ME-IN-WS-240 | 25d | 0d | Capped connection (For tenant use) [0.9]; Plumber [32 h] | 157.5 | 4 |
| NJR1-CO-ME-IN-WS-260 |  | Workshop 11 - 50 mm Ø Capped connection | 2d | 2026-09-06 | 2026-09-07 | NJR1-CO-ME-IN-WS-400, NJR1-CO-ME-IN-WS-250 | 25d | 0d | Capped connection (For tenant use) [0.9]; Plumber [32 h] | 157.5 | 4 |
| NJR1-CO-ME-IN-WS-270 |  | Workshop 12 - 50 mm Ø Capped connection | 2d | 2026-09-08 | 2026-09-09 | NJR1-CO-ME-IN-WS-410, NJR1-CO-ME-IN-WS-260 | 25d | 14d | Capped connection (For tenant use) [0.9]; Plumber [32 h] | 157.5 | 4 |

| ID | WBS | Activity | Duration | Start | Finish | Predecessors | Total float | Free float | Resources | Cost | WBS-BOQ |
| --- | --- | --- | --- | --- | --- | --- | --- | --- | --- | --- | --- |
|  | 5 | **Valve box 80*80 cm with gate valve** |  | 2026-08-06 | 2026-09-07 |  |  |  |  |  |  |
| NJR1-CO-ME-IN-WS-280 |  | Toilet 1 - Install 63 mm Ø Valve with Valve Box | 2d | 2026-08-06 | 2026-08-08 | NJR1-CO-ME-IN-WS-100, NJR1-DE-SL-WS-180 | 25d | 0d | 63 mm Ø Valve with Valve Box [0.6]; Plumber [32 h] | 1,320 | 5 |
| NJR1-CO-ME-IN-WS-290 |  | Toilet 2 - Install 63 mm Ø Valve with Valve Box | 2d | 2026-08-09 | 2026-08-10 | NJR1-CO-ME-IN-WS-110, NJR1-DE-SL-WS-180, NJR1-CO-ME-IN-WS-280 | 25d | 0d | 63 mm Ø Valve with Valve Box [0.6]; Plumber [32 h] | 1,320 | 5 |
| NJR1-CO-ME-IN-WS-300 |  | Workshop 1 - Install 50 mm Ø Valve with Valve Box | 2d | 2026-08-11 | 2026-08-12 | NJR1-CO-ME-EX-WS-170, NJR1-DE-SL-WS-180, NJR1-CO-ME-IN-WS-290 | 25d | 0d | 50 mm Ø Valve with Valve Box [0.6]; Plumber [32 h] | 1,200 | 5 |
| NJR1-CO-ME-IN-WS-310 |  | Workshop 2 - Install 50 mm Ø Valve with Valve Box | 2d | 2026-08-13 | 2026-08-15 | NJR1-CO-ME-EX-WS-170, NJR1-DE-SL-WS-180, NJR1-CO-ME-IN-WS-300 | 25d | 0d | 50 mm Ø Valve with Valve Box [0.6]; Plumber [32 h] | 1,200 | 5 |
| NJR1-CO-ME-IN-WS-320 |  | Workshop 3 - Install 50 mm Ø Valve with Valve Box | 2d | 2026-08-16 | 2026-08-17 | NJR1-CO-ME-EX-WS-170, NJR1-DE-SL-WS-180, NJR1-CO-ME-IN-WS-310 | 25d | 0d | 50 mm Ø Valve with Valve Box [0.6]; Plumber [32 h] | 1,200 | 5 |
| NJR1-CO-ME-IN-WS-330 |  | Workshop 4 - Install 50 mm Ø Valve with Valve Box | 2d | 2026-08-18 | 2026-08-19 | NJR1-CO-ME-EX-WS-170, NJR1-DE-SL-WS-180, NJR1-CO-ME-IN-WS-320 | 25d | 0d | 50 mm Ø Valve with Valve Box [0.6]; Plumber [32 h] | 1,200 | 5 |
| NJR1-CO-ME-IN-WS-340 |  | Workshop 5 - Install 50 mm Ø Valve with Valve Box | 2d | 2026-08-20 | 2026-08-22 | NJR1-CO-ME-EX-WS-170, NJR1-DE-SL-WS-180, NJR1-CO-ME-IN-WS-330 | 25d | 0d | 50 mm Ø Valve with Valve Box [0.6]; Plumber [32 h] | 1,200 | 5 |
| NJR1-CO-ME-IN-WS-350 |  | Workshop 6 - Install 50 mm Ø Valve with Valve Box | 2d | 2026-08-23 | 2026-08-24 | NJR1-CO-ME-EX-WS-170, NJR1-DE-SL-WS-180, NJR1-CO-ME-IN-WS-340 | 25d | 0d | 50 mm Ø Valve with Valve Box [0.6]; Plumber [32 h] | 1,200 | 5 |
| NJR1-CO-ME-IN-WS-360 |  | Workshop 7 - Install 50 mm Ø Valve with Valve Box | 2d | 2026-08-25 | 2026-08-26 | NJR1-CO-ME-EX-WS-170, NJR1-DE-SL-WS-180, NJR1-CO-ME-IN-WS-350 | 25d | 0d | 50 mm Ø Valve with Valve Box [0.6]; Plumber [32 h] | 1,200 | 5 |
| NJR1-CO-ME-IN-WS-370 |  | Workshop 8 - Install 50 mm Ø Valve with Valve Box | 2d | 2026-08-27 | 2026-08-29 | NJR1-CO-ME-EX-WS-170, NJR1-DE-SL-WS-180, NJR1-CO-ME-IN-WS-360 | 25d | 0d | 50 mm Ø Valve with Valve Box [0.6]; Plumber [32 h] | 1,200 | 5 |
| NJR1-CO-ME-IN-WS-380 |  | Workshop 9 - Install 50 mm Ø Valve with Valve Box | 2d | 2026-08-30 | 2026-08-31 | NJR1-CO-ME-EX-WS-170, NJR1-DE-SL-WS-180, NJR1-CO-ME-IN-WS-370 | 25d | 0d | 50 mm Ø Valve with Valve Box [0.6]; Plumber [32 h] | 1,200 | 5 |
| NJR1-CO-ME-IN-WS-390 |  | Workshop 10 - Install 50 mm Ø Valve with Valve Box | 2d | 2026-09-01 | 2026-09-02 | NJR1-CO-ME-EX-WS-170, NJR1-DE-SL-WS-180, NJR1-CO-ME-IN-WS-380 | 25d | 0d | 50 mm Ø Valve with Valve Box [0.6]; Plumber [32 h] | 1,200 | 5 |
| NJR1-CO-ME-IN-WS-400 |  | Workshop 11 - Install 50 mm Ø Valve with Valve Box | 2d | 2026-09-03 | 2026-09-05 | NJR1-CO-ME-EX-WS-170, NJR1-DE-SL-WS-180, NJR1-CO-ME-IN-WS-390 | 25d | 0d | 50 mm Ø Valve with Valve Box [0.6]; Plumber [32 h] | 1,200 | 5 |
| NJR1-CO-ME-IN-WS-410 |  | Workshop 12 - Install 50 mm Ø Valve with Valve Box | 2d | 2026-09-06 | 2026-09-07 | NJR1-CO-ME-EX-WS-170, NJR1-DE-SL-WS-180, NJR1-CO-ME-IN-WS-400 | 25d | 0d | 50 mm Ø Valve with Valve Box [0.6]; Plumber [32 h] | 1,200 | 5 |
|  | 3 | **Sewer and Drainage System** |  | 2026-06-23 | 2026-11-25 |  |  |  |  |  |  |
|  | 1 | **uPVC pipes, schedule 40 for sewage ,drainage piping system and vent piping system** |  | 2026-06-23 | 2026-06-27 |  |  |  |  |  |  |
| NJR1-CO-ME-IN-SW-100 |  | Toilet 1 - Install uPVC Pipe Sewer & Drainage | 4d | 2026-06-23 | 2026-06-27 | NJR1-CO-CW-170, NJR1-DE-SL-SW-140 | 22d | 0d | Install uPVC Pipe Sewer & Drainage [0.07]; Plumber [128 h] | 6,106.5 | 1 |
| NJR1-CO-ME-IN-SW-101 |  | Toilet 2 - Install uPVC Pipe Sewer & Drainage | 4d | 2026-06-23 | 2026-06-27 | NJR1-CO-ME-IN-SW-100 SS, NJR1-DE-SL-SW-140 | 22d | 0d | Install uPVC Pipe Sewer & Drainage [0.07]; Plumber [128 h] | 6,106.5 | 1 |
| NJR1-CO-ME-IN-SW-102 |  | Workshop 1 & 2 - Install uPVC Pipe Sewer & Drainage | 3d | 2026-06-23 | 2026-06-25 | NJR1-CO-ME-IN-SW-101 SS, NJR1-DE-SL-SW-140 | 22d | 0d | Install uPVC Pipe Sewer & Drainage [0.07]; Plumber [96 h] | 6,106.5 | 1 |
| NJR1-CO-ME-IN-SW-103 |  | Workshop 3 & 4 - Install uPVC Pipe Sewer & Drainage | 3d | 2026-06-23 | 2026-06-25 | NJR1-CO-ME-IN-SW-102 SS, NJR1-DE-SL-SW-140 | 22d | 0d | Install uPVC Pipe Sewer & Drainage [0.07]; Plumber [96 h] | 6,106.5 | 1 |
| NJR1-CO-ME-IN-SW-104 |  | Workshop 5 & 6 - Install uPVC Pipe Sewer & Drainage | 3d | 2026-06-23 | 2026-06-25 | NJR1-CO-ME-IN-SW-103 SS, NJR1-DE-SL-SW-140 | 22d | 0d | Install uPVC Pipe Sewer & Drainage [0.07]; Plumber [96 h] | 6,106.5 | 1 |
| NJR1-CO-ME-IN-SW-105 |  | Workshop 7 & 8 - Install uPVC Pipe Sewer & Drainage | 3d | 2026-06-23 | 2026-06-25 | NJR1-CO-ME-IN-SW-104 SS, NJR1-DE-SL-SW-140 | 22d | 0d | Install uPVC Pipe Sewer & Drainage [0.07]; Plumber [96 h] | 6,106.5 | 1 |
| NJR1-CO-ME-IN-SW-106 |  | Workshop 9 & 10 - Install uPVC Pipe Sewer & Drainage | 3d | 2026-06-23 | 2026-06-25 | NJR1-CO-ME-IN-SW-105 SS, NJR1-DE-SL-SW-140 | 22d | 0d | Install uPVC Pipe Sewer & Drainage [0.07]; Plumber [96 h] | 6,106.5 | 1 |
| NJR1-CO-ME-IN-SW-107 |  | Workshop 11 & 12 - Install uPVC Pipe Sewer & Drainage | 3d | 2026-06-23 | 2026-06-25 | NJR1-CO-ME-IN-SW-106 SS, NJR1-DE-SL-SW-140 | 22d | 0d | Install uPVC Pipe Sewer & Drainage [0.07]; Plumber [96 h] | 6,106.5 | 1 |

| ID | WBS | Activity | Duration | Start | Finish | Predecessors | Total float | Free float | Resources | Cost | WBS-BOQ |
| --- | --- | --- | --- | --- | --- | --- | --- | --- | --- | --- | --- |
|  | 3 | **Roof Vent Caps** |  | 2026-10-15 | 2026-10-18 |  |  |  |  |  |  |
| NJR1-CO-ME-IN-SW-120 |  | Toilet 1 - Install Roof Vent Caps | 3d | 2026-10-15 | 2026-10-18 | NJR1-CO-ME-IN-SW-100, NJR1-DE-SL-SW-150, NJR1-CO-TH-620 | 25d | 11d | Roof Vent Caps [0.6]; Plumber [72 h] | 300 | 2 |
| NJR1-CO-ME-IN-SW-130 |  | Toilet 1 - Install Roof Vent Caps | 3d | 2026-10-15 | 2026-10-18 | NJR1-CO-ME-IN-SW-101, NJR1-DE-SL-SW-150, NJR1-CO-TH-630 | 25d | 11d | Roof Vent Caps [0.6]; Plumber [72 h] | 300 | 2 |
|  | 4 | **Floor drain (FD-1) with stainless steel 316 cover** |  | 2026-11-01 | 2026-11-04 |  |  |  |  |  |  |
| NJR1-CO-ME-IN-SW-140 |  | Toilet 1 - Install Floor drain | 2d | 2026-11-01 | 2026-11-02 | NJR1-CO-FW-100, NJR1-DE-SL-SW-160, NJR1-CO-ME-IN-SW-120 | 14d | 0d | Floor drain (FD-1) [1.65]; Plumber [32 h] | 660 | 3 |
| NJR1-CO-ME-IN-SW-150 |  | Toilet 2 - Install Floor drain | 2d | 2026-11-01 | 2026-11-02 | NJR1-CO-FW-110, NJR1-DE-SL-SW-160, NJR1-CO-ME-IN-SW-140 SS, NJR1-CO-ME-IN-SW-130 | 14d | 0d | Floor drain (FD-1) [1.65]; Plumber [32 h] | 660 | 3 |
| NJR1-CO-ME-IN-SW-151 |  | Workshop 1 & 2 - Install Floor drain | 2d | 2026-11-03 | 2026-11-04 | NJR1-CO-PR-120, NJR1-CO-ME-IN-SW-150, NJR1-DE-SL-SW-160 | 14d | 0d | Floor drain (FD-1) [1.65]; Plumber [32 h] | 660 | 3 |
| NJR1-CO-ME-IN-SW-152 |  | Workshop 3 & 4 - Install Floor drain | 2d | 2026-11-03 | 2026-11-04 | NJR1-CO-ME-IN-SW-151 SS, NJR1-DE-SL-SW-160 | 14d | 0d | Floor drain (FD-1) [1.65]; Plumber [32 h] | 660 | 3 |
| NJR1-CO-ME-IN-SW-153 |  | Workshop 5 & 6 - Install Floor drain | 2d | 2026-11-03 | 2026-11-04 | NJR1-CO-ME-IN-SW-152 SS, NJR1-DE-SL-SW-160 | 14d | 0d | Floor drain (FD-1) [1.65]; Plumber [32 h] | 660 | 3 |
| NJR1-CO-ME-IN-SW-154 |  | Workshop 7 & 8 - Install Floor drain | 2d | 2026-11-03 | 2026-11-04 | NJR1-CO-ME-IN-SW-153 SS, NJR1-DE-SL-SW-160 | 14d | 0d | Floor drain (FD-1) [1.65]; Plumber [32 h] | 660 | 3 |
| NJR1-CO-ME-IN-SW-155 |  | Workshop 9 & 10 - Install Floor drain | 2d | 2026-11-03 | 2026-11-04 | NJR1-CO-ME-IN-SW-154 SS, NJR1-DE-SL-SW-160 | 14d | 0d | Floor drain (FD-1) [1.65]; Plumber [32 h] | 660 | 3 |
| NJR1-CO-ME-IN-SW-156 |  | Workshop 11 & 12 - Install Floor drain | 2d | 2026-11-03 | 2026-11-04 | NJR1-CO-ME-IN-SW-155 SS, NJR1-DE-SL-SW-160 | 14d | 0d | Floor drain (FD-1) [1.65]; Plumber [32 h] | 660 | 3 |
|  | 5 | **Gully Traps with heavy duty cover** |  | 2026-09-28 | 2026-10-25 |  |  |  |  |  |  |
| NJR1-CO-ME-IN-SW-160 |  | Toilet 1 - Gully Traps | 3d | 2026-09-28 | 2026-09-30 | NJR1-CO-ME-EX-SW-150, NJR1-DE-SL-SW-170 | 11d | 0d | Excavator [24 h]; Crane [24 h]; Gully Traps with heavy duty cover [0.6]; Plumber [48 h]; Operator [48 h] | 870 | 4 |
| NJR1-CO-ME-IN-SW-170 |  | Toilet 2 - Gully Traps | 3d | 2026-10-01 | 2026-10-04 | NJR1-CO-ME-EX-SW-150, NJR1-DE-SL-SW-170, NJR1-CO-ME-IN-SW-160 | 14d | 0d | Excavator [24 h]; Crane [24 h]; Gully Traps with heavy duty cover [0.6]; Plumber [48 h]; Operator [48 h] | 870 | 4 |
| NJR1-CO-ME-IN-SW-180 |  | Workshop 1 & 2 - Gully Traps | 3d | 2026-10-05 | 2026-10-07 | NJR1-CO-ME-EX-SW-150, NJR1-CO-ME-IN-SW-102, NJR1-DE-SL-SW-170, NJR1-CO-ME-IN-SW-170 | 17d | 0d | Excavator [24 h]; Crane [24 h]; Gully Traps with heavy duty cover [0.6]; Plumber [48 h]; Operator [48 h] | 870 | 4 |
| NJR1-CO-ME-IN-SW-190 |  | Workshop 3 & 4 - Gully Traps | 3d | 2026-10-08 | 2026-10-11 | NJR1-CO-ME-IN-SW-103, NJR1-DE-SL-SW-170, NJR1-CO-ME-IN-SW-180 | 20d | 0d | Excavator [24 h]; Crane [24 h]; Gully Traps with heavy duty cover [0.6]; Plumber [48 h]; Operator [48 h] | 870 | 4 |
| NJR1-CO-ME-IN-SW-200 |  | Workshop 5 & 6 - Gully Traps | 3d | 2026-10-12 | 2026-10-14 | NJR1-CO-ME-IN-SW-104, NJR1-DE-SL-SW-170, NJR1-CO-ME-IN-SW-190 | 23d | 0d | Excavator [24 h]; Crane [24 h]; Gully Traps with heavy duty cover [0.6]; Plumber [48 h]; Operator [48 h] | 870 | 4 |
| NJR1-CO-ME-IN-SW-210 |  | Workshop 7 & 8 - Gully Traps | 3d | 2026-10-15 | 2026-10-18 | NJR1-CO-ME-IN-SW-105, NJR1-DE-SL-SW-170, NJR1-CO-ME-IN-SW-200 | 26d | 0d | Excavator [24 h]; Crane [24 h]; Gully Traps with heavy duty cover [0.6]; Plumber [48 h]; Operator [48 h] | 870 | 4 |
| NJR1-CO-ME-IN-SW-220 |  | Workshop 9 & 10 - Gully Traps | 3d | 2026-10-19 | 2026-10-21 | NJR1-CO-ME-IN-SW-106, NJR1-DE-SL-SW-170, NJR1-CO-ME-IN-SW-210 | 29d | 0d | Excavator [24 h]; Crane [24 h]; Gully Traps with heavy duty cover [0.6]; Plumber [48 h]; Operator [48 h] | 870 | 4 |
| NJR1-CO-ME-IN-SW-230 |  | Workshop 11 & 12 - Gully Traps | 3d | 2026-10-22 | 2026-10-25 | NJR1-CO-ME-IN-SW-107, NJR1-DE-SL-SW-170, NJR1-CO-ME-IN-SW-220 | 32d | 21d | Excavator [24 h]; Crane [24 h]; Gully Traps with heavy duty cover [0.6]; Plumber [48 h]; Operator [48 h] | 870 | 4 |
|  | 6 | **Inspection chamber with heavy duty cover** |  | 2026-10-01 | 2026-11-25 |  |  |  |  |  |  |
| NJR1-CO-ME-IN-SW-240 |  | Toilet 1 - Inspection chamber | 6d | 2026-10-01 | 2026-10-07 | NJR1-CO-ME-IN-SW-160, NJR1-DE-SL-SW-180 | 11d | 0d | Excavator [48 h]; Crane [48 h]; Inspection chamber with heavy duty cover [0.23]; Plumber [96 h]; Operator [96 h] | 1,012.5 | 5 |
| NJR1-CO-ME-IN-SW-250 |  | Toilet 2 - Inspection chamber | 6d | 2026-10-08 | 2026-10-14 | NJR1-CO-ME-IN-SW-170, NJR1-DE-SL-SW-180, NJR1-CO-ME-IN-SW-240 | 11d | 0d | Excavator [48 h]; Crane [48 h]; Inspection chamber with heavy duty cover [0.23]; Plumber [96 h]; Operator [96 h] | 1,012.5 | 5 |
| NJR1-CO-ME-IN-SW-260 |  | Workshop 1 & 2 - Inspection chamber | 6d | 2026-10-15 | 2026-10-21 | NJR1-CO-ME-IN-SW-180, NJR1-DE-SL-SW-180, NJR1-CO-ME-IN-SW-250 | 11d | 0d | Excavator [48 h]; Crane [48 h]; Inspection chamber with heavy duty cover [0.23]; Plumber [96 h]; Operator [96 h] | 1,012.5 | 5 |
| NJR1-CO-ME-IN-SW-270 |  | Workshop 3 & 4 - Inspection chamber | 6d | 2026-10-22 | 2026-10-28 | NJR1-CO-ME-IN-SW-190, NJR1-DE-SL-SW-180, NJR1-CO-ME-IN-SW-260 | 11d | 0d | Excavator [48 h]; Crane [48 h]; Inspection chamber with heavy duty cover [0.23]; Plumber [96 h]; Operator [96 h] | 1,012.5 | 5 |
| NJR1-CO-ME-IN-SW-280 |  | Workshop 5 & 6 - Inspection chamber | 6d | 2026-10-29 | 2026-11-04 | NJR1-CO-ME-IN-SW-200, NJR1-DE-SL-SW-180, NJR1-CO-ME-IN-SW-270 | 11d | 0d | Excavator [48 h]; Crane [48 h]; Inspection chamber with heavy duty cover [0.23]; Plumber [96 h]; Operator [96 h] | 1,012.5 | 5 |
| NJR1-CO-ME-IN-SW-290 |  | Workshop 7 & 8 - Inspection chamber | 6d | 2026-11-05 | 2026-11-11 | NJR1-CO-ME-IN-SW-210, NJR1-DE-SL-SW-180, NJR1-CO-ME-IN-SW-280 | 11d | 0d | Excavator [48 h]; Crane [48 h]; Inspection chamber with heavy duty cover [0.23]; Plumber [96 h]; Operator [96 h] | 1,012.5 | 5 |
| NJR1-CO-ME-IN-SW-300 |  | Workshop 9 & 10 - Inspection chamber | 6d | 2026-11-12 | 2026-11-18 | NJR1-CO-ME-IN-SW-220, NJR1-DE-SL-SW-180, NJR1-CO-ME-IN-SW-290 | 11d | 0d | Excavator [48 h]; Crane [48 h]; Inspection chamber with heavy duty cover [0.23]; Plumber [96 h]; Operator [96 h] | 1,012.5 | 5 |
| NJR1-CO-ME-IN-SW-310 |  | Workshop 11 & 12 - Inspection chamber | 6d | 2026-11-19 | 2026-11-25 | NJR1-CO-ME-IN-SW-230, NJR1-DE-SL-SW-180, NJR1-CO-ME-IN-SW-300 | 11d | 0d | Excavator [48 h]; Crane [48 h]; Inspection chamber with heavy duty cover [0.23]; Plumber [96 h]; Operator [96 h] | 1,012.5 | 5 |

| ID | WBS | Activity | Duration | Start | Finish | Predecessors | Total float | Free float | Resources | Cost | WBS-BOQ |
| --- | --- | --- | --- | --- | --- | --- | --- | --- | --- | --- | --- |
|  | 2 | **Plumbing fixtures** |  | 2026-11-01 | 2026-11-04 |  |  |  |  |  |  |
| NJR1-CO-ME-IN-SW-320 |  | Toilet 1 - Install plumbing fixture | 4d | 2026-11-01 | 2026-11-04 | NJR1-CO-FW-100, NJR1-DE-SL-SW-190, NJR1-DE-SL-SW-200, NJR1-DE-SL-SW-210, NJR1-DE-SL-SW-220, NJR1-DE-SL-SW-230 | 29d |  | Plumbing fixtures [0.3]; Plumber [64 h] | 14,850 | 6 |
| NJR1-CO-ME-IN-SW-330 |  | Toilet 2 - Install plumbing fixture | 4d | 2026-11-01 | 2026-11-04 | NJR1-CO-FW-110, NJR1-DE-SL-SW-190, NJR1-DE-SL-SW-200, NJR1-DE-SL-SW-210, NJR1-DE-SL-SW-220, NJR1-DE-SL-SW-230 | 29d |  | Plumbing fixtures [0.3]; Plumber [64 h] | 14,850 | 6 |
|  | 4 | **Heating, Ventilation and Air Conditioning** |  | 2026-10-03 | 2026-12-01 |  |  |  |  |  |  |
|  | 1 | **Inline exhaust fans/make-up air fans** |  | 2026-11-21 | 2026-11-25 |  |  |  |  |  |  |
| NJR1-CO-ME-IN-HV-100 |  | Toilet 1 - Install exhaust fan | 5d | 2026-11-21 | 2026-11-25 | NJR1-CO-FW-490, NJR1-DE-SL-HV-100 | 6d | 0d | Inline exhaust fans/make-up air fans [0.3]; HVAC Installer [80 h] | 3,120 | 1 |
| NJR1-CO-ME-IN-HV-110 |  | Toilet 2 - Install exhaust fan | 5d | 2026-11-21 | 2026-11-25 | NJR1-CO-FW-500, NJR1-DE-SL-HV-100 | 6d | 0d | Inline exhaust fans/make-up air fans [0.3]; HVAC Installer [80 h] | 3,120 | 1 |
|  | 3 | **Indoor ductwork** |  | 2026-11-01 | 2026-11-05 |  |  |  |  |  |  |
| NJR1-CO-ME-IN-HV-240 |  | Toilet 1 - Indoor ductwork | 5d | 2026-11-01 | 2026-11-05 | NJR1-CO-FW-100, NJR1-DE-SL-HV-110 | 6d | 0d | Indoor ductwork [18]; HVAC Installer [120 h] | 2,340 | 3 |
| NJR1-CO-ME-IN-HV-250 |  | Toilet 2 - Indoor ductwork | 5d | 2026-11-01 | 2026-11-05 | NJR1-CO-FW-110, NJR1-DE-SL-HV-110 | 3d | 0d | Indoor ductwork [18]; HVAC Installer [120 h] | 2,340 | 3 |
|  | 4 | **Square exhaust diffuser** |  | 2026-11-21 | 2026-11-25 |  |  |  |  |  |  |
| NJR1-CO-ME-IN-HV-260 |  | Toilet 1 - Install Square Exhaust Diffuser 6"X6 " | 5d | 2026-11-21 | 2026-11-25 | NJR1-CO-FW-490, NJR1-DE-SL-HV-120 | 6d | 0d | Square exhaust diffuser [3]; HVAC Installer [120 h] | 750 | 4 |
| NJR1-CO-ME-IN-HV-270 |  | Toilet 2 - Install Square Exhaust Diffuser 6"X6 " | 5d | 2026-11-21 | 2026-11-25 | NJR1-CO-FW-500, NJR1-DE-SL-HV-120 | 6d | 0d | Square exhaust diffuser [3]; HVAC Installer [120 h] | 750 | 4 |
|  | 5 | **Exhaust grills** |  | 2026-11-26 | 2026-12-01 |  |  |  |  |  |  |
| NJR1-CO-ME-IN-HV-280 |  | Toilet 1 - Exhaust grills | 5d | 2026-11-26 | 2026-12-01 | NJR1-CO-ME-IN-HV-260, NJR1-CO-ME-IN-HV-100, NJR1-DE-SL-HV-130 | 6d |  | Exhaust grills [0.6]; HVAC Installer [120 h] | 180 | 5 |
| NJR1-CO-ME-IN-HV-290 |  | Toilet 2 - Exhaust grills | 5d | 2026-11-26 | 2026-12-01 | NJR1-CO-ME-IN-HV-270, NJR1-CO-ME-IN-HV-110, NJR1-DE-SL-HV-130 | 6d |  | Exhaust grills [0.6]; HVAC Installer [120 h] | 180 | 5 |
|  | 8 | **Flexible ducts** |  | 2026-11-07 | 2026-11-11 |  |  |  |  |  |  |
| NJR1-CO-ME-IN-HV-300 |  | Toilet 1 - Flexible ducts | 5d | 2026-11-07 | 2026-11-11 | NJR1-CO-ME-IN-HV-240 | 6d | 0d | Flexible ducts [2.4]; HVAC Installer [80 h] | 480 | 6 |
| NJR1-CO-ME-IN-HV-310 |  | Toilet 2 - Flexible ducts | 5d | 2026-11-07 | 2026-11-11 | NJR1-CO-ME-IN-HV-250 | 3d | 0d | Flexible ducts [2.4]; HVAC Installer [80 h] | 480 | 6 |
|  | 6 | **Condensate drain piping** |  | 2026-10-03 | 2026-11-17 |  |  |  |  |  |  |
| NJR1-CO-ME-IN-HV-320 |  | Mosque - Condensate drain piping | 5d | 2026-10-03 | 2026-10-07 | NJR1-CO-MA-160, NJR1-DE-SL-HV-140 | 18d | 0d | Condensate drain piping [1.63]; HVAC Installer [120 h] | 1,465.71 | 7 |
| NJR1-CO-ME-IN-HV-330 |  | Outside Mosque - Condensate drain piping | 5d | 2026-10-08 | 2026-10-13 | NJR1-CO-CW-320, NJR1-DE-SL-HV-140, NJR1-CO-ME-IN-HV-320 | 18d | 0d | Condensate drain piping [1.63]; HVAC Installer [120 h] | 1,465.71 | 7 |
| NJR1-CO-ME-IN-HV-340 |  | Workshop 1 - Condensate drain piping | 5d | 2026-10-14 | 2026-10-19 | NJR1-CO-PR-120, NJR1-DE-SL-HV-140, NJR1-CO-ME-IN-HV-330 | 18d | 0d | Condensate drain piping [1.63]; HVAC Installer [120 h] | 1,465.71 | 7 |
| NJR1-CO-ME-IN-HV-350 |  | Workshop 2 - Condensate drain piping | 5d | 2026-10-14 | 2026-10-19 | NJR1-CO-ME-IN-HV-340 SS, NJR1-DE-SL-HV-140 | 18d | 0d | Condensate drain piping [1.63]; HVAC Installer [120 h] | 1,465.71 | 7 |
| NJR1-CO-ME-IN-HV-360 |  | Workshop 3 - Condensate drain piping | 5d | 2026-10-20 | 2026-10-25 | NJR1-CO-ME-IN-HV-350, NJR1-DE-SL-HV-140 | 18d | 0d | Condensate drain piping [1.63]; HVAC Installer [120 h] | 1,465.71 | 7 |
| NJR1-CO-ME-IN-HV-370 |  | Workshop 4 - Condensate drain piping | 5d | 2026-10-20 | 2026-10-25 | NJR1-CO-ME-IN-HV-360 SS, NJR1-DE-SL-HV-140 | 18d | 0d | Condensate drain piping [1.63]; HVAC Installer [120 h] | 1,465.71 | 7 |
| NJR1-CO-ME-IN-HV-380 |  | Workshop 5 - Condensate drain piping | 5d | 2026-10-26 | 2026-10-31 | NJR1-CO-ME-IN-HV-370, NJR1-DE-SL-HV-140 | 18d | 0d | Condensate drain piping [1.63]; HVAC Installer [120 h] | 1,465.71 | 7 |
| NJR1-CO-ME-IN-HV-390 |  | Workshop 6 - Condensate drain piping | 5d | 2026-10-26 | 2026-10-31 | NJR1-CO-ME-IN-HV-380 SS, NJR1-DE-SL-HV-140 | 18d | 0d | Condensate drain piping [1.63]; HVAC Installer [120 h] | 1,465.71 | 7 |
| NJR1-CO-ME-IN-HV-400 |  | Workshop 7 - Condensate drain piping | 5d | 2026-11-01 | 2026-11-05 | NJR1-CO-ME-IN-HV-390, NJR1-DE-SL-HV-140 | 18d | 0d | Condensate drain piping [1.63]; HVAC Installer [120 h] | 1,465.71 | 7 |
| NJR1-CO-ME-IN-HV-410 |  | Workshop 8 - Condensate drain piping | 5d | 2026-11-01 | 2026-11-05 | NJR1-CO-ME-IN-HV-400 SS, NJR1-DE-SL-HV-140 | 18d | 0d | Condensate drain piping [1.63]; HVAC Installer [120 h] | 1,465.71 | 7 |
| NJR1-CO-ME-IN-HV-420 |  | Workshop 9 - Condensate drain piping | 5d | 2026-11-07 | 2026-11-11 | NJR1-CO-ME-IN-HV-410, NJR1-DE-SL-HV-140 | 18d | 0d | Condensate drain piping [1.63]; HVAC Installer [120 h] | 1,465.71 | 7 |
| NJR1-CO-ME-IN-HV-430 |  | Workshop 10 - Condensate drain piping | 5d | 2026-11-07 | 2026-11-11 | NJR1-CO-ME-IN-HV-420 SS, NJR1-DE-SL-HV-140 | 18d | 0d | Condensate drain piping [1.63]; HVAC Installer [120 h] | 1,465.71 | 7 |
| NJR1-CO-ME-IN-HV-440 |  | Workshop 11 - Condensate drain piping | 5d | 2026-11-12 | 2026-11-17 | NJR1-CO-ME-IN-HV-430, NJR1-DE-SL-HV-140 | 18d | 0d | Condensate drain piping [1.63]; HVAC Installer [120 h] | 1,465.71 | 7 |
| NJR1-CO-ME-IN-HV-450 |  | Workshop 12 - Condensate drain piping | 5d | 2026-11-12 | 2026-11-17 | NJR1-CO-ME-IN-HV-440 SS, NJR1-DE-SL-HV-140 | 18d |  | Condensate drain piping [1.63]; HVAC Installer [120 h] | 1,465.71 | 7 |

| ID | WBS | Activity | Duration | Start | Finish | Predecessors | Total float | Free float | Resources | Cost | WBS-BOQ |
| --- | --- | --- | --- | --- | --- | --- | --- | --- | --- | --- | --- |
|  | 8 | **DIVISION 16 - ELECTRICAL WORKS** |  | 2026-07-07 | 2026-12-08 |  |  |  |  |  |  |
|  | 1 | **External Works** |  | 2026-07-07 | 2026-09-27 |  |  |  |  |  |  |
|  | 1 | **Electrical substation** |  | 2026-07-07 | 2026-07-15 |  |  |  |  |  |  |
| NJR1-CO-EE-EX-100 |  | Electrical substation - Foundation | 8d | 2026-07-07 | 2026-07-15 | NJR1-CO-PR-180, NJR1-CO-ME-EX-WS-130 SS | 30d | 4d | Excavator [64 h]; Electrical substation - Foundation [1.2]; Carpenter [192 h]; Steel Fixer [192 h]; Concreting Labor [192 h]; Operator [64 h] | 24,000 | 1 |
|  | 2 | **Underground Distribution System at Site** |  | 2026-07-12 | 2026-08-18 |  |  |  |  |  |  |
| NJR1-CO-EE-EX-110 |  | Branch Telecom Manhole (MH1) with pipes | 10d | 2026-07-12 | 2026-07-22 | NJR1-DE-SL-EE100, NJR1-CO-ME-EX-WS-132 SS, NJR1-CO-EE-EX-100 SS | 26d | 0d | Excavator [80 h]; Compactor [80 h]; Branch Telecom Manhole (MH1) with pipes [4.8]; General Labor [480 h]; Electrician [480 h]; Operator [160 h]; Carpenter [240 h]; Steel Fixer [240 h]; Concreting Labor [240 h] | 16,128 | 2 |
| NJR1-CO-EE-EX-120 |  | Main Telecom Manhole (MH2) with pipes | 10d | 2026-07-12 | 2026-07-22 | NJR1-CO-EE-EX-110 SS, NJR1-DE-SL-EE100 | 26d | 0d | Excavator [80 h]; Compactor [80 h]; Main Telecom Manhole (MH2) with pipes [0.6]; General Labor [480 h]; Electrician [480 h]; Operator [160 h]; Carpenter [240 h]; Steel Fixer [240 h]; Concreting Labor [240 h] | 2,016 | 2 |
| NJR1-CO-EE-EX-140 |  | Main Electrical Manhole with pipes | 10d | 2026-07-13 | 2026-07-23 | NJR1-DE-SL-EE100, NJR1-CO-ME-EX-WS-132 | 25d | 0d | Excavator [80 h]; Compactor [80 h]; Main Electrical Manhole with pipes [6]; Electrician [480 h]; Operator [160 h]; General Labor [480 h]; Carpenter [240 h]; Steel Fixer [240 h]; Concreting Labor [240 h] | 26,400 | 2 |
| NJR1-CO-EE-EX-160 |  | Street Lighting Manhole with pipes | 10d | 2026-07-13 | 2026-07-23 | NJR1-DE-SL-EE100, NJR1-CO-ME-EX-WS-132 | 23d | 0d | Excavator [80 h]; Compactor [80 h]; Street Lighting Manhole with pipes [1.2]; General Labor [480 h]; Electrician [480 h]; Operator [160 h]; Carpenter [240 h]; Steel Fixer [240 h]; Concreting Labor [240 h] | 3,840 | 2 |
| NJR1-CO-EE-EX-130 |  | Telecom Handhole (HH) with pipes | 10d | 2026-07-23 | 2026-08-03 | NJR1-CO-EE-EX-120, NJR1-DE-SL-EE100 | 26d | 0d | Excavator [80 h]; Compactor [80 h]; Telecom Handhole (HH) with pipes [3]; Electrician [480 h]; Operator [160 h] | 3,480 | 2 |
| NJR1-CO-EE-EX-170 |  | Pipes for all telecom network at site | 10d | 2026-07-23 | 2026-08-03 | NJR1-CO-EE-EX-130 SS | 26d | 1d | Excavator [96 h]; Compactor [96 h]; Pipes for all telecom network at site [243]; Electrician [480 h]; Operator [192 h] | 32,076 | 2 |
| NJR1-CO-EE-EX-150 |  | Branch Electrical Manhole with pipes | 10d | 2026-07-25 | 2026-08-04 | NJR1-CO-EE-EX-140, NJR1-DE-SL-EE100 | 25d | 0d | Excavator [80 h]; Compactor [80 h]; Branch Electrical Manhole with pipes [19.2]; Electrician [480 h]; Operator [160 h] | 61,440 | 2 |
| NJR1-CO-EE-EX-180 |  | Pipes for all electrical network at site | 10d | 2026-07-25 | 2026-08-04 | NJR1-CO-EE-EX-150 SS | 25d | 0d | Excavator [96 h]; Compactor [96 h]; Pipes for all electrical network at site [570]; Electrician [480 h]; Operator [192 h] | 136,800 | 2 |
| NJR1-CO-EE-EX-190 |  | Road crossing duct bank for street lighting cables | 12d | 2026-07-25 | 2026-08-06 | NJR1-CO-EE-EX-160 | 23d | 0d | Excavator [96 h]; Compactor [96 h]; Road crossing duct bank for street lighting cables [9]; Electrician [576 h]; Operator [192 h] | 4,320 | 2 |
| NJR1-CO-EE-EX-200 |  | Road crossing duct bank for site electrical cables | 12d | 2026-08-05 | 2026-08-18 | NJR1-CO-EE-EX-150, NJR1-CO-EE-EX-170, NJR1-CO-EE-EX-180 | 25d | 0d | Excavator [96 h]; Compactor [96 h]; Road crossing duct bank for site electrical cables [45]; Electrician [576 h]; Operator [192 h] | 21,600 | 2 |
| NJR1-CO-EE-EX-210 |  | Road crossing duct bank for site telecom cables | 12d | 2026-08-05 | 2026-08-18 | NJR1-CO-EE-EX-130, NJR1-CO-EE-EX-170, NJR1-CO-EE-EX-180, NJR1-CO-EE-EX-200 SS | 25d | 2d | Excavator [96 h]; Compactor [96 h]; Road crossing duct bank for site telecom cables [99]; Electrician [576 h]; Operator [192 h] | 47,520 | 2 |
|  | 3 | **Street Light Network** |  | 2026-08-08 | 2026-08-24 |  |  |  |  |  |  |
| NJR1-CO-EE-EX-220 |  | Street lighting feeder pillar | 7d | 2026-08-08 | 2026-08-15 | NJR1-CO-EE-EX-190, NJR1-DE-LL-EE-100, NJR1-CO-EE-EX-210 SS | 23d | 0d | Street lighting feeder pillar [0.6]; Electrician [336 h] | 7,200 | 3 |
| NJR1-CO-EE-EX-240 |  | Concrete wall for KWHM for street lighting feeder pillar | 7d | 2026-08-08 | 2026-08-15 | NJR1-CO-EE-EX-190 | 34d | 0d | Concrete wall for KWHM for street lighting feeder pillar [0.6]; Electrician [336 h] | 2,400 | 3 |
| NJR1-CO-EE-EX-230 |  | Street lighting poles with LED lighting fixtures | 7d | 2026-08-16 | 2026-08-23 | NJR1-CO-EE-EX-220, NJR1-CO-EE-EX-240 | 34d | 0d | Crane [56 h]; Street lighting poles with LED lighting fixtures [15]; Electrician [336 h]; Operator [56 h] | 84,000 | 3 |
| NJR1-CO-EE-EX-250 |  | 4C x 50mm2 +1C x 25 mm2 | 8d | 2026-08-16 | 2026-08-24 | NJR1-CO-EE-EX-220, NJR1-CO-EE-EX-240, NJR1-CO-EE-EX-230 SS | 39d | 0d | 4C x 50mm2 +1C x 25 mm2 [12]; Electrician [384 h] | 3,840 | 3 |
| NJR1-CO-EE-EX-260 |  | 4C x 16mm2 +1C x 10mm2 | 8d | 2026-08-16 | 2026-08-24 | NJR1-CO-EE-EX-250 SS | 39d | 28d | 4C x 16mm2 +1C x 10mm2 [246]; Electrician [384 h] | 29,520 | 3 |
|  | 4 | **All Pump Room Electrical Works** |  | 2026-08-25 | 2026-09-27 |  |  |  |  |  |  |
| NJR1-CO-EE-EX-360 |  | Cable trays | 7d | 2026-08-25 | 2026-09-01 | NJR1-MI-BM-230 | 11d | 0d | Cable trays [0.6]; Electrician [168 h] | 4,800 | 4 |
| NJR1-CO-EE-EX-270 |  | LED Lighting fixtures | 7d | 2026-09-02 | 2026-09-09 | NJR1-CO-EE-EX-360 | 25d | 0d | LED Lighting fixtures [5.4]; Electrician [168 h] | 3,888 | 4 |
| NJR1-CO-EE-EX-280 |  | Emergency LED lighting | 7d | 2026-09-02 | 2026-09-09 | NJR1-CO-EE-EX-270 SS | 25d | 0d | Emergency LED lighting [1.2]; Electrician [112 h] | 1,440 | 4 |
| NJR1-CO-EE-EX-290 |  | Lighting switch | 7d | 2026-09-02 | 2026-09-09 | NJR1-CO-EE-EX-280 SS | 25d | 14d | Lighting switch [1.2]; Electrician [112 h] | 480 | 4 |
| NJR1-CO-EE-EX-300 |  | Motor Circuit Protector for pumps | 7d | 2026-09-02 | 2026-09-09 | NJR1-CO-EE-EX-360 | 11d | 0d | Motor Circuit Protector for pumps [1.2]; Electrician [168 h] | 7,680 | 4 |
| NJR1-CO-EE-EX-310 |  | Pump room power panel | 7d | 2026-09-10 | 2026-09-17 | NJR1-CO-EE-EX-300 | 11d | 0d | Pump room power panel [0.6]; Electrician [168 h] | 2,880 | 4 |
| NJR1-CO-EE-EX-320 |  | Control Panel for pumps | 7d | 2026-09-10 | 2026-09-17 | NJR1-CO-EE-EX-310 SS | 11d | 0d | Control Panel for pumps [1.2]; Electrician [168 h] | 9,600 | 4 |
| NJR1-CO-EE-EX-330 |  | Isolator switch | 7d | 2026-09-19 | 2026-09-27 | NJR1-CO-EE-EX-320 | 11d | 0d | Isolator switch [1.2]; Electrician [168 h] | 2,400 | 4 |
| NJR1-CO-EE-EX-340 |  | Disconnect switch | 7d | 2026-09-19 | 2026-09-27 | NJR1-CO-EE-EX-330 SS | 11d | 0d | Disconnect switch [2.4]; Electrician [168 h] | 4,800 | 4 |
| NJR1-CO-EE-EX-350 |  | Concrete wall for KWHM for pump room | 7d | 2026-09-19 | 2026-09-27 | NJR1-CO-EE-EX-340 SS | 11d | 0d | Concrete wall for KWHM for pump room [0.6]; Electrician [168 h] | 2,400 | 4 |

| ID | WBS | Activity | Duration | Start | Finish | Predecessors | Total float | Free float | Resources | Cost | WBS-BOQ |
| --- | --- | --- | --- | --- | --- | --- | --- | --- | --- | --- | --- |
|  | 5 | **Grounding System at Site** |  | 2026-08-16 | 2026-09-12 |  |  |  |  |  |  |
|  | 1 | **Grounding system** |  | 2026-08-16 | 2026-09-12 |  |  |  |  |  |  |
| NJR1-CO-EE-EX-370 |  | Feeder pillars | 6d | 2026-08-16 | 2026-08-22 | NJR1-CO-EE-EX-220, NJR1-DE-SL-EE120 | 23d | 0d | Feeder pillars [0.6]; Electrician [96 h] | 2,880 | 5 |
| NJR1-CO-EE-EX-380 |  | Pump Room | 6d | 2026-08-23 | 2026-08-29 | NJR1-CO-EE-EX-370, NJR1-DE-SL-EE120 | 23d | 0d | Pump Room [0.6]; Electrician [96 h] | 1,920 | 5 |
| NJR1-CO-EE-EX-390 |  | KWHM's | 6d | 2026-08-30 | 2026-09-05 | NJR1-CO-EE-EX-380, NJR1-DE-SL-EE120 | 23d | 0d | KWHM's [2.4]; Electrician [96 h] | 4,800 | 5 |
| NJR1-CO-EE-EX-400 |  | Street lighting Poles | 6d | 2026-09-06 | 2026-09-12 | NJR1-CO-EE-EX-230, NJR1-DE-SL-EE120, NJR1-CO-EE-EX-390 | 23d | 12d | Excavator [48 h]; Crane [48 h]; Street lighting Poles [15]; Electrician [96 h]; Operator [96 h] | 10,800 | 5 |
|  | 2 | **Internal Works** |  | 2026-08-18 | 2026-12-08 |  |  |  |  |  |  |
|  | 1 | **Low Voltage Copper Cables & Wires** |  | 2026-08-31 | 2026-10-29 |  |  |  |  |  |  |
| NJR1-CO-EE-IN-160 |  | Workshop 1 - Pulling Low votlage cable | 5d | 2026-08-31 | 2026-09-05 | NJR1-CO-EE-IN-340, NJR1-DE-SL-EE130 | 19d | 0d | Low Voltage Copper Cables & Wires [0.03]; Electrician [200 h] | 2,969 | 1 |
| NJR1-CO-EE-IN-170 |  | Workshop 2 - Pulling Low votlage cable | 5d | 2026-08-31 | 2026-09-05 | NJR1-CO-EE-IN-350, NJR1-DE-SL-EE130, NJR1-CO-EE-IN-160 SS | 19d | 0d | Low Voltage Copper Cables & Wires [0.03]; Electrician [200 h] | 2,969 | 1 |
| NJR1-CO-EE-IN-180 |  | Workshop 3 - Pulling Low votlage cable | 5d | 2026-09-06 | 2026-09-10 | NJR1-CO-EE-IN-360, NJR1-DE-SL-EE130, NJR1-CO-EE-IN-170 | 19d | 0d | Low Voltage Copper Cables & Wires [0.03]; Electrician [200 h] | 2,969 | 1 |
| NJR1-CO-EE-IN-190 |  | Workshop 4 - Pulling Low votlage cable | 5d | 2026-09-06 | 2026-09-10 | NJR1-CO-EE-IN-370, NJR1-DE-SL-EE130, NJR1-CO-EE-IN-180 SS | 19d | 0d | Low Voltage Copper Cables & Wires [0.03]; Electrician [200 h] | 2,969 | 1 |
| NJR1-CO-EE-IN-200 |  | Workshop 5 - Pulling Low votlage cable | 5d | 2026-09-12 | 2026-09-16 | NJR1-CO-EE-IN-380, NJR1-DE-SL-EE130, NJR1-CO-EE-IN-190 | 19d | 0d | Low Voltage Copper Cables & Wires [0.03]; Electrician [200 h] | 2,969 | 1 |
| NJR1-CO-EE-IN-210 |  | Workshop 6 - Pulling Low votlage cable | 5d | 2026-09-12 | 2026-09-16 | NJR1-CO-EE-IN-390, NJR1-DE-SL-EE130, NJR1-CO-EE-IN-200 SS | 19d | 0d | Low Voltage Copper Cables & Wires [0.03]; Electrician [200 h] | 2,969 | 1 |
| NJR1-CO-EE-IN-220 |  | Workshop 7 - Pulling Low votlage cable | 5d | 2026-09-17 | 2026-09-22 | NJR1-CO-EE-IN-400, NJR1-DE-SL-EE130, NJR1-CO-EE-IN-210 | 19d | 0d | Low Voltage Copper Cables & Wires [0.03]; Electrician [200 h] | 2,969 | 1 |
| NJR1-CO-EE-IN-230 |  | Workshop 8 - Pulling Low votlage cable | 5d | 2026-09-17 | 2026-09-22 | NJR1-CO-EE-IN-410, NJR1-DE-SL-EE130, NJR1-CO-EE-IN-220 SS | 19d | 0d | Low Voltage Copper Cables & Wires [0.03]; Electrician [200 h] | 2,969 | 1 |
| NJR1-CO-EE-IN-240 |  | Workshop 9 - Pulling Low votlage cable | 5d | 2026-09-24 | 2026-09-29 | NJR1-CO-EE-IN-420, NJR1-DE-SL-EE130, NJR1-CO-EE-IN-230 | 19d | 0d | Low Voltage Copper Cables & Wires [0.03]; Electrician [200 h] | 2,969 | 1 |
| NJR1-CO-EE-IN-250 |  | Workshop 10 - Pulling Low votlage cable | 5d | 2026-09-24 | 2026-09-29 | NJR1-CO-EE-IN-430, NJR1-DE-SL-EE130, NJR1-CO-EE-IN-240 SS | 19d | 0d | Low Voltage Copper Cables & Wires [0.03]; Electrician [200 h] | 2,969 | 1 |
| NJR1-CO-EE-IN-260 |  | Workshop 11 - Pulling Low votlage cable | 5d | 2026-09-30 | 2026-10-05 | NJR1-CO-EE-IN-440, NJR1-DE-SL-EE130, NJR1-CO-EE-IN-250 | 19d | 0d | Low Voltage Copper Cables & Wires [0.03]; Electrician [200 h] | 2,969 | 1 |
| NJR1-CO-EE-IN-270 |  | Workshop 12 - Pulling Low votlage cable | 5d | 2026-09-30 | 2026-10-05 | NJR1-CO-EE-IN-450, NJR1-DE-SL-EE130, NJR1-CO-EE-IN-260 SS | 19d | 0d | Low Voltage Copper Cables & Wires [0.03]; Electrician [200 h] | 2,969 | 1 |
| NJR1-CO-EE-IN-120 |  | Mosque - Pulling Low votlage cable | 5d | 2026-10-21 | 2026-10-26 | NJR1-CO-EE-IN-300, NJR1-DE-SL-EE130 | 1d | 0d | Low Voltage Copper Cables & Wires [0.03]; Electrician [200 h] | 2,969 | 1 |
| NJR1-CO-EE-IN-130 |  | EE Room 1 - Pulling Low votlage cable | 5d | 2026-10-21 | 2026-10-26 | NJR1-CO-EE-IN-310, NJR1-DE-SL-EE130 | 1d | 0d | Low Voltage Copper Cables & Wires [0.03]; Electrician [200 h] | 2,969 | 1 |
| NJR1-CO-EE-IN-140 |  | EE Room 2 - Pulling Low votlage cable | 5d | 2026-10-21 | 2026-10-26 | NJR1-CO-EE-IN-320, NJR1-DE-SL-EE130 | 1d | 0d | Low Voltage Copper Cables & Wires [0.03]; Electrician [200 h] | 2,969 | 1 |
| NJR1-CO-EE-IN-150 |  | Outside Mosque - Pulling Low votlage cable | 5d | 2026-10-22 | 2026-10-27 | NJR1-CO-EE-IN-330, NJR1-DE-SL-EE130 | 0d |  | Low Voltage Copper Cables & Wires [0.03]; Electrician [200 h] | 2,969 | 1 |
| NJR1-CO-EE-IN-100 |  | Toilet 1 - Pulling Low votlage cable | 3d | 2026-10-27 | 2026-10-29 | NJR1-CO-EE-IN-280, NJR1-DE-SL-EE130 | 0d |  | Low Voltage Copper Cables & Wires [0.03]; Electrician [120 h] | 2,969 | 1 |
| NJR1-CO-EE-IN-110 |  | Toilet 2 - Pulling Low votlage cable | 3d | 2026-10-27 | 2026-10-29 | NJR1-CO-EE-IN-290, NJR1-DE-SL-EE130 | 0d |  | Low Voltage Copper Cables & Wires [0.03]; Electrician [120 h] | 2,969 | 1 |

| ID | WBS | Activity | Duration | Start | Finish | Predecessors | Total float | Free float | Resources | Cost | WBS-BOQ |
| --- | --- | --- | --- | --- | --- | --- | --- | --- | --- | --- | --- |
|  | 2 | **Cable Trays** |  | 2026-08-25 | 2026-10-26 |  |  |  |  |  |  |
| NJR1-CO-EE-IN-340 |  | Workshop 1 - Install Cable Tray | 5d | 2026-08-25 | 2026-08-30 | NJR1-CO-EE-IN-1180, NJR1-DE-SL-EE140, NJR1-CO-PR-120, NJR1-MI-BM-130 | 19d | 0d | Cable Trays [0.03]; Electrician [160 h] | 4,266.67 | 2 |
| NJR1-CO-EE-IN-350 |  | Workshop 2 - Install Cable Tray | 5d | 2026-08-25 | 2026-08-30 | NJR1-CO-EE-IN-1190, NJR1-DE-SL-EE140, NJR1-CO-EE-IN-340 SS | 19d | 0d | Cable Trays [0.03]; Electrician [160 h] | 4,266.67 | 2 |
| NJR1-CO-EE-IN-360 |  | Workshop 3 - Install Cable Tray | 5d | 2026-08-25 | 2026-08-30 | NJR1-CO-EE-IN-1200, NJR1-DE-SL-EE140, NJR1-CO-EE-IN-350 SS | 24d | 0d | Cable Trays [0.03]; Electrician [160 h] | 4,266.67 | 2 |
| NJR1-CO-EE-IN-370 |  | Workshop 4 - Install Cable Tray | 5d | 2026-08-25 | 2026-08-30 | NJR1-CO-EE-IN-1210, NJR1-DE-SL-EE140, NJR1-CO-EE-IN-360 SS | 24d | 0d | Cable Trays [0.03]; Electrician [160 h] | 4,266.67 | 2 |
| NJR1-CO-EE-IN-380 |  | Workshop 5 - Install Cable Tray | 5d | 2026-08-25 | 2026-08-30 | NJR1-CO-EE-IN-1220, NJR1-DE-SL-EE140, NJR1-CO-EE-IN-370 SS | 29d | 0d | Cable Trays [0.03]; Electrician [160 h] | 4,266.67 | 2 |
| NJR1-CO-EE-IN-390 |  | Workshop 6 - Install Cable Tray | 5d | 2026-08-25 | 2026-08-30 | NJR1-CO-EE-IN-1230, NJR1-DE-SL-EE140, NJR1-CO-EE-IN-380 SS | 29d | 0d | Cable Trays [0.03]; Electrician [160 h] | 4,266.67 | 2 |
| NJR1-CO-EE-IN-400 |  | Workshop 7 - Install Cable Tray | 5d | 2026-08-25 | 2026-08-30 | NJR1-CO-EE-IN-1240, NJR1-DE-SL-EE140, NJR1-CO-EE-IN-390 SS | 34d | 0d | Cable Trays [0.03]; Electrician [160 h] | 4,266.67 | 2 |
| NJR1-CO-EE-IN-410 |  | Workshop 8 - Install Cable Tray | 5d | 2026-08-25 | 2026-08-30 | NJR1-CO-EE-IN-1250, NJR1-DE-SL-EE140, NJR1-CO-EE-IN-400 SS | 34d | 0d | Cable Trays [0.03]; Electrician [160 h] | 4,266.67 | 2 |
| NJR1-CO-EE-IN-420 |  | Workshop 9 - Install Cable Tray | 5d | 2026-08-25 | 2026-08-30 | NJR1-CO-EE-IN-1260, NJR1-DE-SL-EE140, NJR1-CO-EE-IN-410 SS | 39d | 0d | Cable Trays [0.03]; Electrician [160 h] | 4,266.67 | 2 |
| NJR1-CO-EE-IN-430 |  | Workshop 10 - Install Cable Tray | 5d | 2026-08-25 | 2026-08-30 | NJR1-CO-EE-IN-1270, NJR1-DE-SL-EE140, NJR1-CO-EE-IN-420 SS | 39d | 0d | Cable Trays [0.03]; Electrician [160 h] | 4,266.67 | 2 |
| NJR1-CO-EE-IN-440 |  | Workshop 11 - Install Cable Tray | 5d | 2026-08-25 | 2026-08-30 | NJR1-CO-EE-IN-1280, NJR1-DE-SL-EE140, NJR1-CO-EE-IN-430 SS | 44d | 0d | Cable Trays [0.03]; Electrician [160 h] | 4,266.67 | 2 |
| NJR1-CO-EE-IN-450 |  | Workshop 12 - Install Cable Tray | 5d | 2026-08-25 | 2026-08-30 | NJR1-CO-EE-IN-1290, NJR1-DE-SL-EE140, NJR1-CO-EE-IN-440 SS | 44d | 25d | Cable Trays [0.03]; Electrician [160 h] | 4,266.67 | 2 |
| NJR1-CO-EE-IN-300 |  | Mosque - Install Cable Tray | 5d | 2026-10-15 | 2026-10-20 | NJR1-CO-EE-IN-1140, NJR1-DE-SL-EE140, NJR1-CO-FW-390 | 1d | 0d | Cable Trays [0.03]; Electrician [160 h] | 4,266.67 | 2 |
| NJR1-CO-EE-IN-310 |  | EE Room 1 -Install Cable Tray | 5d | 2026-10-15 | 2026-10-20 | NJR1-CO-EE-IN-1150, NJR1-DE-SL-EE140, NJR1-CO-FW-400 | 1d | 0d | Cable Trays [0.03]; Electrician [160 h] | 4,266.67 | 2 |
| NJR1-CO-EE-IN-320 |  | EE Room 2 - Install Cable Tray | 5d | 2026-10-15 | 2026-10-20 | NJR1-CO-EE-IN-1160, NJR1-DE-SL-EE140, NJR1-CO-FW-410 | 1d | 0d | Cable Trays [0.03]; Electrician [160 h] | 4,266.67 | 2 |
| NJR1-CO-EE-IN-330 |  | Outside Mosque - Install Cable Tray | 5d | 2026-10-17 | 2026-10-21 | NJR1-CO-EE-IN-1170, NJR1-DE-SL-EE140, NJR1-CO-FW-420 | 0d |  | Cable Trays [0.03]; Electrician [160 h] | 4,266.67 | 2 |
| NJR1-CO-EE-IN-280 |  | Toilet 1 - Install Cable Tray | 3d | 2026-10-24 | 2026-10-26 | NJR1-CO-EE-IN-1120, NJR1-DE-SL-EE140, NJR1-CO-FW-370 | 0d |  | Cable Trays [0.03]; Electrician [96 h] | 4,266.67 | 2 |
| NJR1-CO-EE-IN-290 |  | Toilet 2 - Install Cable Tray | 3d | 2026-10-24 | 2026-10-26 | NJR1-CO-EE-IN-1130, NJR1-DE-SL-EE140, NJR1-CO-FW-380 | 0d |  | Cable Trays [0.03]; Electrician [96 h] | 4,266.67 | 2 |
|  | 3 | **Lighting, Power Panelboards, and Control** |  | 2026-09-22 | 2026-11-03 |  |  |  |  |  |  |
| NJR1-CO-EE-IN-520 |  | Workshop 1 - Install Lighting, Power Panelboards and Control | 6d | 2026-09-22 | 2026-09-29 | NJR1-CO-EE-IN-160, NJR1-DE-LL-EE-110 | 30d | 4d | Lighting, Power Panelboards, and Control [0.03]; Electrician [192 h] | 9,120 | 3 |
| NJR1-CO-EE-IN-530 |  | Workshop 2 - Install Lighting, Power Panelboards and Control | 6d | 2026-09-22 | 2026-09-29 | NJR1-CO-EE-IN-170, NJR1-DE-LL-EE-110 | 30d | 4d | Lighting, Power Panelboards, and Control [0.03]; Electrician [192 h] | 9,120 | 3 |
| NJR1-CO-EE-IN-540 |  | Workshop 3 - Install Lighting, Power Panelboards and Control | 6d | 2026-09-22 | 2026-09-29 | NJR1-CO-EE-IN-180, NJR1-DE-LL-EE-110 | 30d | 4d | Lighting, Power Panelboards, and Control [0.03]; Electrician [192 h] | 9,120 | 3 |
| NJR1-CO-EE-IN-550 |  | Workshop 4 - Install Lighting, Power Panelboards and Control | 6d | 2026-09-22 | 2026-09-29 | NJR1-CO-EE-IN-190, NJR1-DE-LL-EE-110 | 30d | 4d | Lighting, Power Panelboards, and Control [0.03]; Electrician [192 h] | 9,120 | 3 |
| NJR1-CO-EE-IN-560 |  | Workshop 5 - Install Lighting, Power Panelboards and Control | 6d | 2026-09-22 | 2026-09-29 | NJR1-CO-EE-IN-200, NJR1-DE-LL-EE-110 | 30d | 4d | Lighting, Power Panelboards, and Control [0.03]; Electrician [192 h] | 9,120 | 3 |
| NJR1-CO-EE-IN-570 |  | Workshop 6 - Install Lighting, Power Panelboards and Control | 6d | 2026-09-22 | 2026-09-29 | NJR1-CO-EE-IN-210, NJR1-DE-LL-EE-110 | 30d | 4d | Lighting, Power Panelboards, and Control [0.03]; Electrician [192 h] | 9,120 | 3 |
| NJR1-CO-EE-IN-580 |  | Workshop 7 - Install Lighting, Power Panelboards and Control | 6d | 2026-09-24 | 2026-09-30 | NJR1-CO-EE-IN-220, NJR1-DE-LL-EE-110 | 29d | 3d | Lighting, Power Panelboards, and Control [0.03]; Electrician [192 h] | 9,120 | 3 |
| NJR1-CO-EE-IN-590 |  | Workshop 8 - Install Lighting, Power Panelboards and Control | 6d | 2026-09-24 | 2026-09-30 | NJR1-CO-EE-IN-230, NJR1-DE-LL-EE-110 | 29d | 3d | Lighting, Power Panelboards, and Control [0.03]; Electrician [192 h] | 9,120 | 3 |
| NJR1-CO-EE-IN-600 |  | Workshop 9 - Install Lighting, Power Panelboards and Control | 6d | 2026-09-30 | 2026-10-06 | NJR1-CO-EE-IN-240, NJR1-DE-LL-EE-110 | 24d | 0d | Lighting, Power Panelboards, and Control [0.03]; Electrician [192 h] | 9,120 | 3 |
| NJR1-CO-EE-IN-610 |  | Workshop 10 - Install Lighting, Power Panelboards and Control | 6d | 2026-09-30 | 2026-10-06 | NJR1-CO-EE-IN-250, NJR1-DE-LL-EE-110 | 24d | 0d | Lighting, Power Panelboards, and Control [0.03]; Electrician [192 h] | 9,120 | 3 |
| NJR1-CO-EE-IN-620 |  | Workshop 11 - Install Lighting, Power Panelboards and Control | 6d | 2026-10-06 | 2026-10-12 | NJR1-CO-EE-IN-260, NJR1-DE-LL-EE-110 | 19d | 0d | Lighting, Power Panelboards, and Control [0.03]; Electrician [192 h] | 9,120 | 3 |
| NJR1-CO-EE-IN-630 |  | Workshop 12 - Install Lighting, Power Panelboards and Control | 6d | 2026-10-06 | 2026-10-12 | NJR1-CO-EE-IN-270, NJR1-DE-LL-EE-110 | 19d | 0d | Lighting, Power Panelboards, and Control [0.03]; Electrician [192 h] | 9,120 | 3 |
| NJR1-CO-EE-IN-480 |  | Mosque - Install Lighting, Power Panelboards and Control | 6d | 2026-10-27 | 2026-11-02 | NJR1-CO-EE-IN-120, NJR1-DE-LL-EE-110 | 1d | 0d | Lighting, Power Panelboards, and Control [0.03]; Electrician [192 h] | 9,120 | 3 |
| NJR1-CO-EE-IN-490 |  | EE Room 1 - Install Lighting, Power Panelboards and Control | 6d | 2026-10-27 | 2026-11-02 | NJR1-CO-EE-IN-130, NJR1-DE-LL-EE-110 | 1d | 0d | Lighting, Power Panelboards, and Control [0.03]; Electrician [192 h] | 9,120 | 3 |
| NJR1-CO-EE-IN-500 |  | EE Room 2 - Install Lighting, Power Panelboards and Control | 6d | 2026-10-27 | 2026-11-02 | NJR1-CO-EE-IN-140, NJR1-DE-LL-EE-110 | 1d | 0d | Lighting, Power Panelboards, and Control [0.03]; Electrician [192 h] | 9,120 | 3 |
| NJR1-CO-EE-IN-510 |  | Outside Mosque - Install Lighting, Power Panelboards and Control | 6d | 2026-10-28 | 2026-11-03 | NJR1-CO-EE-IN-150, NJR1-DE-LL-EE-110 | 0d |  | Lighting, Power Panelboards, and Control [0.03]; Electrician [192 h] | 9,120 | 3 |
| NJR1-CO-EE-IN-460 |  | Toilet 1 - Install Lighting, Power Panelboards and Control | 4d | 2026-10-31 | 2026-11-03 | NJR1-CO-EE-IN-100, NJR1-DE-LL-EE-110 | 0d |  | Lighting, Power Panelboards, and Control [0.03]; Electrician [128 h] | 9,120 | 3 |
| NJR1-CO-EE-IN-470 |  | Toilet 2 - Install Lighting, Power Panelboards and Control | 4d | 2026-10-31 | 2026-11-03 | NJR1-CO-EE-IN-110, NJR1-DE-LL-EE-110 | 0d |  | Lighting, Power Panelboards, and Control [0.03]; Electrician [128 h] | 9,120 | 3 |

| ID | WBS | Activity | Duration | Start | Finish | Predecessors | Total float | Free float | Resources | Cost | WBS-BOQ |
| --- | --- | --- | --- | --- | --- | --- | --- | --- | --- | --- | --- |
|  | 4 | **Safety Disconnect Switches** |  | 2026-10-28 | 2026-12-01 |  |  |  |  |  |  |
| NJR1-CO-EE-IN-700 |  | Workshop 1 - Install Safety disconnect switches | 4d | 2026-10-28 | 2026-11-01 | NJR1-CO-EE-IN-1550, NJR1-DE-SL-EE150 | 26d | 0d | Safety Disconnect Switches [0.03]; Electrician [64 h] | 1,734.4 | 4 |
| NJR1-CO-EE-IN-710 |  | Workshop 2 - Install Safety disconnect switches | 4d | 2026-10-28 | 2026-11-01 | NJR1-CO-EE-IN-1560, NJR1-DE-SL-EE150 | 26d | 0d | Safety Disconnect Switches [0.03]; Electrician [64 h] | 1,734.4 | 4 |
| NJR1-CO-EE-IN-720 |  | Workshop 3 - Install Safety disconnect switches | 4d | 2026-10-28 | 2026-11-01 | NJR1-CO-EE-IN-1570, NJR1-DE-SL-EE150 | 26d | 0d | Safety Disconnect Switches [0.03]; Electrician [64 h] | 1,734.4 | 4 |
| NJR1-CO-EE-IN-730 |  | Workshop 4 - Install Safety disconnect switches | 4d | 2026-10-28 | 2026-11-01 | NJR1-CO-EE-IN-1580, NJR1-DE-SL-EE150 | 26d | 0d | Safety Disconnect Switches [0.03]; Electrician [64 h] | 1,734.4 | 4 |
| NJR1-CO-EE-IN-740 |  | Workshop 5 - Install Safety disconnect switches | 4d | 2026-10-28 | 2026-11-01 | NJR1-CO-EE-IN-1590, NJR1-DE-SL-EE150 | 26d | 0d | Safety Disconnect Switches [0.03]; Electrician [64 h] | 1,734.4 | 4 |
| NJR1-CO-EE-IN-750 |  | Workshop 6 - Install Safety disconnect switches | 4d | 2026-10-28 | 2026-11-01 | NJR1-CO-EE-IN-1600, NJR1-DE-SL-EE150 | 26d | 0d | Safety Disconnect Switches [0.03]; Electrician [64 h] | 1,734.4 | 4 |
| NJR1-CO-EE-IN-760 |  | Workshop 7 - Install Safety disconnect switches | 4d | 2026-10-28 | 2026-11-01 | NJR1-CO-EE-IN-1610, NJR1-DE-SL-EE150 | 26d | 0d | Safety Disconnect Switches [0.03]; Electrician [64 h] | 1,734.4 | 4 |
| NJR1-CO-EE-IN-770 |  | Workshop 8 - Install Safety disconnect switches | 4d | 2026-10-28 | 2026-11-01 | NJR1-CO-EE-IN-1620, NJR1-DE-SL-EE150 | 26d | 0d | Safety Disconnect Switches [0.03]; Electrician [64 h] | 1,734.4 | 4 |
| NJR1-CO-EE-IN-780 |  | Workshop 9 - Install Safety disconnect switches | 4d | 2026-10-31 | 2026-11-03 | NJR1-CO-EE-IN-1630, NJR1-DE-SL-EE150 | 24d | 0d | Safety Disconnect Switches [0.03]; Electrician [64 h] | 1,734.4 | 4 |
| NJR1-CO-EE-IN-790 |  | Workshop 10 - Install Safety disconnect switches | 4d | 2026-10-31 | 2026-11-03 | NJR1-CO-EE-IN-1640, NJR1-DE-SL-EE150 | 24d | 0d | Safety Disconnect Switches [0.03]; Electrician [64 h] | 1,734.4 | 4 |
| NJR1-CO-EE-IN-800 |  | Workshop 11 - Install Safety disconnect switches | 4d | 2026-11-05 | 2026-11-09 | NJR1-CO-EE-IN-1650, NJR1-DE-SL-EE150 | 19d | 0d | Safety Disconnect Switches [0.03]; Electrician [64 h] | 1,734.4 | 4 |
| NJR1-CO-EE-IN-810 |  | Workshop 12 - Install Safety disconnect switches | 4d | 2026-11-05 | 2026-11-09 | NJR1-CO-EE-IN-1660, NJR1-DE-SL-EE150 | 19d | 0d | Safety Disconnect Switches [0.03]; Electrician [64 h] | 1,734.4 | 4 |
| NJR1-CO-EE-IN-660 |  | Mosque - Install Safety disconnect switches | 4d | 2026-11-26 | 2026-11-30 | NJR1-CO-EE-IN-1510, NJR1-DE-SL-EE150 | 1d | 0d | Safety Disconnect Switches [0.03]; Electrician [64 h] | 1,734.4 | 4 |
| NJR1-CO-EE-IN-670 |  | EE Room 1 - Install Safety disconnect switches | 4d | 2026-11-26 | 2026-11-30 | NJR1-CO-EE-IN-1520, NJR1-DE-SL-EE150 | 1d | 0d | Safety Disconnect Switches [0.03]; Electrician [64 h] | 1,734.4 | 4 |
| NJR1-CO-EE-IN-680 |  | EE Room 2 - Install Safety disconnect switches | 4d | 2026-11-26 | 2026-11-30 | NJR1-CO-EE-IN-1530, NJR1-DE-SL-EE150 | 1d | 0d | Safety Disconnect Switches [0.03]; Electrician [64 h] | 1,734.4 | 4 |
| NJR1-CO-EE-IN-640 |  | Toilet 1 - Install Safety disconnect switches | 4d | 2026-11-28 | 2026-12-01 | NJR1-CO-EE-IN-1490, NJR1-DE-SL-EE150 | 0d |  | Safety Disconnect Switches [0.03]; Electrician [64 h] | 1,734.4 | 4 |
| NJR1-CO-EE-IN-650 |  | Toilet 2 - Install Safety disconnect switches | 4d | 2026-11-28 | 2026-12-01 | NJR1-CO-EE-IN-1500, NJR1-DE-SL-EE150 | 0d |  | Safety Disconnect Switches [0.03]; Electrician [64 h] | 1,734.4 | 4 |
| NJR1-CO-EE-IN-690 |  | Outside Mosque - Install Safety disconnect switches | 4d | 2026-11-28 | 2026-12-01 | NJR1-CO-EE-IN-1540, NJR1-DE-SL-EE150 | 0d |  | Safety Disconnect Switches [0.03]; Electrician [64 h] | 1,734.4 | 4 |
|  | 5 | **Lighting Fixtures and Their Switches** |  | 2026-10-05 | 2026-11-17 |  |  |  |  |  |  |
| NJR1-CO-EE-IN-880 |  | Workshop 1 - Install Lighting fixtures and their switches | 12d | 2026-10-05 | 2026-10-18 | NJR1-CO-EE-IN-520, NJR1-DE-LL-EE-120, NJR1-MI-BM-130 | 26d | 0d | Lighting Fixtures and Their Switches [0.03]; Electrician [96 h] | 6,354.67 | 5 |
| NJR1-CO-EE-IN-890 |  | Workshop 2 - Install Lighting fixtures and their switches | 12d | 2026-10-05 | 2026-10-18 | NJR1-CO-EE-IN-530, NJR1-DE-LL-EE-120 | 26d | 0d | Lighting Fixtures and Their Switches [0.03]; Electrician [96 h] | 6,354.67 | 5 |
| NJR1-CO-EE-IN-900 |  | Workshop 3 - Install Lighting fixtures and their switches | 12d | 2026-10-05 | 2026-10-18 | NJR1-CO-EE-IN-540, NJR1-DE-LL-EE-120 | 26d | 0d | Lighting Fixtures and Their Switches [0.03]; Electrician [96 h] | 6,354.67 | 5 |
| NJR1-CO-EE-IN-910 |  | Workshop 4 - Install Lighting fixtures and their switches | 12d | 2026-10-05 | 2026-10-18 | NJR1-CO-EE-IN-550, NJR1-DE-LL-EE-120 | 26d | 0d | Lighting Fixtures and Their Switches [0.03]; Electrician [96 h] | 6,354.67 | 5 |
| NJR1-CO-EE-IN-920 |  | Workshop 5 - Install Lighting fixtures and their switches | 12d | 2026-10-05 | 2026-10-18 | NJR1-CO-EE-IN-560, NJR1-DE-LL-EE-120 | 26d | 0d | Lighting Fixtures and Their Switches [0.03]; Electrician [96 h] | 6,354.67 | 5 |
| NJR1-CO-EE-IN-930 |  | Workshop 6 - Install Lighting fixtures and their switches | 12d | 2026-10-05 | 2026-10-18 | NJR1-CO-EE-IN-570, NJR1-DE-LL-EE-120 | 26d | 0d | Lighting Fixtures and Their Switches [0.03]; Electrician [96 h] | 6,354.67 | 5 |
| NJR1-CO-EE-IN-940 |  | Workshop 7 - Install Lighting fixtures and their switches | 12d | 2026-10-05 | 2026-10-18 | NJR1-CO-EE-IN-580, NJR1-DE-LL-EE-120 | 26d | 0d | Lighting Fixtures and Their Switches [0.03]; Electrician [96 h] | 6,354.67 | 5 |
| NJR1-CO-EE-IN-950 |  | Workshop 8 - Install Lighting fixtures and their switches | 12d | 2026-10-05 | 2026-10-18 | NJR1-CO-EE-IN-590, NJR1-DE-LL-EE-120 | 26d | 0d | Lighting Fixtures and Their Switches [0.03]; Electrician [96 h] | 6,354.67 | 5 |
| NJR1-CO-EE-IN-960 |  | Workshop 9 - Install Lighting fixtures and their switches | 12d | 2026-10-07 | 2026-10-20 | NJR1-CO-EE-IN-600, NJR1-DE-LL-EE-120 | 24d | 0d | Lighting Fixtures and Their Switches [0.03]; Electrician [96 h] | 6,354.67 | 5 |
| NJR1-CO-EE-IN-970 |  | Workshop 10 - Install Lighting fixtures and their switches | 12d | 2026-10-07 | 2026-10-20 | NJR1-CO-EE-IN-610, NJR1-DE-LL-EE-120 | 24d | 0d | Lighting Fixtures and Their Switches [0.03]; Electrician [96 h] | 6,354.67 | 5 |
| NJR1-CO-EE-IN-980 |  | Workshop 11 - Install Lighting fixtures and their switches | 12d | 2026-10-13 | 2026-10-26 | NJR1-CO-EE-IN-620, NJR1-DE-LL-EE-120 | 19d | 0d | Lighting Fixtures and Their Switches [0.03]; Electrician [96 h] | 6,354.67 | 5 |
| NJR1-CO-EE-IN-990 |  | Workshop 12 - Install Lighting fixtures and their switches | 12d | 2026-10-13 | 2026-10-26 | NJR1-CO-EE-IN-630, NJR1-DE-LL-EE-120 | 19d | 0d | Lighting Fixtures and Their Switches [0.03]; Electrician [96 h] | 6,354.67 | 5 |
| NJR1-CO-EE-IN-840 |  | Mosque - Install Lighting fixtures and their switches | 12d | 2026-11-03 | 2026-11-16 | NJR1-CO-EE-IN-480, NJR1-DE-LL-EE-120 | 1d | 0d | Lighting Fixtures and Their Switches [0.03]; Electrician [96 h] | 6,354.67 | 5 |
| NJR1-CO-EE-IN-850 |  | EE Room 1 - Install Lighting fixtures and their switches | 12d | 2026-11-03 | 2026-11-16 | NJR1-CO-EE-IN-490, NJR1-DE-LL-EE-120 | 1d | 0d | Lighting Fixtures and Their Switches [0.03]; Electrician [96 h] | 6,354.67 | 5 |
| NJR1-CO-EE-IN-860 |  | EE Room 2 - Install Lighting fixtures and their switches | 12d | 2026-11-03 | 2026-11-16 | NJR1-CO-EE-IN-500, NJR1-DE-LL-EE-120 | 1d | 0d | Lighting Fixtures and Their Switches [0.03]; Electrician [96 h] | 6,354.67 | 5 |
| NJR1-CO-EE-IN-820 |  | Toilet 1 - Install Lighting fixtures and their switches | 12d | 2026-11-04 | 2026-11-17 | NJR1-CO-EE-IN-460, NJR1-DE-LL-EE-120 | 0d |  | Lighting Fixtures and Their Switches [0.03]; Electrician [96 h] | 6,354.67 | 5 |
| NJR1-CO-EE-IN-830 |  | Toilet 2 - Install Lighting fixtures and their switches | 12d | 2026-11-04 | 2026-11-17 | NJR1-CO-EE-IN-470, NJR1-DE-LL-EE-120 | 0d |  | Lighting Fixtures and Their Switches [0.03]; Electrician [96 h] | 6,354.67 | 5 |
| NJR1-CO-EE-IN-870 |  | Outside Mosque - Install Lighting fixtures and their switches | 12d | 2026-11-04 | 2026-11-17 | NJR1-CO-EE-IN-510, NJR1-DE-LL-EE-120 | 0d |  | Lighting Fixtures and Their Switches [0.03]; Electrician [96 h] | 6,354.67 | 5 |

| ID | WBS | Activity | Duration | Start | Finish | Predecessors | Total float | Free float | Resources | Cost | WBS-BOQ |
| --- | --- | --- | --- | --- | --- | --- | --- | --- | --- | --- | --- |
|  | 6 | **Telecom & Data System** |  | 2026-09-06 | 2026-10-19 |  |  |  |  |  |  |
| NJR1-CO-EE-IN-1000 |  | Workshop 1 - Install Telecom & Data System | 12d | 2026-09-06 | 2026-09-19 | NJR1-DE-SL-EE160, NJR1-CO-EE-IN-160 | 50d | 24d | Telecom & Data System [0.05]; Electrician [192 h] | 9,920 | 6 |
| NJR1-CO-EE-IN-1010 |  | Workshop 2 - Install Telecom & Data System | 12d | 2026-09-06 | 2026-09-19 | NJR1-DE-SL-EE160, NJR1-CO-EE-IN-170 | 50d | 24d | Telecom & Data System [0.05]; Electrician [192 h] | 9,920 | 6 |
| NJR1-CO-EE-IN-1020 |  | Workshop 3 - Install Telecom & Data System | 12d | 2026-09-12 | 2026-09-26 | NJR1-DE-SL-EE160, NJR1-CO-EE-IN-180 | 45d | 19d | Telecom & Data System [0.05]; Electrician [192 h] | 9,920 | 6 |
| NJR1-CO-EE-IN-1030 |  | Workshop 4 - Install Telecom & Data System | 12d | 2026-09-12 | 2026-09-26 | NJR1-DE-SL-EE160, NJR1-CO-EE-IN-190 | 45d | 19d | Telecom & Data System [0.05]; Electrician [192 h] | 9,920 | 6 |
| NJR1-CO-EE-IN-1040 |  | Workshop 5 - Install Telecom & Data System | 12d | 2026-09-17 | 2026-10-01 | NJR1-DE-SL-EE160, NJR1-CO-EE-IN-200 | 40d | 14d | Telecom & Data System [0.05]; Electrician [192 h] | 9,920 | 6 |
| NJR1-CO-EE-IN-1050 |  | Workshop 6 - Install Telecom & Data System | 12d | 2026-09-17 | 2026-10-01 | NJR1-DE-SL-EE160, NJR1-CO-EE-IN-210 | 40d | 14d | Telecom & Data System [0.05]; Electrician [192 h] | 9,920 | 6 |
| NJR1-CO-EE-IN-1060 |  | Workshop 7 - Install Telecom & Data System | 12d | 2026-09-24 | 2026-10-07 | NJR1-DE-SL-EE160, NJR1-CO-EE-IN-220 | 35d | 9d | Telecom & Data System [0.05]; Electrician [192 h] | 9,920 | 6 |
| NJR1-CO-EE-IN-1070 |  | Workshop 8 - Install Telecom & Data System | 12d | 2026-09-24 | 2026-10-07 | NJR1-DE-SL-EE160, NJR1-CO-EE-IN-230 | 35d | 9d | Telecom & Data System [0.05]; Electrician [192 h] | 9,920 | 6 |
| NJR1-CO-EE-IN-1080 |  | Workshop 9 - Install Telecom & Data System | 12d | 2026-09-30 | 2026-10-13 | NJR1-DE-SL-EE160, NJR1-CO-EE-IN-240 | 30d | 6d | Telecom & Data System [0.05]; Electrician [192 h] | 9,920 | 6 |
| NJR1-CO-EE-IN-1090 |  | Workshop 10 - Install Telecom & Data System | 12d | 2026-09-30 | 2026-10-13 | NJR1-DE-SL-EE160, NJR1-CO-EE-IN-250 | 30d | 6d | Telecom & Data System [0.05]; Electrician [192 h] | 9,920 | 6 |
| NJR1-CO-EE-IN-1100 |  | Workshop 11 - Install Telecom & Data System | 12d | 2026-10-06 | 2026-10-19 | NJR1-DE-SL-EE160, NJR1-CO-EE-IN-260 | 25d | 6d | Telecom & Data System [0.05]; Electrician [192 h] | 9,920 | 6 |
| NJR1-CO-EE-IN-1110 |  | Workshop 12 - Install Telecom & Data System | 12d | 2026-10-06 | 2026-10-19 | NJR1-DE-SL-EE160, NJR1-CO-EE-IN-270 | 25d | 6d | Telecom & Data System [0.05]; Electrician [192 h] | 9,920 | 6 |
|  | 7 | **Grounding System** |  | 2026-08-18 | 2026-10-22 |  |  |  |  |  |  |
| NJR1-CO-EE-IN-1180 |  | Workshop 1 - Install Grounding | 6d | 2026-08-18 | 2026-08-24 | NJR1-DE-SL-EE170, NJR1-CO-PR-120, NJR1-MI-BM-110, NJR1-MI-BM-130 | 19d | 0d | Grounding System [0.03]; Electrician [96 h] | 1,760 | 7 |
| NJR1-CO-EE-IN-1190 |  | Workshop 2 - Install Grounding | 6d | 2026-08-18 | 2026-08-24 | NJR1-DE-SL-EE170, NJR1-CO-EE-IN-1180 SS, NJR1-MI-BM-110 | 19d | 0d | Grounding System [0.03]; Electrician [96 h] | 1,760 | 7 |
| NJR1-CO-EE-IN-1200 |  | Workshop 3 - Install Grounding | 6d | 2026-08-18 | 2026-08-24 | NJR1-DE-SL-EE170, NJR1-CO-EE-IN-1190 SS, NJR1-MI-BM-110 | 24d | 0d | Grounding System [0.03]; Electrician [96 h] | 1,760 | 7 |
| NJR1-CO-EE-IN-1210 |  | Workshop 4 - Install Grounding | 6d | 2026-08-18 | 2026-08-24 | NJR1-DE-SL-EE170, NJR1-CO-EE-IN-1200 SS, NJR1-MI-BM-110 | 24d | 0d | Grounding System [0.03]; Electrician [96 h] | 1,760 | 7 |
| NJR1-CO-EE-IN-1220 |  | Workshop 5 - Install Grounding | 6d | 2026-08-18 | 2026-08-24 | NJR1-DE-SL-EE170, NJR1-CO-EE-IN-1210 SS, NJR1-MI-BM-110 | 29d | 0d | Grounding System [0.03]; Electrician [96 h] | 1,760 | 7 |
| NJR1-CO-EE-IN-1230 |  | Workshop 6 - Install Grounding | 6d | 2026-08-18 | 2026-08-24 | NJR1-DE-SL-EE170, NJR1-CO-EE-IN-1220 SS, NJR1-MI-BM-110 | 29d | 0d | Grounding System [0.03]; Electrician [96 h] | 1,760 | 7 |
| NJR1-CO-EE-IN-1240 |  | Workshop 7 - Install Grounding | 6d | 2026-08-18 | 2026-08-24 | NJR1-DE-SL-EE170, NJR1-CO-EE-IN-1230 SS, NJR1-MI-BM-110 | 34d | 0d | Grounding System [0.03]; Electrician [96 h] | 1,760 | 7 |
| NJR1-CO-EE-IN-1250 |  | Workshop 8 - Install Grounding | 6d | 2026-08-18 | 2026-08-24 | NJR1-DE-SL-EE170, NJR1-CO-EE-IN-1240 SS, NJR1-MI-BM-110 | 34d | 0d | Grounding System [0.03]; Electrician [96 h] | 1,760 | 7 |
| NJR1-CO-EE-IN-1260 |  | Workshop 9 - Install Grounding | 6d | 2026-08-18 | 2026-08-24 | NJR1-DE-SL-EE170, NJR1-CO-EE-IN-1250 SS, NJR1-MI-BM-110 | 39d | 0d | Grounding System [0.03]; Electrician [96 h] | 1,760 | 7 |
| NJR1-CO-EE-IN-1270 |  | Workshop 10 - Install Grounding | 6d | 2026-08-18 | 2026-08-24 | NJR1-DE-SL-EE170, NJR1-CO-EE-IN-1260 SS, NJR1-MI-BM-110 | 39d | 0d | Grounding System [0.03]; Electrician [96 h] | 1,760 | 7 |
| NJR1-CO-EE-IN-1280 |  | Workshop 11 - Install Grounding | 6d | 2026-08-18 | 2026-08-24 | NJR1-DE-SL-EE170, NJR1-CO-EE-IN-1270 SS, NJR1-MI-BM-110 | 44d | 0d | Grounding System [0.03]; Electrician [96 h] | 1,760 | 7 |
| NJR1-CO-EE-IN-1290 |  | Workshop 12 - Install Grounding | 6d | 2026-08-18 | 2026-08-24 | NJR1-DE-SL-EE170, NJR1-CO-EE-IN-1280 SS, NJR1-MI-BM-110 | 44d | 0d | Grounding System [0.03]; Electrician [96 h] | 1,760 | 7 |
| NJR1-CO-EE-IN-1140 |  | Mosque - Install Grounding | 6d | 2026-10-08 | 2026-10-14 | NJR1-DE-SL-EE170, NJR1-CO-FW-390, NJR1-MI-BM-110 | 1d | 0d | Grounding System [0.03]; Electrician [96 h] | 1,760 | 7 |
| NJR1-CO-EE-IN-1150 |  | EE Room 1 - Install Grounding | 6d | 2026-10-08 | 2026-10-14 | NJR1-DE-SL-EE170, NJR1-CO-FW-400, NJR1-MI-BM-110 | 1d | 0d | Grounding System [0.03]; Electrician [96 h] | 1,760 | 7 |
| NJR1-CO-EE-IN-1160 |  | EE Room 2 - Install Grounding | 6d | 2026-10-08 | 2026-10-14 | NJR1-DE-SL-EE170, NJR1-CO-FW-410, NJR1-MI-BM-110 | 1d | 0d | Grounding System [0.03]; Electrician [96 h] | 1,760 | 7 |
| NJR1-CO-EE-IN-1170 |  | Outside Mosque - Install Grounding | 6d | 2026-10-10 | 2026-10-15 | NJR1-DE-SL-EE170, NJR1-CO-SW-190, NJR1-CO-FW-420, NJR1-MI-BM-110 | 0d |  | Grounding System [0.03]; Electrician [96 h] | 1,760 | 7 |
| NJR1-CO-EE-IN-1120 |  | Toilet 1 - Install Grounding | 6d | 2026-10-17 | 2026-10-22 | NJR1-DE-SL-EE170, NJR1-CO-FW-370, NJR1-MI-BM-110 | 0d |  | Grounding System [0.03]; Electrician [96 h] | 1,760 | 7 |
| NJR1-CO-EE-IN-1130 |  | Toilet 2 - Install Grounding | 6d | 2026-10-17 | 2026-10-22 | NJR1-DE-SL-EE170, NJR1-CO-FW-380, NJR1-MI-BM-110 | 0d |  | Grounding System [0.03]; Electrician [96 h] | 1,760 | 7 |

| ID | WBS | Activity | Duration | Start | Finish | Predecessors | Total float | Free float | Resources | Cost | WBS-BOQ |
| --- | --- | --- | --- | --- | --- | --- | --- | --- | --- | --- | --- |
|  | 8 | **Lightning Protection System** |  | 2026-10-10 | 2026-11-01 |  |  |  |  |  |  |
| NJR1-CO-EE-IN-1300 |  | Install Lightning Protection System for each block | 20d | 2026-10-10 | 2026-11-01 | NJR1-CO-PR-110, NJR1-DE-SL-EE180 | 32d |  | Lightning Protection System [1.2]; Electrician [320 h] | 24,000 | 8 |
|  | 9 | **Fire Alarm System** |  | 2026-11-02 | 2026-12-08 |  |  |  |  |  |  |
| NJR1-CO-EE-IN-1370 |  | Workshop 1 - Install Fire alarm system | 6d | 2026-11-02 | 2026-11-08 | NJR1-CO-EE-IN-700 | 26d |  | Fire Alarm System [0.03]; Electrician [96 h] | 3,542.67 | 9 |
| NJR1-CO-EE-IN-1380 |  | Workshop 2 - Install Fire alarm system | 6d | 2026-11-02 | 2026-11-08 | NJR1-CO-EE-IN-710 | 26d |  | Fire Alarm System [0.03]; Electrician [96 h] | 3,542.67 | 9 |
| NJR1-CO-EE-IN-1390 |  | Workshop 3 - Install Fire alarm system | 6d | 2026-11-02 | 2026-11-08 | NJR1-CO-EE-IN-720 | 26d |  | Fire Alarm System [0.03]; Electrician [96 h] | 3,542.67 | 9 |
| NJR1-CO-EE-IN-1400 |  | Workshop 4 - Install Fire alarm system | 6d | 2026-11-02 | 2026-11-08 | NJR1-CO-EE-IN-730 | 26d |  | Fire Alarm System [0.03]; Electrician [96 h] | 3,542.67 | 9 |
| NJR1-CO-EE-IN-1410 |  | Workshop 5 - Install Fire alarm system | 6d | 2026-11-02 | 2026-11-08 | NJR1-CO-EE-IN-740 | 26d |  | Fire Alarm System [0.03]; Electrician [96 h] | 3,542.67 | 9 |
| NJR1-CO-EE-IN-1420 |  | Workshop 6 - Install Fire alarm system | 6d | 2026-11-02 | 2026-11-08 | NJR1-CO-EE-IN-750 | 26d |  | Fire Alarm System [0.03]; Electrician [96 h] | 3,542.67 | 9 |
| NJR1-CO-EE-IN-1430 |  | Workshop 7 - Install Fire alarm system | 6d | 2026-11-02 | 2026-11-08 | NJR1-CO-EE-IN-760 | 26d |  | Fire Alarm System [0.03]; Electrician [96 h] | 3,542.67 | 9 |
| NJR1-CO-EE-IN-1440 |  | Workshop 8 - Install Fire alarm system | 6d | 2026-11-02 | 2026-11-08 | NJR1-CO-EE-IN-770 | 26d |  | Fire Alarm System [0.03]; Electrician [96 h] | 3,542.67 | 9 |
| NJR1-CO-EE-IN-1450 |  | Workshop 9 - Install Fire alarm system | 6d | 2026-11-04 | 2026-11-10 | NJR1-CO-EE-IN-780 | 24d |  | Fire Alarm System [0.03]; Electrician [96 h] | 3,542.67 | 9 |
| NJR1-CO-EE-IN-1460 |  | Workshop 10 - Install Fire alarm system | 6d | 2026-11-04 | 2026-11-10 | NJR1-CO-EE-IN-790 | 24d |  | Fire Alarm System [0.03]; Electrician [96 h] | 3,542.67 | 9 |
| NJR1-CO-EE-IN-1470 |  | Workshop 11 - Install Fire alarm system | 6d | 2026-11-10 | 2026-11-16 | NJR1-CO-EE-IN-800 | 19d |  | Fire Alarm System [0.03]; Electrician [96 h] | 3,542.67 | 9 |
| NJR1-CO-EE-IN-1480 |  | Workshop 12 - Install Fire alarm system | 6d | 2026-11-10 | 2026-11-16 | NJR1-CO-EE-IN-810 | 19d |  | Fire Alarm System [0.03]; Electrician [96 h] | 3,542.67 | 9 |
| NJR1-CO-EE-IN-1330 |  | Mosque - Install Fire alarm system | 6d | 2026-12-01 | 2026-12-07 | NJR1-CO-EE-IN-660, NJR1-DE-LL-EE-130 | 1d |  | Fire Alarm System [0.03]; Electrician [240 h] | 3,542.67 | 9 |
| NJR1-CO-EE-IN-1340 |  | EE Room 1 - Install Fire alarm system | 6d | 2026-12-01 | 2026-12-07 | NJR1-CO-EE-IN-670, NJR1-DE-LL-EE-130 | 1d |  | Fire Alarm System [0.03]; Electrician [240 h] | 3,542.67 | 9 |
| NJR1-CO-EE-IN-1350 |  | EE Room 2 - Install Fire alarm system | 6d | 2026-12-01 | 2026-12-07 | NJR1-CO-EE-IN-680, NJR1-DE-LL-EE-130 | 1d |  | Fire Alarm System [0.03]; Electrician [240 h] | 3,542.67 | 9 |
| NJR1-CO-EE-IN-1310 |  | Toilet 1 - Install Fire alarm system | 6d | 2026-12-02 | 2026-12-08 | NJR1-CO-EE-IN-640, NJR1-DE-LL-EE-130 | 0d |  | Fire Alarm System [0.03]; Electrician [240 h] | 3,542.67 | 9 |
| NJR1-CO-EE-IN-1320 |  | Toilet 2 - Install Fire alarm system | 6d | 2026-12-02 | 2026-12-08 | NJR1-CO-EE-IN-650, NJR1-DE-LL-EE-130 | 0d |  | Fire Alarm System [0.03]; Electrician [240 h] | 3,542.67 | 9 |
| NJR1-CO-EE-IN-1360 |  | Outside Mosque - Install Fire alarm system | 6d | 2026-12-02 | 2026-12-08 | NJR1-CO-EE-IN-690, NJR1-DE-LL-EE-130 | 0d |  | Fire Alarm System [0.03]; Electrician [240 h] | 3,542.67 | 9 |
|  | 10 | **Sockets, outlets, and wiring devices** |  | 2026-10-19 | 2026-11-26 |  |  |  |  |  |  |
| NJR1-CO-EE-IN-1550 |  | Workshop 1 - Install sockets, outlets, and wiring devices | 8d | 2026-10-19 | 2026-10-27 | NJR1-CO-EE-IN-880, NJR1-DE-SL-EE190, NJR1-CO-EE-IN-1000 | 26d | 0d | Sockets, outlets, and wiring devices [0.03]; Electrician [128 h] | 3,266.9 | 10 |
| NJR1-CO-EE-IN-1560 |  | Workshop 2 - Install sockets, outlets, and wiring devices | 8d | 2026-10-19 | 2026-10-27 | NJR1-CO-EE-IN-890, NJR1-DE-SL-EE190, NJR1-CO-EE-IN-1010 | 26d | 0d | Sockets, outlets, and wiring devices [0.03]; Electrician [128 h] | 3,266.9 | 10 |
| NJR1-CO-EE-IN-1570 |  | Workshop 3 - Install sockets, outlets, and wiring devices | 8d | 2026-10-19 | 2026-10-27 | NJR1-CO-EE-IN-900, NJR1-DE-SL-EE190, NJR1-CO-EE-IN-1020 | 26d | 0d | Sockets, outlets, and wiring devices [0.03]; Electrician [128 h] | 3,266.9 | 10 |
| NJR1-CO-EE-IN-1580 |  | Workshop 4 - Install sockets, outlets, and wiring devices | 8d | 2026-10-19 | 2026-10-27 | NJR1-CO-EE-IN-910, NJR1-DE-SL-EE190, NJR1-CO-EE-IN-1030 | 26d | 0d | Sockets, outlets, and wiring devices [0.03]; Electrician [128 h] | 3,266.9 | 10 |
| NJR1-CO-EE-IN-1590 |  | Workshop 5 - Install sockets, outlets, and wiring devices | 8d | 2026-10-19 | 2026-10-27 | NJR1-CO-EE-IN-920, NJR1-DE-SL-EE190, NJR1-CO-EE-IN-1040 | 26d | 0d | Sockets, outlets, and wiring devices [0.03]; Electrician [128 h] | 3,266.9 | 10 |
| NJR1-CO-EE-IN-1600 |  | Workshop 6 - Install sockets, outlets, and wiring devices | 8d | 2026-10-19 | 2026-10-27 | NJR1-CO-EE-IN-930, NJR1-DE-SL-EE190, NJR1-CO-EE-IN-1050 | 26d | 0d | Sockets, outlets, and wiring devices [0.03]; Electrician [128 h] | 3,266.9 | 10 |
| NJR1-CO-EE-IN-1610 |  | Workshop 7 - Install sockets, outlets, and wiring devices | 8d | 2026-10-19 | 2026-10-27 | NJR1-CO-EE-IN-940, NJR1-DE-SL-EE190, NJR1-CO-EE-IN-1060 | 26d | 0d | Sockets, outlets, and wiring devices [0.03]; Electrician [128 h] | 3,266.9 | 10 |
| NJR1-CO-EE-IN-1620 |  | Workshop 8 - Install sockets, outlets, and wiring devices | 8d | 2026-10-19 | 2026-10-27 | NJR1-CO-EE-IN-950, NJR1-DE-SL-EE190, NJR1-CO-EE-IN-1070 | 26d | 0d | Sockets, outlets, and wiring devices [0.03]; Electrician [128 h] | 3,266.9 | 10 |
| NJR1-CO-EE-IN-1630 |  | Workshop 9 - Install sockets, outlets, and wiring devices | 8d | 2026-10-21 | 2026-10-29 | NJR1-CO-EE-IN-960, NJR1-DE-SL-EE190, NJR1-CO-EE-IN-1080 | 24d | 0d | Sockets, outlets, and wiring devices [0.03]; Electrician [128 h] | 3,266.9 | 10 |
| NJR1-CO-EE-IN-1640 |  | Workshop 10 - Install sockets, outlets, and wiring devices | 8d | 2026-10-21 | 2026-10-29 | NJR1-CO-EE-IN-970, NJR1-DE-SL-EE190, NJR1-CO-EE-IN-1090 | 24d | 0d | Sockets, outlets, and wiring devices [0.03]; Electrician [128 h] | 3,266.9 | 10 |
| NJR1-CO-EE-IN-1650 |  | Workshop 11 - Install sockets, outlets, and wiring devices | 8d | 2026-10-27 | 2026-11-04 | NJR1-CO-EE-IN-980, NJR1-DE-SL-EE190, NJR1-CO-EE-IN-1100 | 19d | 0d | Sockets, outlets, and wiring devices [0.03]; Electrician [128 h] | 3,266.9 | 10 |
| NJR1-CO-EE-IN-1660 |  | Workshop 12 - Install sockets, outlets, and wiring devices | 8d | 2026-10-27 | 2026-11-04 | NJR1-CO-EE-IN-990, NJR1-DE-SL-EE190, NJR1-CO-EE-IN-1110 | 19d | 0d | Sockets, outlets, and wiring devices [0.03]; Electrician [128 h] | 3,266.9 | 10 |
| NJR1-CO-EE-IN-1510 |  | Mosque - Install sockets, outlets, and wiring devices | 8d | 2026-11-17 | 2026-11-25 | NJR1-CO-EE-IN-840, NJR1-DE-SL-EE190 | 1d | 0d | Sockets, outlets, and wiring devices [0.03]; Electrician [128 h] | 3,266.9 | 10 |
| NJR1-CO-EE-IN-1520 |  | EE Room 1 - Install sockets, outlets, and wiring devices | 8d | 2026-11-17 | 2026-11-25 | NJR1-CO-EE-IN-850, NJR1-DE-SL-EE190, NJR1-CO-FW-520 | 1d | 0d | Sockets, outlets, and wiring devices [0.03]; Electrician [128 h] | 3,266.9 | 10 |
| NJR1-CO-EE-IN-1530 |  | EE Room 2 - Install sockets, outlets, and wiring devices | 8d | 2026-11-17 | 2026-11-25 | NJR1-CO-EE-IN-860, NJR1-DE-SL-EE190, NJR1-CO-FW-530 | 1d | 0d | Sockets, outlets, and wiring devices [0.03]; Electrician [128 h] | 3,266.9 | 10 |
| NJR1-CO-EE-IN-1490 |  | Toilet 1 - Install sockets, outlets, and wiring devices | 8d | 2026-11-18 | 2026-11-26 | NJR1-CO-EE-IN-820, NJR1-DE-SL-EE190 | 0d |  | Sockets, outlets, and wiring devices [0.03]; Electrician [128 h] | 3,266.9 | 10 |
| NJR1-CO-EE-IN-1500 |  | Toilet 2 - Install sockets, outlets, and wiring devices | 8d | 2026-11-18 | 2026-11-26 | NJR1-CO-EE-IN-830, NJR1-DE-SL-EE190 | 0d |  | Sockets, outlets, and wiring devices [0.03]; Electrician [128 h] | 3,266.9 | 10 |
| NJR1-CO-EE-IN-1540 |  | Outside Mosque - Install sockets, outlets, and wiring devices | 8d | 2026-11-18 | 2026-11-26 | NJR1-CO-EE-IN-870, NJR1-DE-SL-EE190 | 0d |  | Sockets, outlets, and wiring devices [0.03]; Electrician [128 h] | 3,266.9 | 10 |

| ID | WBS | Activity | Duration | Start | Finish | Predecessors | Total float | Free float | Resources | Cost | WBS-BOQ |
| --- | --- | --- | --- | --- | --- | --- | --- | --- | --- | --- | --- |
|  | 11 | **Solar Power Plant** |  | 2026-08-18 | 2026-11-24 |  |  |  |  |  |  |
| NJR1-CO-EE-IN-1670 |  | Workshop 1 - Install Solar Power Plant | 7d | 2026-08-18 | 2026-08-25 | NJR1-DE-LL-EE-140, NJR1-CO-PR-110 | 12d | 0d | Solar Power Plant [0.6]; Electrician [112 h] | 22,080 | 11 |
| NJR1-CO-EE-IN-1680 |  | Workshop 2 - Install Solar Power Plant | 7d | 2026-08-26 | 2026-09-02 | NJR1-DE-LL-EE-140, NJR1-CO-EE-IN-1670 | 12d | 0d | Solar Power Plant [0.6]; Electrician [112 h] | 22,080 | 11 |
| NJR1-CO-EE-IN-1690 |  | Workshop 3 - Install Solar Power Plant | 7d | 2026-09-03 | 2026-09-10 | NJR1-DE-LL-EE-140, NJR1-CO-EE-IN-1680 | 12d | 0d | Solar Power Plant [0.6]; Electrician [112 h] | 22,080 | 11 |
| NJR1-CO-EE-IN-1700 |  | Workshop 4 - Install Solar Power Plant | 7d | 2026-09-12 | 2026-09-19 | NJR1-DE-LL-EE-140, NJR1-CO-EE-IN-1690 | 12d | 0d | Solar Power Plant [0.6]; Electrician [112 h] | 22,080 | 11 |
| NJR1-CO-EE-IN-1710 |  | Workshop 5 - Install Solar Power Plant | 7d | 2026-09-20 | 2026-09-28 | NJR1-DE-LL-EE-140, NJR1-CO-EE-IN-1700 | 12d | 0d | Solar Power Plant [0.6]; Electrician [112 h] | 22,080 | 11 |
| NJR1-CO-EE-IN-1720 |  | Workshop 6 - Install Solar Power Plant | 7d | 2026-09-29 | 2026-10-06 | NJR1-DE-LL-EE-140, NJR1-CO-EE-IN-1710 | 12d | 0d | Solar Power Plant [0.6]; Electrician [112 h] | 22,080 | 11 |
| NJR1-CO-EE-IN-1730 |  | Workshop 7 - Install Solar Power Plant | 7d | 2026-10-07 | 2026-10-14 | NJR1-DE-LL-EE-140, NJR1-CO-EE-IN-1720 | 12d | 0d | Solar Power Plant [0.6]; Electrician [112 h] | 22,080 | 11 |
| NJR1-CO-EE-IN-1740 |  | Workshop 8 - Install Solar Power Plant | 7d | 2026-10-15 | 2026-10-22 | NJR1-DE-LL-EE-140, NJR1-CO-EE-IN-1730 | 12d | 0d | Solar Power Plant [0.6]; Electrician [112 h] | 22,080 | 11 |
| NJR1-CO-EE-IN-1750 |  | Workshop 9 - Install Solar Power Plant | 7d | 2026-10-24 | 2026-10-31 | NJR1-DE-LL-EE-140, NJR1-CO-EE-IN-1740 | 12d | 0d | Solar Power Plant [0.6]; Electrician [112 h] | 22,080 | 11 |
| NJR1-CO-EE-IN-1760 |  | Workshop 10 - Install Solar Power Plant | 7d | 2026-11-01 | 2026-11-08 | NJR1-DE-LL-EE-140, NJR1-CO-EE-IN-1750 | 12d | 0d | Solar Power Plant [0.6]; Electrician [112 h] | 22,080 | 11 |
| NJR1-CO-EE-IN-1770 |  | Workshop 11 - Install Solar Power Plant | 7d | 2026-11-09 | 2026-11-16 | NJR1-DE-LL-EE-140, NJR1-CO-EE-IN-1760 | 12d | 0d | Solar Power Plant [0.6]; Electrician [112 h] | 22,080 | 11 |
| NJR1-CO-EE-IN-1780 |  | Workshop 12 - Install Solar Power Plant | 7d | 2026-11-17 | 2026-11-24 | NJR1-DE-LL-EE-140, NJR1-CO-EE-IN-1770 | 12d |  | Solar Power Plant [0.6]; Electrician [112 h] | 22,080 | 11 |
|  | 12 | **Skylight Fixtures** |  | 2026-08-18 | 2026-11-24 |  |  |  |  |  |  |
| NJR1-CO-EE-IN-1790 |  | Workshop 1 - Install Skylight fixtures | 7d | 2026-08-18 | 2026-08-25 | NJR1-DE-LL-EE-150, NJR1-CO-PR-110 | 12d | 0d | Skylight Fixtures [1.2]; Electrician [112 h] | 3,168 | 12 |
| NJR1-CO-EE-IN-1800 |  | Workshop 2 - Install Skylight fixtures | 7d | 2026-08-26 | 2026-09-02 | NJR1-DE-LL-EE-150, NJR1-CO-EE-IN-1790 | 12d | 0d | Skylight Fixtures [1.2]; Electrician [112 h] | 3,168 | 12 |
| NJR1-CO-EE-IN-1810 |  | Workshop 3 - Install Skylight fixtures | 7d | 2026-09-03 | 2026-09-10 | NJR1-DE-LL-EE-150, NJR1-CO-EE-IN-1800 | 12d | 0d | Skylight Fixtures [1.2]; Electrician [112 h] | 3,168 | 12 |
| NJR1-CO-EE-IN-1820 |  | Workshop 4 - Install Skylight fixtures | 7d | 2026-09-12 | 2026-09-19 | NJR1-DE-LL-EE-150, NJR1-CO-EE-IN-1810 | 12d | 0d | Skylight Fixtures [1.2]; Electrician [112 h] | 3,168 | 12 |
| NJR1-CO-EE-IN-1830 |  | Workshop 5 - Install Skylight fixtures | 7d | 2026-09-20 | 2026-09-28 | NJR1-DE-LL-EE-150, NJR1-CO-EE-IN-1820 | 12d | 0d | Skylight Fixtures [1.2]; Electrician [112 h] | 3,168 | 12 |
| NJR1-CO-EE-IN-1840 |  | Workshop 6 - Install Skylight fixtures | 7d | 2026-09-29 | 2026-10-06 | NJR1-DE-LL-EE-150, NJR1-CO-EE-IN-1830 | 12d | 0d | Skylight Fixtures [1.2]; Electrician [112 h] | 3,168 | 12 |
| NJR1-CO-EE-IN-1850 |  | Workshop 7 - Install Skylight fixtures | 7d | 2026-10-07 | 2026-10-14 | NJR1-DE-LL-EE-150, NJR1-CO-EE-IN-1840 | 12d | 0d | Skylight Fixtures [1.2]; Electrician [112 h] | 3,168 | 12 |
| NJR1-CO-EE-IN-1860 |  | Workshop 8 - Install Skylight fixtures | 7d | 2026-10-15 | 2026-10-22 | NJR1-DE-LL-EE-150, NJR1-CO-EE-IN-1850 | 12d | 0d | Skylight Fixtures [1.2]; Electrician [112 h] | 3,168 | 12 |
| NJR1-CO-EE-IN-1870 |  | Workshop 9 - Install Skylight fixtures | 7d | 2026-10-24 | 2026-10-31 | NJR1-DE-LL-EE-150, NJR1-CO-EE-IN-1860 | 12d | 0d | Skylight Fixtures [1.2]; Electrician [112 h] | 3,168 | 12 |
| NJR1-CO-EE-IN-1880 |  | Workshop 10 - Install Skylight fixtures | 7d | 2026-11-01 | 2026-11-08 | NJR1-DE-LL-EE-150, NJR1-CO-EE-IN-1870 | 12d | 0d | Skylight Fixtures [1.2]; Electrician [112 h] | 3,168 | 12 |
| NJR1-CO-EE-IN-1890 |  | Workshop 11 - Install Skylight fixtures | 7d | 2026-11-09 | 2026-11-16 | NJR1-DE-LL-EE-150, NJR1-CO-EE-IN-1880 | 12d | 0d | Skylight Fixtures [1.2]; Electrician [112 h] | 3,168 | 12 |
| NJR1-CO-EE-IN-1900 |  | Workshop 12 - Install Skylight fixtures | 7d | 2026-11-17 | 2026-11-24 | NJR1-DE-LL-EE-150, NJR1-CO-EE-IN-1890 | 12d |  | Skylight Fixtures [1.2]; Electrician [112 h] | 3,168 | 12 |

| ID | WBS | Activity | Duration | Start | Finish | Predecessors | Total float | Resources | Cost |
| --- | --- | --- | --- | --- | --- | --- | --- | --- | --- |
|  | 6 | **CLOSE-OUT** |  | 2026-12-09 | 2027-01-02 |  |  |  |  |
|  | 1 | **Test & Commission** |  | 2026-12-09 | 2026-12-19 |  |  |  |  |
| NJR1-CL-TC-100 |  | Test & Commission Site Works | 9d | 2026-12-09 | 2026-12-19 | NJR1-MI-CM-170 | 0d | Excavation [114.8]; Street lighting poles relocation [0.2]; Demolition of the existing curbstone [3]; Demolition of the existing interlock [4]; Relocating of existing Trees [0.2]; Backfilling [261.5]; Bituminous wearing course asphalt layer [21.7]; Bituminous base course asphalt layer [30.4]; Base course layer [86.7]; Subgrade material [130]; Retroreflective Thermoplastic White Traffic lines [0.1]; Retroreflective Thermoplastic Yellow Traffic lines [0.1]; Concrete parking bumper with dimensions 1800*150*100 mm [4.2]; Interlocking pedstrian paving blocks [132.6]; Install traffic signs aluminum sheet, (breakaway) Single post I.P.E. [2.5]; Kerb type K1A [102.9]; Kerb type K1B [25.7]; Kerb type K3 [0.8]; General Labor [320 h] | 106,743 |
| NJR1-CL-TC-110 |  | Test & Commission Concrete Works | 9d | 2026-12-09 | 2026-12-19 | NJR1-MI-CM-170 | 0d | Lean Concrete [16.8]; Isolated Footings [12.6]; Grade beams [15.9]; Tank Footing [4.9]; Pedestal [3.3]; GRP Water Tank and Pump Shed - Concrete Pad [0.3]; Toilet, Mosque & EE Room - Roof Slab [1.5]; Toilet, Mosque & EE Room - Roof Beam [0.9]; GRP Water Tank and Pump Shed - SOG [2]; Underground Septic Tank - Wall [2.5]; Underground Septic Tank - Slab [1]; 150 mm thk concrete floor slab on grade [30.7]; Autoclaved aerated panel [5.5]; Electrical substation - Foundation [0.2]; General Labor [320 h] | 88,765 |
| NJR1-CL-TC-120 |  | Test & Commission Masonry Works | 9d | 2026-12-09 | 2026-12-19 | NJR1-MI-CM-170 | 0d | Install CMU wall at internal walls (100mm thick) [3.4]; Install CMU wall at internal walls (200mm thick) [20]; Install CMU wall at external walls (200mm thick insulated) [12]; Install CMU wall at electrical room (200mm thick, 2 hr fire rated) [9]; Mason [320 h] | 4,172 |
| NJR1-CL-TC-130 |  | Test & Commission Metal Works | 9d | 2026-12-09 | 2026-12-19 | NJR1-MI-CM-170 | 0d | Steel ladder with safety cage [0.1]; Steel bollards 1135mm height [2.4]; Galvanised steel gratings 400mm wide*4000mm long [1.2]; Overflow galvanized steel roof scupper [1.2]; General Labor [320 h] | 7,260 |
| NJR1-CL-TC-140 |  | Test & Commission Thermal & Moisture Protection | 9d | 2026-12-09 | 2026-12-19 | NJR1-MI-CM-170 | 0d | 2 coats of bitumen waterproofing paint on concrete surface [197.2]; 250 micron thk polyethylene sheet under grade slab and footings [214.8]; Anti termite under all concrete in touch with earth [218.6]; Liquid applied waterproofing membrane for toilets [8]; Geotextile sheet [8]; Polyurethane waterpoof coating to internal surfaces of concrete trench [1.9]; 4mm thick APP modified bituminous membrane [13.1]; 50mm thk rigid insulation [13.1]; Foam concrete screed 50mm thk [13.1]; 300 micron polyethylene sheet [13.1]; 50mm thk loose gravel toppings [13.1]; High density polyisocynurate cover board (12.7mm) [13.1]; Geotextile sheets (200 g/m2) [13.1]; 3mm thk extruded aluminum flashing [8.4]; Workshop - Aluminium cladding [25]; Waterproofing Installer [320 h] | 19,022 |
| NJR1-CL-TC-150 |  | Test & Commission Door and Windows | 9d | 2026-12-09 | 2026-12-19 | NJR1-MI-CM-170 | 0d | (D6) 3000*3500mm galvanized steel heavy duty industrial isolated type roll up shutter door [1.2]; (D5) 1000*2200mm single leaf steel door [1.2]; (D2) 1000*2200 mm single leaf galvanized steel door [0.2]; (D3) 800*2200 mm single leaf semi solid wood door [0.2]; (D1) single leaf galvanized steel door [0.1]; Window W1 (size 1000*1300) [1.2]; Window W2 (size 1600*1200) [0.2]; Outside Mosque - Install Door D1 [0.1]; Outside Mosque - Install Window W1 [0.2]; Door & Window Installer [320 h] | 33,130 |
| NJR1-CL-TC-160 |  | Test & Commission Finishes | 9d | 2026-12-09 | 2026-12-19 | NJR1-MI-CM-170 | 0d | 300*300mm ceramic tiles for toilets [7.5]; Carpet rolls to prayer room [5.6]; Epoxy paint to concrete surface in the factory area [185]; Granite tiles [3.5]; Marble strip 30mm thk, Threshold [0.3]; Wood skirt 100mm height [4.3]; Internal plastering to walls and columns [17]; External plastering to external walls [25]; 2 coats of acrylic paint at internal walls and roof [31.6]; 2 coats of acrylic paint at external walls and parapet [25]; Marble chips on external walls and grooves [7.5]; GRC panels [1.1]; 300*300mm glazed ceramic wall tiles for toilets [24]; Phenolic partitions with doors for toilets [7.5]; 12.5mm thk, moisture resistant gypsum board suspended ceiling for toilets [7.5]; 12.5mm thk, moisture resistant gypsum board suspended ceiling for prayer room [2]; General Labor [320 h] | 27,990.5 |
| NJR1-CL-TC-170 |  | Test & Commission Specialties | 9d | 2026-12-09 | 2026-12-19 | NJR1-MI-CM-170 | 0d | Soap dispenser [0.6]; Mirror, Size 3300*1200mm [0.2]; Mirror, Size 800*1200mm [0.4]; Toilet tissue holder [0.6]; Paper towel dispenser [0.2]; Waste receptacle [0.8]; Stainless steel hand dryer [0.2]; Robe hook [0.8]; Grab bars [0.2]; Extruded EPDM rubber bumper 200mm high [20]; Internal and External Signage [0.3]; Install MODON logo on entrance [0.4]; General Labor [320 h] | 4,575 |
| NJR1-CL-TC-175 |  | Test & Commission Pre Engineered Structure | 9d | 2026-12-09 | 2026-12-19 | NJR1-MI-CM-170 | 0d | PEB for one block with an area 1990 square meter [0.1]; Intumescent paint to steel works [0.1]; Fencing For Pump Room [3.6]; Install swing gate for fence with similar design with opening of 3m. [0.2]; Install swing gate for fence with similar design with opening of 1.5m. [0.2]; Pump Shed [0.1]; General Labor [320 h] | 203,940 |
| NJR1-CL-TC-180 |  | Test & Commission Mechanical Works | 9d | 2026-12-09 | 2026-12-19 | NJR1-MI-CM-170 | 0d | 200 mm Ø HDPE Fire Fighting [4.8]; 150 mm Ø HDPE Fire Fighting [20]; 200 mm Ø Directly Buried Gate valve [0.1]; 150 mm Ø Directly Buried Gate valve [0.1]; 100 mm Ø HDPE Water Supply [2]; 90 mm Ø HDPE Water Supply [23.5]; 63 mm Ø HDPE Water Supply [0.8]; 50 mm Ø HDPE Water Supply [4]; 100 mm Ø Directly Buried Gate valve [0.1]; 90 mm Ø Directly Buried Gate valve [0.1]; 63 mm Ø Directly Buried Gate valve [0.2]; 50 mm Ø Directly Buried Gate valve [1.2]; 63 mm Ø Service connection - HDPE [0.1]; For 100 mm Ø pipe Road Crossing sleeve [2.5]; Air Valve [0.1]; Washout Valve [0.1]; Hot Press GRP Sectional Panel Water Tanks (10x8x4m) [0.1]; Sewage tank with dimensions (8x4x3m) [0.1]; 110 mm Pipe sewer upvc pipe [10.5]; 160 mm Pipe sewer upvc pipe [7.5]; Sewer manholes [1.1]; Gully traps [0.8]; 110mm UPVC pipe service connections [0.1]; 8" Ø Fire Fighting HDPE Pipes [1.5]; Seamless black steel pipes & fittings [0.1]; Water sprinklers [0.1]; Fire house cabinet [0.6]; OS&Y Gate valve [0.1]; Fire Alarm Check Valve (ACV) [0.1]; Fire Department Connection (FDC) 6" [0.1]; 1" Ø Automatic air release valve [0.1]; 63 mm Ø HDPE pipes Water Supply [4]; PPR SDR 7.4 PN 16, DIN 8077/78 pipes [0.1]; Ball Valve [0.1]; Capped connection (For tenant use) [1.2]; 63 mm Ø Valve with Valve Box [0.2]; Install uPVC Pipe Sewer & Drainage [0.1]; Roof Vent Caps [0.2]; Floor drain (FD-1) [2.2]; Gully Traps with heavy duty cover [0.8]; Inspection chamber with heavy duty cover [0.3]; Plumbing fixtures [0.1]; Inline exhaust fans/make-up air fans [0.1]; Indoor ductwork [6]; Square exhaust diffuser [1]; Exhaust grills [0.2]; Flexible ducts [0.8]; Condensate drain piping [3.8]; Fire Pump system [0.1]; 50 mm Ø Valve with Valve Box [1.2]; Plumber [320 h] | 195,879 |
| NJR1-CL-TC-190 |  | Test & Commission Electrical Works | 9d | 2026-12-09 | 2026-12-19 | NJR1-MI-CM-170 | 0d | Branch Telecom Manhole (MH1) with pipes [0.8]; Main Telecom Manhole (MH2) with pipes [0.1]; Telecom Handhole (HH) with pipes [0.5]; Main Electrical Manhole with pipes [1]; Branch Electrical Manhole with pipes [3.2]; Street Lighting Manhole with pipes [0.2]; Pipes for all telecom network at site [40.5]; Pipes for all electrical network at site [95]; Road crossing duct bank for street lighting cables [1.5]; Road crossing duct bank for site electrical cables [7.5]; Road crossing duct bank for site telecom cables [16.5]; Street lighting feeder pillar [0.1]; Street lighting poles with LED lighting fixtures [2.5]; Concrete wall for KWHM for street lighting feeder pillar [0.1]; 4C x 50mm2 +1C x 25 mm2 [2]; 4C x 16mm2 +1C x 10mm2 [41]; LED Lighting fixtures [0.9]; Emergency LED lighting [0.2]; Lighting switch [0.2]; Motor Circuit Protector for pumps [0.2]; Pump room power panel [0.1]; Control Panel for pumps [0.2]; Isolator switch [0.2]; Disconnect switch [0.4]; Concrete wall for KWHM for pump room [0.1]; Cable trays [0.1]; Feeder pillars [0.1]; Pump Room [0.1]; KWHM's [0.4]; Street lighting Poles [2.5]; Low Voltage Copper Cables & Wires [0.1]; Cable Trays [0.1]; Lighting, Power Panelboards, and Control [0.1]; Safety Disconnect Switches [0.1]; Lighting Fixtures and Their Switches [0.1]; Telecom & Data System [0.1]; Grounding System [0.1]; Lightning Protection System [0.2]; Fire Alarm System [0.1]; Sockets, outlets, and wiring devices [0.1]; Solar Power Plant [1.2]; Skylight Fixtures [2.4]; Electrician [320 h] | 263,936.9 |
|  | 2 | **As-Built Drawings** |  | 2026-12-20 | 2027-01-02 |  |  |  |  |
| NJR1-CL-EN-100 |  | As-Built Drawings of Operation Spares | 12d | 2026-12-20 | 2027-01-02 | NJR1-CL-TC-100, NJR1-CL-TC-130, NJR1-CL-TC-140, NJR1-CL-TC-150, NJR1-CL-TC-160, NJR1-CL-TC-170, NJR1-CL-TC-110, NJR1-CL-TC-120, NJR1-CL-TC-180, NJR1-CL-TC-190, NJR1-CL-TC-175 | 0d |  |  |
| NJR1-CL-EN-110 |  | As-Built Drawings of Warranties & Certificates | 12d | 2026-12-20 | 2027-01-02 | NJR1-CL-TC-100, NJR1-CL-TC-130, NJR1-CL-TC-140, NJR1-CL-TC-150, NJR1-CL-TC-160, NJR1-CL-TC-170, NJR1-CL-TC-110, NJR1-CL-TC-120, NJR1-CL-TC-180, NJR1-CL-TC-190, NJR1-CL-TC-175 | 0d |  |  |
| NJR1-CL-EN-120 |  | As-Built Drawings of Traning & Manuals | 12d | 2026-12-20 | 2027-01-02 | NJR1-CL-TC-100, NJR1-CL-TC-130, NJR1-CL-TC-140, NJR1-CL-TC-150, NJR1-CL-TC-160, NJR1-CL-TC-170, NJR1-CL-TC-110, NJR1-CL-TC-120, NJR1-CL-TC-180, NJR1-CL-TC-190, NJR1-CL-TC-175 | 0d |  |  |
| NJR1-CL-EN-130 |  | As-Built Drawings of Overall Handove r Documents | 12d | 2026-12-20 | 2027-01-02 | NJR1-CL-TC-100, NJR1-CL-TC-130, NJR1-CL-TC-140, NJR1-CL-TC-150, NJR1-CL-TC-160, NJR1-CL-TC-170, NJR1-CL-TC-110, NJR1-CL-TC-120, NJR1-CL-TC-180, NJR1-CL-TC-190, NJR1-CL-TC-175 | 0d |  |  |
| NJR1-CL-EN-140 |  | As-Built Drawings of As-built Drawin gs | 12d | 2026-12-20 | 2027-01-02 | NJR1-CL-TC-100, NJR1-CL-TC-130, NJR1-CL-TC-140, NJR1-CL-TC-150, NJR1-CL-TC-160, NJR1-CL-TC-170, NJR1-CL-TC-110, NJR1-CL-TC-120, NJR1-CL-TC-180, NJR1-CL-TC-190, NJR1-CL-TC-175 | 0d |  |  |
|  | 3 | **Demobilization** |  | 2026-12-20 | 2027-01-02 |  |  |  |  |
| NJR1-CL-DM-100 |  | Demobilization of Manpower | 12d | 2026-12-20 | 2027-01-02 | NJR1-CL-TC-100, NJR1-CL-TC-130, NJR1-CL-TC-140, NJR1-CL-TC-150, NJR1-CL-TC-160, NJR1-CL-TC-170, NJR1-CL-TC-110, NJR1-CL-TC-120, NJR1-CL-TC-180, NJR1-CL-TC-190, NJR1-CL-TC-175 | 0d |  |  |
| NJR1-CL-DM-110 |  | Removal of Equipment at Site | 12d | 2026-12-20 | 2027-01-02 | NJR1-CL-TC-100, NJR1-CL-TC-130, NJR1-CL-TC-140, NJR1-CL-TC-150, NJR1-CL-TC-160, NJR1-CL-TC-170, NJR1-CL-TC-110, NJR1-CL-TC-120, NJR1-CL-TC-180, NJR1-CL-TC-190, NJR1-CL-TC-175 | 0d | General Labor [960 h] |  |
| NJR1-CL-DM-120 |  | General Clean Up | 12d | 2026-12-20 | 2027-01-02 | NJR1-CL-TC-100, NJR1-CL-TC-130, NJR1-CL-TC-140, NJR1-CL-TC-150, NJR1-CL-TC-160, NJR1-CL-TC-170, NJR1-CL-TC-110, NJR1-CL-TC-120, NJR1-CL-TC-180, NJR1-CL-TC-190, NJR1-CL-TC-175 | 0d | Pay Loader [96 h]; Dump Truck [96 h]; General Labor [960 h]; Operator [192 h] |  |
| NJR1-CL-DM-130 |  | Removal of Site Offices and Structures | 12d | 2026-12-20 | 2027-01-02 | NJR1-CL-TC-100, NJR1-CL-TC-130, NJR1-CL-TC-140, NJR1-CL-TC-150, NJR1-CL-TC-160, NJR1-CL-TC-170, NJR1-CL-TC-110, NJR1-CL-TC-120, NJR1-CL-TC-180, NJR1-CL-TC-190, NJR1-CL-TC-175 | 0d | Grader [96 h]; Skid Loader (Bobcat) [96 h]; Dump Truck [96 h]; Fork Lift [96 h]; General Labor [960 h]; Operator [384 h] |  |
| NJR1-CL-DM-140 |  | Restoration of Ground Surfaces | 12d | 2026-12-20 | 2027-01-02 | NJR1-CL-TC-100, NJR1-CL-TC-130, NJR1-CL-TC-140, NJR1-CL-TC-150, NJR1-CL-TC-160, NJR1-CL-TC-170, NJR1-CL-TC-110, NJR1-CL-TC-120, NJR1-CL-TC-180, NJR1-CL-TC-190, NJR1-CL-TC-175 | 0d | Grader [96 h]; Skid Loader (Bobcat) [96 h]; Dump Truck [96 h]; Fork Lift [96 h]; General Labor [960 h]; Operator [384 h] |  |

## Activity codes

| Code | Value | Meaning |
| --- | --- | --- |
| WBS-BOQ | (New) | Stainless steel hand dryer |
| WBS-BOQ | (New)-1 | Robe hook |
| WBS-BOQ | (New)-2 | Grab bars |
| WBS-BOQ | (New)-3 | Extruded EPDM rubber bumper 200mm high |
| WBS-BOQ | 1 | HDPE PE 100 PN16 pipes, for cold water supply piping system (underground) |
| WBS-BOQ | 10 | 150 mm thk concrete floor slab on grade |
| WBS-BOQ | 11 | Solar Power Plant |
| WBS-BOQ | 12 | Skylight Fixtures |
| WBS-BOQ | 2 | Cable Trays |
| WBS-BOQ | 3 | Floor drain (FD-1) with stainless steel 316 cover |
| WBS-BOQ | 4 | Safety Disconnect Switches |
| WBS-BOQ | 5 | Lighting Fixtures and Their Switches |
| WBS-BOQ | 6 | Telecom & Data System |
| WBS-BOQ | 7 | Grounding System |
| WBS-BOQ | 8 | 1" Ø Automatic air release valve |
| WBS-BOQ | 9 | Fire Alarm System |
| WBS-Engineering | 1 | Earthworks |
| WBS-Engineering | 10 | Electrical Works |
| WBS-Engineering | 2 | Concrete |
| WBS-Engineering | 3 | Masonry Works |
| WBS-Engineering | 4 | Metal Works |
| WBS-Engineering | 5 | Thermal and Moisture Protection |
| WBS-Engineering | 6 | Finishes |
| WBS-Engineering | 7 | Specialties |
| WBS-Engineering | 8 | Pre Engineered Structure |
| WBS-Engineering | 9 | Mechanical |
| WBS-Engineering | LL | Long Lead Items |
| WBS-Engineering | PS | Prepare and Submit |
| WBS-Engineering | RA | Review and Approve |
| WBS-Engineering | SL | Short Lead Items |
| WBS-Procurement | DE | Delivery to Site |
| WBS-Procurement | MF | Manufacture/Fabricate |
| WBS-Procurement | PO | Purchase Order |
